# Madison BRT - CPM MAR 2024

Schedule from Primavera P6, 2021-09-20 to 2024-10-01, data date 2024-04-01, costs in USD, A marks actual dates.

## Calendars

- BASE: Mon-Fri 08:00-12:00, 13:00-17:00; Sat-Sun off. Exceptions (off unless hours are given): 2021-11-15, 2021-11-25 to 2021-11-26, 2021-12-24, 2021-12-31, 2022-01-17, 2022-02-21, 2022-05-30, 2022-07-04, 2022-09-05, 2022-11-14, 2022-11-24 to 2022-11-25, 2022-12-26, 2023-01-02, 2023-01-16, 2023-02-20, 2023-05-29, 2023-07-04, 2023-09-04, 2023-11-13, 2023-11-23 to 2023-11-24, 2023-12-25, 2024-01-01, 2024-01-15, 2024-02-19, 2024-05-27.
- BASE: Mon-Fri 08:00-12:00, 13:00-17:00; Sat-Sun off. Exceptions (off unless hours are given): 2021-11-15, 2021-11-25 to 2021-11-26, 2021-12-24, 2021-12-31, 2022-01-17, 2022-02-21, 2022-05-30, 2022-07-04, 2022-09-05, 2022-11-14, 2022-11-24 to 2022-11-25, 2022-12-26, 2023-01-02, 2023-01-16, 2023-02-20, 2023-05-29, 2023-07-04, 2023-09-04, 2023-11-13, 2023-11-23 to 2023-11-24, 2023-12-25, 2024-01-01, 2024-01-15, 2024-02-19, 2024-05-27.
- WEEKEND ONLY: Mon-Fri off; Sat-Sun 08:00-12:00, 13:00-17:00.
- 7 day per week: Mon-Sun 08:00-12:00, 13:00-17:00. Exceptions (off unless hours are given): 2021-11-25, 2021-12-24 to 2021-12-25.
- Standard 5 Day Workweek w/Holidays (STD CPM): Mon-Fri 08:00-12:00, 13:00-17:00; Sat-Sun off. Exceptions (off unless hours are given): 2023-01-02, 2023-05-29, 2023-07-04, 2023-09-04, 2023-11-23 to 2023-11-24, 2023-12-25, 2024-01-01, 2024-05-27, 2024-07-04, 2024-09-02.

## Resources

| Resource | Group | Rate |
| --- | --- | --- |
| MBRT BASE | equipment | 1 |
| MBRT DSC | equipment | 1 |
| MBRT NEW | equipment | 1 |
| MBRT ADDED | equipment | 1 |
| MBRT KCM | equipment |  |

## Schedule

| ID | WBS | Activity | Type | Duration | Start | Finish | Predecessors | Complete | Planned start | Planned finish | user_number6 | MBRT-ZONE | MBRT-DELAY | MBRT-TYPE | user_text2 | MBRT-ACTIVITY | ~SELECT |
| --- | --- | --- | --- | --- | --- | --- | --- | --- | --- | --- | --- | --- | --- | --- | --- | --- | --- |
|  | 1 | **PRECONSTRUCTION / PROCUREMENT** |  |  | 2021-09-20 | 2023-11-27 |  |  |  |  |  |  |  |  |  |  |  |
| PCS-0014 |  | PROJECT AWARD | milestone | 0d | 2021-09-20 A | 2021-09-20 A |  | 100% |  |  | 0 | ADMIN | OCS |  |  |  |  |
|  | 1 | **PREPARE SUBMITTALS** |  |  | 2021-09-20 | 2022-04-15 |  |  |  |  |  |  |  |  |  |  |  |
| PSP-0003 |  | PREP-CQPP PLAN |  | 1d | 2021-09-20 A | 2021-09-20 A | PCS-0014 SS | 100% |  |  | 0 | ADMIN |  | SUBMITTAL |  |  |  |
| PSP-0004 |  | PREP-POLE FOUNDATIONS SUBMITTALS |  | 1d | 2021-09-20 A | 2021-09-20 A | PCS-0014 SS | 100% |  |  | 0 | ADMIN | OCS | SUBMITTAL | CITY |  |  |
| PSP-0005 |  | PREP-POLE SUBMITTALS |  | 1d | 2021-09-20 A | 2022-02-07 A | PCS-0014 SS | 100% | 2021-09-20 | 2021-09-20 | 5000 | ADMIN |  | SUBMITTAL | CITY |  |  |
| PSP-0006 |  | PREP-WATER LINE LAY DRAWINGS |  | 1d | 2021-09-20 A | 2021-09-20 A | PCS-0014 SS | 100% |  |  | 0 | ADMIN |  | SUBMITTAL | CITY |  |  |
| PSP-0007 |  | PREP-PIPE SUBMITTALS |  | 1d | 2021-09-20 A | 2021-09-20 A | PCS-0014 SS | 100% |  |  | 0 | ADMIN |  | SUBMITTAL |  |  |  |
| PSP-0008 |  | PREP-GENERAL SUBMITALS |  | 1d | 2021-09-20 A | 2021-09-20 A | PCS-0014 SS | 100% |  |  | 0 | ADMIN |  | SUBMITTAL | CITY |  |  |
| PSP-0009 |  | PREP-EMERGENCY OCS REACTIVATION PLAN |  | 1d | 2021-09-20 A | 2021-09-20 A | PCS-0014 SS | 100% |  |  | 0 | ADMIN |  | SUBMITTAL | CITY | OCS |  |
| PSP-0010 |  | PREP-TEMPORARY SIGNAL PLAN |  | 1d | 2021-09-20 A | 2021-09-20 A | PCS-0014 SS | 100% |  |  | 0 | ADMIN |  | SUBMITTAL | CITY |  | X |
| PSP-0011 |  | PREP-TEMPORARY LIGHTING PLAN |  | 1d | 2021-09-20 A | 2021-09-20 A | PCS-0014 SS | 100% |  |  | 0 | ADMIN |  | SUBMITTAL | CITY |  |  |
| PSP-0012 |  | PREP-BRASS INLAY |  | 1d | 2021-09-20 A | 2021-09-20 A | PCS-0014 SS | 100% |  |  | 0 | ADMIN |  | SUBMITTAL | CITY |  |  |
| PSP-0013 |  | PREP-BUS SHELTERS |  | 1d | 2021-09-20 A | 2022-04-15 A | PCS-0014 SS | 100% | 2021-09-20 | 2021-09-20 | 20000 | ADMIN |  | SUBMITTAL | CITY |  |  |
| PSP-0018 |  | PREP-TEMPORARY DISCHARGE PLAN |  | 1d | 2021-09-20 A | 2021-09-20 A | PCS-0014 | 100% |  |  | 0 | ADMIN |  | SUBMITTAL |  |  |  |
| PSP-0023 |  | PREP-SWPP |  | 1d | 2021-09-20 A | 2021-09-20 A | PCS-0014 | 100% |  |  | 0 | ADMIN |  | SUBMITTAL |  |  |  |
| PSP-0028 |  | PREP-PROJECT WORK PLAN |  | 1d | 2021-09-20 A | 2021-09-20 A | PCS-0014 | 100% |  |  | 0 | ADMIN |  | SUBMITTAL |  |  |  |
| PSP-0033 |  | PREP-TVSPP |  | 1d | 2021-09-20 A | 2021-09-20 A | PCS-0014 | 100% |  |  | 0 | ADMIN |  | SUBMITTAL |  |  |  |
| PSP-0038 |  | PREP-VIBRATION MONITORING PLAN |  | 1d | 2021-09-20 A | 2021-09-20 A | PCS-0014 | 100% |  |  | 0 |  |  |  |  |  |  |
| PSP-0043 |  | PREP-TEMPORARY BYPASS PLANS |  | 1d | 2021-09-20 A | 2021-09-20 A | PCS-0014 | 100% |  |  | 0 |  |  |  |  |  |  |
| PSP-0048 |  | PREP-WATERMAIN SEQUENCE PLAN |  | 1d | 2021-09-20 A | 2021-09-20 A | PCS-0014 | 100% |  |  | 0 |  |  |  |  |  |  |
| PSP-48 |  | PREP-TEMPORARY WATERMAIN WORK PLAN |  | 1d | 2021-09-20 A | 2021-09-20 A | PCS-0014 | 100% |  |  | 0 |  |  |  |  |  |  |
| PSP-53 |  | PREP-PIPE LINING SUBMITTALS |  | 1d | 2021-09-20 A | 2021-09-20 A | PCS-0014 | 100% |  |  | 0 |  |  |  |  |  |  |
| PSP-58 |  | PREP-SCL VAULT MATERIAL SUBMITTAL |  | 5d | 2021-10-08 A | 2021-10-08 A | PCS-0014 | 100% | 2021-09-20 | 2021-09-24 | 0 |  | SCL-VT |  |  |  |  |

| ID | WBS | Activity | Duration | Start | Finish | Predecessors | Complete | Planned start | Planned finish | user_number6 | MBRT-ZONE | MBRT-TYPE | user_text2 | MBRT-DELAY | MBRT-ACTIVITY | ~SELECT | ~TEXT |
| --- | --- | --- | --- | --- | --- | --- | --- | --- | --- | --- | --- | --- | --- | --- | --- | --- | --- |
|  | 3 | **SUBMITTAL REVIEW** |  | 2021-09-21 | 2023-03-13 |  |  |  |  |  |  |  |  |  |  |  |  |
| PSR-0003 |  | REVIEW-CQPP PLAN | 20d | 2021-09-21 A | 2021-10-18 A | PSP-0003 | 100% |  |  | 0 | ADMIN | REVIEW |  |  |  |  |  |
| PSR-0004 |  | REVIEW-POLE FOUNDATIONS SUBMITTALS | 20d | 2021-09-21 A | 2021-10-18 A | PSP-0004 | 100% |  |  | 0 | ADMIN | REVIEW | CITY | OCS |  |  |  |
| PSR-0006 |  | REVIEW-WATER LINE LAY DRAWINGS | 20d | 2021-09-21 A | 2021-10-18 A | PSP-0006 | 100% |  |  | 0 | ADMIN | REVIEW | CITY |  |  |  |  |
| PSR-0007 |  | REVIEW-PIPE SUBMITTALS | 10d | 2021-09-21 A | 2021-10-04 A | PSP-0007 | 100% |  |  | 0 | ADMIN | REVIEW |  |  |  |  |  |
| PSR-0008 |  | REVIEW-GENERAL SUBMITALS | 10d | 2021-09-21 A | 2021-10-04 A | PSP-0008 | 100% |  |  | 0 | ADMIN | REVIEW | CITY |  |  |  |  |
| PSR-0009 |  | REVIEW-EMERGENCY OCS REACTIVATION PLAN | 10d | 2021-09-21 A | 2021-10-04 A | PSP-0009 | 100% |  |  | 0 | ADMIN | REVIEW | CITY |  | OCS |  |  |
| PSR-0010 |  | REVIEW-TEMPORARY SIGNAL PLAN | 10d | 2021-09-21 A | 2021-10-04 A | PSP-0010 | 100% |  |  | 0 | ADMIN | REVIEW | CITY |  |  | X |  |
| PSR-0011 |  | REVIEW-TEMPORARY LIGHTING PLAN | 10d | 2021-09-21 A | 2021-10-04 A | PSP-0011 | 100% |  |  | 0 | ADMIN | REVIEW | CITY |  |  |  |  |
| PSR-0012 |  | REVIEW-BRASS INLAY | 15d | 2021-09-21 A | 2021-10-11 A | PSP-0012 | 100% |  |  | 0 | ADMIN | REVIEW | CITY |  |  |  |  |
| PSR-0014 |  | REVIEW-PIPE LINING SUBMITTAL | 10d | 2021-09-21 A | 2021-10-04 A | PSP-53 | 100% |  |  | 0 |  |  |  |  |  |  |  |
| PSR-0018 |  | REVIEW-TEMPORARY DISCHARGE PLAN | 10d | 2021-09-21 A | 2021-10-04 A | PSP-0018 | 100% |  |  | 0 | ADMIN | REVIEW |  |  |  |  |  |
| PSR-0023 |  | REVIEW-SWPP | 10d | 2021-09-21 A | 2021-10-04 A | PSP-0023 | 100% |  |  | 0 | ADMIN | REVIEW |  |  |  |  |  |
| PSR-0028 |  | REVIEW-PROJECT WORK PLAN | 10d | 2021-09-21 A | 2021-10-04 A | PSP-0028 | 100% |  |  | 0 | ADMIN | REVIEW |  |  |  |  |  |
| PSR-0033 |  | REVIEW-TVSPP | 10d | 2021-09-21 A | 2021-10-04 A | PSP-0033 | 100% |  |  | 0 | ADMIN | REVIEW |  |  |  |  |  |
| PSR-0038 |  | REVIEW-VIBRATION MONITORING PLAN | 10d | 2021-09-21 A | 2021-10-04 A | PSP-0038 | 100% |  |  | 0 |  |  |  |  |  |  |  |
| PSR-0043 |  | REVIEW-TEMPORARY BYPASS PLANS | 10d | 2021-09-21 A | 2021-10-04 A | PSP-0043 | 100% |  |  | 0 |  |  |  |  |  |  |  |
| PSR-0048 |  | REVIEW-WATERMAIN SEQUENCE PLAN | 10d | 2021-09-21 A | 2021-10-04 A | PSP-0048 | 100% |  |  | 0 |  |  |  |  |  |  |  |
| PSR-0053 |  | REVIEW-TEMPORARY WATERMAIN WORK PLAN | 10d | 2021-09-21 A | 2021-10-04 A | PSP-48 | 100% |  |  | 0 |  |  |  |  |  |  |  |
| PSR-0015 |  | REVIEW-SCL VAULT MATERIAL SUBMITTAL | 5d | 2021-10-11 A | 2021-11-10 A | PSP-58 | 100% | 2021-09-20 | 2021-09-24 | 0 |  |  |  | SCL-VT |  |  |  |
| PSR-93 |  | CITY REVIEW OF PRIME POLES | 20d | 2021-11-23 A | 2022-08-22 A | PSP-0005 | 100% | 2022-02-22 | 2022-03-21 | 0 | ADMIN | REVIEW | CITY |  |  |  |  |
| PSR-0005 |  | REVIEW-POLE SUBMITTALS | 20d | 2022-02-17 A | 2022-03-10 A | PSP-0005 | 100% | 2022-02-22 | 2022-03-21 | 0 | ADMIN | REVIEW | CITY |  |  |  | POLES |
| PSR-53 |  | CITY DELAY ON REVIEW-SUNDANCER POLE SUBMITTALS | 20d | 2022-03-10 A | 2022-08-01 A | PSR-0005 | 100% | 2022-02-22 | 2022-03-21 | 0 | ADMIN | REVIEW | CITY |  |  |  | POLES |
| PSR-78 |  | OWNER DELAYS POLES AT UNION AND 19TH | 20d | 2022-03-11 A | 2023-02-10 A | PSR-0005 | 100% | 2022-02-22 | 2022-03-21 | 0 | ADMIN | REVIEW | CITY |  |  |  |  |
| PSR-0013 |  | REVIEW-BUS SHELTERS | 15d | 2022-04-18 A | 2022-06-08 A | PSP-0013 | 100% | 2022-06-01 | 2022-06-21 | 0 | ADMIN | REVIEW | CITY |  |  |  |  |
| PSR-58 |  | RE-DO SHOP DRAWINGS DUE TO DESIGN CHANGES-SUNDANCER POLE SUBMITTALS | 20d | 2022-08-02 A | 2022-10-03 A | PSR-53 | 100% | 2022-02-22 | 2022-03-21 | 0 | ADMIN | REVIEW | CITY |  |  |  | POLES |
| PSR-98 |  | CITY DELAY FOR PORTION OF PRIME POLES DESIGN | 20d | 2022-08-23 A | 2023-02-08 A | PSR-93 | 100% | 2022-02-22 | 2022-03-21 | 0 | ADMIN | REVIEW | CITY |  |  |  |  |
| PSR-63 |  | REVIEW NEW SUNDANCER POLES SHOP DRAWINGS | 15d | 2022-10-04 A | 2022-10-28 A | PSR-58 | 100% | 2022-10-03 | 2022-10-21 | 0 | ADMIN | REVIEW | CITY |  |  |  | POLES |
| PSR-103 |  | RESUBMITTAL OF PARTIAL PRIME POLES | 20d | 2023-02-08 A | 2023-02-08 A | PSR-98 | 100% | 2023-03-31 | 2023-04-27 | 0 | ADMIN | REVIEW | CITY |  |  |  |  |
| PSR-108 |  | CITY REVIEW FOR PARTIAL PRIME POLES | 20d | 2023-02-08 A | 2023-02-08 A | PSR-103 | 100% | 2023-04-28 | 2023-05-25 | 0 | ADMIN | REVIEW | CITY |  |  |  |  |
| PSR-83 |  | RESUBMIT POLES AT UNION AND 19TH | 20d | 2023-02-13 A | 2023-02-20 A | PSR-78 SS | 100% | 2022-02-22 | 2022-03-21 | 0 | ADMIN | REVIEW | CITY |  |  |  |  |
| PSR-88 |  | CITY REVIEW POLES AT UNION AND 19TH RESUBMITTAL | 20d | 2023-02-21 A | 2023-03-13 A | PSR-83 | 100% | 2023-03-01 | 2023-03-28 | 0 | ADMIN | REVIEW | CITY |  |  |  |  |

| ID | WBS | Activity | Type | Duration | Start | Finish | Predecessors | Complete | Planned start | Planned finish | user_number6 | MBRT-ZONE | MBRT-TYPE | MBRT-DELAY | user_text10 | user_text8 | ~TEXT | MBRT-ACTIVITY | MBRT-RESP |
| --- | --- | --- | --- | --- | --- | --- | --- | --- | --- | --- | --- | --- | --- | --- | --- | --- | --- | --- | --- |
|  | 2 | **MATERIAL PROCURMENT LONG LEAD TIME** |  |  | 2021-10-05 | 2023-11-27 |  |  |  |  |  |  |  |  |  |  |  |  |  |
| PMP-0019 |  | OFD-BUTTERFLY VALES, MATERIAL PROCURMENT LONG LEAD TIME |  | 90d | 2021-10-05 A | 2022-05-09 A | PSR-0007 | 100% | 2021-10-05 | 2022-02-15 | 0 | ADMIN | OFD |  |  |  |  |  |  |
| PMP-0020 |  | OFD-72" DURAMAX PIPE, MATERIAL PROCURMENT LONG LEAD TIME |  | 70d | 2021-10-05 A | 2022-02-15 A | PSR-0007 | 100% | 2021-10-05 | 2022-01-18 | 0 | ADMIN | OFD |  |  |  |  |  |  |
| PMP-0023 |  | OFD-DOUBLE DISK GATE VALES |  | 70d | 2021-10-05 A | 2022-02-10 A | PSR-0007 | 100% | 2021-10-05 | 2022-01-18 | 0 | ADMIN | OFD |  |  |  |  |  |  |
| PMP-0021 |  | OFD-BRASS INLAY, MATERIAL PROCURMENT LONG LEAD TIME |  | 20d | 2021-10-12 A | 2021-11-08 A | PSP-0012, PSR-0012 | 100% |  |  | 0 | ADMIN | OFD |  |  |  |  |  |  |
| PMP-0015 |  | OFD-POLE ANCHOR BOLTS AND REBAR CAGES |  | 15d | 2021-10-19 A | 2021-11-08 A | PSR-0004 | 100% |  |  | 0 | ADMIN | OFD | OCS |  |  |  |  |  |
| PMP-0017 |  | OFD-WATERLINE PIPE |  | 55d | 2021-10-19 A | 2022-01-11 A | MS-0025, PSR-0006, PSR-0048, PSR-0053 | 100% | 2021-10-19 | 2022-01-10 | 0 | ADMIN | OFD |  |  |  |  |  |  |
| PMP-0026 |  | RECEIVE KCM OCS POLES | milestone | 0d | 2022-02-02 A | 2022-02-02 A | MS-0025 | 100% | 2022-04-04 | 2022-04-04 | 0 |  |  |  |  |  |  |  |  |
| PMP-0022 |  | OFD-STATION SHELTERS - PRIOR TO RFI 218 AND 219 |  | 120d | 2022-06-09 A | 2023-04-19 A | PSR-0013 | 100% | 2022-10-31 | 2023-04-25 | 0 | ADMIN | OFD |  | PMP-0022 | PMP-0022 |  |  |  |
| PMP-36 |  | OFD-POLES (PRIME) FIRST BATCH |  | 120d | 2022-08-23 A | 2023-01-13 A | PSR-93 | 100% | 2022-12-01 | 2023-05-23 | 0 | ADMIN | OFD |  |  |  |  |  |  |
| PMP-0016 |  | OFD-POLES (SUNDANCER) FIRST SHIPMENT RECEIVE AND SORT |  | 120d | 2022-10-31 A | 2023-04-21 A | PSR-0005, PSR-63, PSR-58, PSR-53 | 100% | 2022-12-01 | 2023-05-23 | 0 | ADMIN | OFD |  | PMP-0016 | PMP-0016 | POLES |  |  |
| PMP-26 |  | OFD-POLES (SUNDANCER) SECOND SHIPMENT RECEIVE AND SORT |  | 120d | 2022-10-31 A | 2023-04-21 A | PSR-63 | 100% | 2022-12-01 | 2023-05-23 | 0 | ADMIN | OFD |  | PMP-26 | PMP-26 | POLES |  |  |
| PMP-31 |  | OFD-POLES (SUNDANCER) 19TH AND UNION RECEIVE AND SORT |  | 50d | 2022-10-31 A | 2023-04-21 A | PSR-88 | 100% | 2023-03-31 | 2023-06-09 | 0 | ADMIN | OFD |  | PMP-31 | PMP-31 |  |  |  |
| PMP-41 |  | OFD-POLES (PRIME) SECOND BATCH |  | 41d | 2023-02-09 A | 2023-05-26 A | PSR-108 | 100% | 2023-03-31 | 2023-05-26 | 0 | ADMIN | OFD |  | PMP-41 | PMP-41 |  |  |  |
| PMP-46 |  | OFD-STATION SHELTERS - RFI 218 AND 219 |  | 25d | 2023-04-19 A | 2023-08-17 A | PMP-0022 | 100% | 2022-10-31 | 2022-12-07 | 0 | ADMIN | OFD |  | PMP-46 | PMP-46 |  |  |  |
| PMP-51 |  | OFD-STATION SHELTERS - AFTER RFI 218 AND 219 |  | 40d | 2023-08-18 A | 2023-11-27 A | PMP-46 | 100% | 2023-08-23 | 2023-10-18 | 0 | ADMIN | OFD |  | PMP-51 | PMP-51 |  |  |  |
|  | 20 | **SCL FALSE CEILING NOTIFICATIONS** |  |  | 2021-10-12 | 2022-03-14 |  |  |  |  |  |  |  |  |  |  |  |  |  |
| 1-SCL-0900 |  | NOTIFY SCL, SCL FALSE CEILING NOTIFICATIONS | milestone | 0d | 2021-10-12 A | 2021-10-12 A | PCS-0014 SS+17d | 100% | 2021-12-01 | 2021-12-01 | 0 | OTHER |  |  |  |  |  | NOTIFY |  |
| 1-SCL-1000 |  | SCL INST FALSE CEILING 1st ALLEY & Spring St #123-M-357 |  | 10d | 2021-10-12 A | 2021-10-30 A | 1-SCL-0900 SS | 100% | 2021-12-01 | 2021-12-14 | 0 | OTHER |  |  |  |  |  |  | SCL |
| 1-SCL-1010 |  | SCL INST FALSE CEILING 3rd Alley & Spring Street #143-M-109 |  | 10d | 2021-10-12 A | 2021-10-30 A | 1-SCL-0900 SS | 100% | 2021-12-01 | 2021-12-14 | 0 | OTHER |  |  |  |  |  |  | SCL |
| 1-SCL-1070 |  | SCL INST FALSE CEILING 3rd AVE & Spring #133-M-013 |  | 10d | 2021-10-12 A | 2021-10-30 A | 1-SCL-0900 SS | 100% | 2021-12-01 | 2021-12-14 | 0 | OTHER |  |  |  |  |  |  | SCL |
| 1-SCL-1080 |  | SCL INST FALSE CEILING 2nd Alley & Spring St #133-M-111 |  | 10d | 2021-10-12 A | 2021-10-30 A | 1-SCL-0900 SS | 100% | 2021-12-01 | 2021-12-14 | 0 | OTHER |  |  |  |  |  |  | SCL |
| 1-SCL-1090 |  | SCL INST FALSE CEILING 2nd Alley & Spring St #133-M-375 |  | 10d | 2021-10-12 A | 2021-10-30 A | 1-SCL-0900 SS | 100% | 2021-12-01 | 2021-12-14 | 0 | OTHER |  |  |  |  |  |  | SCL |
| 1-SCL-1100 |  | SCL INST FALSE CEILING 3rd AVE & Spring ST #133-M-005 |  | 10d | 2021-10-12 A | 2021-10-30 A | 1-SCL-0900 SS | 100% | 2021-12-01 | 2021-12-14 | 0 | OTHER |  |  |  |  |  |  | SCL |
| 1-SCL-1110 |  | SCL INST FALSE CEILING 3rd Ave & Spring St #133-M-007 |  | 10d | 2021-10-12 A | 2021-10-30 A | 1-SCL-0900 SS | 100% | 2021-12-01 | 2021-12-14 | 0 | OTHER |  |  |  |  |  |  | SCL |
| 1-SCL-1210 |  | SCL INST FALSE CEILING 3rd Ave & Spring ST #133-M-011 |  | 10d | 2021-10-12 A | 2021-10-30 A | 1-SCL-0900 SS | 100% | 2021-12-01 | 2021-12-14 | 0 | OTHER |  |  |  |  |  |  | SCL |
| 1-SCL-1220 |  | SCL INST FALSE CEILING 3rd Ave & Spring St #133-M-012 |  | 10d | 2021-10-12 A | 2021-10-30 A | 1-SCL-0900 SS | 100% | 2021-12-01 | 2021-12-14 | 0 | OTHER |  |  |  |  |  |  | SCL |
| 1-SCL-1060 |  | SCL INST FALSE CEILING 3rd AVE & MAD #143-M-117 |  | 10d | 2021-12-01 A | 2021-12-14 A | 1-SCL-0900 SS | 100% |  |  | 0 | OTHER |  | SCL-FC |  |  |  |  | SCL |
| 1-SCL-1020 |  | SCL INST FALSE CEILING 4th Alley & Spring St #153-M-268 |  | 10d | 2022-01-14 A | 2022-01-28 A | 1-SCL-0900 SS | 100% | 2022-01-31 | 2022-02-11 | 0 | OTHER |  | SCL-FC |  |  |  |  | SCL |
| 1-SCL-1030 |  | SCL INST FALSE CEILING 5th AVE & Spring St #163-M-354 |  | 10d | 2022-01-14 A | 2022-01-28 A | 1-SCL-0900 SS | 100% | 2022-01-31 | 2022-02-11 | 0 | OTHER |  | SCL-FC |  |  |  |  | SCL |
| 1-SCL-1040 |  | SCL INST FALSE CEILING 6th AVE & Spring St #163-M-355 |  | 10d | 2022-01-14 A | 2022-01-28 A | 1-SCL-0900 SS | 100% | 2022-01-31 | 2022-02-11 | 0 | OTHER |  | SCL-FC |  |  |  |  | SCL |
| 1-SCL-1050 |  | SCL INST FALSE CEILING 5th Alley & Spring St #163-M-351 |  | 10d | 2022-01-14 A | 2022-01-28 A | 1-SCL-0900 SS | 100% | 2022-01-31 | 2022-02-11 | 0 | OTHER |  | SCL-FC |  |  |  |  | SCL |
| 1-SCL-1120 |  | SCL INST FALSE CEILING 5th AVE & Spring St #163-M-003 |  | 10d | 2022-01-14 A | 2022-01-28 A | 1-SCL-0900 SS | 100% | 2022-01-31 | 2022-02-11 | 0 | OTHER |  | SCL-FC |  |  |  |  | SCL |
| 1-SCL-1130 |  | SCL INST FALSE CEILING 5th AVE & Spring St #163-M-353 |  | 10d | 2022-01-14 A | 2022-01-28 A | 1-SCL-0900 SS | 100% |  |  | 0 | OTHER |  | SCL-FC |  |  |  |  | SCL |
| 1-SCL-1140 |  | SCL INST FALSE CEILING 6th AVE & Spring St #163-M-009 |  | 10d | 2022-01-14 A | 2022-01-28 A | 1-SCL-0900 SS | 100% | 2021-12-14 | 2021-12-28 | 0 | OTHER |  | SCL-FC |  |  |  |  | SCL |
| 1-SCL-1150 |  | SCL INST FALSE CEILING 8th Ave & Spring St #703-M-001 |  | 10d | 2022-03-01 A | 2022-03-14 A | 1-SCL-0900 SS | 100% |  |  | 0 | OTHER |  |  |  |  |  |  | SCL |
| 1-SCL-1160 |  | SCL INST FALSE CEILING 8th Ave & Spring St #713-M-003 |  | 10d | 2022-03-01 A | 2022-03-14 A | 1-SCL-0900 SS | 100% |  |  | 0 | OTHER |  |  |  |  |  |  | SCL |
| 1-SCL-1170 |  | SCL INST FALSE CEILING 8th Ave & Spring St #713-M-001 |  | 10d | 2022-03-01 A | 2022-03-14 A | 1-SCL-0900 SS | 100% |  |  | 0 | OTHER |  |  |  |  |  |  | SCL |
| 1-SCL-1180 |  | SCL INST FALSE CEILING 8th Ave & Spring St #713-M-372 |  | 10d | 2022-03-01 A | 2022-03-14 A | 1-SCL-0900 SS | 100% |  |  | 0 | OTHER |  |  |  |  |  |  | SCL |
| 1-SCL-1190 |  | SCL INST FALSE CEILING 8th Ave & Spring St #713-V-003 |  | 10d | 2022-03-01 A | 2022-03-14 A | 1-SCL-0900 SS | 100% |  |  | 0 | OTHER |  |  |  |  |  |  | SCL |
| 1-SCL-1200 |  | SCL INST FALSE CEILING 3rd AVE & MAD #133-M-118 |  | 10d | 2022-03-01 A | 2022-03-14 A | 1-SCL-0900 SS | 100% |  |  | 0 | OTHER |  |  |  |  |  |  | SCL |
| 1-SCL-1230 |  | SCL INST FALSE CEILING 7th Alley & Spring St #703-M-004 |  | 10d | 2022-03-01 A | 2022-03-14 A | 1-SCL-0900 SS | 100% |  |  | 0 | OTHER |  |  |  |  |  |  | SCL |
| 1-SCL-1240 |  | SCL INST FALSE CEILING 9th Ave & Spring St #713-M-002 |  | 10d | 2022-03-01 A | 2022-03-14 A | 1-SCL-0900 SS | 100% |  |  | 0 | OTHER |  |  |  |  |  |  | SCL |

| ID | WBS | Activity | Type | Duration | Start | Finish | Predecessors | Complete | Remaining | Planned start | Planned finish | Total float | Free float | Constraint | Calendar | user_number6 | MBRT-ZONE | MBRT-TYPE | MBRT-DELAY | ~SELECT | user_text10 | ~TEXT | user_text8 | ~SELECT3 | MBRT-ACTIVITY |
| --- | --- | --- | --- | --- | --- | --- | --- | --- | --- | --- | --- | --- | --- | --- | --- | --- | --- | --- | --- | --- | --- | --- | --- | --- | --- |
|  | 2 | **CONSTRUCTION / CONTRACT DAYS** |  |  | 2021-10-18 | 2024-10-01 |  |  |  |  |  |  |  |  |  |  |  |  |  |  |  |  |  |  |  |
|  | 1 | **MILESTONES** |  |  | 2021-10-18 | 2024-10-01 |  |  |  |  |  |  |  |  |  |  |  |  |  |  |  |  |  |  |  |
| MS-0025 |  | NTP | milestone | 0d | 2021-10-18 A | 2021-10-18 A | PSP-0003, PSP-0009, PSP-0006, PSP-0008, PSR-0003 FS-1d, PSR-0009, PSR-0008, PSR-0018, PSR-0023, PSR-0028, PSR-0033 | 100% |  |  |  |  |  |  |  | 0 | ADMIN | MILE | FM001 |  |  |  |  |  |  |
| MS-0026 |  | MOBILIZATION, INSTALL TVSSPP/SWPPP MEASURES |  | 9d | 2021-10-18 A | 2021-10-28 A | MS-0025 | 100% |  |  |  |  |  |  |  | 0 | ADMIN | MILE | FM001 |  |  |  |  |  |  |
| MS-0030 |  | CONTRACT DURATION | level of effort | 600d | 2021-10-18 A | 2024-10-01 | MS-0025 SS | 78% | 130d | 2021-10-18 | 2024-03-12 | -147d | 0d |  |  | 0 |  |  | FM001 | CPLP-NOV | MS-0030 | POLES | MS-0030 |  |  |
| MS-2571 |  | CONCRETE TEAMSTER STRIKE |  | 20d | 2021-12-06 A | 2022-03-21 A | MS-0026, MS-2581 FF | 100% |  | 2021-12-06 | 2022-01-04 |  |  |  |  | 0 |  |  |  |  |  |  |  |  |  |
| MS-2576 |  | WEATHER DELAYS - SNOW |  | 4d | 2021-12-27 A | 2021-12-31 A | MS-0026, 3-1665 | 100% |  | 2021-12-14 | 2021-12-17 |  |  |  |  | 0 |  |  |  |  |  |  |  |  |  |
| MS-2581 |  | SUSPEND ROADWAY DEMOLITION FM 074 |  | 5d | 2022-01-26 A | 2022-03-11 A | MS-0025 | 100% |  | 2022-01-26 | 2022-02-01 |  |  |  |  | 0 |  |  |  |  |  |  |  |  |  |
| MS-2556 |  | 19TH & UNION, COMPLETION MILESTONE | milestone | 0d | 2024-07-03 | 2024-07-03 | 3-2499 FF |  |  |  |  | -126d | 21d |  |  | 0 |  |  |  |  | MS-2556 |  | MS-2556 |  |  |
| MS-1137 |  | COMPLETE ZONE 1 | milestone | 0d | 2024-07-19 | 2024-07-19 | 1-1133 FF, 1-1135 FF, 1-1045 FF, 1-1043 FF, 1-0792 FF, 1-0790 FF, 1-0822 FF, 1-0086 FF, 1-0085 FF, 1-8020 FF, 1-2105 FF |  |  |  |  | -138d | 0d |  |  | 0 | ADMIN | MILE |  |  | MS-1137 |  | MS-1137 |  |  |
| MS-2561 |  | KC METRO, 20d NOTICE |  | 20d | 2024-07-22 | 2024-08-16 | MS-1137 |  |  |  |  | -115d | 0d |  |  | 0 |  |  |  |  | MS-2561 |  | MS-2561 |  |  |
| MS-2547 |  | COMPLETE ZONE 3 | milestone | 0d | 2024-07-30 | 2024-07-30 | 3-2501 FF, 3-2362 FF, 3-2364 FF, 3-2542 FF, 3-2379 FF, 3-2565 FF, 3-3300 FF, 3-2189 FF, 3-2267 FF, 3-3040 FF |  |  |  |  | -145d | 0d |  |  | 0 | ADMIN | MILE | FM001 |  | MS-2547 |  | MS-2547 | 133 |  |
| MS-2566 |  | KC METRO, 20d NOTICE |  | 20d | 2024-07-31 | 2024-08-27 | MS-2547 |  |  |  |  | -122d | 0d |  |  | 0 |  |  |  |  | MS-2566 |  | MS-2566 |  |  |
| MS-1674 |  | COMPLETE ZONE 2 | milestone | 0d | 2024-08-01 | 2024-08-01 | 2-1655 FF, MS-1137 FF, 2-1678 FF, 2-2527 FF |  |  |  |  | -147d | 0d |  |  | 0 | ADMIN | MILE |  |  | MS-1674 |  | MS-1674 | 147 |  |
| MS-2549 |  | SUBSTANTIAL COMPLETION | milestone | 0d | 2024-08-01 | 2024-08-01 | MS-1137 FF, MS-2547 FF, 2-1657, 2-1541, 2-1543, 2-1642, 2-1655, 2-1626, 2-1524, MS-0025, MS-1674 FF, LS-1290, SC-1664, SC-1669, 2-1643, LS-1475, MS-2556 FF, 1-1520, 1-1500, 1-1770, 1-1540, 1-1795, 1-1815, 1-1840, 1-1870, 1-1895, 1-1920, 1-1945, 1-1970, 1-1995, 2-2137, 2-2152, 2-2167, 2-2197, 2-2212, 3-2378, 3-2507, 3-2995, 3-3040, 3-3085, 3-2770, 3-2815, 3-2860, 3-2905, 3-2725, 3-2950, 2-2622, 2-2657, 3-3155, 3-3165, 3-3200, 3-3220, 3-3240, 3-3260, 3-3305, 3-3280, 1-2030, 1-2050, 1-2070, 1-2105, 1-2135, 1-2150, 1-2195, 1-2320, 1-2415, 1-2425, 1-2585, 1-2520, 1-2665, 1-2700, 1-2705, 2-1640, 1-2225, 1-2575, 3-2486, SC-0032, 3-2201, 1-6629, 1-6618, 1-6640, 1-6651, 1-6662, 1-6607, 3-9583, 3-9572, 3-9561, 3-9550, 1-10006, 3-2540, DSC-448, DSC-700, PCO010.01, PCO012.01, PCO014.01, PCO015.01, PCO018.01, PCO019.01, PCO020.01, PCO021.01, PCO024.01, PCO025.01, PCO026.01, PCO027.01, PCO028.01, PCO029.01, PCO030.01, PCO031.01, PCO037.01, PCO042.01, PCO043.01, PCO049.01, PCO052.01, PCO058.01, PCO059.01, PCO060.01, PCO062.01, PCO063.01, PCO064.01, PCO066.01, PCO069.01, PCO072.01, PCO077.01, PCO078.01, PCO079.01, PCO080.01, PCO081.01, PCO084.01, PCO085.01, PCO087.01, PCO088.01, PCO092.01, PCO093.01, PCO094.01, PCO096.01, PCO097.01, PCO100.01, PCO101.01, PCO103.01, PCO104.01, PCO105.01, PCO106.01, PCO108.01, PCO109.01, PCO110.01, PCO112.01, PCO113.01, PCO114.01, PCO116.01, PCO122.01, PCO123.01, PCO124.01, PCO126.01, PCO127.01, PCO128.01, PCO129.01, PCO130.01, PCO131.01, PCO133.01, PCO134.01, PCO135.01, PCO137.01, PCO138.01, PCO139.01, PCO140.01, PCO141.01, PCO142.01, PCO143.01, PCO144.01, PCO145.01, PCO146.01, PCO147.01, PCO148.01, PCO149.01, PCO150.01, PCO151.01, PCO155.01, PCO156.01, PCO158.01, PCO159.01, PCO162.01, PCO163.01, PCO165.01, PCO167.01, PCO168.01, PCO170.01, PCO171.01, PCO172.01, PCO173.01, PCO176.01, PCO178.01, PCO180.01, PCO181.01, PCO183.01, PCO184.01, PCO185.01, PCO186.01, PCO187.01, PCO188.01, PCO190.01, PCO192.01, PCO198.01, PCO199.01, PCO200.01, PCO201.01, PCO203.01, PCO205.01, PCO207.01, PCO212.01, PCO214.01, PCO215.01, PCO216.01, PCO217.01, PCO220.01, PCO221.01, PCO222.01, PCO225.01, PCO227.01, PCO229.01, PCO230.01, PCO231.01, PCO232.01, PCO233.01, PCO234.01, PCO235.01, PCO237.01, PCO238.01, PCO239.01, PCO240.01, PCO241.01, PCO242.01, PCO246.01, PCO247.01, PCO248.01, PCO250.01, PCO251.01, PCO252.01, PCO253.01, PCO255.01, PCO257.01, PCO258.01, PCO259.01, PCO264.01, PCO265.01, PCO266.01, PCO267.01, PCO269.01, PCO270.01, PCO271.01, PCO272.01, PCO273.01, PCO274.01, PCO276.01, PCO278.01, PCO279.01, PCO280.01, PCO281.01, PCO282.01, PCO283.01, PCO284.01, PCO285.01, PCO286.01, PCO289.01, PCO290.01, PCO292.01, PCO293.01, PCO294.01, PCO295.01, PCO296.01, PCO297.01, PCO298.01, PCO300.01, PCO301.01, PCO302.01, PCO304.01, PCO305.01, PCO306.01, PCO307.01, PCO308.01, PCO309.01, PCO310.01, PCO314.01, PCO315.01, PCO317.01, PCO318.01, PCO320.01, PCO322.01, PCO323.01, PCO324.01, PCO325.01, PCO328.01, PCO333.01, PCO334.01, PCO335.01, PCO336.01, PCO339.01, PCO340.01, PCO341.01, PCO343.01, PCO344.01, PCO345.01, PCO346.01, PCO347.01, PCO348.01, PCO351.01, PCO354.01, PCO355.01, PCO359.01, PCO361.01, PCO362.01, PCO363.01, PCO364.01, PCO365.01, PCO366.01, PCO367.01, PCO370.01, PCO371.01, PCO373.01, PCO374.01, PCO375.01, PCO376.01, PCO377.01, PCO379.01, PCO380.01, PCO382.01, PCO383.01, PCO384.01, PCO385.01, PCO386.01, PCO387.01, PCO388.01, PCO391.01, PCO392.01, PCO395.01, PCO397.01, PCO398.01, PCO399.01, PCO400.01, PCO401.01, PCO403.01, PCO404.01, PCO405.01, PCO406.01, PCO407.01, PCO409.01, PCO411.01, PCO413.01, PCO414.01, PCO415.01, PCO417.01, PCO421.01, PCO423.01, PCO424.01, PCO426.01, PCO428.01, PCO429.01, PCO431.01, PCO432.01, PCO434.01, PCO435.01, PCO436.01, PCO437.01, PCO438.01, PCO441.01, PCO442.01, PCO443.01, PCO445.01, PCO446.01, PCO447.01, PCO449.01, PCO450.01, PCO451.01, PCO452.01, PCO455.01, PCO457.01, PCO458.01, PCO461.01, PCO465.01, PCO466.01, PCO467.01, PCO468.01, PCO469.01, PCO470.01, PCO471.01, PCO472.01, PCO476.01, PCO477.01, PCO479.01, PCO481.01, PCO485.01, PCO486.01, PCO490.01, PCO491.01, PCO494.01, PCO495.01, PCO497.01, PCO498.01, PCO500.01, PCO504.01, PCO505.01, PCO506.01, PCO508.01, PCO509.01, PCO510.01, PCO513.01, PCO516.01, PCO517.01, PCO518.01, PCO519.01, PCO520.01, PCO521.01, PCO522.01, PCO527.01, PCO530.01, PCO532.01, PCO536.01, PCO540.01, PCO541.01, PCO542.01, PCO544.01, PCO548.01, PCO549.01, PCO550.01, PCO551.01, PCO552.01, PCO553.01, PCO557.01, PCO561.01, PCO562.01, PCO564.01, PCO565.01, PCO566.01, PCO570.01, PCO615.01, PCO625.01, PCO626.01, PCO627.01, PCO629.01, PCO631.01, PCO635.01, PCO636.01, PCO643.01, PCO647.01, PCO650.01, PCO652.01, PCO653.01, PCO654.01, PCO658.01, PCO659.01, PCO661.01, PCO664.01, PCO665.01, PCO666.01, PCO667.01, PCO673.01, PCO674.01, PCO675.01, PCO679.01, PCO694.01, PCO697.01, PCO700.01, PCO701.01 |  |  |  |  | -147d | 0d |  |  | 0 | ADMIN | MILE | FM001 | CPLP-NOV | MS-2549 | POLES | MS-2549 | 147 |  |
| MS-0067 |  | KC METRO, 20d NOTICE |  | 20d | 2024-08-02 | 2024-08-29 | MS-1137 FF, MS-1674 |  |  |  |  | -124d | 0d |  |  | 0 |  |  |  |  | MS-0067 |  | MS-0067 |  |  |
| MS-2550 |  | PUNCH LIST |  | 43d | 2024-08-02 | 2024-10-01 | MS-2549 |  |  |  |  | -147d | 0d |  |  | 0 | ADMIN | MILE | FM001 | CPLP-NOV | MS-2550 | POLES | MS-2550 | 147 |  |
| MS-0052 |  | OCS WIRE INSTALLATION KCM - W OF BDWY (120CD) | milestone | 0d | 2024-08-16 | 2024-08-16 | 1-1017 FF, 1-1047 FF, MS-1137 FF, MS-2561 FF |  |  |  |  | -115d | 32d |  |  | 0 | ADMIN | MILE |  |  | MS-0052 |  | MS-0052 |  | OCS |
| MS-0062 |  | OCS WIRE INSTALLATION KCM - E OF BDWY (180CD) | milestone | 0d | 2024-08-27 | 2024-08-27 | 2-1657 FF, 2-1604 FF, 3-2542 FF, MS-1674 FF, MS-2547 FF, MS-2566 FF |  |  |  |  | -122d | 25d |  |  | 0 | ADMIN | MILE |  |  | MS-0062 |  | MS-0062 |  | OCS |
| MS-0057 |  | OCS WIRE INSTALLATION KCM - BDWY INT (45CD) | milestone | 0d | 2024-08-29 | 2024-08-29 | 1-1017 FF, 1-1047 FF, MS-0067 FF, OCS-0043 FF |  |  |  |  | -124d | 23d |  |  | 0 | ADMIN | MILE |  |  | MS-0057 |  | MS-0057 |  | OCS |
| MS-2551 |  | PHYSICAL COMPLETION | milestone | 0d | 2024-10-01 | 2024-10-01 | MS-2550 FF, MS-0030 FF, LS-1185 FF, LS-1445 FF, MS-0062 FF, MS-0057 FF, MS-0052 FF |  |  |  |  | -147d | 0d | finish on or before 2024-03-07 |  | 0 | ADMIN | MILE | FM001 | CPLP-NOV | MS-2551 | POLES | MS-2551 | 147 |  |
|  | 2 | **SCHDULE CONSTRAINTS** |  |  | 2021-10-18 | 2024-05-21 |  |  |  |  |  |  |  |  |  |  |  |  |  |  |  |  |  |  |  |
| SC-0029 |  | NO WORK ALLOWED 1-5 TO BROADWAY & ON 9TH |  | 40d | 2021-10-18 A | 2021-12-15 A | MS-0025 | 100% |  |  |  |  |  |  |  | 0 |  |  |  |  |  |  |  |  |  |
| SC-0030 |  | NO POTHOLING ALLOWED 1-5 TO BROADWAY & ON 9TH |  | 20d | 2021-10-18 A | 2021-11-12 A | MS-0025 | 100% |  |  |  |  |  |  |  | 0 |  |  |  |  |  |  |  |  |  |
| SC-0027 |  | REMOVE TREES |  | 10d | 2021-10-29 A | 2021-11-11 A | MS-0026, PSR-0033 | 100% |  |  |  |  |  |  |  | 0 | ADMIN | MILE |  |  |  |  |  |  |  |
| SC-1674 |  | EXPIRATION OF HOLIDAY MORATORIUM | milestone | 0d | 2022-01-01 A | 2022-01-01 A | SC-0027 | 100% |  |  |  |  |  |  | 7 day per week | 0 |  |  |  |  |  |  |  |  |  |
| SC-0031 |  | ROUTE 2 DEENERGIZATION | milestone | 0d | 2022-03-19 A | 2022-03-19 A | MS-0025 | 100% |  | 2022-03-01 | 2022-03-01 |  |  |  |  | 0 |  |  |  |  |  |  |  |  |  |
| SC-0037 |  | 10TH AVE START WORK | milestone | 0d | 2023-05-01 A | 2023-05-01 A | PMP-0020, MS-0025 | 100% |  | 2023-05-31 | 2023-05-31 |  |  |  |  | 0 | ADMIN | MILE |  |  | SC-0037 |  | SC-0037 |  |  |
| SC-0047 |  | 10TH AVE DURATION (4 MO) |  | 80d | 2023-05-01 A | 2023-08-22 A | SC-0037 SS | 100% |  | 2023-05-31 | 2023-09-21 |  |  |  |  | 0 | ADMIN | MILE |  |  | SC-0047 |  | SC-0047 |  |  |
| SC-1664 |  | COMPLETE ROUTE 2 PAVING & CURBS | milestone | 0d | 2023-05-30 A | 2023-05-30 A | MS-0025 | 100% |  |  |  |  |  |  |  | 0 | ADMIN | MILE |  |  | SC-1664 |  | SC-1664 |  |  |
| SC-0032 |  | OCS POLES E OF BROADWAY INSTALLED | milestone | 0d | 2024-02-02 A | 2024-02-02 A | 2-1604 FF, 2-1657 FF, 3-2542 FF | 100% |  | 2024-03-01 | 2024-03-01 |  |  |  |  | 0 | ADMIN | MILE |  | CPLP-SEP | SC-0032 |  | SC-0032 |  | OCS |
| SC-1669 |  | COMPLETE ROUTE 2 SIGNALS & CHANN | milestone | 0d | 2024-05-21 | 2024-05-21 | 2-1657, MS-0025, 2-1537, 2-1489, 2-1516, 2-1540, 2-1613 |  |  |  |  | -96d | 51d | finish on 2024-01-31 |  | 0 | ADMIN | MILE | SCL-FC | CPLP-SEP | SC-1669 |  | SC-1669 |  |  |

Notes:
- MS-2581: Description: Notice of resumption was issued on 3/11 with work to begin on Monday, / March 14 2022. Activity ended on 3/11 to represent the 14th as being available / for demo.

| ID | WBS | Activity | Duration | Start | Finish | Predecessors | Complete | Planned start | Planned finish | Calendar | Resources | Cost | Actual cost | user_number6 | MBRT-DELAY | user_text2 | MBRT-ACTIVITY | MBRT-ZONE | user_text1 |
| --- | --- | --- | --- | --- | --- | --- | --- | --- | --- | --- | --- | --- | --- | --- | --- | --- | --- | --- | --- |
|  | 3 | **OCS LINE REMOVAL** |  | 2022-03-24 | 2022-09-25 |  |  |  |  |  |  |  |  |  |  |  |  |  |  |
| OCS-0036 |  | 20 DAY NOTIFICATION FOR KC METRO | 20d | 2022-03-24 A | 2022-04-20 A | MS-2571 | 100% | 2022-04-07 | 2022-05-04 |  |  |  |  | 0 | OCS |  |  |  |  |
| OCS-0041 |  | 20 DAY NOTIFICATION FOR KC METRO | 20d | 2022-03-24 A | 2022-04-20 A | OCS-0040 | 100% | 2022-07-01 | 2022-07-29 |  |  |  |  | 0 | OCS |  |  |  |  |
| OCS-0033 |  | INST OCS POLE FOUNDATIONS REQUIRED FOR LINE REMOVAL FROM 5TH TO BROADWAY 5 EACH | 10d | 2022-03-29 A | 2022-04-19 A | MS-0026, PMP-0015, MS-2571, OCS-0036 SS | 100% | 2022-03-08 | 2022-03-21 |  |  |  |  | 0 | OCS | ELECRICAL SUB,EA3 | OCS |  |  |
| OCS-0038 |  | INST FOUNDATIONS FOR OCS ROUTE 2 16 EACH, OCS LINE REMOVAL | 32d | 2022-04-04 A | 2022-04-27 A | OCS-0033 SS | 100% | 2022-04-14 | 2022-05-27 |  |  |  |  | 0 | OCS | ELECRICAL SUB,EA3 | OCS |  |  |
| OCS-0034 |  | POLE FOUNDATION CURE TIME, OCS LINE REMOVAL | 14d | 2022-04-14 A | 2022-04-29 A | OCS-0033 | 100% | 2022-04-14 | 2022-04-27 | 7 day per week |  |  |  | 0 | OCS |  |  |  |  |
| OCS-0035 |  | INST OWNER FUNISHED OCS POLES, OCS LINE REMOVAL | 2d | 2022-04-28 A | 2022-04-29 A | OCS-0034, PMP-0026 | 100% |  |  |  |  |  |  | 0 | OCS | ELECRICAL SUB,EA3 | OCS |  |  |
| OCS-0039 |  | FOUNDATION CURE TIME, OCS LINE REMOVAL | 14d | 2022-04-28 A | 2022-05-04 A | OCS-0038 | 100% | 2022-05-31 | 2022-06-17 |  |  |  |  | 0 | OCS |  |  |  |  |
| OCS-0037 |  | REM OCS LINES 5TH TO BROADWAY, OCS LINE REMOVAL | 45d | 2022-04-30 A | 2022-06-27 A | OCS-0036, OCS-0035 | 100% | 2022-04-30 | 2022-06-13 | 7 day per week |  |  |  | 0 | OCS | CITY | OCS |  |  |
| OCS-0040 |  | INST OWNER FURNISHED POLES FOR ROUTE 2, OCS LINE REMOVAL | 16d | 2022-05-05 A | 2022-05-10 A | OCS-0039 | 100% | 2022-05-31 | 2022-06-21 |  |  |  |  | 0 | OCS | ELECRICAL SUB,EA3 |  |  |  |
| OCS-0042 |  | REM OCS LINES FROM BROADWAY TO 16TH, OCS LINE REMOVAL | 60d | 2022-06-28 A | 2022-09-25 A | OCS-0041, SC-0031 SS, MS-0025 | 100% | 2022-07-30 | 2022-09-27 | 7 day per week |  |  |  | 0 | OCS | CITY | OCS |  |  |
| OCS-0043 |  | REM OCS LINES BROADWAY INTERSECTION, OCS LINE REMOVAL | 45d | 2022-09-21 A | 2022-09-25 A | OCS-0042 | 100% | 2022-10-29 | 2022-12-12 | 7 day per week |  |  |  | 0 |  |  | OCS |  |  |
|  | 4 | **ZONE 1 - 1ST AVE TO BROADWAY** |  | 2021-10-19 | 2024-07-19 |  |  |  |  |  |  |  |  |  |  |  |  |  |  |
|  | 1 | **POTHOLING FOUNDATIONS** |  | 2021-10-25 | 2023-02-24 |  |  |  |  |  |  |  |  |  |  |  |  |  |  |
| 1-0046 |  | SPRING AVE 1ST TO 6TH - 1 EACH, POTHOLING FOUNDATIONS | 1d | 2021-10-25 A | 2021-10-25 A | MS-0026 | 100% | 2021-10-29 | 2021-10-29 |  | MBRT BASE [8 h] | 8 |  | 8 |  | ELECRICAL SUB |  | ZONE-1 |  |
| PCO009.01 |  | DSC 4-Potholing 40W-1629-1 3rd and Madison Foundation obstruction | 5d | 2021-10-26 A | 2021-11-05 A | 1-0046 | 100% | 2023-02-27 | 2023-03-03 |  | MBRT DSC [64 h] | 64 | 64 | 64 |  |  |  |  | POLES |
| 1-0048 |  | MAD 1ST TO 6TH - 3 EACH, POTHOLING FOUNDATIONS | 2d | 2021-10-26 A | 2021-10-28 A | 1-0046 | 100% | 2021-11-01 | 2021-11-02 |  | MBRT BASE [24 h] | 24 | 24 | 24 |  | ELECRICAL SUB |  | ZONE-1 |  |
| 1-0068 |  | Pothole foundation at 3rd and Spring had obstruction will need to resume | 5d | 2021-10-26 A | 2022-03-18 A | 1-0046 | 100% | 2021-10-26 | 2021-11-01 |  | MBRT NEW |  |  | 776 |  |  |  |  |  |
| 1-0049 |  | SUBMITTAL REVIEW MAD 1ST TO 6TH, POTHOLING FOUNDATIONS | 10d | 2021-10-29 A | 2022-01-03 A | 1-0048 | 100% | 2021-11-03 | 2021-11-17 |  | MBRT BASE |  |  | 336 |  | CITY |  | ZONE-1 |  |
| 1-0047 |  | SUBMITTAL REVIEW SPRING 1ST TO 6TH, POTHOLING FOUNDATIONS | 10d | 2021-11-01 A | 2022-04-18 A | 1-0046 | 100% | 2021-11-01 | 2021-11-12 |  | MBRT BASE |  |  | 912 |  | CITY |  | ZONE-1 |  |
| 1-0052 |  | MAD 6TH TO BROADWAY - 30 EACH, POTHOLING FOUNDATIONS | 8d | 2021-11-29 A | 2021-12-14 A | 1-0068 SS, PCO009.01 | 100% | 2021-11-29 | 2021-12-08 |  | MBRT BASE [96 h] | 96 | 96 | 96 |  | ELECRICAL SUB |  | ZONE-1 |  |
| 1-0050 |  | SPRING 6TH TO 9TH - 5 EACH, POTHOLING FOUNDATIONS | 3d | 2021-12-15 A | 2022-01-06 A | 1-0048, SC-0030, MS-2576 | 100% | 2022-01-03 | 2022-01-05 |  | MBRT BASE [112 h] | 112 | 112 | 112 |  | ELECRICAL SUB |  | ZONE-1 |  |
| 1-0053 |  | SUBMITTAL REVIEW MAD 6TH TO BROADWAY, POTHOLING FOUNDATIONS | 10d | 2021-12-15 A | 2022-02-11 A | 1-0052 | 100% | 2022-01-07 | 2022-01-21 |  | MBRT BASE |  |  | 320 |  | CITY |  | ZONE-1 |  |
| PCO069.01 |  | DSC 43-Pole 40E-845-1 Concrete Conflict | 5d | 2021-12-20 A | 2022-05-13 A | MS-0025 | 100% | 2023-02-27 | 2023-03-03 |  | MBRT DSC [800 h] | 800 | 800 | 800 |  |  |  |  | POLES |
| 1-0054 |  | 9TH AVE - 8 EACH, POTHOLING FOUNDATIONS | 3d | 2022-01-12 A | 2022-01-26 A | 1-0052 | 100% | 2022-01-03 | 2022-01-05 |  | MBRT BASE [80 h] | 80 | 80 | 80 |  | ELECRICAL SUB |  | ZONE-1 |  |
| PCO106.01 |  | DSC 67-Pole 40E-119-1 Mad and 13th Conflict | 5d | 2022-01-19 A | 2022-01-26 A | MS-0025 | 100% | 2023-02-27 | 2023-03-03 |  | MBRT DSC [40 h] | 40 | 40 | 40 |  |  |  |  | POLES |
| 1-0051 |  | SUBMITTAL REVIEW SPRING 6TH TO 9TH, POTHOLING FOUNDATIONS | 10d | 2022-01-21 A | 2022-02-03 A | 1-0050, 1-0108 FF | 100% | 2022-03-01 | 2022-03-14 |  | MBRT BASE |  |  | 80 |  | CITY |  | ZONE-1 |  |
| 1-0055 |  | SUBMITTAL REVIEW 9TH AVE, POTHOLING FOUNDATIONS | 10d | 2022-01-27 A | 2022-02-10 A | 1-0054 | 100% | 2022-01-06 | 2022-01-20 |  | MBRT BASE |  |  | 88 |  | CITY |  | ZONE-1 |  |
| 1-0108 |  | Resumption of potholing 3rd and Spring | 1d | 2022-03-18 A | 2022-03-18 A | 1-0068, 1-0053 | 100% | 2022-03-02 | 2022-03-02 |  | MBRT NEW [8 h] | 8 | 8 | 8 |  |  |  |  |  |
| PCO412.01 |  | DSC 302-Tie Back Pole 40E-795-2 | 5d | 2022-10-10 A | 2022-10-20 A | MS-0025 | 100% | 2023-02-27 | 2023-03-03 |  | MBRT DSC [64 h] | 64 | 64 | 64 |  |  |  |  | POLES |
| PCO416.01 |  | DSC 306-40W-883-1 Tie Back conflict | 5d | 2022-10-12 A | 2022-10-14 A | PCO412.01 SF | 100% | 2023-02-27 | 2023-03-03 |  | MBRT DSC [16 h] | 16 | 16 | 16 |  |  |  |  | POLES |
| PCO481.01 |  | DSC 348-Pole Conflict Boylston to Broadway | 5d | 2022-11-29 A | 2023-02-24 A | PCO412.01, PCO416.01 | 100% | 2023-02-27 | 2023-03-03 |  | MBRT DSC [472 h] | 472 | 472 | 472 |  |  |  |  |  |

Notes:
- OCS-0040: Description: Need delivery date from Owner.

| ID | WBS | Activity | Duration | Start | Finish | Predecessors | Complete | Planned start | Planned finish | Total float | Free float | Calendar | Resources | Cost | Actual cost | user_text1 | user_number6 | user_text2 | MBRT-ZONE | MBRT-SCOPE | MBRT-TYPE | MBRT-RESP |
| --- | --- | --- | --- | --- | --- | --- | --- | --- | --- | --- | --- | --- | --- | --- | --- | --- | --- | --- | --- | --- | --- | --- |
|  | 2 | **WATERLINE WORK** |  | 2021-10-19 | 2023-02-24 |  |  |  |  |  |  |  |  |  |  |  |  |  |  |  |  |  |
| PCO001.01 |  | DSC 1-Utility Conflicts at 1st Ave WM Joint Potholing | 5d | 2021-10-19 A | 2021-10-20 A | MS-0025 | 100% | 2023-02-27 | 2023-03-03 |  |  |  | MBRT DSC [8 h] | 8 | 8 | ROADWAY | 8 |  |  |  |  |  |
| 1-0057 |  | JOINT CLAMPS 1ST & MAD, WATERLINE WORK | 2d | 2021-10-19 A | 2021-10-20 A | MS-0026, PCO001.01 SS | 100% | 2021-10-29 | 2021-11-01 |  |  |  | MBRT BASE [16 h] | 16 | 16 |  | 16 | UNS | ZONE-1 | WATERLINE | CIVIL |  |
| 1-0058 |  | JOINT CLAMPS 5TH & MAD, WATERLINE WORK | 2d | 2021-11-23 A | 2021-12-07 A | 1-0057 | 100% | 2021-11-02 | 2021-11-03 |  |  |  | MBRT BASE [72 h] | 72 | 72 |  | 72 | UNS | ZONE-1 | WATERLINE | CIVIL |  |
| PCO055.01 |  | DSC 34-Faulty Lead Joints and collapsed side sewer 5th and Madison | 5d | 2021-11-24 A | 2021-12-09 A | MS-0025 | 100% | 2023-02-27 | 2023-03-03 |  |  |  | MBRT DSC [72 h] | 72 | 72 |  | 72 |  |  |  |  |  |
| 1-0204 |  | Joint clamp at 5th delay | 5d | 2021-11-29 A | 2021-12-07 A | 1-0058 FF | 100% | 2021-09-20 | 2021-09-24 |  |  |  | MBRT NEW [40 h] | 40 | 56 |  | 56 |  |  |  |  |  |
| 1-0254 |  | JOINT CLAMPS 5TH & MAD, FINISH | 1d | 2021-12-07 A | 2021-12-07 A | 1-0204 FF, 1-0058 | 100% | 2021-12-14 | 2021-12-14 |  |  |  | MBRT NEW [8 h] | 8 | 8 |  | 8 |  |  |  |  |  |
| 1-0059 |  | JOINT CLAMPS SPRING & 8TH, WATERLINE WORK | 2d | 2021-12-16 A | 2021-12-17 A | SC-0029, 1-0057, PCO055.01 | 100% |  |  |  |  |  | MBRT BASE [16 h] | 16 | 16 |  | 16 | UNS | ZONE-1 | WATERLINE | CIVIL |  |
|  | 4 | **STAGE 1 - 8TH AVE** |  | 2023-02-09 | 2023-02-24 |  |  |  |  |  |  |  |  |  |  |  |  |  |  |  |  |  |
| 1-0061 |  | SPU PRE - DISINFECTION, STAGE 1 - 8TH AVE | 1d | 2023-02-09 A | 2023-02-09 A | MS-0026, PMP-0017 | 100% | 2023-01-31 | 2023-01-31 |  |  |  | MBRT BASE [8 h] | 8 | 8 |  | 8 |  | ZONE-1 | WATERLINE | CIVIL |  |
| 1-0107 |  | SPU & BAC-T TEST | 3d | 2023-02-10 A | 2023-02-13 A | 1-0061 | 100% | 2023-02-01 | 2023-02-03 |  |  |  | MBRT BASE [16 h] | 16 | 16 |  | 16 |  |  |  |  |  |
| PCO561.01 |  | DSC 396-Broken existing storm 8th and madison | 5d | 2023-02-11 A | 2023-02-24 A | MS-0025 | 100% | 2023-02-27 | 2023-03-03 |  |  |  | MBRT DSC [64 h] | 64 | 64 |  | 64 |  |  |  |  |  |
| 1-0062 |  | EXCAVATE & SHORE FOR WATERLINE, STAGE 1 - 8TH AVE | 1d | 2023-02-11 A | 2023-02-12 A | SC-0029, 1-0057, 1-0061, 1-0199 | 100% | 2023-02-11 | 2023-02-11 |  |  | WEEKEND ONLY | MBRT BASE [8 h] | 8 | 8 |  | 8 | WUNS,CITY | ZONE-1 | WATERLINE | CIVIL |  |
| PCO562.01 |  | DSC 397-Stage 1 2" Service leaking | 5d | 2023-02-13 A | 2023-02-24 A | MS-0025 | 100% | 2023-02-27 | 2023-03-03 |  |  |  | MBRT DSC [64 h] | 64 | 64 |  | 64 |  |  |  |  |  |
| 1-0199 |  | SPU CUSTOMER SHUTDOWN NOTIFICATION | 5d | 2023-02-13 A | 2023-02-17 A | PCS-0014 | 100% | 2023-02-06 | 2023-02-10 |  |  |  | MBRT BASE [40 h] | 40 |  |  | 40 |  |  |  |  |  |
| 1-0063 |  | SPU DEWATER EXISTING PIPE, STAGE 1 - 8TH AVE | 1d | 2023-02-18 A | 2023-02-18 A | 1-0062 | 100% | 2023-02-12 | 2023-02-12 |  |  | WEEKEND ONLY | MBRT BASE [8 h] | 8 | 8 |  | 8 | WUNS,CITY | ZONE-1 | WATERLINE | CIVIL | SPU |
| 1-0064 |  | SPU CUT & REM PIPE, STAGE 1 - 8TH AVE | 1d | 2023-02-18 A | 2023-02-18 A | 1-0063 SS, 1-0199, 1-0107 | 100% | 2023-02-12 | 2023-02-12 |  |  | WEEKEND ONLY | MBRT BASE [8 h] | 8 | 8 |  | 8 | WUNS,CITY | ZONE-1 | WATERLINE | CIVIL | SPU |
| 1-0065 |  | SPU INST 12" DI MAIN & HYDRANT, STAGE 1 - 8TH AVE | 1d | 2023-02-18 A | 2023-02-18 A | 1-0064 SS, 1-0061 | 100% | 2023-02-12 | 2023-02-12 |  |  | WEEKEND ONLY | MBRT BASE [8 h] | 8 | 8 |  | 8 | WUNS,CITY | ZONE-1 | WATERLINE | CIVIL | SPU |
| 1-0066 |  | SPU CONNECT MAIN LINE TO EXISTING LINES, STAGE 1 - 8TH AVE | 1d | 2023-02-18 A | 2023-02-18 A | 1-0065 SS | 100% | 2023-02-12 | 2023-02-12 |  |  | WEEKEND ONLY | MBRT BASE [8 h] | 8 | 8 |  | 8 | WUNS,CITY | ZONE-1 | WATERLINE | CIVIL | SPU |
| 1-0067 |  | SPU FLUSH WATER MAINS, STAGE 1 - 8TH AVE | 1d | 2023-02-18 A | 2023-02-18 A | 1-0066 SS | 100% | 2023-02-12 | 2023-02-12 |  |  | WEEKEND ONLY | MBRT BASE [8 h] | 8 | 8 |  | 8 | WUNS,CITY | ZONE-1 | WATERLINE | CIVIL | SPU |
|  | 19 | **STRIPING & SIGNS REMAINING ZONE 1** |  | 2024-04-25 | 2024-04-25 |  |  |  |  |  |  |  |  |  |  |  |  |  |  |  |  |  |
| 1-8010 |  | INST SIGNS, STRIPING AND SIGNS | 0d | 2024-04-25 | 2024-04-25 | 1-0810 |  |  |  | -77d | 0d |  | MBRT NEW |  |  |  | 0 |  |  |  |  |  |
| 1-8015 |  | CURE TIME, STRIPING AND SIGNS | 0d | 2024-04-25 | 2024-04-25 | 1-8010 |  |  |  | -77d | 0d |  | MBRT NEW |  |  |  | 0 |  |  |  |  |  |
| 1-8020 |  | CHANNELIZATION, STRIPING AND SIGNS | 0d | 2024-04-25 | 2024-04-25 | 1-8015 |  |  |  | -77d | 61d |  | MBRT NEW |  |  |  | 0 |  |  |  |  |  |

Notes:
- 1-0058: Description: Work could not start as bus stops were restricting us from moving into the / 5th-6th block.

| ID | WBS | Activity | Duration | Start | Finish | Predecessors | Complete | Planned start | Planned finish | Total float | Free float | Calendar | Resources | Cost | Actual cost | user_text2 | user_number6 | MBRT-ZONE | MBRT-LOCATION | MBRT-SCOPE | MBRT-TYPE | user_text1 | user_text10 | user_text8 |
| --- | --- | --- | --- | --- | --- | --- | --- | --- | --- | --- | --- | --- | --- | --- | --- | --- | --- | --- | --- | --- | --- | --- | --- | --- |
|  | 3 | **STORM** |  | 2021-10-21 | 2024-04-03 |  |  |  |  |  |  |  |  |  |  |  |  |  |  |  |  |  |  |  |
| 1-0069 |  | STORM MAD AND 1ST, STORM | 2d | 2021-10-21 A | 2021-10-25 A | 1-0057 | 100% | 2021-11-02 | 2021-11-03 |  |  |  | MBRT BASE [24 h] | 24 | 24 | UNS | 24 | ZONE-1 | 01 | STORM | CIVIL |  |  |  |
| 1-0070 |  | STORM MAD AND 2ND | 1d | 2021-10-26 A | 2021-10-26 A | 1-0069 | 100% | 2021-11-04 | 2021-11-04 |  |  |  | MBRT BASE [8 h] | 8 | 8 | UNS | 8 | ZONE-1 | 02 | STORM | CIVIL |  |  |  |
| PCO042.01 |  | DSC 28-Inlet Corner of 5th and Madison, Inlet 5 | 5d | 2021-11-16 A | 2021-11-17 A | MS-0025 | 100% | 2023-02-27 | 2023-03-03 |  |  |  | MBRT DSC [8 h] | 8 | 8 |  | 8 |  |  |  |  | STORM |  |  |
| 1-0072 |  | STORM MAD AND 5TH, PRIOR TO DSC 28 | 1d | 2021-11-16 A | 2021-11-16 A | 1-0070 | 100% | 2021-11-22 | 2021-11-22 |  |  |  | MBRT DSC [8 h] | 8 | 8 | UNS | 8 | ZONE-1 | 05 | STORM | CIVIL |  |  |  |
| 1-0156 |  | Wating for Direction from SDOT on DSC 28, STORM | 5d | 2021-11-17 A | 2022-04-19 A | 1-0072 | 100% | 2021-09-20 | 2021-09-24 |  |  |  | MBRT DSC [832 h] | 832 | 832 |  | 832 |  |  |  |  |  |  |  |
| PCO063.01 |  | DSC 40-Side Sewer Conflict Approx Sta 219+10 | 5d | 2021-12-08 A | 2021-12-09 A | MS-0025 | 100% | 2023-02-27 | 2023-03-03 |  |  |  | MBRT DSC [8 h] | 8 | 8 |  | 8 |  |  |  |  |  |  |  |
| 1-0073 |  | STORM MAD AND 7TH | 1d | 2021-12-20 A | 2021-12-21 A | 1-0072, SC-0029 | 100% | 2022-01-18 | 2022-01-18 |  |  |  | MBRT BASE [16 h] | 16 | 16 | UNS | 16 | ZONE-1 | 07 | STORM | CIVIL |  |  |  |
| 1-0074 |  | STORM MAD AND 9TH, BEFORE DSC 047/048 | 3d | 2021-12-22 A | 2021-12-23 A | 1-0073 | 100% | 2022-01-19 | 2022-01-21 |  |  |  | MBRT DSC [16 h] | 16 | 16 | UNS | 16 | ZONE-1 | 09 | STORM | CIVIL |  |  |  |
| PCO077.01 |  | DSC 46-Inlet 007 conflict | 5d | 2021-12-23 A | 2022-01-12 A | MS-0025 | 100% | 2023-02-27 | 2023-03-03 |  |  |  | MBRT DSC [96 h] | 96 | 96 |  | 96 |  |  |  |  | STORM |  |  |
| 1-0259 |  | STORM MAD AND 9TH, DSC 047/048 | 5d | 2021-12-27 A | 2022-01-07 A | 1-0074 | 100% | 2022-01-03 | 2022-01-07 |  |  |  | MBRT DSC [72 h] | 72 | 72 |  | 72 |  |  |  |  |  |  |  |
| PCO078.01 |  | DSC 47-Inlet 007.A Conflict Side Sewer Conflict | 5d | 2022-01-03 A | 2022-01-16 A | MS-0025 | 100% | 2023-02-27 | 2023-03-03 |  |  |  | MBRT DSC [80 h] | 80 | 80 |  | 80 |  |  |  |  | STORM |  |  |
| PCO079.01 |  | DSC 48-Inlet 007.B Conflict | 5d | 2022-01-04 A | 2022-01-05 A | MS-0025 | 100% | 2023-02-27 | 2023-03-03 |  |  |  | MBRT DSC [8 h] | 8 | 8 |  | 8 |  |  |  |  | STORM |  |  |
| 1-0079 |  | STORM MAD AND TERRY INLETS | 2d | 2022-01-04 A | 2022-01-05 A | 1-0259 SS | 100% | 2022-02-03 | 2022-02-04 |  |  |  | MBRT BASE [8 h] | 8 | 8 | UNS | 8 | ZONE-1 | TERRY | STORM | CIVIL |  |  |  |
| PCO084.01 |  | DSC 52-Inlet 8A conflicts | 5d | 2022-01-06 A | 2022-01-07 A | MS-0025 | 100% | 2023-02-27 | 2023-03-03 |  |  |  | MBRT DSC [8 h] | 8 | 8 |  | 8 |  |  |  |  | STORM |  |  |
| 1-0118 |  | STORM MAD TERRY INLETS, DSC 052 | 5d | 2022-01-06 A | 2022-01-14 A | 1-0079 | 100% | 2022-01-03 | 2022-01-07 |  |  |  | MBRT DSC [56 h] | 56 | 56 |  | 56 |  |  |  |  |  |  |  |
| 1-0082 |  | STORM MAD AND MINOR | 1d | 2022-01-07 A | 2022-01-07 A | 1-0118 SS | 100% | 2022-02-09 | 2022-02-09 |  |  |  | MBRT BASE [8 h] | 8 | 8 | UNS | 8 | ZONE-1 | MINOR | STORM | CIVIL |  |  |  |
| 1-0083 |  | STORM MAD AND SUMMIT | 3d | 2022-01-10 A | 2022-01-13 A | 1-0082 | 100% | 2022-02-10 | 2022-02-14 |  |  |  | MBRT BASE [32 h] | 32 | 32 | UNS | 32 | ZONE-1 | SUMMIT | STORM | CIVIL |  |  |  |
| 1-0279 |  | STORM MAD AND 9TH, AFTER DSC 047/048 | 5d | 2022-01-10 A | 2022-01-12 A | 1-0259 | 100% | 2022-01-03 | 2022-01-07 |  |  |  | MBRT DSC [16 h] | 16 | 16 |  | 16 |  |  |  |  |  |  |  |
| 1-0080 |  | STORM MAD AND TERRY MAINLINE | 2d | 2022-01-18 A | 2022-01-21 A | SC-0029, MS-2576, 1-0118 | 100% | 2022-01-01 | 2022-01-02 |  |  | WEEKEND ONLY | MBRT BASE |  | 8 | WUNS | 0 | ZONE-1 | TERRY | STORM | CIVIL |  |  |  |
| PCO105.01 |  | DSC 66-Spring & 9th, Inlet 4E conflicts | 5d | 2022-01-19 A | 2022-02-11 A | MS-0025 | 100% | 2023-02-27 | 2023-03-03 |  |  |  | MBRT DSC [136 h] | 136 | 136 |  | 136 |  |  |  |  | STORM |  |  |
| 1-0084 |  | STORM MAD AND BOYLSTON | 2d | 2022-01-24 A | 2022-01-26 A | 1-0083 SS, SC-0027 | 100% | 2022-02-15 | 2022-02-16 |  |  |  | MBRT BASE [24 h] | 24 | 24 | UNS | 24 | ZONE-1 | BOYLSTON | STORM | CIVIL |  |  |  |
| PCO112.01 |  | DSC 72-Boyleston Storm Shut Down ESO for Streetlight | 5d | 2022-01-26 A | 2022-02-04 A | MS-0025 | 100% | 2023-02-27 | 2023-03-03 |  |  |  | MBRT DSC [56 h] | 56 | 56 |  | 56 |  |  |  |  |  |  |  |
| PCO113.01 |  | DSC 73-Unlocated previously broked Conduit Boyston Storm | 5d | 2022-01-26 A | 2022-01-27 A | MS-0025 | 100% | 2023-02-27 | 2023-03-03 |  |  |  | MBRT DSC [8 h] | 8 | 8 |  | 8 |  |  |  |  |  |  |  |
| PCO122.01 |  | DSC 80-Inlet 4A connection duct bank conflict | 5d | 2022-01-29 A | 2022-02-11 A | MS-0025 | 100% | 2023-02-27 | 2023-03-03 |  |  |  | MBRT DSC [72 h] | 72 | 72 |  | 72 |  |  |  |  |  |  |  |
| PCO123.01 |  | DSC 81-Inlet 4B SW 9th and Spring Conflict W/ Ductbank | 5d | 2022-02-01 A | 2022-02-02 A | MS-0025 | 100% | 2023-02-27 | 2023-03-03 |  |  |  | MBRT DSC [8 h] | 8 | 8 |  | 8 |  |  |  |  | STORM |  |  |
| 1-0071 |  | STORM MAD AND 3RD | 2d | 2022-02-03 A | 2022-02-07 A | 1-0070, MS-2576 | 100% | 2022-02-03 | 2022-02-04 |  |  |  | MBRT BASE [24 h] | 24 | 24 | UNS | 24 | ZONE-1 | 03 | STORM | CIVIL |  |  |  |
| PCO130.01 |  | DSC 88-Inet 4C SE corner 9th & Spring, Steam conflict | 5d | 2022-02-08 A | 2022-02-09 A | MS-0025 | 100% | 2023-02-27 | 2023-03-03 |  |  |  | MBRT DSC [8 h] | 8 | 8 |  | 8 |  |  |  |  | STORM |  |  |
| 1-0078 |  | STORM SPRING AND 9TH, STORM | 3d | 2022-02-08 A | 2022-02-10 A | 1-0071 | 100% | 2022-02-11 | 2022-02-15 |  |  |  | MBRT BASE [24 h] | 24 | 24 | UNS | 24 | ZONE-1 | SPRING | STORM | CIVIL |  |  |  |
| PCO131.01 |  | DSC 89-Inlet 4D unlocated unknown conduit | 5d | 2022-02-09 A | 2022-02-10 A | MS-0025 | 100% | 2023-02-27 | 2023-03-03 |  |  |  | MBRT DSC [8 h] | 8 | 8 |  | 8 |  |  |  |  | STORM |  |  |
| PCO137.01 |  | DSC 94-Inlet 4 NE 8th and Spring, Root Conflict | 5d | 2022-02-11 A | 2022-02-12 A | MS-0025 | 100% | 2023-02-27 | 2023-03-03 |  |  |  | MBRT DSC [8 h] | 8 | 8 |  | 8 |  |  |  |  | STORM |  |  |
| 1-0077 |  | STORM SPRING AND 8TH | 4d | 2022-02-11 A | 2022-02-16 A | 1-0078 SF | 100% | 2022-02-07 | 2022-02-10 |  |  |  | MBRT BASE [32 h] | 32 | 32 | UNS | 32 | ZONE-1 | SPRING | STORM | CIVIL |  |  |  |
| PCO138.01 |  | DSC 95-Inlet Conection 3A Conflit | 5d | 2022-02-14 A | 2022-02-15 A | MS-0025 | 100% | 2023-02-27 | 2023-03-03 |  |  |  | MBRT DSC [8 h] | 8 | 8 |  | 8 |  |  |  |  | STORM |  |  |
| PCO139.01 |  | DSC 96-Inlet 3 conflict | 5d | 2022-02-15 A | 2022-02-16 A | MS-0025 | 100% | 2023-02-27 | 2023-03-03 |  |  |  | MBRT DSC [8 h] | 8 | 8 |  | 8 |  |  |  |  | STORM |  |  |
| PCO141.01 |  | DSC 98-CDF conflict inlet 2A | 5d | 2022-02-16 A | 2022-02-17 A | MS-0025 | 100% | 2023-02-27 | 2023-03-03 |  |  |  | MBRT DSC [8 h] | 8 | 8 |  | 8 |  |  |  |  | STORM |  |  |
| PCO145.01 |  | DSC 102-Tree Roots conflcit Inlet 2B | 5d | 2022-02-17 A | 2022-02-18 A | MS-0025 | 100% | 2023-02-27 | 2023-03-03 |  |  |  | MBRT DSC [8 h] | 8 | 8 |  | 8 |  |  |  |  | STORM |  |  |
| PCO146.01 |  | DSC 103-unlocated conduit conflict Inlet 2B | 5d | 2022-02-17 A | 2022-02-18 A | MS-0025 | 100% | 2023-02-27 | 2023-03-03 |  |  |  | MBRT DSC [8 h] | 8 | 8 |  | 8 |  |  |  |  | STORM |  |  |
| 1-0075 |  | STORM SPRING AND 7TH | 2d | 2022-02-17 A | 2022-02-18 A | 1-0077 | 100% | 2022-02-03 | 2022-02-04 |  |  |  | MBRT BASE [16 h] | 16 | 16 | UNS | 16 | ZONE-1 | SPRING | STORM | CIVIL |  |  |  |
| PCO148.01 |  | DSC 105-Inlet 1G Conflict with Strain pole 5th and Spring | 5d | 2022-02-21 A | 2022-02-22 A | MS-0025 | 100% | 2023-02-27 | 2023-03-03 |  |  |  | MBRT DSC [8 h] | 8 | 8 |  | 8 |  |  |  |  | STORM |  |  |
| 1-0076 |  | STORM SPRING AND 5TH, STORM | 2d | 2022-02-21 A | 2022-02-22 A | 1-0074, 1-0279, 1-0075 | 100% | 2022-02-01 | 2022-02-02 |  |  |  | MBRT BASE [8 h] | 8 | 8 | UNS | 8 | ZONE-1 | SPRING | STORM | CIVIL |  |  |  |
| 1-0426 |  | INSTALL FILTER VAULT #2 | 5d | 2022-03-24 A | 2022-03-25 A | 1-0076 | 100% | 2022-03-24 | 2022-03-30 |  |  |  | MBRT NEW [40 h] | 40 | 16 |  | 16 |  |  |  |  |  |  |  |
| PCO184.01 |  | DSC 130-Filter Vault #2 Connection Conflict | 5d | 2022-03-28 A | 2022-06-24 A | MS-0025 | 100% | 2023-02-27 | 2023-03-03 |  |  |  | MBRT DSC [504 h] | 504 | 504 |  | 504 |  |  |  |  |  |  |  |
| 1-0456 |  | DSC 130 - FILTER VAULT CONNECTION CONFLICT | 5d | 2022-03-28 A | 2022-06-10 A | 1-0426 | 100% | 2022-05-02 | 2022-05-06 |  |  |  | MBRT DSC [432 h] | 432 | 432 |  | 432 |  |  |  |  |  |  |  |
| PCO190.01 |  | DSC 136-FM 130 Inlet conflict | 5d | 2022-03-30 A | 2022-03-31 A | MS-0025 | 100% | 2023-02-27 | 2023-03-03 |  |  |  | MBRT DSC [8 h] | 8 | 8 |  | 8 |  |  |  |  | STORM |  |  |
| PCO222.01 |  | DSC 160-Inltet 5 Added Conflict | 5d | 2022-04-20 A | 2022-04-22 A | MS-0025 | 100% | 2023-02-27 | 2023-03-03 |  |  |  | MBRT DSC [16 h] | 16 | 16 |  | 16 |  |  |  |  | STORM |  |  |
| 1-0106 |  | MADISON ON 5TH AFTER DSC 28, STORM | 5d | 2022-04-22 A | 2022-04-22 A | 1-0156, MS-2576 | 100% | 2022-03-31 | 2022-04-06 |  |  |  | MBRT DSC [8 h] | 8 | 8 |  | 8 |  |  |  |  |  |  |  |
| PCO272.01 |  | DSC 198-Steam line MH Madison 1st to 2nd | 5d | 2022-06-03 A | 2022-06-04 A | MS-0025 | 100% | 2023-02-27 | 2023-03-03 |  |  |  | MBRT DSC [8 h] | 8 | 8 |  | 8 |  |  |  |  | STORM |  |  |
| 1-0556 |  | FINISH FILTER VAULT #2 INSTALLATION | 1d | 2022-06-13 A | 2022-06-13 A | 1-0456 | 100% | 2022-06-30 | 2022-06-30 |  |  |  | MBRT NEW [8 h] | 8 | 8 |  | 8 |  |  |  |  |  |  |  |
| 1-0081 |  | STORM MAD AND BOREN | 2d | 2022-06-14 A | 2022-06-15 A | 1-0079, 1-0118, 1-0076 | 100% | 2022-06-30 | 2022-07-01 |  |  |  | MBRT BASE [16 h] | 16 | 16 | UNS | 16 | ZONE-1 | BOREN | STORM | CIVIL |  |  |  |
| PCO298.01 |  | DSC 220-Existing Cracked CB Conection Pipe at Terry | 5d | 2022-06-30 A | 2022-07-02 A | MS-0025 | 100% | 2023-02-27 | 2023-03-03 |  |  |  | MBRT DSC [16 h] | 16 | 16 |  | 16 |  |  |  |  | STORM |  |  |
| 1-0086 |  | STORM SPRING & 2ND PIPE LINING | 1d | 2023-05-31 A | 2023-05-31 A | PSR-0014, 1-0268 SS, MS-2576 | 100% |  |  |  |  |  | MBRT BASE [8 h] | 8 | 8 |  | 8 |  |  |  |  |  | 1-0086 | 1-0086 |
| 1-0085 |  | STORM MAD & BROADWAY PIPE LINING | 2d | 2024-04-02 | 2024-04-03 | SC-0029, PSR-0014, MS-2576 |  |  |  | -62d | 76d |  | MBRT BASE [16 h] | 16 |  | PIPE LINING SUB | 16 | ZONE-1 | BROADWAY | STORM | CIVIL |  | 1-0085 | 1-0085 |

Notes:
- 1-0156: Changes: Weather delays week of 12/27
- 1-0074: Description: During installation of / Inlet 7 at the NE corner of Madison and 9 th we encountered a duct / bank in conflict with the inlet. We backfilled the excavation and will return to / the work when we have direction. All the time today on Inlet 007 was tracked and / will be submitted for reimbursement.
- 1-0118: Description: During / installation of inlet 8A we discovered multiple unknown utilities in conflict / with the structure. We have tracked the time and will await direction from the / city.

| ID | WBS | Activity | Duration | Start | Finish | Predecessors | Complete | Planned start | Planned finish | Resources | Cost | Actual cost | user_number6 | user_text2 | MBRT-ZONE | MBRT-SCOPE | MBRT-TYPE | user_text10 | user_text8 | MBRT-LOCATION |
| --- | --- | --- | --- | --- | --- | --- | --- | --- | --- | --- | --- | --- | --- | --- | --- | --- | --- | --- | --- | --- |
|  | 4 | **DUCT BANK BETWEEN 3RD AND 4TH MADISON** |  | 2021-11-02 | 2023-04-04 |  |  |  |  |  |  |  |  |  |  |  |  |  |  |  |
| PCO020.01 |  | DSC 13-Prime DSC 001 Ductbank 3rd Ave Change | 5d | 2021-11-02 A | 2022-06-03 A | MS-0025 | 100% | 2023-02-27 | 2023-03-03 | MBRT DSC [1160 h] | 1,160 | 1,160 | 1160 |  |  |  |  |  |  |  |
| 1-1165 |  | POTHOLE DUCTBANK SDOT DIRECTED | 8d | 2022-06-01 A | 2022-06-30 A | 1-0271 | 100% | 2022-05-31 | 2022-06-09 | MBRT NEW [64 h] | 64 | 176 | 176 | DBC | ZONE-1 | DUCTBANK | ELECTRICAL |  |  |  |
| 1-1170 |  | SDOT REVIEW POTHOLE DATA | 3d | 2022-07-07 A | 2022-09-29 A | 1-1165 | 100% | 2022-07-01 | 2022-07-06 | MBRT NEW |  |  | 480 | DBC | ZONE-1 | DUCTBANK | ELECTRICAL |  |  |  |
| 1-1280 |  | CITY DELAY - CHANGE TO COUPLINGS | 3d | 2022-09-30 A | 2022-11-21 A | 1-1170 | 100% | 2022-10-03 | 2022-10-05 | MBRT NEW [24 h] | 24 | 288 | 288 | DBC | ZONE-1 | DUCTBANK | ELECTRICAL |  |  |  |
| 1-1300 |  | CITY DELAY - NEGOTIATE CHANGE ORDER FOR CHANGES | 3d | 2022-11-22 A | 2023-01-06 A | 1-1280 | 100% | 2023-01-03 | 2023-01-05 | MBRT NEW [24 h] | 24 | 240 | 240 | DBC | ZONE-1 | DUCTBANK | ELECTRICAL |  |  |  |
| 1-0087 |  | TRENCH DUCT BANK, DUCT BANK BETWEEN 3RD & 4TH MAD | 3d | 2023-01-09 A | 2023-01-20 A | 1-0071, MS-2576, MS-2571, 1-1170, 1-1280, 1-1300 | 100% | 2023-01-06 | 2023-01-10 | MBRT BASE [72 h] | 72 | 72 | 72 | DBC | ZONE-1 | DUCTBANK | ELECTRICAL |  |  |  |
| 1-0088 |  | INST DUCT BANK, DUCT BANK BETWEEN 3RD & 4TH MAD | 3d | 2023-01-09 A | 2023-01-20 A | 1-0087 SS, 1-1170 | 100% | 2023-01-11 | 2023-01-13 | MBRT BASE [72 h] | 72 | 72 | 72 | ELECRICAL SUB | ZONE-1 |  |  |  |  |  |
| 1-0089 |  | BACKFILL DUCT BANK, DUCT BANK BETWEEN 3RD & 4TH MAD | 2d | 2023-01-09 A | 2023-01-20 A | 1-0088 | 100% | 2023-01-17 | 2023-01-18 | MBRT BASE [72 h] | 72 | 72 | 72 | EBC | ZONE-1 |  |  |  |  |  |
| PCO507.01 |  | DSC 362-Prime Ductbank 3rd Ave Concrete Obstruction | 5d | 2023-01-11 A | 2023-02-26 A | MS-0025 | 100% | 2023-02-27 | 2023-03-03 | MBRT DSC [248 h] | 248 | 248 | 248 |  |  |  |  |  |  |  |
| 1-1335 |  | DELAY FOR NORTHERN VAULT ALIGNMENT , DUCT BANK BETWEEN 3RD & 4TH MAD | 2d | 2023-01-13 A | 2023-03-03 A | 1-0087 | 100% | 2023-01-17 | 2023-01-18 | MBRT NEW [16 h] | 16 | 264 | 264 | EBC | ZONE-1 |  |  |  |  |  |
| 1-1360 |  | DELAY AWAITING RESPONSE TO CHANGES IN SOUTHERN VAULT PENETRATION | 3d | 2023-01-13 A | 2023-03-03 A | 1-0088 | 100% | 2023-01-03 | 2023-01-05 | MBRT NEW |  |  | 272 | DBC | ZONE-1 | DUCTBANK | ELECTRICAL |  |  |  |
| PCO518.01 |  | DSC 370-Vault 3rd to 4th Madison not square | 5d | 2023-01-17 A | 2023-01-21 A | MS-0025 | 100% | 2023-02-27 | 2023-03-03 | MBRT DSC [32 h] | 32 | 32 | 32 |  |  |  |  |  |  |  |
| PCO549.01 |  | DSC 386-Concrete collar around Vault 3rd to 4th | 5d | 2023-01-31 A | 2023-02-26 A | MS-0025 | 100% | 2023-02-27 | 2023-03-03 | MBRT DSC [144 h] | 144 | 144 | 144 |  |  |  |  |  |  |  |
| 1-1340 |  | COMPLETE INSTALLATION AFTER OBSTRUCTION REMOVAL AND CHANGES | 10d | 2023-03-06 A | 2023-04-04 A | 1-1335, PCO507.01, 1-1360, 1-0089 | 100% | 2023-03-06 | 2023-03-17 | MBRT NEW [80 h] | 80 | 176 | 176 | EBC | ZONE-1 |  |  | 1-1340 | 1-1340 |  |
|  | 5 | **TEMPORARY SIGNALS** |  | 2021-10-20 | 2022-10-19 |  |  |  |  |  |  |  |  |  |  |  |  |  |  |  |
| 1-0091 |  | TEMP SIG SPRING & 1ST, TEMPORARY SIGNALS | 2d | 2021-10-20 A | 2021-10-20 A | MS-0026, PSR-0011, PSR-0010 | 100% | 2021-10-29 | 2021-11-01 | MBRT BASE [8 h] | 8 | 8 | 8 | ELECRICAL SUB | ZONE-1 |  | TEMPSIG |  |  | SPRING |
| 1-0092 |  | TEMP SIG SPRING & 3RD, TEMPORARY SIGNALS | 2d | 2021-10-21 A | 2021-10-21 A | 1-0091 | 100% | 2021-11-02 | 2021-11-03 | MBRT BASE [8 h] | 8 | 8 | 8 | ELECRICAL SUB | ZONE-1 |  | TEMPSIG |  |  | SPRING |
| 1-0095 |  | TEMP SIG MAD & 1ST, TEMPORARY SIGNALS | 2d | 2021-10-21 A | 2021-10-21 A | MS-0025 | 100% | 2021-11-08 | 2021-11-09 | MBRT BASE [8 h] | 8 | 8 | 8 | ELECRICAL SUB | ZONE-1 |  | TEMPSIG |  |  | 01 |
| 1-0096 |  | TEMP SIG MAD & 3RD, TEMPORARY SIGNALS | 2d | 2021-10-22 A | 2021-10-22 A | 1-0095 | 100% | 2021-11-10 | 2021-11-11 | MBRT BASE [8 h] | 8 | 8 | 8 | ELECRICAL SUB | ZONE-1 |  | TEMPSIG |  |  | 03 |
| 1-0097 |  | TEMP SIG MAD & 6TH, TEMPORARY SIGNALS | 2d | 2021-11-09 A | 2021-11-10 A | 1-0096 | 100% | 2021-11-12 | 2021-11-16 | MBRT BASE [16 h] | 16 | 16 | 16 | ELECRICAL SUB | ZONE-1 |  | TEMPSIG |  |  | 06 |
| 1-0098 |  | TEMP SIG MAD & 8TH, TEMPORARY SIGNALS | 2d | 2022-01-06 A | 2022-01-06 A | 1-0097, 1-0180 FF | 100% | 2022-01-07 | 2022-01-10 | MBRT BASE [8 h] | 8 | 8 | 8 | ELECRICAL SUB | ZONE-1 |  | TEMPSIG |  |  | 08 |
| 1-0099 |  | TEMP SIG MAD & 9TH, TEMPORARY SIGNALS | 2d | 2022-01-06 A | 2022-01-06 A | 1-0098 | 100% | 2022-01-11 | 2022-01-12 | MBRT BASE [8 h] | 8 | 8 | 8 | ELECRICAL SUB | ZONE-1 |  | TEMPSIG |  |  | 09 |
| 1-0180 |  | TEMP SIG MAD & 7TH, TEMPORARY SIGNALS | 2d | 2022-01-06 A | 2022-01-06 A | 1-0097 | 100% | 2022-01-31 | 2022-02-01 | MBRT NEW [16 h] | 16 | 8 | 8 |  |  |  |  |  |  |  |
| 1-0100 |  | TEMP SIG MAD & TERRY, TEMPORARY SIGNALS | 2d | 2022-01-24 A | 2022-01-26 A | 1-0099 | 100% | 2022-01-13 | 2022-01-14 | MBRT BASE [24 h] | 24 | 24 | 24 | ELECRICAL SUB | ZONE-1 |  | TEMPSIG |  |  | TERRY |
| 1-0102 |  | TEMP SIG MAD & MINOR, TEMPORARY SIGNALS | 2d | 2022-02-14 A | 2022-02-15 A | 1-0180 | 100% | 2022-03-03 | 2022-03-04 | MBRT BASE [16 h] | 16 | 16 | 16 | ELECRICAL SUB | ZONE-1 |  | TEMPSIG |  |  | MINOR |
| 1-0103 |  | TEMP SIG MAD & SUMMIT, TEMPORARY SIGNALS | 2d | 2022-02-16 A | 2022-02-17 A | 1-0102 | 100% | 2022-03-07 | 2022-03-08 | MBRT BASE [16 h] | 16 | 16 | 16 | ELECRICAL SUB | ZONE-1 |  | TEMPSIG |  |  | SUMMIT |
| PCO170.01 |  | DSC 118-KCM relocate WB Boren BS refusal | 5d | 2022-03-18 A | 2022-04-13 A | MS-0025 | 100% | 2023-02-27 | 2023-03-03 | MBRT DSC [144 h] | 144 | 144 | 144 |  |  |  |  |  |  |  |
| 1-0101 |  | TEMP SIG MAD & BOREN, TEMPORARY SIGNALS | 2d | 2022-03-22 A | 2022-03-23 A | 1-0100 | 100% | 2022-03-31 | 2022-04-01 | MBRT BASE [16 h] | 16 | 16 | 16 | ELECRICAL SUB | ZONE-1 |  | TEMPSIG |  |  | BOREN |
| 1-0104 |  | TEMP SIG MAD & BOYLSTON, TEMPORARY SIGNALS | 2d | 2022-04-22 A | 2022-04-22 A | 1-0103 | 100% | 2022-03-31 | 2022-04-01 | MBRT BASE [8 h] | 8 | 8 | 8 | ELECRICAL SUB | ZONE-1 |  | TEMPSIG |  |  | BOYLSTON |
| 1-0094 |  | TEMP SIG SPRING & 7TH, TEMPORARY SIGNALS | 2d | 2022-05-11 A | 2022-05-12 A | SC-0029, 1-0097, MS-2576 | 100% | 2022-06-02 | 2022-06-03 | MBRT BASE [16 h] | 16 | 16 | 16 | ELECRICAL SUB | ZONE-1 |  | TEMPSIG |  |  | SPRING |
| 1-0105 |  | TEMP SIG MAD & BROADWAY, TEMPORARY SIGNALS | 2d | 2022-06-03 A | 2022-06-06 A | 1-0104 | 100% | 2022-06-30 | 2022-07-01 | MBRT BASE [16 h] | 16 | 16 | 16 | ELECRICAL SUB | ZONE-1 |  | TEMPSIG |  |  | BROADWAY |
| 1-0093 |  | TEMP SIG SPRING & 5TH, TEMPORARY SIGNALS | 2d | 2022-10-18 A | 2022-10-19 A | 1-0092, MS-2576 | 100% | 2022-10-03 | 2022-10-04 | MBRT BASE [16 h] | 16 | 16 | 16 | ELECRICAL SUB | ZONE-1 |  | TEMPSIG |  |  | SPRING |

Notes:
- 1-0092: Description: Not currently needed

| ID | WBS | Activity | Duration | Start | Finish | Predecessors | Complete | Planned start | Planned finish | Calendar | Resources | Cost | Actual cost | user_text2 | user_number6 | MBRT-ZONE | MBRT-LOCATION | MBRT-SCOPE | MBRT-TYPE | MBRT-ROADWAY | MBRT-SIDE | MBRT-RESP | user_text10 | user_text8 | MBRT-DELAY |
| --- | --- | --- | --- | --- | --- | --- | --- | --- | --- | --- | --- | --- | --- | --- | --- | --- | --- | --- | --- | --- | --- | --- | --- | --- | --- |
|  | 6 | **ROADWAY WORK** |  | 2021-10-21 | 2023-11-28 |  |  |  |  |  |  |  |  |  |  |  |  |  |  |  |  |  |  |  |  |
|  | 1 | **1ST TO BROADWAY BETWEEN INTERSECTIONS** |  | 2021-10-21 | 2023-11-28 |  |  |  |  |  |  |  |  |  |  |  |  |  |  |  |  |  |  |  |  |
|  | 8 | **SPRING 1ST TO 2ND NORTH SIDE** |  | 2022-05-16 | 2022-05-25 |  |  |  |  |  |  |  |  |  |  |  |  |  |  |  |  |  |  |  |  |
| 1-0152 |  | DEMO ROAD - COMMON EX - TYPE 2, SPRING 1ST TO 2ND NORTH SIDE | 3d | 2022-05-16 A | 2022-05-18 A | 1-0271 SS | 100% | 2022-06-22 | 2022-06-24 |  | MBRT BASE [24 h] | 24 | 24 | GRM | 24 | ZONE-1 | SPRING | DEMOPREP | ROADWAY | RDWY | NORTH |  |  |  |  |
| 1-0153 |  | CONDUIT RD CROSSING, SPRING 1ST TO 2ND NORTH SIDE | 3d | 2022-05-19 A | 2022-05-20 A | 1-0152 SS | 100% | 2022-06-22 | 2022-06-24 |  | MBRT BASE [16 h] | 16 | 16 | ELECRICAL SUB | 16 | ZONE-1 | SPRING | ELECTRICAL | ROADWAY | RDWY | NORTH | PRIME |  |  |  |
| 1-0154 |  | ROADWAY PAVING - 2 POURS, SPRING 1ST TO 2ND NORTH SIDE | 3d | 2022-05-19 A | 2022-05-20 A | 1-0152, 1-0153 | 100% | 2022-06-27 | 2022-06-29 |  | MBRT BASE [16 h] | 16 | 16 | COL | 16 | ZONE-1 | SPRING | PAVE-R | ROADWAY | RDWY | NORTH |  |  |  |  |
| 1-0155 |  | CONCRETE CURE, SPRING 1ST TO 2ND NORTH SIDE | 3d | 2022-05-23 A | 2022-05-25 A | 1-0154 | 100% |  |  | 7 day per week | MBRT BASE |  |  |  | 24 | ZONE-1 | SPRING |  | ROADWAY | RDWY | NORTH |  |  |  |  |
|  | 27 | **SPRING 2ND TO 3RD NORTH SIDE** |  | 2022-05-25 | 2023-05-09 |  |  |  |  |  |  |  |  |  |  |  |  |  |  |  |  |  |  |  |  |
| PCO258.01 |  | DSC 188-Conduit conflict 3rd and Spring | 5d | 2022-05-25 A | 2022-06-17 A | MS-0025 | 100% | 2023-02-27 | 2023-03-03 |  | MBRT DSC [128 h] | 128 | 128 |  | 128 |  |  |  |  |  |  |  |  |  |  |
| 1-1140 |  | DEMO ROAD - COMMON EX - TYPE 2, SPRING 2ND TO 3RD NORTH SIDE | 3d | 2022-09-15 A | 2022-09-20 A | 1-0155 | 100% | 2022-09-07 | 2022-09-09 |  | MBRT NEW [24 h] | 24 | 32 | GRM | 32 | ZONE-1 | SPRING | DEMOPREP | ROADWAY | RDWY | NORTH |  |  |  |  |
| 1-1145 |  | CONDUIT RD CROSSING, SPRING 2ND TO 3RD NORTH SIDE | 3d | 2022-09-19 A | 2022-10-05 A | 1-1140 SS | 100% | 2022-09-07 | 2022-09-09 |  | MBRT NEW [24 h] | 24 | 104 | ELECRICAL SUB | 104 | ZONE-1 | SPRING | ELECTRICAL | ROADWAY | RDWY | NORTH | PRIME |  |  |  |
| 1-1285 |  | VAULT WORK, SPRING 2ND TO 3RD NORTH SIDE | 3d | 2022-10-06 A | 2022-10-14 A | 1-1145 | 100% | 2022-09-07 | 2022-09-09 |  | MBRT NEW [24 h] | 24 | 56 | ELECRICAL SUB | 56 | ZONE-1 | SPRING | ELECTRICAL | ROADWAY | RDWY | NORTH | PRIME |  |  |  |
| PCO423.01 |  | DSC 309-NW 3rd & Spring Extra Depth Conduit | 5d | 2022-10-19 A | 2022-10-20 A | MS-0025 | 100% | 2023-02-27 | 2023-03-03 |  | MBRT DSC [8 h] | 8 | 8 |  | 8 |  |  |  |  |  |  |  |  |  |  |
| PCO426.01 |  | DSC 311-Shallow conduit NW 3rd and Spring | 5d | 2022-10-20 A | 2022-10-21 A | MS-0025 | 100% | 2023-02-27 | 2023-03-03 |  | MBRT DSC [8 h] | 8 | 8 |  | 8 |  |  |  |  |  |  |  |  |  |  |
| PCO434.01 |  | DSC 316-Zao Conduit CDF encased NW 3rd and Spring | 5d | 2022-10-24 A | 2022-10-27 A | MS-0025 | 100% | 2023-02-27 | 2023-03-03 |  | MBRT DSC [24 h] | 24 | 24 |  | 24 |  |  |  |  |  |  |  |  |  |  |
| PCO438.01 |  | DSC 320-Concrete Delays VP Visit spring 1-3rd | 5d | 2022-10-26 A | 2022-10-27 A | MS-0025 | 100% | 2023-02-27 | 2023-03-03 |  | MBRT DSC [8 h] | 8 | 8 |  | 8 |  |  |  |  |  |  |  |  |  |  |
| 1-1150 |  | ROADWAY PAVING - 2 POURS, SPRING 2ND TO 3RD NORTH SIDE | 3d | 2022-10-27 A | 2022-10-31 A | 1-1140, 1-1145, 1-1285 | 100% | 2022-10-06 | 2022-10-10 |  | MBRT NEW [24 h] | 24 | 24 | COL | 24 | ZONE-1 | SPRING | PAVE-R | ROADWAY | RDWY | NORTH |  |  |  |  |
| 1-1305 |  | EXTRA WORK FOR VAULTS, SPRING 2ND TO 3RD NORTH SIDE | 3d | 2023-04-06 A | 2023-04-19 A | 1-1155 | 100% | 2023-03-31 | 2023-04-02 | 7 day per week | MBRT NEW [24 h] | 24 | 112 |  | 112 | ZONE-1 | SPRING |  | ROADWAY | RDWY | NORTH |  | 1-1305 | 1-1305 |  |
| 1-1310 |  | REMOVE ADDITIONAL ROADWAY TYPE 2, SPRING 2ND TO 3RD NORTH SIDE | 3d | 2023-04-20 A | 2023-04-24 A | 1-1305 | 100% | 2023-04-03 | 2023-04-05 | 7 day per week | MBRT NEW [24 h] | 24 | 40 |  | 40 | ZONE-1 | SPRING |  | ROADWAY | RDWY | NORTH |  | 1-1310 | 1-1310 |  |
| PCO647.01 |  | DSC 457-UKNOWN CONCRETE PIPE | 5d | 2023-04-25 A | 2023-04-25 A | MS-0025 | 100% | 2023-02-27 | 2023-03-03 |  | MBRT DSC [8 h] | 8 | 8 |  | 8 |  |  |  |  |  |  |  | PCO647.01 | PCO647.01 |  |
| 1-1315 |  | ROADWAY CONCRETE, SPRING 2ND TO 3RD NORTH SIDE | 3d | 2023-04-26 A | 2023-04-27 A | 1-1310 | 100% | 2023-04-06 | 2023-04-08 | 7 day per week | MBRT NEW [24 h] | 24 | 16 |  | 16 | ZONE-1 | SPRING |  | ROADWAY | RDWY | NORTH |  | 1-1315 | 1-1315 |  |
| 1-2945 |  | OWNER CHANGE FULL DEPTH ASPHALT TO CONCRETE BASE PAVING | 3d | 2023-05-08 A | 2023-05-09 A | 1-1315 | 100% | 2023-04-06 | 2023-04-08 | 7 day per week | MBRT NEW [24 h] | 24 | 16 |  | 16 | ZONE-1 | SPRING |  | ROADWAY | RDWY | NORTH |  | 1-2945 | 1-2945 |  |
|  | 1 | **SPRING 1ST TO 3RD SOUTH SIDE** |  | 2021-10-21 | 2023-01-24 |  |  |  |  |  |  |  |  |  |  |  |  |  |  |  |  |  |  |  |  |
| 1-0130 |  | ELECTRICAL VAULT WORK, SPRING 1ST TO 3ND SOUTH SIDE | 2d | 2021-10-21 A | 2021-10-22 A | 1-SCL-1000, 1-SCL-1010, 1-SCL-1080, 1-SCL-1090, 1-SCL-1070 | 100% | 2021-10-27 | 2021-10-28 |  | MBRT BASE [16 h] | 16 | 16 |  | 16 | ZONE-1 | SPRING | ELECTRICAL | ROADWAY | RDWY | SOUTH | PRIME |  |  | SCL-VT |
| 1-0109 |  | DEMO ROAD - COMMON EX - TYPE 2, SPRING 1ST TO 3ND SOUTH SIDE | 6d | 2021-10-25 A | 2021-11-09 A | MS-0026, 1-0046 | 100% | 2021-11-04 | 2021-11-11 |  | MBRT BASE [96 h] | 96 | 96 | GRM | 96 | ZONE-1 | SPRING | DEMOPREP | ROADWAY | RDWY | SOUTH |  |  |  | SCL-VT |
| PCO012.01 |  | DSC 7-Duct Bank Conflict with Subgrade Spring 1st to 2nd | 5d | 2021-10-27 A | 2022-08-30 A | MS-0025 | 100% | 2023-02-27 | 2023-03-03 |  | MBRT DSC [1680 h] | 1,680 | 1,680 |  | 1680 |  |  |  |  |  |  |  |  |  |  |
| 1-0110 |  | ROADWAY PAVING PRIOR TO SCL VAULT DELAYS AND HANDHOLE DELAY - 2 POURS | 4d | 2021-11-03 A | 2021-11-10 A | 1-0109, 1-0130 | 100% | 2021-11-12 | 2021-11-18 |  | MBRT BASE [48 h] | 48 | 48 | COL | 48 | ZONE-1 | SPRING | PAVE-R | ROADWAY | RDWY | SOUTH |  |  |  | SCL-VT |
| PCO026.01 |  | DSC 17-3rd and spring conduit conflict gas and duct bank | 5d | 2021-11-08 A | 2021-11-12 A | MS-0025 | 100% | 2023-02-27 | 2023-03-03 |  | MBRT DSC [32 h] | 32 | 32 |  | 32 |  |  |  |  |  |  |  |  |  |  |
| 1-0216 |  | WAITING FOR SDOT TO RESOLVE SCL FALSE CEILINGS & DSC-017/018 | 5d | 2021-11-11 A | 2021-12-09 A | 1-0110, PSR-0015 | 100% | 2021-09-20 | 2021-09-24 |  | MBRT DSC [144 h] | 144 | 144 |  | 144 |  |  |  |  |  |  |  |  |  | SCL-VT |
| 1-0351 |  | VAULT PROCURMENT MATERIALS | 5d | 2021-12-10 A | 2022-01-07 A | 1-0216 | 100% | 2021-12-14 | 2021-12-20 |  | MBRT NEW [40 h] | 40 | 152 |  | 152 |  |  |  |  |  |  |  |  |  |  |
| 1-0111 |  | CONCRETE CURE, SPRING 1ST TO 3RD SOUTH SIDE | 3d | 2021-12-11 A | 2021-12-13 A | 1-0110 | 100% | 2021-12-13 | 2021-12-15 | 7 day per week | MBRT BASE [24 h] | 24 |  |  | 24 | ZONE-1 | SPRING |  | ROADWAY | RDWY | SOUTH |  |  |  |  |
| PCO088.01 |  | DSC 55-Vault 123M357 Concrete Obstruction | 5d | 2022-01-10 A | 2022-01-14 A | MS-0025 | 100% | 2023-02-27 | 2023-03-03 |  | MBRT DSC [32 h] | 32 | 32 |  | 32 |  |  |  |  |  |  |  |  |  |  |
| PCO093.01 |  | DSC 57-Vault 133M013 | 5d | 2022-01-11 A | 2022-05-10 A | MS-0025 | 100% | 2023-02-27 | 2023-03-03 |  | MBRT DSC [664 h] | 664 | 664 |  | 664 |  |  |  |  |  |  |  |  |  |  |
| 1-0391 |  | DSC 057 VAULT 133M013 CONFLICT | 5d | 2022-01-31 A | 2022-05-12 A | 1-0351 | 100% | 2022-01-31 | 2022-02-04 |  | MBRT DSC [584 h] | 584 | 584 |  | 584 |  |  |  |  |  |  |  |  |  |  |
| 1-0266 |  | ROADWAY PREP AFTER DELAY | 5d | 2022-05-13 A | 2022-05-13 A | 1-0216, 1-0351, MS-2571, 1-0391 | 100% | 2022-05-09 | 2022-05-13 |  | MBRT NEW [40 h] | 40 | 8 |  | 8 |  |  |  |  |  |  |  |  |  | SCL-VT |
| PCO248.01 |  | DSC 181-Gas line conflict SCL Vault 3rd to 6th. | 5d | 2022-05-16 A | 2023-01-24 A | MS-0025 | 100% | 2023-02-27 | 2023-03-03 |  | MBRT DSC [1376 h] | 1,376 | 1,376 |  | 1376 |  |  |  |  |  |  |  |  |  |  |
| 1-0271 |  | ROADWAY PAVING AFTER DELAY | 6d | 2022-05-16 A | 2022-05-16 A | 1-0266 | 100% | 2022-05-16 | 2022-05-23 |  | MBRT NEW [48 h] | 48 | 8 |  | 8 |  |  |  |  |  |  |  |  |  | SCL-VT |
| 1-1155 |  | CONCRETE CURE, SPRING 2ND TO 3RD NORTH SIDE | 3d | 2022-11-01 A | 2022-11-03 A | 1-1150 | 100% | 2022-11-03 | 2022-11-05 | 7 day per week | MBRT NEW [24 h] | 24 |  |  | 24 | ZONE-1 | SPRING |  | ROADWAY | RDWY | NORTH |  |  |  |  |

Notes:
- 1-0216: Description: SCL False Ceilings delays & DSC018 & 17

| ID | WBS | Activity | Duration | Start | Finish | Predecessors | Complete | Planned start | Planned finish | Calendar | Resources | Cost | Actual cost | user_number6 | user_text2 | MBRT-ZONE | MBRT-LOCATION | MBRT-SCOPE | MBRT-TYPE | MBRT-ROADWAY | MBRT-SIDE | MBRT-RESP | MBRT-DELAY |
| --- | --- | --- | --- | --- | --- | --- | --- | --- | --- | --- | --- | --- | --- | --- | --- | --- | --- | --- | --- | --- | --- | --- | --- |
|  | 29 | **SPRING 4TH TO 5TH NORTH SIDE** |  | 2022-07-12 | 2023-01-24 |  |  |  |  |  |  |  |  |  |  |  |  |  |  |  |  |  |  |
| PCO317.01 |  | DSC 234-CDF Encased Gas Line 3rd to 4th on Spring | 5d | 2022-07-12 A | 2022-07-28 A | MS-0025 | 100% | 2023-02-27 | 2023-03-03 |  | MBRT DSC [96 h] | 96 | 96 | 96 |  |  |  |  |  |  |  |  |  |
| PCO318.01 |  | DSC 235-Duct Bank conflict 4th to 5th on Spring | 5d | 2022-07-12 A | 2022-07-22 A | MS-0025 | 100% | 2023-02-27 | 2023-03-03 |  | MBRT DSC [64 h] | 64 | 64 | 64 |  |  |  |  |  |  |  |  |  |
| PCO320.01 |  | DSC 236-unknown clay pipe spring 4th to 5th | 5d | 2022-07-16 A | 2022-07-20 A | MS-0025 | 100% | 2023-02-27 | 2023-03-03 |  | MBRT DSC [16 h] | 16 | 16 | 16 |  |  |  |  |  |  |  |  |  |
| PCO406.01 |  | DSC 297-Prime Vaults Spring 2nd to 5th | 5d | 2022-10-05 A | 2022-10-13 A | MS-0025 | 100% | 2023-02-27 | 2023-03-03 |  | MBRT DSC [48 h] | 48 | 48 | 48 |  |  |  |  |  |  |  |  |  |
| 1-1215 |  | DEMO ROAD - COMMON EX - TYPE 2, SPRING 4TH TO 5TH NORTH SIDE | 3d | 2022-10-06 A | 2022-10-10 A | 1-0157 SS | 100% | 2022-10-03 | 2022-10-05 |  | MBRT NEW [24 h] | 24 | 24 | 24 | GRM | ZONE-1 | SPRING | DEMOPREP | ROADWAY | RDWY | NORTH |  |  |
| 1-1220 |  | CONDUIT RD CROSSING, SPRING 4TH TO 5TH NORTH SIDE | 3d | 2022-10-06 A | 2022-10-10 A | 1-1215 SS | 100% | 2022-10-03 | 2022-10-05 |  | MBRT NEW [24 h] | 24 | 24 | 24 | ELECRICAL SUB | ZONE-1 | SPRING | ELECTRICAL | ROADWAY | RDWY | NORTH | PRIME |  |
| PCO415.01 |  | DSC 305-4th to 5th Spring North SCL Vault Lid | 5d | 2022-10-12 A | 2023-01-24 A | MS-0025 | 100% | 2023-02-27 | 2023-03-03 |  | MBRT DSC [544 h] | 544 | 544 | 544 |  |  |  |  |  |  |  |  |  |
| PCO428.01 |  | DSC 312-Unknown Unlocated Catholic Protection 4th and Madison | 5d | 2022-10-22 A | 2022-10-23 A | MS-0025 | 100% | 2023-02-27 | 2023-03-03 |  | MBRT DSC [8 h] | 8 | 8 | 8 |  |  |  |  |  |  |  |  |  |
| PCO429.01 |  | DSC 313-CDF encased Gas Line 4th and Madison | 5d | 2022-10-22 A | 2022-10-23 A | MS-0025 | 100% | 2023-02-27 | 2023-03-03 |  | MBRT DSC [8 h] | 8 | 8 | 8 |  |  |  |  |  |  |  |  |  |
| 1-1225 |  | ROADWAY PAVING - 2 POURS, SPRING 4TH TO 5TH NORTH SIDE | 3d | 2022-10-31 A | 2022-11-02 A | 1-1215, 1-1220 | 100% |  |  |  | MBRT NEW [24 h] | 24 | 24 | 24 | COL | ZONE-1 | SPRING | PAVE-R | ROADWAY | RDWY | NORTH |  |  |
| 1-1230 |  | CONCRETE CURE, SPRING 4TH TO 5TH NORTH SIDE | 3d | 2022-11-03 A | 2022-11-05 A | 1-1225 | 100% |  |  | 7 day per week | MBRT NEW [24 h] | 24 |  | 24 |  | ZONE-1 | SPRING |  | ROADWAY | RDWY | NORTH |  |  |
|  | 28 | **SPRING 3RD TO 5TH SOUTH SIDE** |  | 2022-06-29 | 2022-07-28 |  |  |  |  |  |  |  |  |  |  |  |  |  |  |  |  |  |  |
| PCO300.01 |  | DSC 221-Gas Main conflict with road Spring 3rd to 4th | 5d | 2022-06-29 A | 2022-07-04 A | MS-0025 | 100% | 2023-02-27 | 2023-03-03 |  | MBRT DSC [24 h] | 24 | 24 | 24 |  |  |  |  |  |  |  |  |  |
| 1-1175 |  | DEMO ROAD - COMMON EX - TYPE 2, SPRING 3RD TO 5TH SOUTH SIDE | 6d | 2022-07-06 A | 2022-07-11 A | 1-0231 | 100% | 2022-07-01 | 2022-07-11 |  | MBRT NEW [48 h] | 48 | 32 | 32 | GRM | ZONE-1 | SPRING | DEMOPREP | ROADWAY | RDWY | SOUTH |  |  |
| PCO309.01 |  | DSC 229-Gas line locates 3rd and Spring | 5d | 2022-07-09 A | 2022-07-10 A | MS-0025 | 100% | 2023-02-27 | 2023-03-03 |  | MBRT DSC [8 h] | 8 | 8 | 8 |  |  |  |  |  |  |  |  |  |
| PCO310.01 |  | DSC 230-unknown duct bank 3rd and Spring | 5d | 2022-07-09 A | 2022-07-10 A | MS-0025 | 100% | 2023-02-27 | 2023-03-03 |  | MBRT DSC [8 h] | 8 | 8 | 8 |  |  |  |  |  |  |  |  |  |
| 1-1180 |  | ROADWAY PAVING - 2 POURS, SPRING 3RD TO 5TH SOUTH SIDE | 4d | 2022-07-22 A | 2022-07-26 A | 1-1175 | 100% | 2022-07-12 | 2022-07-15 |  | MBRT NEW [32 h] | 32 | 24 | 24 | COL | ZONE-1 | SPRING | PAVE-R | ROADWAY | RDWY | SOUTH |  | SCL-FC |
| 1-1185 |  | CONCRETE CURE, SPRING 3RD TO 5TH SOUTH SIDE | 1d | 2022-07-27 A | 2022-07-27 A | 1-1180 | 100% | 2022-07-16 | 2022-07-16 | 7 day per week | MBRT NEW [8 h] | 8 |  | 8 |  | ZONE-1 | SPRING |  | ROADWAY | RDWY | SOUTH |  | SCL-FC |
| 1-1195 |  | F/P CURB 1ST TO 6TH WEST SIDE, SPRING 3RD TO 5TH SOUTH SIDE | 1d | 2022-07-27 A | 2022-07-27 A | 1-1185 | 100% | 2022-07-01 | 2022-07-01 |  | MBRT NEW [8 h] | 8 | 8 | 8 | COM | ZONE-1 | SPRING | CURB | ROADWAY | RDWY | SOUTH |  | SCL-FC |
| 1-1190 |  | TEMP PATCH, SPRING 3RD TO 5TH SOUTH SIDE | 1d | 2022-07-28 A | 2022-07-28 A | 1-1195 | 100% | 2022-07-29 | 2022-07-29 |  | MBRT NEW [8 h] | 8 | 8 | 8 | EA3 | ZONE-1 | SPRING |  | ROADWAY | RDWY | SOUTH |  | SCL-FC |
|  | 9 | **SPRING 5TH TO 6TH NORTH SIDE** |  | 2022-10-06 | 2022-11-11 |  |  |  |  |  |  |  |  |  |  |  |  |  |  |  |  |  |  |
| 1-0157 |  | DEMO ROAD - COMMON EX - TYPE 2, SPRING 5TH TO 6TH NORTH SIDE | 3d | 2022-10-06 A | 2022-10-11 A | 1-1145 | 100% | 2022-10-03 | 2022-10-05 |  | MBRT BASE [24 h] | 24 | 24 | 24 | GRM | ZONE-1 | SPRING | DEMOPREP | ROADWAY | RDWY | NORTH |  |  |
| 1-0158 |  | CONDUIT RD CROSSING, SPRING 5TH TO 6TH NORTH SIDE | 3d | 2022-10-06 A | 2022-10-11 A | 1-0157 SS | 100% | 2022-10-03 | 2022-10-05 |  | MBRT BASE [24 h] | 24 | 24 | 24 | ELECRICAL SUB | ZONE-1 | SPRING | ELECTRICAL | ROADWAY | RDWY | NORTH | PRIME |  |
| 1-0159 |  | ROADWAY PAVING - 2 POURS, SPRING 5TH TO 6TH NORTH SIDE | 3d | 2022-10-31 A | 2022-11-03 A | 1-0157, 1-0158, 1-0154 | 100% | 2022-10-31 | 2022-11-02 |  | MBRT BASE [24 h] | 24 | 24 | 24 | COL | ZONE-1 | SPRING | PAVE-R | ROADWAY | RDWY | NORTH |  |  |
| 1-0160 |  | CONCRETE CURE, SPRING 5TH TO 6TH NORTH SIDE | 3d | 2022-11-03 A | 2022-11-05 A | 1-0159 | 100% |  |  | 7 day per week | MBRT BASE |  |  | 24 |  | ZONE-1 | SPRING |  | ROADWAY | RDWY | NORTH |  |  |
| 1-0161 |  | F/P CURB SPRING 1ST TO 6TH, SPRING 5TH TO 6TH NORTH SIDE | 3d | 2022-11-07 A | 2022-11-09 A | 1-0155, 1-0160 | 100% |  |  |  | MBRT BASE [24 h] | 24 | 24 | 24 | COM | ZONE-1 | SPRING | CURB | ROADWAY | RDWY | NORTH |  |  |
| 1-0162 |  | TEMP PATCH 1ST TO 6TH, SPRING 5TH TO 6TH NORTH SIDE | 2d | 2022-11-10 A | 2022-11-11 A | 1-0161 | 100% |  |  |  | MBRT BASE [16 h] | 16 | 16 | 16 | EA3 | ZONE-1 | SPRING |  | ROADWAY | RDWY | NORTH |  |  |

| ID | WBS | Activity | Duration | Start | Finish | Predecessors | Complete | Planned start | Planned finish | Calendar | Resources | Cost | Actual cost | user_number6 | MBRT-ZONE | MBRT-LOCATION | MBRT-SCOPE | MBRT-TYPE | MBRT-RESP | MBRT-ROADWAY | MBRT-SIDE | MBRT-DELAY | user_text2 |
| --- | --- | --- | --- | --- | --- | --- | --- | --- | --- | --- | --- | --- | --- | --- | --- | --- | --- | --- | --- | --- | --- | --- | --- |
|  | 2 | **SPRING 5TH TO 6TH SOUTH SIDE** |  | 2022-06-14 | 2022-07-12 |  |  |  |  |  |  |  |  |  |  |  |  |  |  |  |  |  |  |
| PCO279.01 |  | DSC 204-Vault 163-M-355 additonal DSC | 5d | 2022-06-14 A | 2022-07-12 A | MS-0025 | 100% | 2023-02-27 | 2023-03-03 |  | MBRT DSC [152 h] | 152 | 152 | 152 |  |  |  |  |  |  |  |  |  |
| 1-0144 |  | ELECTRICAL VAULT WORK, SPRING 5TH TO 6TH SOUTH SIDE | 6d | 2022-06-22 A | 2022-06-29 A | 1-SCL-1020, 1-SCL-1030, 1-SCL-1040, 1-SCL-1050, 1-SCL-1060, 1-SCL-1100, 1-SCL-1110, 1-SCL-1120, 1-SCL-1130, 1-SCL-1140, 1-SCL-1220 | 100% | 2022-07-01 | 2022-07-11 |  | MBRT BASE [48 h] | 48 | 48 | 48 | ZONE-1 | SPRING | ELECTRICAL | ROADWAY | PRIME | RDWY | SOUTH | SCL-FC |  |
| 1-0113 |  | DEMO ROAD - COMMON EX - TYPE 2, SPRING 5TH TO 6TH SOUTH SIDE | 6d | 2022-06-23 A | 2022-06-28 A | 1-0109, 1-0266 | 100% | 2022-06-02 | 2022-06-09 |  | MBRT BASE [24 h] | 24 | 24 | 24 | ZONE-1 | SPRING | DEMOPREP | ROADWAY |  | RDWY | SOUTH |  | GRM |
| 1-0114 |  | ROADWAY PAVING - 2 POURS, SPRING 5TH TO 6TH SOUTH SIDE | 4d | 2022-06-30 A | 2022-06-30 A | 1-0110, 1-0113, 1-0144, 1-0271 | 100% | 2022-06-08 | 2022-06-13 |  | MBRT BASE [8 h] | 8 | 8 | 8 | ZONE-1 | SPRING | PAVE-R | ROADWAY |  | RDWY | SOUTH | SCL-FC | COL |
| 1-0115 |  | CONCRETE CURE, SPRING 5TH TO 6TH SOUTH SIDE | 1d | 2022-07-01 A | 2022-07-01 A | 1-0114 | 100% |  |  | 7 day per week | MBRT BASE [8 h] | 8 |  | 8 | ZONE-1 | SPRING |  | ROADWAY |  | RDWY | SOUTH | SCL-FC |  |
| 1-0116 |  | F/P CURB 1ST TO 6TH WEST SIDE, SPRING 5TH TO 6TH SOUTH SIDE | 1d | 2022-07-01 A | 2022-07-01 A | 1-0115, 1-0111 | 100% |  |  |  | MBRT BASE [8 h] | 8 | 8 | 8 | ZONE-1 | SPRING | CURB | ROADWAY |  | RDWY | SOUTH | SCL-FC | COM |
| 1-0117 |  | TEMP PATCH, SPRING 5TH TO 6TH SOUTH SIDE | 1d | 2022-07-05 A | 2022-07-05 A | 1-0116 | 100% |  |  |  | MBRT BASE [8 h] | 8 | 8 | 8 | ZONE-1 | SPRING |  | ROADWAY |  | RDWY | SOUTH | SCL-FC | EA3 |
|  | 10 | **SPRING 6TH TO 9TH NORTH SIDE** |  | 2022-03-15 | 2023-01-06 |  |  |  |  |  |  |  |  |  |  |  |  |  |  |  |  |  |  |
| 1-0211 |  | ELECTRICAL VAULT WORK, SPRING 6TH TO 9TH NORTH SIDE | 2d | 2022-03-15 A | 2022-03-17 A | 1-SCL-1230, 1-SCL-1240 | 100% | 2022-03-15 | 2022-03-16 |  | MBRT BASE [16 h] | 16 | 16 | 16 | ZONE-1 | SPRING | ELECTRICAL | ROADWAY | PRIME | RDWY | NORTH |  |  |
| 1-0164 |  | DEMO ROAD - COMMON EX - TYPE 2, SPRING 6TH TO 9TH NORTH SIDE | 8d | 2022-11-22 A | 2022-12-05 A | 1-0157 | 100% | 2022-10-06 | 2022-10-17 |  | MBRT BASE [64 h] | 64 | 64 | 64 | ZONE-1 | SPRING | DEMOPREP | ROADWAY |  | RDWY | NORTH |  | GRM |
| 1-0165 |  | CONDUIT RD CROSSING, SPRING 6TH TO 9TH NORTH SIDE | 8d | 2022-11-22 A | 2022-12-05 A | 1-0164 SS | 100% | 2022-10-06 | 2022-10-17 |  | MBRT BASE [64 h] | 64 | 64 | 64 | ZONE-1 | SPRING | ELECTRICAL | ROADWAY | PRIME | RDWY | NORTH |  | ELECRICAL SUB |
| PCO479.01 |  | DSC 347-CDF Ductbank conflict Spring 7th to 9th | 5d | 2022-11-28 A | 2022-11-30 A | MS-0025 | 100% | 2023-02-27 | 2023-03-03 |  | MBRT DSC [16 h] | 16 | 16 | 16 |  |  |  |  |  |  |  |  |  |
| 1-0166 |  | ROADWAY PAVING - 2 POURS, SPRING 6TH TO 9TH NORTH SIDE | 4d | 2022-12-27 A | 2023-01-03 A | 1-0164, 1-0165, 1-0211 | 100% | 2022-12-06 | 2022-12-09 |  | MBRT BASE [40 h] | 40 | 40 | 40 | ZONE-1 | SPRING | PAVE-R | ROADWAY |  | RDWY | NORTH |  | COL |
| 1-0167 |  | CONCRETE CURE, SPRING 6TH TO 9TH NORTH SIDE | 3d | 2023-01-04 A | 2023-01-06 A | 1-0166 | 100% |  |  | 7 day per week | MBRT BASE |  |  | 24 | ZONE-1 | SPRING |  | ROADWAY |  | RDWY | NORTH |  |  |
|  | 6 | **SPRING 7TH TO 9TH SOUTH SIDE** |  | 2022-01-13 | 2022-08-20 |  |  |  |  |  |  |  |  |  |  |  |  |  |  |  |  |  |  |
| PCO097.01 |  | DSC 60-P08-06 Sign and boulder conflict 8th and Spring | 5d | 2022-01-13 A | 2022-01-15 A | MS-0025 | 100% | 2023-02-27 | 2023-03-03 |  | MBRT DSC [16 h] | 16 | 16 | 16 |  |  |  |  |  |  |  |  |  |
| 1-0175 |  | ELECTRICAL VAULT WORK, SPRING 7TH TO 9TH SOUTH SIDE | 4d | 2022-03-31 A | 2022-04-05 A | 1-SCL-1150, 1-SCL-1160, 1-SCL-1170, 1-SCL-1180, 1-SCL-1190 | 100% |  |  |  | MBRT BASE [32 h] | 32 | 32 | 32 | ZONE-1 | 07 | ELECTRICAL | ROADWAY | PRIME | RDWY | SOUTH |  |  |
| PCO221.01 |  | DSC 159-Vault 713M002 | 5d | 2022-04-18 A | 2022-04-29 A | MS-0025 | 100% | 2023-02-27 | 2023-03-03 |  | MBRT DSC [72 h] | 72 | 72 | 72 |  |  |  |  |  |  |  |  |  |
| PCO239.01 |  | DSC 173-Duct Bank Conflict Subgrade SW 9th and Spring | 5d | 2022-05-05 A | 2022-05-13 A | MS-0025 | 100% | 2023-02-27 | 2023-03-03 |  | MBRT DSC [48 h] | 48 | 48 | 48 |  |  |  |  |  |  |  |  |  |
| 1-0138 |  | DEMO ROAD - COMMON EX - TYPE 2, SPRING 7TH TO 9TH SOUTH SIDE | 8d | 2022-05-13 A | 2022-06-03 A | 1-0131, 1-0094, 1-0059, 1-0077, 1-0187 | 100% | 2022-05-06 | 2022-05-17 |  | MBRT BASE [112 h] | 112 | 112 | 112 | ZONE-1 | 07 | DEMOPREP | ROADWAY |  | RDWY | SOUTH |  | GRM |
| 1-0139 |  | CONDUIT RD CROSSING, SPRING 7TH TO 9TH SOUTH SIDE | 8d | 2022-05-13 A | 2022-06-02 A | 1-0138 SS | 100% | 2022-05-06 | 2022-05-17 |  | MBRT BASE [104 h] | 104 | 104 | 104 | ZONE-1 | 07 | ELECTRICAL | ROADWAY | PRIME | RDWY | SOUTH |  | ELECRICAL SUB |
| PCO250.01 |  | DSC 182-Unknown Unlocated utilitys Vault Core Spring 7th | 5d | 2022-05-18 A | 2022-08-20 A | MS-0025 | 100% | 2023-02-27 | 2023-03-03 |  | MBRT DSC [528 h] | 528 | 528 | 528 |  |  |  |  |  |  |  |  |  |
| PCO266.01 |  | DSC 192-Vault on 8th and Spring added work | 5d | 2022-06-02 A | 2022-06-24 A | MS-0025 | 100% | 2023-02-27 | 2023-03-03 |  | MBRT DSC [128 h] | 128 | 128 | 128 |  |  |  |  |  |  |  |  |  |
| 1-0140 |  | ROADWAY PAVING - 2 POURS, SPRING 7TH TO 9TH SOUTH SIDE | 4d | 2022-06-03 A | 2022-06-08 A | 1-0138, 1-0139, 1-0133, 1-0175 | 100% | 2022-06-02 | 2022-06-07 |  | MBRT BASE [32 h] | 32 | 32 | 32 | ZONE-1 | 07 | PAVE-R | ROADWAY |  | RDWY | SOUTH |  | COL |
| 1-0142 |  | F/P CURB SPRING 7TH TO 9TH, SPRING 7TH TO 9TH SOUTH SIDE | 2d | 2022-06-08 A | 2022-06-08 A | 1-0141 | 100% | 2022-06-10 | 2022-06-13 |  | MBRT BASE |  | 8 | 0 | ZONE-1 | 07 | CURB | ROADWAY |  | RDWY | SOUTH |  | COM |
| 1-0143 |  | TEMP PATCH, SPRING 7TH TO 9TH SOUTH SIDE | 1d | 2022-06-09 A | 2022-06-09 A | 1-0142 | 100% | 2022-06-10 | 2022-06-10 |  | MBRT BASE |  | 8 | 0 | ZONE-1 | 07 |  | ROADWAY |  | RDWY | SOUTH |  | EA3 |
| 1-0141 |  | CONCRETE CURE, SPRING 7TH TO 9TH SOUTH SIDE | 1d | 2022-06-09 A | 2022-06-09 A | 1-0140, 1-0139 | 100% |  |  | 7 day per week | MBRT BASE |  |  | 8 | ZONE-1 | 07 |  | ROADWAY |  | RDWY | SOUTH |  |  |

| ID | WBS | Activity | Duration | Start | Finish | Predecessors | Complete | Planned start | Planned finish | Calendar | Resources | Cost | Actual cost | user_text2 | user_number6 | MBRT-ZONE | MBRT-LOCATION | MBRT-SCOPE | MBRT-TYPE | MBRT-ROADWAY | MBRT-SIDE | MBRT-RESP | user_text1 | MBRT-DELAY |
| --- | --- | --- | --- | --- | --- | --- | --- | --- | --- | --- | --- | --- | --- | --- | --- | --- | --- | --- | --- | --- | --- | --- | --- | --- |
|  | 3 | **MADISON 1ST TO 3RD NORTH SIDE** |  | 2021-10-27 | 2022-10-05 |  |  |  |  |  |  |  |  |  |  |  |  |  |  |  |  |  |  |  |
| 1-0119 |  | DEMO ROAD - COMMON EX - TYPE 2, MAD 1ST TO 3RD NORTH SIDE | 6d | 2021-10-27 A | 2021-11-09 A | 1-0057, 1-0096, 1-0048 | 100% | 2021-11-23 | 2021-12-02 |  | MBRT BASE [80 h] | 80 | 80 | GRM | 80 | ZONE-1 | 01 | DEMOPREP | ROADWAY | RDWY | NORTH |  |  |  |
| 1-0120 |  | CONDUIT RD CROSSING, MAD 1ST TO 3RD NORTH SIDE | 6d | 2021-10-27 A | 2021-11-04 A | 1-0119 SS | 100% | 2021-11-23 | 2021-12-02 |  | MBRT BASE [56 h] | 56 | 56 | ELECRICAL SUB | 56 | ZONE-1 | 01 | ELECTRICAL | ROADWAY | RDWY | NORTH | PRIME |  |  |
| PCO014.01 |  | DSC 8-ITS Obstruction Madison 1st to 2nd North | 5d | 2021-10-29 A | 2022-03-19 A | MS-0025 | 100% | 2023-02-27 | 2023-03-03 |  | MBRT DSC [752 h] | 752 | 752 |  | 752 |  |  |  |  |  |  |  |  |  |
| PCO015.01 |  | DSC 9-CDF in Roadway Madison 1st to 2nd North | 5d | 2021-10-29 A | 2021-10-30 A | MS-0025 | 100% | 2023-02-27 | 2023-03-03 |  | MBRT DSC [8 h] | 8 | 8 |  | 8 |  |  |  |  |  |  |  | ROADWAY |  |
| PCO019.01 |  | DSC 12-Center Lane obstruction Pipe Madison 1st to 2nd | 5d | 2021-11-02 A | 2021-11-06 A | MS-0025 | 100% | 2023-02-27 | 2023-03-03 |  | MBRT DSC [32 h] | 32 | 32 |  | 32 |  |  |  |  |  |  |  | ROADWAY |  |
| PCO021.01 |  | DSC 14-Concrete encased Yokes and Concrete in Roadway | 5d | 2021-11-03 A | 2021-11-04 A | MS-0025 | 100% | 2023-02-27 | 2023-03-03 |  | MBRT DSC [8 h] | 8 | 8 |  | 8 |  |  |  |  |  |  |  | ROADWAY |  |
| PCO024.01 |  | DSC 15-void under road Madison 2nd to 3rd North side | 5d | 2021-11-05 A | 2021-11-06 A | MS-0025 | 100% | 2023-02-27 | 2023-03-03 |  | MBRT DSC [8 h] | 8 | 8 |  | 8 |  |  |  |  |  |  |  | ROADWAY |  |
| 1-0121 |  | ROADWAY PAVING PRIOR TO SCL VAULT DELAYS AND HANDHOLE DELAY - 2 POURS | 4d | 2021-11-08 A | 2021-11-11 A | 1-0119, 1-0120 | 100% | 2021-12-03 | 2021-12-08 |  | MBRT BASE [32 h] | 32 | 32 | COL | 32 | ZONE-1 | 01 | PAVE-R | ROADWAY | RDWY | NORTH |  |  |  |
| PCO028.01 |  | DSC 19-SCL Riser poured into roadway Mad 2nd to 3rd | 5d | 2021-11-09 A | 2021-11-17 A | MS-0025 | 100% | 2023-02-27 | 2023-03-03 |  | MBRT DSC [40 h] | 40 | 40 |  | 40 |  |  |  |  |  |  |  |  |  |
| PCO031.01 |  | DSC 22-Conduit and Irrigation in conflict with roadway Madison 2nd to 3rd North side | 5d | 2021-11-10 A | 2021-11-23 A | MS-0025 | 100% | 2023-02-27 | 2023-03-03 |  | MBRT DSC [64 h] | 64 | 64 |  | 64 |  |  |  |  |  |  |  |  |  |
| PCO037.01 |  | DSC 25-Conduit Conflict with Duct Bank Madison 2nd to 3rd | 5d | 2021-11-12 A | 2022-10-05 A | MS-0025 | 100% | 2023-02-27 | 2023-03-03 |  | MBRT DSC [1784 h] | 1,784 | 1,784 |  | 1784 |  |  |  |  |  |  |  |  |  |
| 1-0331 |  | WAITING FOR SDOT TO RESOLVE FALSE CEILINGS & | 5d | 2021-11-12 A | 2021-11-24 A | 1-0121 | 100% | 2021-09-20 | 2021-09-24 |  | MBRT NEW [40 h] | 40 | 64 |  | 64 |  |  |  |  |  |  |  |  |  |
| PCO049.01 |  | DSC 31-Shallow Ductbank, Madison & 3rd | 5d | 2021-11-20 A | 2021-11-30 A | MS-0025 | 100% | 2023-02-27 | 2023-03-03 |  | MBRT DSC [32 h] | 32 | 32 |  | 32 |  |  |  |  |  |  |  |  |  |
| 1-0151 |  | ELECTRICAL VAULT WORK, MAD 1ST TO 3RD NORTH SIDE | 2d | 2021-12-01 A | 2021-12-02 A | 1-SCL-1210 | 100% |  |  |  | MBRT BASE [16 h] | 16 | 16 |  | 16 | ZONE-1 | 01 | ELECTRICAL | ROADWAY | RDWY | NORTH | PRIME |  |  |
| 1-0311 |  | ROADWAY PREP AFTER DELAY | 5d | 2021-12-03 A | 2021-12-03 A | 1-0331, 1-0151 FF | 100% | 2021-12-03 | 2021-12-09 |  | MBRT NEW [40 h] | 40 | 8 |  | 8 |  |  |  |  |  |  |  |  |  |
| 1-0291 |  | ROADWAY PAVING AFTER DELAY | 3d | 2022-03-22 A | 2022-03-23 A | 1-0311, MS-2571 | 100% | 2022-03-08 | 2022-03-10 |  | MBRT NEW [24 h] | 24 | 16 |  | 16 |  |  |  |  |  |  |  |  |  |
| 1-0122 |  | CONCRETE CURE, MAD 1ST TO 3RD NORTH SIDE | 3d | 2022-03-23 A | 2022-03-23 A | 1-0121, 1-0291 SS | 100% | 2022-03-11 | 2022-03-13 | 7 day per week | MBRT BASE [8 h] | 8 |  |  | 8 | ZONE-1 | 01 |  | ROADWAY | RDWY | NORTH |  |  |  |
|  | 18 | **MADISON 1ST TO 3RD SOUTH SIDE** |  | 2022-05-12 | 2022-12-31 |  |  |  |  |  |  |  |  |  |  |  |  |  |  |  |  |  |  |  |
| PCO246.01 |  | DSC 179-Duct Bank Conflict Vault 163M351 | 5d | 2022-05-12 A | 2022-06-15 A | MS-0025 | 100% | 2023-02-27 | 2023-03-03 |  | MBRT DSC [184 h] | 184 | 184 |  | 184 |  |  |  |  |  |  |  |  |  |
| 1-0212 |  | DEMO ROAD - COMMON EX - TYPE 2, MAD 1ST TO 3RD SOUTH SIDE | 4d | 2022-05-16 A | 2022-05-19 A | 1-0129 | 100% | 2022-05-23 | 2022-05-26 |  | MBRT BASE [32 h] | 32 | 32 | GRM | 32 | ZONE-1 | 01 | DEMOPREP | ROADWAY | RDWY | SOUTH |  |  | OCS |
| 1-0213 |  | CONDUIT RD CROSSING, MAD 1ST TO 3RD SOUTH SIDE | 4d | 2022-05-16 A | 2022-05-19 A | 1-0212 SS | 100% | 2022-05-23 | 2022-05-26 |  | MBRT BASE [32 h] | 32 | 32 | ELECRICAL SUB | 32 | ZONE-1 | 01 | ELECTRICAL | ROADWAY | RDWY | SOUTH | PRIME |  |  |
| 1-0275 |  | DSC 191 - DELAY AT 2ND UNKNOWN KC METRO CONDUIT | 11d | 2022-05-16 A | 2022-09-27 A | 1-0212 | 100% | 2022-05-02 | 2022-05-16 |  | MBRT DSC [752 h] | 752 | 752 |  | 752 |  |  |  |  |  |  |  |  |  |
| 1-0214 |  | ROADWAY PAVING - 1 POURS, MAD 1ST TO 3RD SOUTH SIDE | 2d | 2022-05-20 A | 2022-05-23 A | 1-0212, 1-0213 | 100% | 2022-05-27 | 2022-05-31 |  | MBRT BASE [16 h] | 16 | 16 | COL | 16 | ZONE-1 | 01 | PAVE-R | ROADWAY | RDWY | SOUTH |  |  |  |
| 1-0215 |  | CONCRETE CURE, MAD 1ST TO 3RD SOUTH SIDE | 3d | 2022-05-24 A | 2022-05-26 A | 1-0214 | 100% | 2022-06-01 | 2022-06-03 | 7 day per week | MBRT BASE |  |  |  | 24 | ZONE-1 | 01 |  | ROADWAY | RDWY | SOUTH |  |  |  |
| PCO265.01 |  | DSC 191-Duct Bank Conflict with Conduit crossing 2nd Ave | 5d | 2022-06-02 A | 2022-09-13 A | MS-0025 | 100% | 2023-02-27 | 2023-03-03 |  | MBRT DSC [568 h] | 568 | 568 |  | 568 |  |  |  |  |  |  |  |  |  |
| 1-1160 |  | DSC AT COURTHOUSE | 6d | 2022-06-03 A | 2022-08-19 A | 1-0230 | 100% | 2022-06-13 | 2022-06-20 |  | MBRT DSC [440 h] | 440 | 440 |  | 440 |  |  |  |  |  |  |  |  |  |
| PCO270.01 |  | DSC 196-unknown unlocated conduit 1st Mad roadway | 5d | 2022-06-03 A | 2022-09-15 A | MS-0025 | 100% | 2023-02-27 | 2023-03-03 |  | MBRT DSC [576 h] | 576 | 576 |  | 576 |  |  |  |  |  |  |  |  |  |
| PCO271.01 |  | DSC 197-Cable Car infrastructure 1st to 2nd Madison | 5d | 2022-06-03 A | 2022-08-17 A | MS-0025 | 100% | 2023-02-27 | 2023-03-03 |  | MBRT DSC [416 h] | 416 | 416 |  | 416 |  |  |  |  |  |  |  | ROADWAY |  |
| 1-0230 |  | DEMO AT COURTHOUSE | 5d | 2022-06-03 A | 2022-06-03 A | 1-0212 | 100% | 2022-05-31 | 2022-06-06 |  | MBRT NEW [40 h] | 40 | 8 |  | 8 |  |  |  |  |  |  |  |  |  |
| PCO391.01 |  | DSC 285-Shallow Electrical Vault SW 2nd and Madison | 5d | 2022-09-13 A | 2022-12-31 A | MS-0025 | 100% | 2023-02-27 | 2023-03-03 |  | MBRT DSC [600 h] | 600 | 592 |  | 600 |  |  |  |  |  |  |  |  |  |
| PCO392.01 |  | DSC 286-Concrete overpour electrical vault Sw 2nd and Madison | 5d | 2022-09-13 A | 2022-09-14 A | MS-0025 | 100% | 2023-02-27 | 2023-03-03 |  | MBRT DSC [8 h] | 8 | 8 |  | 8 |  |  |  |  |  |  |  |  |  |
| 1-0315 |  | COMPLETE GRADING AT 2ND AFTER DELAY | 5d | 2022-09-28 A | 2022-09-29 A | 1-0275 | 100% | 2022-10-14 | 2022-10-20 |  | MBRT NEW [40 h] | 40 | 16 |  | 16 |  |  |  |  |  |  |  |  |  |
| 1-0335 |  | ROADWAY PAVING AT 2ND AFTER DELAY | 2d | 2022-09-30 A | 2022-10-10 A | 1-0315, 1-1160 | 100% | 2022-10-22 | 2022-10-23 | WEEKEND ONLY | MBRT NEW [16 h] | 16 | 32 |  | 32 |  |  |  |  |  |  |  |  |  |
| 1-0235 |  | ROADWAY PAVING AT COURTHOUSE | 1d | 2022-10-15 A | 2022-10-15 A | 1-0230, 1-0335 | 100% | 2022-10-08 | 2022-10-08 | WEEKEND ONLY | MBRT NEW [8 h] | 8 | 8 |  | 8 |  |  |  |  |  |  |  |  |  |

Notes:
- 1-0331: Description: SCL False Ceilings & DSC019

| ID | WBS | Activity | Duration | Start | Finish | Predecessors | Complete | Planned start | Planned finish | Calendar | Resources | Cost | Actual cost | user_text2 | user_number6 | user_text10 | user_text8 | MBRT-ZONE | MBRT-LOCATION | MBRT-SCOPE | MBRT-TYPE | MBRT-ROADWAY | MBRT-SIDE | MBRT-RESP | user_text1 |
| --- | --- | --- | --- | --- | --- | --- | --- | --- | --- | --- | --- | --- | --- | --- | --- | --- | --- | --- | --- | --- | --- | --- | --- | --- | --- |
|  | 30 | **MADISON 3RD TO 5TH NORTHSIDE** |  | 2023-04-17 | 2023-08-07 |  |  |  |  |  |  |  |  |  |  |  |  |  |  |  |  |  |  |  |  |
| 1-1410 |  | DEMO ROAD - COMMON EX - TYPE 2, MADISON 3RD TO 5TH NORTHSIDE | 7d | 2023-04-17 A | 2023-04-18 A | 1-0119, 1-1340, 1-0167 | 100% | 2023-04-14 | 2023-04-24 |  | MBRT NEW [56 h] | 56 | 16 | GRM | 16 | 1-1410 | 1-1410 | ZONE-1 | 03 | DEMOPREP | ROADWAY | RDWY | NORTH |  |  |
| 1-2720 |  | ARCHAEOLOGY STOP WORK ORDER | 7d | 2023-04-19 A | 2023-04-24 A | 1-1410 | 100% | 2023-04-14 | 2023-04-24 |  | MBRT NEW [56 h] | 56 | 32 | GRM | 32 | 1-2720 | 1-2720 | ZONE-1 | 03 | DEMOPREP | ROADWAY | RDWY | NORTH |  |  |
| PCO639.01 |  | DSC 450-DUCT BANK CONFLICT WITH ROAD REMOVAL | 7d | 2023-04-19 A | 2023-05-09 A | 1-1410 | 100% | 2023-04-14 | 2023-04-24 |  | MBRT DSC [120 h] | 120 | 120 | ELECRICAL SUB | 120 | PCO639.01 | PCO639.01 | ZONE-1 | 03 | ELECTRICAL | ROADWAY | RDWY | NORTH | PRIME |  |
| PCO669.01 |  | DSC 472-3RD AND MADISON UNLOCATED SPU TEST STATION WIRES | 7d | 2023-05-09 A | 2023-05-18 A | 1-2725 SS | 100% | 2023-04-14 | 2023-04-24 |  | MBRT DSC [64 h] | 64 | 64 | ELECRICAL SUB | 64 | PCO669.01 | PCO669.01 | ZONE-1 | 03 | ELECTRICAL | ROADWAY | RDWY | NORTH | PRIME |  |
| PCO670.01 |  | DSC 473-UNKNOWN AND UNLOCATED CONDUIT | 7d | 2023-05-09 A | 2023-05-15 A | 1-2725 SS | 100% | 2023-04-14 | 2023-04-24 |  | MBRT DSC [40 h] | 40 | 40 | ELECRICAL SUB | 40 | PCO670.01 | PCO670.01 | ZONE-1 | 03 | ELECTRICAL | ROADWAY | RDWY | NORTH | PRIME |  |
| 1-2725 |  | COMMON EX - TYPE 2 - AFTER DSC AND ARCHAEOLOGY | 7d | 2023-05-10 A | 2023-05-15 A | PCO639.01, 1-2720 | 100% | 2023-05-26 | 2023-06-06 |  | MBRT DSC [32 h] | 32 | 32 | GRM | 32 | 1-2725 | 1-2725 | ZONE-1 | 03 | DEMOPREP | ROADWAY | RDWY | NORTH |  |  |
| PCO677.01 |  | DSC 480-3RD TO 4TH NORTHSIDE ITS CONFLICTS | 7d | 2023-05-11 A | 2023-05-15 A | 1-2725 SS | 100% | 2023-04-14 | 2023-04-24 |  | MBRT DSC [24 h] | 24 | 24 | ELECRICAL SUB | 24 | PCO677.01 | PCO677.01 | ZONE-1 | 03 | ELECTRICAL | ROADWAY | RDWY | NORTH | PRIME |  |
| 1-1415 |  | CONDUIT RD CROSSING, MADISON 3RD TO 5TH NORTHSIDE | 7d | 2023-05-12 A | 2023-05-16 A | 1-1410 SS, 1-2725 SS | 100% | 2023-06-07 | 2023-06-15 |  | MBRT NEW [56 h] | 56 | 24 | ELECRICAL SUB | 24 | 1-1415 | 1-1415 | ZONE-1 | 03 | ELECTRICAL | ROADWAY | RDWY | NORTH | PRIME |  |
| PCO692.01 |  | DSC 494-3RD TO 4TH MADISON CAST-IN-PLACE VAULT LIDS NOT TO GRADE | 7d | 2023-05-15 A | 2023-05-24 A | 1-2725 SS | 100% | 2023-04-14 | 2023-04-24 |  | MBRT DSC [64 h] | 64 | 64 | ELECRICAL SUB | 64 | PCO692.01 | PCO692.01 | ZONE-1 | 03 | ELECTRICAL | ROADWAY | RDWY | NORTH | PRIME |  |
| PCO705.01 |  | DSC 506-SCL VAULT LID ENCASED IN CONCRETE | 3d | 2023-05-25 A | 2023-06-23 A | PCO692.01 | 100% | 2023-04-14 | 2023-04-18 |  | MBRT DSC [168 h] | 168 | 168 | ELECRICAL SUB | 168 | PCO705.01 | PCO705.01 | ZONE-1 | 03 | ELECTRICAL | ROADWAY | RDWY | NORTH | PRIME |  |
| 1-2940 |  | FM 540 - NEW CAST IN PLACE SCL RISERS | 18d | 2023-06-19 A | 2023-07-24 A | PCO692.01, PCO705.01 FS-5d | 100% | 2023-06-19 | 2023-07-13 |  | MBRT NEW [144 h] | 144 | 200 |  | 200 | 1-2940 | 1-2940 |  |  |  |  |  |  |  |  |
| 1-3005 |  | DSC 539 - SCL Risers Existing Conditions Note Per Plan | 17d | 2023-06-20 A | 2023-07-24 A | PCO705.01 FS-4d | 100% | 2023-06-20 | 2023-07-13 |  | MBRT DSC [192 h] | 192 | 192 |  | 192 | 1-3005 | 1-3005 |  |  |  |  |  |  |  |  |
| 1-0192 |  | ROADWAY PAVING, MADISON 3RD TO 5TH NORTHSIDE | 4d | 2023-07-31 A | 2023-08-03 A | 1-1415, 1-2940, PCO669.01, PCO670.01, PCO677.01, PCO705.01, 1-3005 | 100% | 2023-07-28 | 2023-08-02 |  | MBRT NEW [32 h] | 32 | 32 |  | 32 | 1-0192 | 1-0192 |  |  |  |  |  |  |  |  |
| 1-1420 |  | CONCRETE CURE, MADISON 3RD TO 5TH NORTHSIDE | 3d | 2023-08-04 A | 2023-08-07 A | 1-0192 | 100% | 2023-08-03 | 2023-08-05 | 7 day per week | MBRT NEW [24 h] | 24 |  |  | 32 | 1-1420 | 1-1420 | ZONE-1 | 03 |  | ROADWAY | RDWY | NORTH |  |  |
|  | 4 | **MADISON 5TH TO 6TH NORTH SIDE** |  | 2021-11-12 | 2022-11-16 |  |  |  |  |  |  |  |  |  |  |  |  |  |  |  |  |  |  |  |  |
| 1-0124 |  | DEMO ROAD - COMMON EX - TYPE 2, MAD 5TH TO 6TH NORTH SIDE | 7d | 2021-11-12 A | 2021-11-29 A | 1-0119, 1-0058 FF, 1-0254 FF | 100% | 2021-12-03 | 2021-12-13 |  | MBRT BASE [72 h] | 72 | 72 | GRM | 72 |  |  | ZONE-1 | 03 | DEMOPREP | ROADWAY | RDWY | NORTH |  |  |
| 1-0125 |  | CONDUIT RD CROSSING, MAD 5TH TO 6TH NORTH SIDE | 7d | 2021-11-12 A | 2021-11-23 A | 1-0124 SS | 100% | 2021-12-03 | 2021-12-13 |  | MBRT BASE [56 h] | 56 | 56 | ELECRICAL SUB | 56 |  |  | ZONE-1 | 03 | ELECTRICAL | ROADWAY | RDWY | NORTH | PRIME |  |
| PCO092.01 |  | DSC 56-Sinkhole Madison 5th to 6th | 5d | 2022-01-11 A | 2022-11-16 A | MS-0025 | 100% | 2023-02-27 | 2023-03-03 |  | MBRT DSC [1720 h] | 1,720 | 1,720 |  | 1720 |  |  |  |  |  |  |  |  |  | ROADWAY |
| 1-0411 |  | CO-08 EMERGENCY SEWER REPAIR | 6d | 2022-03-26 A | 2022-04-03 A | 1-0125 | 100% | 2022-03-26 | 2022-04-10 | WEEKEND ONLY | MBRT NEW [48 h] | 48 | 32 |  | 32 |  |  |  |  |  |  |  |  |  |  |
| PCO183.01 |  | DSC 129-Sewer Repair 5th to 6th DSC | 5d | 2022-03-27 A | 2022-05-09 A | MS-0025 | 100% | 2023-02-27 | 2023-03-03 |  | MBRT DSC [240 h] | 240 | 240 |  | 240 |  |  |  |  |  |  |  |  |  |  |
| 1-0126 |  | ROADWAY PAVING - 2 POURS, MAD 5TH TO 6TH NORTH SIDE | 4d | 2022-04-12 A | 2022-04-25 A | 1-0121, 1-0124, 1-0125, 1-0291, 1-0411 | 100% | 2022-04-12 | 2022-04-15 |  | MBRT BASE [80 h] | 80 | 80 | COL | 80 |  |  | ZONE-1 | 03 | PAVE-R | ROADWAY | RDWY | NORTH |  |  |
| 1-0127 |  | CONCRETE CURE, MAD 5TH TO 6TH NORTH SIDE | 3d | 2022-04-26 A | 2022-04-28 A | 1-0126 | 100% | 2022-04-16 | 2022-04-18 | 7 day per week | MBRT BASE [24 h] | 24 |  |  | 24 |  |  | ZONE-1 | 03 |  | ROADWAY | RDWY | NORTH |  |  |
| 1-0129 |  | TEMP PATCH, MAD 5TH TO 6TH NORTH SIDE | 1d | 2022-04-29 A | 2022-04-29 A | 1-0127 | 100% | 2022-04-21 | 2022-04-21 |  | MBRT BASE [8 h] | 8 | 8 | EA3 | 8 |  |  | ZONE-1 | 03 |  | ROADWAY | RDWY | NORTH |  |  |
| 1-0128 |  | F/P CURB 1ST TO 6TH WEST SIDE, MAD 3RD TO 6TH NORTH SIDE | 2d | 2022-05-06 A | 2022-05-09 A | 1-0122, 1-0127 | 100% | 2023-03-01 | 2023-03-02 |  | MBRT BASE [16 h] | 16 | 16 | COM | 16 |  |  | ZONE-1 | 03 | CURB | ROADWAY | RDWY | NORTH |  |  |

Notes:
- 1-1410: Description: Original intent was to be able to work in 3 blocks, with underground work / completed. Bus impacts not allowing for work to occur in the sequence / planned.
- 1-2720: Description: Original intent was to be able to work in 3 blocks, with underground work / completed. Bus impacts not allowing for work to occur in the sequence / planned.
- 1-2725: Description: Original intent was to be able to work in 3 blocks, with underground work / completed. Bus impacts not allowing for work to occur in the sequence / planned.
- 1-0124: Description: Original intent was to be able to work in 3 blocks, with underground work / completed. Bus impacts not allowing for work to occur in the sequence / planned.

| ID | WBS | Activity | Duration | Start | Finish | Predecessors | Complete | Planned start | Planned finish | Calendar | Resources | Cost | Actual cost | user_text2 | user_number6 | user_text10 | user_text8 | MBRT-ZONE | MBRT-LOCATION | MBRT-SCOPE | MBRT-TYPE | MBRT-ROADWAY | MBRT-SIDE | MBRT-DELAY | MBRT-RESP | user_text1 |
| --- | --- | --- | --- | --- | --- | --- | --- | --- | --- | --- | --- | --- | --- | --- | --- | --- | --- | --- | --- | --- | --- | --- | --- | --- | --- | --- |
|  | 19 | **MADISON 3RD TO 6TH SOUTH SIDE** |  | 2023-07-19 | 2023-09-12 |  |  |  |  |  |  |  |  |  |  |  |  |  |  |  |  |  |  |  |  |  |
| 1-0217 |  | DEMO ROAD - COMMON EX - TYPE 2, MAD 3RD TO 6TH SOUTH SIDE | 4d | 2023-07-19 A | 2023-08-11 A | 1-0212, 1-1420 FF, 1-0335 | 100% | 2023-08-07 | 2023-08-10 |  | MBRT BASE [144 h] | 144 | 144 | GRM | 144 | 1-0217 | 1-0217 | ZONE-1 | 03 | DEMOPREP | ROADWAY | RDWY | SOUTH | OCS |  |  |
| 1-0223 |  | DSC 581 CONCRETE CONFLICT WITH COMMON EX | 2d | 2023-08-10 A | 2023-08-11 A | 1-0217 SS | 100% | 2023-07-03 | 2023-07-05 |  | MBRT DSC [16 h] | 16 | 16 |  | 16 |  |  |  |  |  |  |  |  |  |  |  |
| 1-0283 |  | DSC 583 BRICK WALL IN CONFLICT WITH CONDUIT SWC 4TH | 19d | 2023-08-11 A | 2023-09-07 A | 1-0217 SS | 100% | 2023-07-03 | 2023-07-28 |  | MBRT DSC [152 h] | 152 | 152 |  | 152 |  |  |  |  |  |  |  |  |  |  |  |
| 1-0218 |  | CONDUIT RD CROSSING, MAD 3RD TO 6TH SOUTH SIDE | 1d | 2023-08-14 A | 2023-08-14 A | 1-0217 SS, 1-0223, 1-0283 SS | 100% |  |  |  | MBRT BASE [8 h] | 8 | 8 | ELECRICAL SUB | 8 | 1-0218 | 1-0218 | ZONE-1 | 03 | ELECTRICAL | ROADWAY | RDWY | SOUTH |  | PRIME |  |
| 1-0219 |  | ROADWAY PAVING - 2 POURS, MAD 3RD TO 6TH SOUTH SIDE | 2d | 2023-08-15 A | 2023-08-16 A | 1-0214, 1-0217, 1-0218 | 100% |  |  |  | MBRT BASE [16 h] | 16 | 16 | COL | 16 | 1-0219 | 1-0219 | ZONE-1 | 03 | PAVE-R | ROADWAY | RDWY | SOUTH |  |  |  |
| 1-0220 |  | CONCRETE CURE, MAD 3RD TO 6TH SOUTH SIDE | 3d | 2023-08-17 A | 2023-08-21 A | 1-0219 | 100% | 2023-08-17 | 2023-08-19 | 7 day per week | MBRT BASE |  |  |  | 40 | 1-0220 | 1-0220 | ZONE-1 | 03 |  | ROADWAY | RDWY | SOUTH |  |  |  |
| 1-0221 |  | F/P CURB MAD 1ST TO 6TH SOUTH SIDE, MAD 3RD TO 6TH SOUTH SIDE | 1d | 2023-08-17 A | 2023-08-17 A | 1-0215, 1-0220 | 100% | 2023-08-21 | 2023-08-21 |  | MBRT BASE [8 h] | 8 | 8 | COM | 8 | 1-0221 | 1-0221 | ZONE-1 | 03 | CURB | ROADWAY | RDWY | SOUTH |  |  |  |
| 1-0222 |  | TEMP PATCH, MAD 3RD TO 6TH SOUTH SIDE | 1d | 2023-08-18 A | 2023-08-18 A | 1-0221 | 100% | 2023-08-22 | 2023-08-22 |  | MBRT BASE [8 h] | 8 | 8 | EA3 | 8 | 1-0222 | 1-0222 | ZONE-1 | 03 |  | ROADWAY | RDWY | SOUTH |  |  |  |
| 1-0242 |  | CONDUIT AFTER DSC 583 | 1d | 2023-09-08 A | 2023-09-08 A | 1-0283 | 100% | 2023-09-12 | 2023-09-12 |  | MBRT DSC [8 h] | 8 | 8 |  | 8 |  |  |  |  |  |  |  |  |  |  |  |
| 1-0267 |  | GRADING AFTER DSC 583 | 1d | 2023-09-11 A | 2023-09-11 A | 1-0242 | 100% | 2023-09-14 | 2023-09-14 |  | MBRT DSC [8 h] | 8 | 8 |  | 8 |  |  |  |  |  |  |  |  |  |  |  |
| 1-0247 |  | ROADWAY PAVING AFTER DSC 583 | 1d | 2023-09-12 A | 2023-09-12 A | 1-0267 | 100% | 2023-09-18 | 2023-09-18 |  | MBRT DSC [8 h] | 8 | 8 |  | 8 |  |  |  |  |  |  |  |  |  |  |  |
|  | 5 | **MADISON 7TH TO 9TH NORTH SIDE** |  | 2022-01-18 | 2022-05-24 |  |  |  |  |  |  |  |  |  |  |  |  |  |  |  |  |  |  |  |  |  |
| PCO103.01 |  | DSC 64-Conduit In Roadway 9th to 8th | 5d | 2022-01-18 A | 2022-04-01 A | MS-0025 | 100% | 2023-02-27 | 2023-03-03 |  | MBRT DSC [416 h] | 416 | 416 |  | 416 |  |  |  |  |  |  |  |  |  |  | ROADWAY |
| PCO104.01 |  | DSC 65-Steel Conduit in Subgrade 7th 8th on Madison | 5d | 2022-01-18 A | 2022-04-01 A | MS-0025 | 100% | 2023-02-27 | 2023-03-03 |  | MBRT DSC [416 h] | 416 | 40 |  | 416 |  |  |  |  |  |  |  |  |  |  |  |
| 1-0131 |  | DEMO ROAD - COMMON EX - TYPE 2, MAD 7TH TO 9TH NORTH SIDE | 8d | 2022-01-18 A | 2022-01-24 A | 1-0124, 1-0074, SC-0029, 1-0279 | 100% | 2022-01-24 | 2022-02-02 |  | MBRT BASE [40 h] | 40 | 40 | GRM | 40 |  |  | ZONE-1 | 07 | DEMOPREP | ROADWAY | RDWY | NORTH |  |  |  |
| 1-0132 |  | CONDUIT RD CROSSING, MAD 7TH TO 9TH NORTH SIDE | 8d | 2022-01-18 A | 2022-01-27 A | 1-0131 SS | 100% | 2022-01-24 | 2022-02-02 |  | MBRT BASE [64 h] | 64 | 64 | ELECRICAL SUB | 64 |  |  | ZONE-1 | 07 | ELECTRICAL | ROADWAY | RDWY | NORTH |  | PRIME |  |
| PCO108.01 |  | DSC 69-Remove Cable Car System 7th to 9th Center Lane North side | 5d | 2022-01-21 A | 2022-03-04 A | MS-0025 | 100% | 2023-02-27 | 2023-03-03 |  | MBRT DSC [232 h] | 232 | 232 |  | 232 |  |  |  |  |  |  |  |  |  |  | ROADWAY |
| PCO109.01 |  | DSC 70-Broken Conduit discovered, directly under concrete. Madison 8th-9th North side | 5d | 2022-01-21 A | 2022-02-24 A | MS-0025 | 100% | 2023-02-27 | 2023-03-03 |  | MBRT DSC [184 h] | 184 | 184 |  | 184 |  |  |  |  |  |  |  |  |  |  |  |
| 1-0137 |  | DELAY - POLE REMOVAL 7TH-8TH, SDOT POLE SUPPORT | 5d | 2022-01-25 A | 2022-03-18 A | 1-0131 | 100% | 2022-03-01 | 2022-03-07 |  | MBRT NEW |  |  |  | 304 |  |  |  |  |  |  |  |  |  |  |  |
| PCO116.01 |  | DSC 75-Streetlight Conduit Madison and 8th | 5d | 2022-01-26 A | 2022-02-10 A | MS-0025 | 100% | 2023-02-27 | 2023-03-03 |  | MBRT DSC [88 h] | 88 | 88 |  | 88 |  |  |  |  |  |  |  |  |  |  |  |
| PCO171.01 |  | DSC 119-conduit conflict 7th to 8th curb lane | 5d | 2022-03-21 A | 2022-04-01 A | MS-0025 | 100% | 2023-02-27 | 2023-03-03 |  | MBRT DSC [72 h] | 72 | 72 |  | 72 |  |  |  |  |  |  |  |  |  |  |  |
| PCO172.01 |  | DSC 120-Unknown unlocted clay pipe 7th to 8th curb lane | 5d | 2022-03-21 A | 2022-04-01 A | MS-0025 | 100% | 2023-02-27 | 2023-03-03 |  | MBRT DSC [72 h] | 72 | 72 |  | 72 |  |  |  |  |  |  |  |  |  |  |  |
| PCO173.01 |  | DSC 121-Pavement Depth WB Curb Lane 7th to 8th | 5d | 2022-03-21 A | 2022-04-01 A | MS-0025 | 100% | 2023-02-27 | 2023-03-03 |  | MBRT DSC [72 h] | 72 | 72 |  | 72 |  |  |  |  |  |  |  |  |  |  |  |
| 1-0187 |  | COMPLETE DEMO, COMMON EX, TYPE-2, AFTER POLE REMVOAL | 5d | 2022-03-21 A | 2022-03-23 A | 1-0137, 1-0137 FF, MS-2581 | 100% | 2022-03-08 | 2022-03-14 |  | MBRT NEW [40 h] | 40 | 24 |  | 24 |  |  |  |  |  |  |  |  |  |  |  |
| PCO178.01 |  | DSC 125-CDF Conflict with Curb 7th to 8th | 5d | 2022-03-22 A | 2022-05-24 A | MS-0025 | 100% | 2023-02-27 | 2023-03-03 |  | MBRT DSC [360 h] | 360 | 40 |  | 360 |  |  |  |  |  |  |  |  |  |  |  |
| 1-0133 |  | ROADWAY PAVING - 3 POURS, MAD 7TH TO 9TH NORTH SIDE | 4d | 2022-03-24 A | 2022-04-07 A | 1-0132, 1-0187, MS-2571 | 100% | 2022-03-24 | 2022-03-29 |  | MBRT BASE [88 h] | 88 | 88 | COL | 88 |  |  | ZONE-1 | 07 | PAVE-R | ROADWAY | RDWY | NORTH |  |  |  |
| 1-0134 |  | CONCRETE CURE, MAD 7TH TO 9TH NORTH SIDE | 3d | 2022-03-25 A | 2022-04-08 A | 1-0133 SS | 100% | 2022-03-30 | 2022-04-01 | 7 day per week | MBRT BASE |  |  |  | 112 |  |  | ZONE-1 | 07 |  | ROADWAY | RDWY | NORTH |  |  |  |
| PCO187.01 |  | DSC 133-Watermain Valve Nut, 9th & Madison | 5d | 2022-03-29 A | 2022-04-06 A | MS-0025 | 100% | 2023-02-27 | 2023-03-03 |  | MBRT DSC [48 h] | 48 | 48 |  | 48 |  |  |  |  |  |  |  |  |  |  |  |
| 1-0135 |  | F/P CURB MAD 7TH TO 9TH, MAD 7TH TO 9TH NORTH SIDE | 2d | 2022-04-07 A | 2022-04-07 A | 1-0134 SS | 100% | 2022-04-04 | 2022-04-05 |  | MBRT BASE [8 h] | 8 | 8 | COM | 8 |  |  | ZONE-1 | 07 | CURB | ROADWAY | RDWY | NORTH |  |  |  |
| 1-0136 |  | TEMP PATCH, MAD 7TH TO 9TH NORTH SIDE | 1d | 2022-04-08 A | 2022-04-08 A | 1-0135 | 100% | 2022-04-06 | 2022-04-06 |  | MBRT BASE [8 h] | 8 | 8 | EA3 | 8 |  |  | ZONE-1 | 07 |  | ROADWAY | RDWY | NORTH |  |  |  |

Notes:
- 1-0137: Description: SDOT NOT WILLING TO USE THE POLE SUPPORT BID ITEM TO ALLOW FOR ROADWAY DEMO / TO PROCEED NEXT TO EXISTING POLE.

| ID | WBS | Activity | Duration | Start | Finish | Predecessors | Complete | Planned start | Planned finish | Calendar | Resources | Cost | Actual cost | user_text2 | user_number6 | MBRT-ZONE | MBRT-LOCATION | MBRT-SCOPE | MBRT-TYPE | MBRT-ROADWAY | MBRT-SIDE | MBRT-DELAY | MBRT-RESP | user_text10 | user_text8 |
| --- | --- | --- | --- | --- | --- | --- | --- | --- | --- | --- | --- | --- | --- | --- | --- | --- | --- | --- | --- | --- | --- | --- | --- | --- | --- |
|  | 20 | **MADISON 7TH TO 9TH SOUTH SIDE** |  | 2022-06-10 | 2022-08-12 |  |  |  |  |  |  |  |  |  |  |  |  |  |  |  |  |  |  |  |  |
| 1-0224 |  | DEMO ROAD - COMMON EX - TYPE 2, MAD 7TH TO 9TH SOUTH SIDE | 6d | 2022-06-10 A | 2022-06-14 A | 1-0136, 1-0128 | 100% | 2022-06-06 | 2022-06-13 |  | MBRT BASE [24 h] | 24 | 24 | GRM | 24 | ZONE-1 | 07 | DEMOPREP | ROADWAY | RDWY | SOUTH | OCS |  |  |  |
| 1-0225 |  | CONDUIT RD CROSSING, MAD 7TH TO 9TH SOUTH SIDE | 6d | 2022-06-10 A | 2022-06-14 A | 1-0224 SS | 100% | 2022-06-06 | 2022-06-13 |  | MBRT BASE [24 h] | 24 | 24 | ELECRICAL SUB | 24 | ZONE-1 | 07 | ELECTRICAL | ROADWAY | RDWY | SOUTH |  | PRIME |  |  |
| 1-0226 |  | ROADWAY PAVING - 2 POURS, MAD 7TH TO 9TH SOUTH SIDE | 4d | 2022-06-15 A | 2022-06-19 A | 1-0225 | 100% | 2022-06-14 | 2022-06-17 |  | MBRT BASE [24 h] | 24 | 24 | COL | 24 | ZONE-1 | 07 | PAVE-R | ROADWAY | RDWY | SOUTH |  |  |  |  |
| PCO280.01 |  | DSC 205-SFD water on grade 8th to 9th | 5d | 2022-06-16 A | 2022-06-24 A | MS-0025 | 100% | 2023-02-27 | 2023-03-03 |  | MBRT DSC [48 h] | 48 | 48 |  | 48 |  |  |  |  |  |  |  |  |  |  |
| PCO281.01 |  | DSC 206-Com Vault hole Madison and 8th | 5d | 2022-06-16 A | 2022-08-12 A | MS-0025 | 100% | 2023-02-27 | 2023-03-03 |  | MBRT DSC [320 h] | 320 | 40 |  | 320 |  |  |  |  |  |  |  |  |  |  |
| 1-0227 |  | CONCRETE CURE, MAD 7TH TO 9TH SOUTH SIDE | 3d | 2022-06-20 A | 2022-06-23 A | 1-0226 | 100% | 2022-06-08 | 2022-06-10 | 7 day per week | MBRT BASE |  |  |  | 32 | ZONE-1 | 07 |  | ROADWAY | RDWY | SOUTH |  |  |  |  |
| 1-0228 |  | F/P CURB MAD 7TH TO 9TH SOUTH SIDE, MAD 7TH TO 9TH SOUTH SIDE | 2d | 2022-06-24 A | 2022-06-25 A | 1-0227 | 100% | 2022-06-21 | 2022-06-22 |  | MBRT BASE [8 h] | 8 | 8 | COM | 8 | ZONE-1 | 07 | CURB | ROADWAY | RDWY | SOUTH |  |  |  |  |
| 1-0229 |  | TEMP PATCH, MAD 7TH TO 9TH SOUTH SIDE | 1d | 2022-06-28 A | 2022-06-28 A | 1-0228 | 100% | 2022-07-01 | 2022-07-01 |  | MBRT BASE [8 h] | 8 | 8 | EA3 | 8 | ZONE-1 | 07 |  | ROADWAY | RDWY | SOUTH |  |  |  |  |
|  | 11 | **9TH SPRING TO MADISON EAST SIDE** |  | 2023-05-16 | 2023-11-27 |  |  |  |  |  |  |  |  |  |  |  |  |  |  |  |  |  |  |  |  |
| 1-2950 |  | CITY WON'T ALLOW CONCURRENT CLOSURE WITH BOREN | 4d | 2023-05-16 A | 2023-06-09 A | MS-0025 | 100% | 2023-05-01 | 2023-05-04 |  | MBRT NEW [32 h] | 32 | 144 | GRM | 144 | ZONE-1 | 09 | DEMOPREP | ROADWAY | RDWY | EAST |  |  | 1-2950 | 1-2950 |
| 1-0169 |  | DEMO ROAD - COMMON EX - TYPE 2, 9TH SPRING TO MAD EAST SIDE | 6d | 2023-06-29 A | 2023-07-07 A | 1-0164, 1-0255, 1-0260, 1-2950 FS+13d | 100% |  |  |  | MBRT BASE [48 h] | 48 | 48 | GRM | 48 | ZONE-1 | 09 | DEMOPREP | ROADWAY | RDWY | EAST |  |  | 1-0169 | 1-0169 |
| 1-0299 |  | DSC 544 DUCT BANK 9TH MADISON TO SPRING CONFLICT | 2d | 2023-06-29 A | 2023-06-30 A | 1-2950 | 100% |  |  |  | MBRT DSC [16 h] | 16 | 16 |  | 16 |  |  |  |  |  |  |  |  | 1-0299 | 1-0299 |
| 1-0319 |  | DSC 547 9TH MADISON TO SPRING CONTAMINATED SOILS | 3d | 2023-06-29 A | 2023-07-03 A | 1-0169 SS | 100% |  |  |  | MBRT DSC [24 h] | 24 | 24 |  | 24 |  |  |  |  |  |  |  |  | 1-0319 | 1-0319 |
| 1-0339 |  | BUILDING FIRE | 7d | 2023-07-05 A | 2023-11-06 A | 1-0319 | 100% | 2023-07-05 | 2023-07-13 |  | MBRT NEW |  |  |  | 704 |  |  |  |  |  |  |  |  | 1-0339 | 1-0339 |
| 1-3020 |  | DSC 550 CONDUIT IN ROADWAY | 5d | 2023-07-05 A | 2023-07-11 A | 1-0169 SS | 100% | 2023-07-03 | 2023-07-10 |  | MBRT DSC [40 h] | 40 | 40 |  | 40 |  |  |  |  |  |  |  |  |  |  |
| 1-0170 |  | CONDUIT RD CROSSING, 9TH SPRING TO MAD EAST SIDE | 6d | 2023-07-06 A | 2023-08-21 A | 1-0169 SS, 1-0339 SS, 1-3020 FF, 1-3125 FF, 1-3220 FF | 100% | 2023-08-02 | 2023-08-09 |  | MBRT BASE [264 h] | 264 | 264 | ELECRICAL SUB | 264 | ZONE-1 | 09 | ELECTRICAL | ROADWAY | RDWY | EAST |  | PRIME | 1-0170 | 1-0170 |
| 1-3125 |  | DSC 552 UNTILITY CONFLICTS WITH CONDUIT | 4d | 2023-07-06 A | 2023-07-12 A | 1-0169 SS | 100% | 2023-07-03 | 2023-07-07 |  | MBRT DSC [32 h] | 32 | 32 |  | 32 |  |  |  |  |  |  |  |  |  |  |
| 1-3220 |  | DSC 553 UNKNOWN ABANDONED CB | 4d | 2023-07-06 A | 2023-07-12 A | 1-0169 SS | 100% | 2023-07-03 | 2023-07-07 |  | MBRT DSC [32 h] | 32 | 32 |  | 32 |  |  |  |  |  |  |  |  |  |  |
| 1-3340 |  | GRADING AFTER FIRE | 3d | 2023-11-07 A | 2023-11-09 A | 1-0170, 1-0339 | 100% | 2023-11-06 | 2023-11-08 |  | MBRT NEW [24 h] | 24 | 24 |  | 24 |  |  |  |  |  |  |  |  |  |  |
| 1-0171 |  | ROADWAY PAVING - 1 POURS, 9TH SPRING TO MAD EAST SIDE | 2d | 2023-11-13 A | 2023-11-20 A | 1-0169, 1-0170, 1-0166, 1-0319, 1-0299, 1-0339, 1-3340 | 100% | 2023-11-08 | 2023-11-09 |  | MBRT BASE [32 h] | 32 | 32 | COL | 32 | ZONE-1 | 09 | PAVE-R | ROADWAY | RDWY | EAST |  |  | 1-0171 | 1-0171 |
| 1-0173 |  | F/P CURB, 9TH SPRING TO MAD EAST SIDE | 2d | 2023-11-16 A | 2023-11-21 A | 1-0171, 1-0172 SS | 100% | 2023-11-16 | 2023-11-17 |  | MBRT BASE [24 h] | 24 | 24 | COM | 24 | ZONE-1 | 09 | CURB | ROADWAY | RDWY | EAST |  |  | 1-0173 | 1-0173 |
| 1-0172 |  | CONCRETE CURE, 9TH SPRING TO MAD EAST SIDE | 3d | 2023-11-21 A | 2023-11-27 A | 1-0171 | 100% | 2023-11-10 | 2023-11-15 |  | MBRT BASE |  |  |  | 24 | ZONE-1 | 09 |  | ROADWAY | RDWY | EAST |  |  | 1-0172 | 1-0172 |
| 1-0174 |  | TEMP PATCH, 9TH SPRING TO MAD EAST SIDE | 1d | 2023-11-22 A | 2023-11-22 A | 1-0173 | 100% | 2023-11-20 | 2023-11-20 |  | MBRT BASE [8 h] | 8 | 8 | EA3 | 8 | ZONE-1 | 09 |  | ROADWAY | RDWY | EAST |  |  | 1-0174 | 1-0174 |

| ID | WBS | Activity | Duration | Start | Finish | Predecessors | Complete | Planned start | Planned finish | Calendar | Resources | Cost | Actual cost | user_text2 | user_number6 | user_text10 | user_text8 | MBRT-ZONE | MBRT-LOCATION | MBRT-SCOPE | MBRT-TYPE | MBRT-ROADWAY | MBRT-SIDE | MBRT-RESP | MBRT-DELAY |
| --- | --- | --- | --- | --- | --- | --- | --- | --- | --- | --- | --- | --- | --- | --- | --- | --- | --- | --- | --- | --- | --- | --- | --- | --- | --- |
|  | 7 | **9TH SPRING TO MADISON WEST SIDE** |  | 2022-06-06 | 2023-11-28 |  |  |  |  |  |  |  |  |  |  |  |  |  |  |  |  |  |  |  |  |
| 1-1425 |  | DELAY AWAITING COMCAST, 9TH SPRING TO MAD WEST SIDE | 3d | 2022-06-06 A | 2023-06-16 A | 1-0138 | 100% | 2023-03-01 | 2023-03-03 |  | MBRT NEW |  |  | GRM | 2080 | 1-1425 | 1-1425 | ZONE-1 | 09 | DEMOPREP | ROADWAY | RDWY | WEST |  |  |
| 1-0145 |  | DEMO ROAD - COMMON EX - TYPE 2, 9TH SPRING TO MAD WEST SIDE | 3d | 2023-11-06 A | 2023-11-09 A | 1-1410, 1-1425, 1-0173, 1-0173 FF, 1-0174, 1-0247 | 100% | 2023-11-21 | 2023-11-27 |  | MBRT BASE [32 h] | 32 | 32 | GRM | 32 | 1-0145 | 1-0145 | ZONE-1 | 09 | DEMOPREP | ROADWAY | RDWY | WEST |  |  |
| 1-0146 |  | CONDUIT RD CROSSING, 9TH SPRING TO MAD WEST SIDE | 3d | 2023-11-06 A | 2023-11-09 A | 1-0145 SS | 100% | 2023-11-21 | 2023-11-27 |  | MBRT BASE [32 h] | 32 | 32 | ELECRICAL SUB | 32 | 1-0146 | 1-0146 | ZONE-1 | 09 | ELECTRICAL | ROADWAY | RDWY | WEST | PRIME |  |
| 1-0147 |  | ROADWAY PAVING - 2 POURS, 9TH SPRING TO MAD WEST SIDE | 4d | 2023-11-13 A | 2023-11-20 A | 1-0146, 1-0140 | 100% | 2023-11-28 | 2023-12-01 |  | MBRT BASE [40 h] | 40 | 40 | COL | 40 | 1-0147 | 1-0147 | ZONE-1 | 09 | PAVE-R | ROADWAY | RDWY | WEST |  |  |
| 1-0148 |  | CONCRETE CURE, 9TH SPRING TO MAD WEST SIDE | 3d | 2023-11-21 A | 2023-11-27 A | 1-0147 | 100% | 2023-12-04 | 2023-12-06 |  | MBRT BASE |  |  |  | 24 | 1-0148 | 1-0148 | ZONE-1 | 09 |  | ROADWAY | RDWY | WEST |  |  |
| 1-0149 |  | F/P CURB SPRING 7TH TO 9TH, 9TH SPRING TO MAD WEST SIDE | 1d | 2023-11-21 A | 2023-11-21 A | 1-0147, 1-0148 | 100% | 2023-12-07 | 2023-12-07 |  | MBRT BASE [8 h] | 8 | 8 | COM | 8 | 1-0149 | 1-0149 | ZONE-1 | 09 | CURB | ROADWAY | RDWY | WEST |  |  |
| 1-0150 |  | TEMP PATCH, 9TH SPRING TO MAD WEST SIDE | 1d | 2023-11-28 A | 2023-11-28 A | 1-0149, 1-0148 | 100% | 2023-12-08 | 2023-12-08 |  | MBRT BASE [8 h] | 8 | 8 | EA3 | 8 | 1-0150 | 1-0150 | ZONE-1 | 09 |  | ROADWAY | RDWY | WEST |  |  |
|  | 12 | **9TH TO TERRY NORTH SIDE** |  | 2022-01-26 | 2022-09-17 |  |  |  |  |  |  |  |  |  |  |  |  |  |  |  |  |  |  |  |  |
| 1-0371 |  | FM 074 - SDOT ROADWAY REMOVAL SUSPENSION | 5d | 2022-01-26 A | 2022-03-11 A | MS-0025 | 100% | 2022-01-03 | 2022-01-07 |  | MBRT NEW [40 h] | 40 | 248 |  | 248 |  |  |  |  |  |  |  |  |  |  |
| 1-0176 |  | DEMO ROAD - COMMON EX - TYPE 2, 9TH TO TERRY NORTH SIDE | 6d | 2022-03-24 A | 2022-04-11 A | 1-0079, 1-0080, 1-0100, 1-0118, 1-0371 | 100% | 2022-03-15 | 2022-03-22 |  | MBRT BASE [104 h] | 104 | 104 | GRM | 104 |  |  | ZONE-1 | 09 | DEMOPREP | ROADWAY | RDWY | NORTH |  | OCS |
| 1-0177 |  | CONDUIT RD CROSSING, 9TH TO TERRY NORTH SIDE | 6d | 2022-03-24 A | 2022-03-31 A | 1-0176 SS | 100% | 2022-03-15 | 2022-03-22 |  | MBRT BASE [48 h] | 48 | 48 | ELECRICAL SUB | 48 |  |  | ZONE-1 | 09 | ELECTRICAL | ROADWAY | RDWY | NORTH | PRIME |  |
| PCO207.01 |  | DSC 148-Unknown Utilities North Side 9th Crossing | 5d | 2022-04-11 A | 2022-04-30 A | MS-0025 | 100% | 2023-02-27 | 2023-03-03 |  | MBRT DSC [120 h] | 120 | 120 |  | 120 |  |  |  |  |  |  |  |  |  |  |
| 1-0178 |  | ROADWAY PAVING - 2 POURS, 9TH TO TERRY NORTH SIDE | 4d | 2022-04-12 A | 2022-04-19 A | 1-0177, 1-0176 | 100% | 2022-04-01 | 2022-04-06 |  | MBRT BASE [48 h] | 48 | 48 | COL | 48 |  |  | ZONE-1 | 09 | PAVE-R | ROADWAY | RDWY | NORTH |  |  |
| 1-0179 |  | CONCRETE CURE, 9TH TO TERRY NORTH SIDE | 3d | 2022-04-20 A | 2022-04-22 A | 1-0178 | 100% | 2022-04-07 | 2022-04-09 | 7 day per week | MBRT BASE |  |  |  | 24 |  |  | ZONE-1 | 09 |  | ROADWAY | RDWY | NORTH |  |  |
| PCO376.01 |  | DSC 274-Chipping Concrete at Alley 8th-9th on Madison | 5d | 2022-09-08 A | 2022-09-17 A | MS-0025 | 100% | 2023-02-27 | 2023-03-03 |  | MBRT DSC [56 h] | 56 | 56 |  | 56 |  |  |  |  |  |  |  |  |  |  |
|  | 21 | **9TH TO TERRY SOUTH SIDE** |  | 2022-06-22 | 2022-07-13 |  |  |  |  |  |  |  |  |  |  |  |  |  |  |  |  |  |  |  |  |
| PCO289.01 |  | DSC 212-Shallow Gas Line - Madison 9th-Terry | 5d | 2022-06-22 A | 2022-07-01 A | MS-0025 | 100% | 2023-02-27 | 2023-03-03 |  | MBRT DSC [56 h] | 56 | 56 |  | 56 |  |  |  |  |  |  |  |  |  |  |
| 1-0231 |  | DEMO ROAD - COMMON EX - TYPE 2, 9TH TO TERRY SOUTH SIDE | 6d | 2022-06-22 A | 2022-06-29 A | 1-0186, 1-0224 | 100% | 2022-05-31 | 2022-06-07 |  | MBRT BASE [48 h] | 48 | 48 | GRM | 48 |  |  | ZONE-1 | 09 | DEMOPREP | ROADWAY | RDWY | SOUTH |  | OCS |
| 1-0232 |  | CONDUIT RD CROSSING, 9TH TO TERRY SOUTH SIDE | 6d | 2022-06-22 A | 2022-06-29 A | 1-0231 SS | 100% | 2022-05-31 | 2022-06-07 |  | MBRT BASE [48 h] | 48 | 48 | ELECRICAL SUB | 48 |  |  | ZONE-1 | 09 | ELECTRICAL | ROADWAY | RDWY | SOUTH | PRIME |  |
| 1-0233 |  | ROADWAY PAVING - 2 POURS, 9TH TO TERRY SOUTH SIDE | 4d | 2022-07-06 A | 2022-07-11 A | 1-0226, 1-0231, 1-0232 | 100% | 2022-07-01 | 2022-07-07 |  | MBRT BASE [32 h] | 32 | 32 | COL | 32 |  |  | ZONE-1 | 09 | PAVE-R | ROADWAY | RDWY | SOUTH |  |  |
| 1-0234 |  | CONCRETE CURE, 9TH TO TERRY SOUTH SIDE | 3d | 2022-07-11 A | 2022-07-13 A | 1-0233 | 100% |  |  | 7 day per week | MBRT BASE |  |  |  | 24 |  |  | ZONE-1 | 09 |  | ROADWAY | RDWY | SOUTH |  |  |
|  | 13 | **TERRY TO BOREN NORTH SIDE** |  | 2022-03-24 | 2022-04-25 |  |  |  |  |  |  |  |  |  |  |  |  |  |  |  |  |  |  |  |  |
| 1-0181 |  | DEMO ROAD - COMMON EX - TYPE 2, TERRY TO BOREN NORTH SIDE | 6d | 2022-03-24 A | 2022-04-11 A | 1-0176 SS, 1-0101 | 100% | 2022-03-23 | 2022-03-30 |  | MBRT BASE [104 h] | 104 | 104 | GRM | 104 |  |  | ZONE-1 | TERRY | DEMOPREP | ROADWAY | RDWY | NORTH |  | OCS |
| 1-0182 |  | CONDUIT RD CROSSING, TERRY TO BOREN NORTH SIDE | 6d | 2022-03-24 A | 2022-03-31 A | 1-0181 SS | 100% | 2022-03-23 | 2022-03-30 |  | MBRT BASE [48 h] | 48 | 48 | ELECRICAL SUB | 48 |  |  | ZONE-1 | TERRY | ELECTRICAL | ROADWAY | RDWY | NORTH | PRIME |  |
| PCO186.01 |  | DSC 132-Existing type 264 Inlet NE Terry | 5d | 2022-03-29 A | 2022-03-30 A | MS-0025 | 100% | 2023-02-27 | 2023-03-03 |  | MBRT DSC [8 h] | 8 | 8 |  | 8 |  |  |  |  |  |  |  |  |  |  |
| 1-0183 |  | ROADWAY PAVING - 2 POURS, TERRY TO BOREN NORTH SIDE | 4d | 2022-04-12 A | 2022-04-19 A | 1-0182, 1-0181, 1-0178 | 100% | 2022-04-07 | 2022-04-12 |  | MBRT BASE [48 h] | 48 | 48 | COL | 48 |  |  | ZONE-1 | TERRY | PAVE-R | ROADWAY | RDWY | NORTH |  |  |
| 1-0184 |  | CONCRETE CURE, TERRY TO BOREN NORTH SIDE | 3d | 2022-04-20 A | 2022-04-22 A | 1-0183 | 100% | 2022-04-13 | 2022-04-15 | 7 day per week | MBRT BASE |  |  |  | 24 |  |  | ZONE-1 | TERRY |  | ROADWAY | RDWY | NORTH |  |  |
| 1-0185 |  | F/P CURB MAD 9TH TO BOREN, TERRY TO BOREN NORTH SIDE | 3d | 2022-04-20 A | 2022-04-21 A | 1-0184, 1-0179 | 100% | 2022-04-18 | 2022-04-20 |  | MBRT BASE [16 h] | 16 | 16 | COM | 16 |  |  | ZONE-1 | TERRY | CURB | ROADWAY | RDWY | NORTH |  |  |
| 1-0186 |  | TEMP PATCH MAD TERRY TO BOREN, TERRY TO BOREN NORTH SIDE | 1d | 2022-04-22 A | 2022-04-25 A | 1-0185 | 100% | 2022-04-21 | 2022-04-21 |  | MBRT BASE [16 h] | 16 | 16 | EA3 | 16 |  |  | ZONE-1 | TERRY |  | ROADWAY | RDWY | NORTH |  |  |

| ID | WBS | Activity | Duration | Start | Finish | Predecessors | Complete | Planned start | Planned finish | Calendar | Resources | Cost | Actual cost | user_text2 | user_number6 | MBRT-ZONE | MBRT-LOCATION | MBRT-SCOPE | MBRT-TYPE | MBRT-ROADWAY | MBRT-SIDE | MBRT-DELAY | MBRT-RESP |
| --- | --- | --- | --- | --- | --- | --- | --- | --- | --- | --- | --- | --- | --- | --- | --- | --- | --- | --- | --- | --- | --- | --- | --- |
|  | 22 | **TERRY TO BOREN SOUTH SIDE** |  | 2022-06-22 | 2022-07-27 |  |  |  |  |  |  |  |  |  |  |  |  |  |  |  |  |  |  |
| 1-0236 |  | DEMO ROAD - COMMON EX - TYPE 2, TERRY TO BOREN SOUTH SIDE | 6d | 2022-06-22 A | 2022-06-29 A | 1-0231 SS, 1-0081 | 100% |  |  |  | MBRT BASE [48 h] | 48 | 48 | GRM | 48 | ZONE-1 | TERRY | DEMOPREP | ROADWAY | RDWY | SOUTH | OCS |  |
| 1-0237 |  | CONDUIT RD CROSSING, TERRY TO BOREN SOUTH SIDE | 6d | 2022-06-22 A | 2022-06-29 A | 1-0236 SS | 100% |  |  |  | MBRT BASE [48 h] | 48 | 48 | ELECRICAL SUB | 48 | ZONE-1 | TERRY | ELECTRICAL | ROADWAY | RDWY | SOUTH |  | PRIME |
| PCO290.01 |  | DSC 213-Steel Conduit Conflict Terry-Boren South | 5d | 2022-06-24 A | 2022-07-02 A | MS-0025 | 100% | 2023-02-27 | 2023-03-03 |  | MBRT DSC [48 h] | 48 | 48 |  | 48 |  |  |  |  |  |  |  |  |
| PCO292.01 |  | DSC 214-Shallow Com Vault Lid 9th to Terre | 5d | 2022-06-24 A | 2022-07-27 A | MS-0025 | 100% | 2023-02-27 | 2023-03-03 |  | MBRT DSC [176 h] | 176 | 176 |  | 176 |  |  |  |  |  |  |  |  |
| PCO295.01 |  | DSC 217-Cable Car infrastructure 9th to Boren S Center lane | 5d | 2022-06-29 A | 2022-07-02 A | MS-0025 | 100% | 2023-02-27 | 2023-03-03 |  | MBRT DSC [24 h] | 24 | 24 |  | 24 |  |  |  |  |  |  |  |  |
| PCO297.01 |  | DSC 219-CDF conflict with conduit at Terry | 5d | 2022-06-30 A | 2022-07-07 A | MS-0025 | 100% | 2023-02-27 | 2023-03-03 |  | MBRT DSC [32 h] | 32 | 32 |  | 32 |  |  |  |  |  |  |  |  |
| 1-0238 |  | ROADWAY PAVING - 2 POURS, TERRY TO BOREN SOUTH SIDE | 4d | 2022-07-08 A | 2022-07-12 A | 1-0233, 1-0236, 1-0237 | 100% | 2022-07-08 | 2022-07-13 |  | MBRT BASE [24 h] | 24 | 24 | COL | 24 | ZONE-1 | TERRY | PAVE-R | ROADWAY | RDWY | SOUTH |  |  |
| 1-0239 |  | CONCRETE CURE, TERRY TO BOREN SOUTH SIDE | 3d | 2022-07-13 A | 2022-07-15 A | 1-0238 | 100% | 2022-07-14 | 2022-07-16 | 7 day per week | MBRT BASE |  |  |  | 24 | ZONE-1 | TERRY |  | ROADWAY | RDWY | SOUTH |  |  |
| 1-0240 |  | F/P CURB MAD 7TH TO 9TH SOUTH SIDE, TERRY TO BOREN SOUTH SIDE | 3d | 2022-07-14 A | 2022-07-15 A | 1-0234, 1-0239 | 100% | 2022-07-14 | 2022-07-18 |  | MBRT BASE [16 h] | 16 | 16 | COM | 16 | ZONE-1 | TERRY | CURB | ROADWAY | RDWY | SOUTH |  |  |
| 1-0241 |  | TEMP PATCH, TERRY TO BOREN SOUTH SIDE | 3d | 2022-07-18 A | 2022-07-20 A | 1-0240, 1-0229 | 100% | 2022-07-01 | 2022-07-06 |  | MBRT BASE [24 h] | 24 | 24 | EA3 | 24 | ZONE-1 | TERRY |  | ROADWAY | RDWY | SOUTH |  |  |
|  | 14 | **BOREN TO MINOR NORTH SIDE** |  | 2022-04-11 | 2022-04-17 |  |  |  |  |  |  |  |  |  |  |  |  |  |  |  |  |  |  |
| 1-0188 |  | DEMO ROAD - COMMON EX - TYPE 2, BOREN TO MINOR NORTH SIDE | 4d | 2022-04-11 A | 2022-04-12 A | 1-0102, 1-0082, 1-0181, 1-0136 | 100% | 2022-04-07 | 2022-04-12 |  | MBRT BASE [16 h] | 16 | 16 | GRM | 16 | ZONE-1 | BOREN | DEMOPREP | ROADWAY | RDWY | NORTH | OCS |  |
| 1-0189 |  | CONDUIT RD CROSSING, BOREN TO MINOR NORTH SIDE | 4d | 2022-04-11 A | 2022-04-12 A | 1-0188 SS | 100% | 2022-04-07 | 2022-04-12 |  | MBRT BASE [16 h] | 16 | 16 | ELECRICAL SUB | 16 | ZONE-1 | BOREN | ELECTRICAL | ROADWAY | RDWY | NORTH |  | PRIME |
| 1-0190 |  | ROADWAY PAVING - 1 POURS, BOREN TO MINOR NORTH SIDE | 2d | 2022-04-13 A | 2022-04-14 A | 1-0183, 1-0188, 1-0189 | 100% |  |  |  | MBRT BASE [16 h] | 16 | 16 | COL | 16 | ZONE-1 | BOREN | PAVE-R | ROADWAY | RDWY | NORTH |  |  |
| 1-0191 |  | CONCRETE CURE, BOREN TO MINOR NORTH SIDE | 3d | 2022-04-15 A | 2022-04-17 A | 1-0190 | 100% |  |  | 7 day per week | MBRT BASE |  |  |  | 24 | ZONE-1 | BOREN |  | ROADWAY | RDWY | NORTH |  |  |
|  | 23 | **BOREN TO MINOR SOUTH SIDE** |  | 2022-07-18 | 2022-08-26 |  |  |  |  |  |  |  |  |  |  |  |  |  |  |  |  |  |  |
| 1-0243 |  | DEMO ROAD - COMMON EX - TYPE 2, BOREN TO MINOR SOUTH SIDE | 6d | 2022-07-18 A | 2022-07-26 A | 1-0198, 1-0236 | 100% | 2022-07-01 | 2022-07-11 |  | MBRT BASE [56 h] | 56 | 56 | GRM | 56 | ZONE-1 | BOREN | DEMOPREP | ROADWAY | RDWY | SOUTH | OCS |  |
| 1-0244 |  | CONDUIT RD CROSSING, BOREN TO MINOR SOUTH SIDE | 6d | 2022-07-18 A | 2022-07-26 A | 1-0243 SS | 100% | 2022-07-01 | 2022-07-11 |  | MBRT BASE [48 h] | 48 | 48 | ELECRICAL SUB | 48 | ZONE-1 | BOREN | ELECTRICAL | ROADWAY | RDWY | SOUTH |  | PRIME |
| 1-0245 |  | ROADWAY PAVING - 2 POURS, BOREN TO MINOR SOUTH SIDE | 4d | 2022-07-27 A | 2022-08-05 A | 1-0243, 1-0238, 1-0244 | 100% | 2022-07-12 | 2022-07-15 |  | MBRT BASE [64 h] | 64 | 64 | COL | 64 | ZONE-1 | BOREN | PAVE-R | ROADWAY | RDWY | SOUTH |  |  |
| 1-0246 |  | CONCRETE CURE, BOREN TO MINOR SOUTH SIDE | 3d | 2022-08-06 A | 2022-08-08 A | 1-0245 | 100% | 2022-10-07 | 2022-10-09 | 7 day per week | MBRT BASE |  |  |  | 24 | ZONE-1 | BOREN |  | ROADWAY | RDWY | SOUTH |  |  |
| PCO347.01 |  | DSC 256-Boren & Madison, Unlocated Conduit | 5d | 2022-08-10 A | 2022-08-26 A | MS-0025 | 100% | 2023-02-27 | 2023-03-03 |  | MBRT DSC [96 h] | 96 | 96 |  | 96 |  |  |  |  |  |  |  |  |
|  | 15 | **MINOR TO SUMMIT NORTH SIDE** |  | 2022-04-25 | 2022-05-05 |  |  |  |  |  |  |  |  |  |  |  |  |  |  |  |  |  |  |
| PCO229.01 |  | DSC 164-Existing inlet and pipe in roadway NW Minor | 5d | 2022-04-25 A | 2022-05-01 A | MS-0025 | 100% | 2023-02-27 | 2023-03-03 |  | MBRT DSC [40 h] | 40 | 40 |  | 40 |  |  |  |  |  |  |  |  |
| 1-0193 |  | DEMO ROAD - COMMON EX - TYPE 2, MINOR TO SUMMIT NORTH SIDE | 4d | 2022-04-25 A | 2022-04-26 A | 1-0103, 1-0083, 1-0188 | 100% | 2022-04-13 | 2022-04-18 |  | MBRT BASE [16 h] | 16 | 16 | GRM | 16 | ZONE-1 | MINOR | DEMOPREP | ROADWAY | RDWY | NORTH | OCS |  |
| 1-0194 |  | CONDUIT RD CROSSING, MINOR TO SUMMIT NORTH SIDE | 4d | 2022-04-27 A | 2022-04-27 A | 1-0193 SS | 100% | 2022-04-13 | 2022-04-18 |  | MBRT BASE [8 h] | 8 | 8 | ELECRICAL SUB | 8 | ZONE-1 | MINOR | ELECTRICAL | ROADWAY | RDWY | NORTH |  | PRIME |
| PCO235.01 |  | DSC 170-Unknown Concrete Slab Summit-Minor | 5d | 2022-04-28 A | 2022-04-29 A | MS-0025 | 100% | 2023-02-27 | 2023-03-03 |  | MBRT DSC [8 h] | 8 | 8 |  | 8 |  |  |  |  |  |  |  |  |
| 1-0195 |  | ROADWAY PAVING - 1 POURS, MINOR TO SUMMIT NORTH SIDE | 2d | 2022-04-28 A | 2022-05-02 A | 1-0190, 1-0193, 1-0194 | 100% | 2022-04-19 | 2022-04-20 |  | MBRT BASE [24 h] | 24 | 24 | COL | 24 | ZONE-1 | MINOR | PAVE-R | ROADWAY | RDWY | NORTH |  |  |
| 1-0196 |  | CONCRETE CURE, MINOR TO SUMMIT NORTH SIDE | 3d | 2022-05-01 A | 2022-05-03 A | 1-0195 | 100% |  |  | 7 day per week | MBRT BASE |  |  |  | 24 | ZONE-1 | MINOR |  | ROADWAY | RDWY | NORTH |  |  |
| 1-0197 |  | F/P CURB BOREN TO SUMMIT, MINOR TO SUMMIT NORTH SIDE | 2d | 2022-05-04 A | 2022-05-04 A | 1-0191, 1-0196 | 100% | 2022-05-04 | 2022-05-05 |  | MBRT BASE [8 h] | 8 | 8 | COM | 8 | ZONE-1 | MINOR | CURB | ROADWAY | RDWY | NORTH |  |  |
| 1-0198 |  | TEMP PATCH BOREN TO SUMMIT, MINOR TO SUMMIT NORTH SIDE | 1d | 2022-05-05 A | 2022-05-05 A | 1-0197 | 100% | 2022-05-06 | 2022-05-06 |  | MBRT BASE [8 h] | 8 | 8 | EA3 | 8 | ZONE-1 | MINOR |  | ROADWAY | RDWY | NORTH |  |  |

| ID | WBS | Activity | Duration | Start | Finish | Predecessors | Complete | Planned start | Planned finish | Calendar | Resources | Cost | Actual cost | user_text2 | user_number6 | MBRT-ZONE | MBRT-LOCATION | MBRT-SCOPE | MBRT-TYPE | MBRT-ROADWAY | MBRT-SIDE | MBRT-DELAY | MBRT-RESP | user_text10 | user_text8 |
| --- | --- | --- | --- | --- | --- | --- | --- | --- | --- | --- | --- | --- | --- | --- | --- | --- | --- | --- | --- | --- | --- | --- | --- | --- | --- |
|  | 24 | **MINOR TO SUMMIT SOUTH SIDE** |  | 2022-07-18 | 2022-09-03 |  |  |  |  |  |  |  |  |  |  |  |  |  |  |  |  |  |  |  |  |
| 1-0248 |  | DEMO ROAD - COMMON EX - TYPE 2, MINOR TO SUMMIT SOUTH SIDE | 6d | 2022-07-18 A | 2022-07-26 A | 1-0556, 1-0243 SS | 100% | 2022-07-12 | 2022-07-19 |  | MBRT BASE [56 h] | 56 | 56 | GRM | 56 | ZONE-1 | MINOR | DEMOPREP | ROADWAY | RDWY | SOUTH | OCS |  |  |  |
| 1-0249 |  | CONDUIT RD CROSSING, MINOR TO SUMMIT SOUTH SIDE | 6d | 2022-07-18 A | 2022-07-26 A | 1-0248 SS | 100% | 2022-07-01 | 2022-07-11 |  | MBRT BASE [56 h] | 56 | 56 | ELECRICAL SUB | 56 | ZONE-1 | MINOR | ELECTRICAL | ROADWAY | RDWY | SOUTH |  | PRIME |  |  |
| PCO325.01 |  | DSC 241-Summit & Madison Conduit Clearances | 5d | 2022-07-21 A | 2022-08-30 A | MS-0025 | 100% | 2023-02-27 | 2023-03-03 |  | MBRT DSC [224 h] | 224 | 224 |  | 224 |  |  |  |  |  |  |  |  |  |  |
| PCO334.01 |  | DSC 244-Prime notice exisitng conduit extra work minor | 5d | 2022-07-26 A | 2022-08-19 A | MS-0025 | 100% | 2023-02-27 | 2023-03-03 |  | MBRT DSC [144 h] | 144 | 144 |  | 144 |  |  |  |  |  |  |  |  |  |  |
| 1-0250 |  | ROADWAY PAVING - 2 POURS, MINOR TO SUMMIT SOUTH SIDE | 4d | 2022-07-27 A | 2022-08-05 A | 1-0248, 1-0249 | 100% | 2022-07-18 | 2022-07-21 |  | MBRT BASE [64 h] | 64 | 64 | COL | 64 | ZONE-1 | MINOR | PAVE-R | ROADWAY | RDWY | SOUTH |  |  |  |  |
| 1-1205 |  | DSC - SCL CONDUIT | 16d | 2022-08-08 A | 2022-08-29 A | 1-0250 | 100% | 2022-07-18 | 2022-08-08 |  | MBRT DSC [120 h] | 120 | 120 | COL | 120 | ZONE-1 | MINOR | PAVE-R | ROADWAY | RDWY | SOUTH |  |  |  |  |
| PCO346.01 |  | DSC 255-Prime Elec. Minor Ave Conduit & HH conflict | 5d | 2022-08-10 A | 2022-08-18 A | MS-0025 | 100% | 2023-02-27 | 2023-03-03 |  | MBRT DSC [48 h] | 48 | 48 |  | 48 |  |  |  |  |  |  |  |  |  |  |
| PCO351.01 |  | DSC 258-Pavment Depth at Minor | 5d | 2022-08-13 A | 2022-08-14 A | MS-0025 | 100% | 2023-02-27 | 2023-03-03 |  | MBRT DSC [8 h] | 8 | 8 |  | 8 |  |  |  |  |  |  |  |  |  |  |
| 1-0252 |  | F/P CURB MAD 7TH TO 9TH SOUTH SIDE, MINOR TO SUMMIT SOUTH SIDE | 3d | 2022-08-25 A | 2022-08-25 A | 1-0250 | 100% | 2022-10-10 | 2022-10-12 |  | MBRT BASE [8 h] | 8 | 8 | COM | 8 | ZONE-1 | MINOR | CURB | ROADWAY | RDWY | SOUTH |  |  |  |  |
| 1-0253 |  | TEMP PATCH, MINOR TO SUMMIT SOUTH SIDE | 3d | 2022-08-26 A | 2022-08-29 A | 1-0252, 1-0241, 1-0246 | 100% | 2022-10-13 | 2022-10-17 |  | MBRT BASE [16 h] | 16 | 16 | EA3 | 16 | ZONE-1 | MINOR |  | ROADWAY | RDWY | SOUTH |  |  |  |  |
| 1-1210 |  | DSC - SCL CONDUIT - COMPLETE ROADWAY AFTER DELAY | 4d | 2022-08-30 A | 2022-08-31 A | 1-1205 | 100% | 2022-10-03 | 2022-10-06 |  | MBRT DSC [16 h] | 16 | 16 | COL | 16 | ZONE-1 | MINOR | PAVE-R | ROADWAY | RDWY | SOUTH |  |  |  |  |
| 1-0251 |  | CONCRETE CURE, MINOR TO SUMMIT SOUTH SIDE | 3d | 2022-09-01 A | 2022-09-03 A | 1-0250, 1-1210 | 100% | 2022-10-07 | 2022-10-09 | 7 day per week | MBRT BASE |  |  |  | 24 | ZONE-1 | MINOR |  | ROADWAY | RDWY | SOUTH |  |  |  |  |
|  | 16 | **SUMMIT TO BOYLSTON NORTH SIDE** |  | 2022-04-25 | 2022-05-10 |  |  |  |  |  |  |  |  |  |  |  |  |  |  |  |  |  |  |  |  |
| PCO230.01 |  | DSC 165-Unknown Unlocated conduit NW Boyleston | 5d | 2022-04-25 A | 2022-05-10 A | MS-0025 | 100% | 2023-02-27 | 2023-03-03 |  | MBRT DSC [88 h] | 88 | 88 |  | 88 |  |  |  |  |  |  |  |  |  |  |
| 1-0200 |  | DEMO ROAD - COMMON EX - TYPE 2, SUMMIT TO BOYLSTON NORTH SIDE | 4d | 2022-04-25 A | 2022-04-27 A | 1-0104, 1-0084, 1-0193 SS | 100% | 2022-06-09 | 2022-06-14 |  | MBRT BASE [24 h] | 24 | 24 | GRM | 24 | ZONE-1 | SUMMIT | DEMOPREP | ROADWAY | RDWY | NORTH | OCS |  |  |  |
| 1-0201 |  | CONDUIT RD CROSSING, SUMMIT TO BOYLSTON NORTH SIDE | 4d | 2022-04-25 A | 2022-04-27 A | 1-0200 SS | 100% | 2022-06-09 | 2022-06-14 |  | MBRT BASE [24 h] | 24 | 24 | ELECRICAL SUB | 24 | ZONE-1 | SUMMIT | ELECTRICAL | ROADWAY | RDWY | NORTH |  | PRIME |  |  |
| 1-0202 |  | ROADWAY PAVING - 1 POURS, SUMMIT TO BOYLSTON NORTH SIDE | 2d | 2022-04-28 A | 2022-05-02 A | 1-0195, 1-0200, 1-0201 | 100% | 2022-06-15 | 2022-06-16 | 7 day per week | MBRT BASE [40 h] | 40 | 40 | COL | 40 | ZONE-1 | SUMMIT | PAVE-R | ROADWAY | RDWY | NORTH |  |  |  |  |
| 1-0203 |  | CONCRETE CURE, SUMMIT TO BOYLSTON NORTH SIDE | 3d | 2022-05-03 A | 2022-05-05 A | 1-0202 | 100% | 2022-05-02 | 2022-05-04 |  | MBRT BASE |  |  |  | 24 | ZONE-1 | SUMMIT |  | ROADWAY | RDWY | NORTH |  |  |  |  |
|  | 25 | **SUMMIT TO BOYLSTON SOUTH SIDE** |  | 2022-11-18 | 2023-06-02 |  |  |  |  |  |  |  |  |  |  |  |  |  |  |  |  |  |  |  |  |
| 1-1320 |  | CITY CAUSED DELAY ALLOWING DEVELOPER TO FINISH; SUMMIT TO BOYLSTON SOUTH SIDE | 6d | 2022-11-18 A | 2023-02-03 A | 1-0248, 1-0229, 1-0210 | 100% | 2022-12-01 | 2022-12-08 |  | MBRT NEW |  |  | GRM | 400 | ZONE-1 | SUMMIT | DEMOPREP | ROADWAY | RDWY | SOUTH | OCS |  |  |  |
| PCO476.01 |  | DSC 345-Boyleston Conduit intersept | 5d | 2022-11-22 A | 2023-02-17 A | MS-0025 | 100% | 2023-02-27 | 2023-03-03 |  | MBRT DSC [464 h] | 464 | 464 |  | 464 |  |  |  |  |  |  |  |  |  |  |
| 1-1325 |  | FM TO RELOCATE SIDE SEWER; SUMMIT TO BOYLSTON SOUTH SIDE | 6d | 2023-02-06 A | 2023-02-10 A | 1-1320 | 100% | 2023-01-31 | 2023-02-07 |  | MBRT NEW [48 h] | 48 | 40 | GRM | 40 | ZONE-1 | SUMMIT | DEMOPREP | ROADWAY | RDWY | SOUTH | OCS |  |  |  |
| 1-1365 |  | DELAY - KCM NOT ALLOWING CLOSURE TO GO IN | 6d | 2023-02-13 A | 2023-03-17 A | 1-1325 | 100% | 2023-01-31 | 2023-02-07 |  | MBRT NEW [48 h] | 48 | 192 | GRM | 192 | ZONE-1 | SUMMIT | DEMOPREP | ROADWAY | RDWY | SOUTH | OCS |  |  |  |
| 1-0255 |  | DEMO ROAD - COMMON EX - TYPE 2, SUMMIT TO BOYLSTON SOUTH SIDE | 6d | 2023-04-03 A | 2023-04-18 A | 1-0210, 1-0248, 1-0251, 1-1325, 1-1365, 1-1320 | 100% | 2023-05-17 | 2023-05-24 |  | MBRT BASE [96 h] | 96 | 96 | GRM | 96 | ZONE-1 | SUMMIT | DEMOPREP | ROADWAY | RDWY | SOUTH | OCS |  | 1-0255 | 1-0255 |
| PCO630.01 |  | DSC 442-WATER VAULT IN CONFLICT WITH ROADWAY | 6d | 2023-04-06 A | 2023-05-02 A | MS-0025 | 100% | 2023-05-25 | 2023-06-02 |  | MBRT DSC [152 h] | 152 | 152 | ELECRICAL SUB | 152 | ZONE-1 | SUMMIT | ELECTRICAL | ROADWAY | RDWY | SOUTH |  | PRIME | PCO630.01 | PCO630.01 |
| 1-0256 |  | CONDUIT RD CROSSING, SUMMIT TO BOYLSTON SOUTH SIDE | 6d | 2023-04-12 A | 2023-04-14 A | 1-0255 | 100% | 2023-05-25 | 2023-06-02 |  | MBRT BASE [24 h] | 24 | 24 | ELECRICAL SUB | 24 | ZONE-1 | SUMMIT | ELECTRICAL | ROADWAY | RDWY | SOUTH |  | PRIME | 1-0256 | 1-0256 |
| 1-2735 |  | DIRECTION TO INSTALL CONDUIT IN ROADWAY | 4d | 2023-05-02 A | 2023-05-05 A | 1-2730 | 100% | 2023-05-18 | 2023-05-23 |  | MBRT NEW [32 h] | 32 | 32 | COL | 32 | ZONE-1 | SUMMIT | PAVE-R | ROADWAY | RDWY | SOUTH |  |  | 1-2735 | 1-2735 |
| 1-2730 |  | MODIFY SPU VAULT | 4d | 2023-05-03 A | 2023-05-05 A | PCO630.01 | 100% | 2023-05-12 | 2023-05-17 |  | MBRT NEW [32 h] | 32 | 24 | COL | 24 | ZONE-1 | SUMMIT | PAVE-R | ROADWAY | RDWY | SOUTH |  |  | 1-2730 | 1-2730 |
| 1-2740 |  | RE-GRADE ROADWAY AFTER EXTRA WORK | 4d | 2023-05-08 A | 2023-05-09 A | 1-2735 | 100% | 2023-05-24 | 2023-05-30 |  | MBRT NEW [32 h] | 32 | 16 | COL | 16 | ZONE-1 | SUMMIT | PAVE-R | ROADWAY | RDWY | SOUTH |  |  | 1-2740 | 1-2740 |
| 1-0257 |  | ROADWAY PAVING - 2 POURS, SUMMIT TO BOYLSTON SOUTH SIDE | 4d | 2023-05-19 A | 2023-05-30 A | 1-0250, 1-0256, PCO630.01, 1-2740 | 100% | 2023-05-31 | 2023-06-05 |  | MBRT BASE [56 h] | 56 | 56 | COL | 56 | ZONE-1 | SUMMIT | PAVE-R | ROADWAY | RDWY | SOUTH |  |  | 1-0257 | 1-0257 |
| 1-0258 |  | CONCRETE CURE, SUMMIT TO BOYLSTON SOUTH SIDE | 3d | 2023-05-31 A | 2023-06-02 A | 1-0257 | 100% |  |  | 7 day per week | MBRT BASE |  |  |  | 24 | ZONE-1 | SUMMIT |  | ROADWAY | RDWY | SOUTH |  |  | 1-0258 | 1-0258 |

| ID | WBS | Activity | Duration | Start | Finish | Predecessors | Complete | Planned start | Planned finish | Calendar | Resources | Cost | Actual cost | user_text2 | user_number6 | MBRT-ZONE | MBRT-LOCATION | MBRT-SCOPE | MBRT-TYPE | MBRT-ROADWAY | MBRT-SIDE | MBRT-DELAY | MBRT-RESP | user_text10 | user_text8 | MBRT-NIGHT |
| --- | --- | --- | --- | --- | --- | --- | --- | --- | --- | --- | --- | --- | --- | --- | --- | --- | --- | --- | --- | --- | --- | --- | --- | --- | --- | --- |
|  | 17 | **BOYLSTON TO BROADWAY NORTH SIDE** |  | 2022-09-13 | 2022-11-17 |  |  |  |  |  |  |  |  |  |  |  |  |  |  |  |  |  |  |  |  |  |
| 1-0205 |  | DEMO ROAD - COMMON EX - TYPE 2, BOYLSTON TO BROADWAY NORTH SIDE | 6d | 2022-09-13 A | 2022-09-20 A | 1-0105, 1-0200 | 100% | 2022-10-03 | 2022-10-10 |  | MBRT BASE [48 h] | 48 | 48 | GRM | 48 | ZONE-1 | BOYLSTON | DEMOPREP | ROADWAY | RDWY | NORTH | OCS |  |  |  |  |
| 1-0206 |  | CONDUIT RD CROSSING, BOYLSTON TO BROADWAY NORTH SIDE | 6d | 2022-09-13 A | 2022-10-04 A | 1-0205 SS | 100% | 2022-10-03 | 2022-10-10 |  | MBRT BASE [128 h] | 128 | 128 | ELECRICAL SUB | 128 | ZONE-1 | BOYLSTON | ELECTRICAL | ROADWAY | RDWY | NORTH |  | PRIME |  |  |  |
| PCO401.01 |  | DSC 293-Conduit Conflict with Paving Boylston to Broadway North side | 5d | 2022-09-20 A | 2022-09-21 A | MS-0025 | 100% | 2023-02-27 | 2023-03-03 |  | MBRT DSC [8 h] | 8 | 8 |  | 8 |  |  |  |  |  |  |  |  |  |  |  |
| 1-0207 |  | ROADWAY PAVING - 2 POURS, BOYLSTON TO BROADWAY NORTH SIDE | 2d | 2022-10-31 A | 2022-11-11 A | 1-0202, 1-0205, 1-0206 | 100% | 2022-10-31 | 2022-11-01 |  | MBRT BASE [80 h] | 80 | 80 | COL | 80 | ZONE-1 | BOYLSTON | PAVE-R | ROADWAY | RDWY | NORTH |  |  |  |  |  |
| 1-0208 |  | CONCRETE CURE, BOYLSTON TO BROADWAY NORTH SIDE | 3d | 2022-11-12 A | 2022-11-15 A | 1-0207 | 100% | 2022-11-02 | 2022-11-04 | 7 day per week | MBRT BASE |  |  |  | 32 | ZONE-1 | BOYLSTON |  | ROADWAY | RDWY | NORTH |  |  |  |  |  |
| 1-0209 |  | F/P CURB, BOYLSTON TO BROADWAY NORTH SIDE | 2d | 2022-11-15 A | 2022-11-16 A | 1-0203, 1-0208 | 100% | 2022-11-07 | 2022-11-08 |  | MBRT BASE [16 h] | 16 | 16 | COM | 16 | ZONE-1 | BOYLSTON | CURB | ROADWAY | RDWY | NORTH |  |  |  |  |  |
| 1-0210 |  | TEMP PATCH, BOYLSTON TO BROADWAY NORTH SIDE | 1d | 2022-11-17 A | 2022-11-17 A | 1-0209 | 100% | 2022-11-09 | 2022-11-09 |  | MBRT BASE [8 h] | 8 | 8 | EA3 | 8 | ZONE-1 | BOYLSTON |  | ROADWAY | RDWY | NORTH |  |  |  |  |  |
|  | 26 | **BOYLSTON TO BROADWAY SOUTH SIDE** |  | 2023-04-06 | 2023-09-21 |  |  |  |  |  |  |  |  |  |  |  |  |  |  |  |  |  |  |  |  |  |
| 1-0260 |  | DEMO ROAD - COMMON EX - TYPE 2, BOYLSTON TO BROADWAY SOUTH SIDE | 6d | 2023-04-06 A | 2023-04-17 A | 1-0255 | 100% | 2023-03-31 | 2023-04-07 |  | MBRT BASE [64 h] | 64 | 64 | GRM | 64 | ZONE-1 | BOYLSTON | DEMOPREP | ROADWAY | RDWY | SOUTH | OCS |  | 1-0260 | 1-0260 |  |
| 1-0261 |  | CONDUIT RD CROSSING, BOYLSTON TO BROADWAY SOUTH SIDE | 6d | 2023-04-06 A | 2023-04-17 A | 1-0260 SS | 100% | 2023-03-31 | 2023-04-07 |  | MBRT BASE [64 h] | 64 | 64 | ELECRICAL SUB | 64 | ZONE-1 | BOYLSTON | ELECTRICAL | ROADWAY | RDWY | SOUTH |  | PRIME | 1-0261 | 1-0261 |  |
| PCO631.01 |  | DSC 443-DUCT BANK CONFLICT WITH CONDUIT | 6d | 2023-04-10 A | 2023-04-11 A | MS-0025 | 100% | 2023-03-31 | 2023-04-07 |  | MBRT DSC [16 h] | 16 | 16 | ELECRICAL SUB | 16 | ZONE-1 | BOYLSTON | ELECTRICAL | ROADWAY | RDWY | SOUTH |  | PRIME | PCO631.01 | PCO631.01 |  |
| 1-2745 |  | OWNER CAUSED DELAY - DIRECTION TO SPLIT WORK FROM ALLEY TO BROADWAY | 4d | 2023-04-13 A | 2023-09-15 A | 1-0260 | 100% | 2023-05-01 | 2023-05-04 |  | MBRT NEW |  |  | COL | 864 | ZONE-1 | BOYLSTON | PAVE-R | ROADWAY | RDWY | SOUTH | OCS |  | 1-2745 | 1-2745 |  |
| 1-0262 |  | ROADWAY PAVING - 2 POURS, BOYLSTON TO BROADWAY SOUTH SIDE | 4d | 2023-05-19 A | 2023-05-30 A | 1-0257 SS, 1-0260, 1-0261, PCO630.01 | 100% | 2023-06-06 | 2023-06-09 |  | MBRT BASE [56 h] | 56 | 56 | COL | 56 | ZONE-1 | BOYLSTON | PAVE-R | ROADWAY | RDWY | SOUTH | OCS |  | 1-0262 | 1-0262 |  |
| 1-0263 |  | CONCRETE CURE, BOYLSTON TO BROADWAY SOUTH SIDE | 3d | 2023-05-31 A | 2023-06-02 A | 1-0262 | 100% |  |  | 7 day per week | MBRT BASE |  |  |  | 24 | ZONE-1 | BOYLSTON |  | ROADWAY | RDWY | SOUTH | OCS |  | 1-0263 | 1-0263 |  |
| 1-0264 |  | F/P CURB, BOYLSTON TO BROADWAY SOUTH SIDE | 1d | 2023-05-31 A | 2023-05-31 A | 1-0258 SS, 1-0263 SS | 100% |  |  |  | MBRT BASE [8 h] | 8 | 8 | COM | 8 | ZONE-1 | BOYLSTON | CURB | ROADWAY | RDWY | SOUTH | OCS |  | 1-0264 | 1-0264 |  |
| 1-0265 |  | TEMP PATCH, BOYLSTON TO BROADWAY SOUTH SIDE | 3d | 2023-06-01 A | 2023-06-05 A | 1-0264, 1-0253 | 100% |  |  |  | MBRT BASE [24 h] | 24 | 24 | EA3 | 24 | ZONE-1 | BOYLSTON |  | ROADWAY | RDWY | SOUTH | OCS |  | 1-0265 | 1-0265 |  |
| 1-2750 |  | REMOVE RDWAY TYPE 2 ACROSS FROM WHOLE FOODS ALLEY | 2d | 2023-09-18 A | 2023-09-19 A | 1-2745, 1-0265 | 100% | 2023-09-12 | 2023-09-13 |  | MBRT NEW [16 h] | 16 | 8 | COL | 8 | ZONE-1 | BOYLSTON | PAVE-R | ROADWAY | RDWY | SOUTH | OCS |  | 1-2750 | 1-2750 |  |
| 1-2755 |  | REMOVE RDWAY TYPE 2 FROM ALLEY TO BROADWAY | 2d | 2023-09-18 A | 2023-09-19 A | 1-0265, 1-2745, 1-2750 | 100% | 2023-09-14 | 2023-09-15 |  | MBRT NEW [16 h] | 16 | 8 | COL | 8 | ZONE-1 | BOYLSTON | PAVE-R | ROADWAY | RDWY | SOUTH | OCS |  | 1-2755 | 1-2755 |  |
| 1-2790 |  | DSC 621 CB Built with Steel Yoke | 1d | 2023-09-19 A | 2023-09-19 A | 1-2755 | 100% | 2023-09-11 | 2023-09-11 |  | MBRT DSC [8 h] | 8 | 8 |  | 8 |  |  |  |  |  |  |  |  |  |  |  |
| 1-2760 |  | ROADWAY PAVING ACROSS FROM WHOLE FOODS ALLEY | 2d | 2023-09-20 A | 2023-09-21 A | 1-2750, 1-2790 | 100% | 2023-09-13 | 2023-09-14 |  | MBRT NEW [16 h] | 16 | 8 | COL | 8 | ZONE-1 | BOYLSTON | PAVE-R | ROADWAY | RDWY | SOUTH | OCS |  | 1-2760 | 1-2760 |  |
| 1-2765 |  | ROADWAY PAVING ACROSS FROM ALLEY TO BROADWAY | 2d | 2023-09-20 A | 2023-09-21 A | 1-2755, 1-2760 SS | 100% |  |  |  | MBRT NEW [16 h] | 16 | 16 | COL | 16 | ZONE-1 | BOYLSTON | PAVE-R | ROADWAY | RDWY | SOUTH | OCS |  | 1-2765 | 1-2765 |  |
|  | 2 | **1ST TO BROADWAY INTERSECTIONS** |  | 2022-04-02 | 2023-09-22 |  |  |  |  |  |  |  |  |  |  |  |  |  |  |  |  |  |  |  |  |  |
|  | 5 | **SPRING AND 1ST** |  | 2023-05-06 | 2023-06-11 |  |  |  |  |  |  |  |  |  |  |  |  |  |  |  |  |  |  |  |  |  |
| 1-0284 |  | TRENCH CONDUIT, SPRING AND 1ST | 2d | 2023-05-06 A | 2023-05-07 A | MS-0026, SC-1674 | 100% |  |  | WEEKEND ONLY | MBRT BASE [16 h] | 16 | 16 | EA3,ELECRICAL SUB | 16 | ZONE-1 | SPRING |  | ROADWAY | IXN |  |  | PRIME | 1-0284 | 1-0284 | NT_WE |
| PCO664.01 |  | DSC 467-VOID UNDER ROADWAY | 2d | 2023-05-06 A | 2023-05-07 A | MS-0025 | 100% |  |  | WEEKEND ONLY | MBRT DSC [16 h] | 16 | 16 | EA3,ELECRICAL SUB | 16 | ZONE-1 | SPRING |  | ROADWAY | IXN |  |  | PRIME | PCO664.01 | PCO664.01 | NT_WE |
| PCO665.01 |  | DSC 468-MULTIPLE UTILITY CONFLICTS | 2d | 2023-05-06 A | 2023-05-07 A | MS-0025 | 100% |  |  | WEEKEND ONLY | MBRT DSC [16 h] | 16 | 16 | EA3,ELECRICAL SUB | 16 | ZONE-1 | SPRING |  | ROADWAY | IXN |  |  | PRIME | PCO665.01 | PCO665.01 | NT_WE |
| PCO667.01 |  | DSC 470-2' THICK ROADWAY | 2d | 2023-05-06 A | 2023-05-07 A | MS-0025 | 100% |  |  | WEEKEND ONLY | MBRT DSC [16 h] | 16 | 16 | EA3,ELECRICAL SUB | 16 | ZONE-1 | SPRING |  | ROADWAY | IXN |  |  | PRIME | PCO667.01 | PCO667.01 | NT_WE |
| 1-2955 |  | INSTALL CONDUIT, SPRING AND 1ST | 2d | 2023-05-13 A | 2023-05-14 A | 1-0284 | 100% | 2023-05-06 | 2023-05-07 | WEEKEND ONLY | MBRT NEW [16 h] | 16 | 16 | EA3,ELECRICAL SUB | 16 | ZONE-1 | SPRING |  | ROADWAY | IXN |  |  | PRIME | 1-2955 | 1-2955 | NT_WE |
| 1-2960 |  | BACKFILL CONDUIT WITH CDF, SPRING AND 1ST | 2d | 2023-05-20 A | 2023-05-21 A | 1-2955 | 100% | 2023-05-06 | 2023-05-07 | WEEKEND ONLY | MBRT NEW [16 h] | 16 | 16 | EA3,ELECRICAL SUB | 16 | ZONE-1 | SPRING |  | ROADWAY | IXN |  |  | PRIME | 1-2960 | 1-2960 | NT_WE |
| 1-0285 |  | DEMO ROAD - COMMON EX - TYPE 2, SPRING & 1ST | 2d | 2023-06-10 A | 2023-06-11 A | 1-0284, MS-2581, MS-2571, 1-2960 FS+4d | 100% |  |  | WEEKEND ONLY | MBRT BASE [16 h] | 16 | 16 | WGRM | 16 | ZONE-1 | SPRING |  | ROADWAY | IXN |  |  |  | 1-0285 | 1-0285 | NT_WE |
| 1-0286 |  | ASPHALT PAVING, SPRING AND 1ST | 2d | 2023-06-10 A | 2023-06-11 A | 1-0285 SS | 100% |  |  | WEEKEND ONLY | MBRT BASE [16 h] | 16 | 16 | WCOL | 16 | ZONE-1 | SPRING | PAVE-R | ROADWAY | IXN |  |  |  | 1-0286 | 1-0286 | NT_WE |

| ID | WBS | Activity | Duration | Start | Finish | Predecessors | Complete | Planned start | Planned finish | Calendar | Resources | Cost | Actual cost | user_text2 | user_number6 | MBRT-ZONE | MBRT-LOCATION | MBRT-TYPE | MBRT-NIGHT | MBRT-ROADWAY | MBRT-SIDE | MBRT-RESP | MBRT-SCOPE | MBRT-DELAY |
| --- | --- | --- | --- | --- | --- | --- | --- | --- | --- | --- | --- | --- | --- | --- | --- | --- | --- | --- | --- | --- | --- | --- | --- | --- |
|  | 1 | **SPRING AND 2ND SOUTH SIDE** |  | 2022-04-02 | 2022-04-29 |  |  |  |  |  |  |  |  |  |  |  |  |  |  |  |  |  |  |  |
| 1-0268 |  | DEMO ROAD - COMMON EX - TYPE 2, SPRING & 2ND SOUTH SIDE | 1d | 2022-04-02 A | 2022-04-02 A | 1-0111 | 100% |  |  | WEEKEND ONLY | MBRT BASE [8 h] | 8 | 8 | WGRM | 8 | ZONE-1 | SPRING | ROADWAY | NT_WE | IXN | SOUTH |  |  |  |
| 1-0269 |  | TRENCH CONDUIT, SPRING & 2ND SOUTH SIDE | 1d | 2022-04-02 A | 2022-04-02 A | 1-0268 SS | 100% |  |  | WEEKEND ONLY | MBRT BASE [8 h] | 8 | 8 | ELECRICAL SUB | 8 | ZONE-1 | SPRING | ROADWAY | NT_WE | IXN | SOUTH | PRIME |  |  |
| 1-0270 |  | ROADWAY PAVING, SPRING & 2ND SOUTH SIDE | 1d | 2022-04-03 A | 2022-04-03 A | 1-0269 | 100% |  |  | WEEKEND ONLY | MBRT BASE [8 h] | 8 | 8 | WCOL | 8 | ZONE-1 | SPRING | ROADWAY | NT_WE | IXN | SOUTH |  | PAVE-R |  |
| PCO200.01 |  | DSC 143-ITS Conduit Conflict Spring Alley way 1st to 2nd | 5d | 2022-04-05 A | 2022-04-12 A | MS-0025 | 100% | 2023-02-27 | 2023-03-03 |  | MBRT DSC [40 h] | 40 | 40 |  | 40 |  |  |  |  |  |  |  |  |  |
| PCO198.01 |  | DSC 141-Curb Ramp 1.1.1 and 1.1.2 | 5d | 2022-04-06 A | 2022-04-29 A | MS-0025 | 100% | 2023-02-27 | 2023-03-03 |  | MBRT DSC [136 h] | 136 | 136 |  | 136 |  |  |  |  |  |  |  |  |  |
|  | 2 | **SPRING AND 3RD SOUTH SIDE** |  | 2022-06-14 | 2022-08-26 |  |  |  |  |  |  |  |  |  |  |  |  |  |  |  |  |  |  |  |
| PCO278.01 |  | DSC 203-Conduit Change 3rd and Spring | 5d | 2022-06-14 A | 2022-06-23 A | MS-0025 | 100% | 2023-02-27 | 2023-03-03 |  | MBRT DSC [56 h] | 56 | 56 |  | 56 |  |  |  |  |  |  |  |  |  |
| 1-0272 |  | DEMO ROAD - COMMON EX - TYPE 2, SPRING & 3RD SOUTH SIDE | 1d | 2022-07-16 A | 2022-07-16 A | 1-0270, 1-0117, 1-1190 | 100% |  |  | WEEKEND ONLY | MBRT BASE [8 h] | 8 | 8 | WGRM | 8 | ZONE-1 | SPRING | ROADWAY | NT_WE | IXN | SOUTH |  |  | SCL-FC |
| PCO323.01 |  | DSC 239-ITS Conflict Spring 3rd to 4th | 5d | 2022-07-18 A | 2022-07-21 A | MS-0025 | 100% | 2023-02-27 | 2023-03-03 |  | MBRT DSC [24 h] | 24 | 24 |  | 24 |  |  |  |  |  |  |  |  |  |
| 1-0273 |  | TRENCH CONDUIT, SPRING & 3RD SOUTH SIDE | 1d | 2022-07-23 A | 2022-07-23 A | 1-0272 SS | 100% |  |  | WEEKEND ONLY | MBRT BASE [8 h] | 8 | 8 | ELECRICAL SUB | 8 | ZONE-1 | SPRING | ROADWAY | NT_WE | IXN | SOUTH | PRIME |  | SCL-FC |
| 1-0274 |  | ROADWAY PAVING, SPRING & 3RD SOUTH SIDE | 1d | 2022-07-24 A | 2022-07-24 A | 1-0273 | 100% |  |  | WEEKEND ONLY | MBRT BASE [8 h] | 8 | 8 | WCOL | 8 | ZONE-1 | SPRING | ROADWAY | NT_WE | IXN | SOUTH |  | PAVE-R | SCL-FC |
| PCO359.01 |  | DSC 261-Conduit Conflict SE 3rd and Spring | 5d | 2022-08-24 A | 2022-08-26 A | MS-0025 | 100% | 2023-02-27 | 2023-03-03 |  | MBRT DSC [16 h] | 16 | 16 |  | 16 |  |  |  |  |  |  |  |  |  |
|  | 16 | **SPRING AND 3RD NORTH SIDE** |  | 2022-07-17 | 2022-07-24 |  |  |  |  |  |  |  |  |  |  |  |  |  |  |  |  |  |  |  |
| PCO322.01 |  | DSC 238-Unknown Unlocated Comm Line NE 3rd Spring | 5d | 2022-07-17 A | 2022-07-19 A | MS-0025 | 100% | 2023-02-27 | 2023-03-03 |  | MBRT DSC [8 h] | 8 | 8 |  | 8 |  |  |  |  |  |  |  |  |  |
| 1-0328 |  | DEMO ROAD - COMMON EX - TYPE 2, SPRING & 3RD NORTH SIDE | 1d | 2022-07-23 A | 2022-07-23 A | 1-0274 | 100% |  |  | WEEKEND ONLY | MBRT BASE [8 h] | 8 | 8 | WGRM | 8 | ZONE-1 | SPRING | ROADWAY | NT_WE | IXN | NORTH |  |  |  |
| 1-0329 |  | TRENCH CONDUIT, SPRING & 3RD NORTH SIDE | 1d | 2022-07-23 A | 2022-07-23 A | 1-0328 SS | 100% |  |  | WEEKEND ONLY | MBRT BASE [8 h] | 8 | 8 | ELECRICAL SUB | 8 | ZONE-1 | SPRING | ROADWAY | NT_WE | IXN | NORTH | PRIME |  |  |
| 1-0330 |  | ROADWAY PAVING, SPRING & 3RD NORTH SIDE | 1d | 2022-07-24 A | 2022-07-24 A | 1-0329 | 100% |  |  | WEEKEND ONLY | MBRT BASE [8 h] | 8 | 8 | WCOL | 8 | ZONE-1 | SPRING | ROADWAY | NT_WE | IXN | NORTH |  | PAVE-R |  |
|  | 3 | **SPRING AND 4TH SOUTH SIDE** |  | 2022-08-13 | 2023-01-26 |  |  |  |  |  |  |  |  |  |  |  |  |  |  |  |  |  |  |  |
| 1-0277 |  | TRENCH CONDUIT, SPRING & 4TH SOUTH SIDE | 1d | 2022-08-13 A | 2022-08-13 A | 1-0276 SS | 100% | 2022-09-03 | 2022-09-03 | WEEKEND ONLY | MBRT BASE [8 h] | 8 | 8 | ELECRICAL SUB | 8 | ZONE-1 | SPRING | ROADWAY | NT_WE | IXN | SOUTH | PRIME |  | SCL-FC |
| 1-0276 |  | DEMO ROAD - COMMON EX - TYPE 2, SPRING & 4TH SOUTH SIDE | 1d | 2022-09-10 A | 2022-09-11 A | 1-0274 | 100% | 2022-09-03 | 2022-09-03 | WEEKEND ONLY | MBRT BASE [16 h] | 16 | 16 | WGRM | 16 | ZONE-1 | SPRING | ROADWAY | NT_WE | IXN | SOUTH |  |  | SCL-FC |
| 1-0278 |  | ROADWAY PAVING, SPRING & 4TH SOUTH SIDE | 1d | 2022-09-10 A | 2022-09-11 A | 1-0277 | 100% | 2022-09-04 | 2022-09-04 | WEEKEND ONLY | MBRT BASE [16 h] | 16 | 16 | WCOL | 16 | ZONE-1 | SPRING | ROADWAY | NT_WE | IXN | SOUTH |  | PAVE-R | SCL-FC |
| PCO442.01 |  | DSC 323-SCL Access lid SE 4th and Spring poured mono | 5d | 2022-10-31 A | 2023-01-26 A | MS-0025 | 100% | 2023-02-27 | 2023-03-03 |  | MBRT DSC [456 h] | 456 | 464 |  | 456 |  |  |  |  |  |  |  |  |  |
| PCO443.01 |  | DSC 324-SE 4th & Spring Conduit Conflicts @ Hand Hole | 5d | 2022-10-31 A | 2022-11-08 A | MS-0025 | 100% | 2023-02-27 | 2023-03-03 |  | MBRT DSC [48 h] | 48 | 48 |  | 48 |  |  |  |  |  |  |  |  |  |
| PCO477.01 |  | DSC 346-FM 348 DSC Air Vent 4th and Spring | 5d | 2022-11-22 A | 2023-01-25 A | MS-0025 | 100% | 2023-02-27 | 2023-03-03 |  | MBRT DSC [328 h] | 328 | 40 |  | 328 |  |  |  |  |  |  |  |  |  |

| ID | WBS | Activity | Duration | Start | Finish | Predecessors | Complete | Planned start | Planned finish | Calendar | Resources | Cost | Actual cost | user_number6 | user_text2 | MBRT-ZONE | MBRT-LOCATION | MBRT-TYPE | MBRT-RESP | MBRT-NIGHT | MBRT-ROADWAY | MBRT-SIDE | MBRT-DELAY | MBRT-SCOPE | user_text10 | user_text8 |
| --- | --- | --- | --- | --- | --- | --- | --- | --- | --- | --- | --- | --- | --- | --- | --- | --- | --- | --- | --- | --- | --- | --- | --- | --- | --- | --- |
|  | 4 | **SPRING AND 5TH SOUTH SIDE** |  | 2022-05-24 | 2022-12-06 |  |  |  |  |  |  |  |  |  |  |  |  |  |  |  |  |  |  |  |  |  |
| PCO255.01 |  | DSC 186-Vault 163-M-351 Steel In lid | 5d | 2022-05-24 A | 2022-06-02 A | MS-0025 | 100% | 2023-02-27 | 2023-03-03 |  | MBRT DSC [48 h] | 48 | 48 | 48 |  |  |  |  |  |  |  |  |  |  |  |  |
| PCO387.01 |  | DSC 283-5th and Spring Conduit Conflict | 5d | 2022-09-12 A | 2022-09-15 A | MS-0025 | 100% | 2023-02-27 | 2023-03-03 |  | MBRT DSC [24 h] | 24 | 24 | 24 |  |  |  |  |  |  |  |  |  |  |  |  |
| 1-0281 |  | TRENCH CONDUIT, SPRING & 5TH SOUTH SIDE | 1d | 2022-09-17 A | 2022-09-17 A | 1-0280 SS | 100% | 2022-09-10 | 2022-09-10 | WEEKEND ONLY | MBRT BASE [8 h] | 8 | 8 | 8 | ELECRICAL SUB | ZONE-1 | SPRING | ROADWAY | PRIME | NT_WE | IXN | SOUTH | SCL-FC |  |  |  |
| 1-0280 |  | DEMO ROAD - COMMON EX - TYPE 2, SPRING & 5TH SOUTH SIDE | 1d | 2022-09-24 A | 2022-09-24 A | 1-0278, 1-0106 | 100% | 2022-09-10 | 2022-09-10 | WEEKEND ONLY | MBRT BASE [8 h] | 8 | 8 | 8 | WGRM | ZONE-1 | SPRING | ROADWAY |  | NT_WE | IXN | SOUTH | SCL-FC |  |  |  |
| 1-0282 |  | ROADWAY PAVING, SPRING & 5TH SOUTH SIDE | 1d | 2022-09-24 A | 2022-09-25 A | 1-0281 | 100% | 2022-09-11 | 2022-09-11 | WEEKEND ONLY | MBRT BASE [16 h] | 16 | 16 | 16 | WCOL | ZONE-1 | SPRING | ROADWAY |  | NT_WE | IXN | SOUTH | SCL-FC | PAVE-R |  |  |
| PCO486.01 |  | DSC 350-Conduit Conflict SW 5th and Spring | 5d | 2022-12-05 A | 2022-12-06 A | MS-0025 | 100% | 2023-02-27 | 2023-03-03 |  | MBRT DSC [8 h] | 8 | 8 | 8 |  |  |  |  |  |  |  |  |  |  |  |  |
|  | 17 | **SPRING AND 7TH NORTH SIDE** |  | 2023-06-28 | 2023-07-07 |  |  |  |  |  |  |  |  |  |  |  |  |  |  |  |  |  |  |  |  |  |
| 1-0332 |  | DEMO ROAD - COMMON EX - TYPE 2, SPRING & 7TH NORTH SIDE | 2d | 2023-06-28 A | 2023-06-29 A | 1-0166, 1-0330 | 100% |  |  |  | MBRT BASE [16 h] | 16 | 16 | 16 | WGRM | ZONE-1 | SPRING | ROADWAY |  | NT_WE | IXN | NORTH |  |  | 1-0332 | 1-0332 |
| 1-0333 |  | TRENCH CONDUIT, SPRING & 7TH NORTH SIDE | 2d | 2023-06-28 A | 2023-06-29 A | 1-0332 SS | 100% |  |  |  | MBRT BASE [16 h] | 16 | 16 | 16 | ELECRICAL SUB | ZONE-1 | SPRING | ROADWAY | PRIME | NT_WE | IXN | NORTH |  |  | 1-0333 | 1-0333 |
| 1-0343 |  | DSC 543 - Unknown Ductbank Conflict | 1d | 2023-06-28 A | 2023-06-28 A | 1-0333 SS | 100% |  |  |  | MBRT DSC [8 h] | 8 | 8 | 8 |  |  |  |  |  |  |  |  |  |  | 1-0343 | 1-0343 |
| 1-0334 |  | ROADWAY PAVING, SPRING & 7TH NORTH SIDE | 2d | 2023-07-06 A | 2023-07-07 A | 1-0333 FS+2d, 1-0343 FF | 100% | 2023-07-05 | 2023-07-06 |  | MBRT BASE [16 h] | 16 | 16 | 16 | WCOL | ZONE-1 | SPRING | ROADWAY |  | NT_WE | IXN | NORTH |  | PAVE-R | 1-0334 | 1-0334 |
|  | 12 | **SPRING AND 7TH SOUTH SIDE** |  | 2022-06-01 | 2023-04-22 |  |  |  |  |  |  |  |  |  |  |  |  |  |  |  |  |  |  |  |  |  |
| 1-0312 |  | DEMO ROAD - COMMON EX - TYPE 2, SPRING & 7TH SOUTH SIDE | 1d | 2022-06-01 A | 2022-06-01 A | 1-0140, 1-0310 | 100% | 2023-04-22 | 2023-04-22 | WEEKEND ONLY | MBRT BASE |  | 8 | 0 | WGRM | ZONE-1 | SPRING | ROADWAY |  | NT_WE | IXN | SOUTH |  |  |  |  |
| 1-0313 |  | TRENCH CONDUIT, SPRING & 7TH SOUTH SIDE | 1d | 2022-06-01 A | 2023-04-22 A | 1-0312 SS | 100% | 2023-04-22 | 2023-04-22 | WEEKEND ONLY | MBRT BASE |  |  | 744 | ELECRICAL SUB | ZONE-1 | SPRING | ROADWAY | PRIME | NT_WE | IXN | SOUTH |  |  | 1-0313 | 1-0313 |
| 1-0314 |  | ROADWAY PAVING, SPRING & 7TH SOUTH SIDE | 1d | 2022-06-01 A | 2022-06-01 A | 1-0313 | 100% | 2023-04-23 | 2023-04-23 | WEEKEND ONLY | MBRT BASE |  | 8 | 0 | WCOL | ZONE-1 | SPRING | ROADWAY |  | NT_WE | IXN | SOUTH |  | PAVE-R |  |  |
| PCO315.01 |  | DSC 232-Prime DSC SE 7th and Spring | 5d | 2022-07-11 A | 2022-07-13 A | MS-0025 | 100% | 2023-02-27 | 2023-03-03 |  | MBRT DSC [16 h] | 16 | 16 | 16 |  |  |  |  |  |  |  |  |  |  |  |  |
| PCO324.01 |  | DSC 240-type 3 handhole SE 7th and spring conflict | 5d | 2022-07-19 A | 2022-07-20 A | MS-0025 | 100% | 2023-02-27 | 2023-03-03 |  | MBRT DSC [8 h] | 8 | 8 | 8 |  |  |  |  |  |  |  |  |  |  |  |  |
|  | 18 | **SPRING AND 8TH NORTH SIDE** |  | 2022-11-22 | 2023-01-17 |  |  |  |  |  |  |  |  |  |  |  |  |  |  |  |  |  |  |  |  |  |
| 1-0336 |  | DEMO ROAD - COMMON EX - TYPE 2, SPRING & 8TH NORTH SIDE | 1d | 2022-11-22 A | 2022-12-01 A | 1-0280, 1-0235 | 100% | 2022-11-12 | 2022-11-12 | WEEKEND ONLY | MBRT BASE [16 h] | 16 | 16 | 16 | WGRM | ZONE-1 | SPRING | ROADWAY |  | NT_WE | IXN | NORTH |  |  |  |  |
| 1-0337 |  | TRENCH CONDUIT, SPRING & 8TH NORTH SIDE | 1d | 2022-11-22 A | 2022-12-01 A | 1-0336 SS | 100% | 2022-11-12 | 2022-11-12 | WEEKEND ONLY | MBRT BASE [16 h] | 16 | 16 | 16 | ELECRICAL SUB | ZONE-1 | SPRING | ROADWAY | PRIME | NT_WE | IXN | NORTH |  |  |  |  |
| 1-0338 |  | ROADWAY PAVING, SPRING & 8TH NORTH SIDE | 1d | 2022-12-27 A | 2023-01-03 A | 1-0337 | 100% | 2022-12-04 | 2022-12-04 | WEEKEND ONLY | MBRT BASE [16 h] | 16 | 16 | 16 | WCOL | ZONE-1 | SPRING | ROADWAY |  | NT_WE | IXN | NORTH |  | PAVE-R |  |  |
| PCO506.01 |  | DSC 360-Steam Pipe Conflict at 8th and Spring | 5d | 2023-01-09 A | 2023-01-17 A | MS-0025 | 100% | 2023-02-27 | 2023-03-03 |  | MBRT DSC [40 h] | 40 | 40 | 40 |  |  |  |  |  |  |  |  |  |  |  |  |
|  | 13 | **SPRING AND 8TH SOUTH SIDE** |  | 2022-06-01 | 2022-06-02 |  |  |  |  |  |  |  |  |  |  |  |  |  |  |  |  |  |  |  |  |  |
| 1-0316 |  | DEMO ROAD - COMMON EX - TYPE 2, SPRING & 8TH SOUTH SIDE | 1d | 2022-06-01 A | 2022-06-01 A | 1-0314 | 100% | 2023-04-29 | 2023-04-29 | WEEKEND ONLY | MBRT BASE |  | 8 | 0 | WGRM | ZONE-1 | SPRING | ROADWAY |  | NT_WE | IXN | SOUTH |  |  |  |  |
| 1-0317 |  | TRENCH CONDUIT, SPRING & 8TH SOUTH SIDE | 1d | 2022-06-01 A | 2022-06-01 A | 1-0316 SS | 100% | 2023-04-29 | 2023-04-29 | WEEKEND ONLY | MBRT BASE |  | 8 | 0 | ELECRICAL SUB | ZONE-1 | SPRING | ROADWAY | PRIME | NT_WE | IXN | SOUTH |  |  |  |  |
| 1-0318 |  | ROADWAY PAVING, SPRING & 8TH SOUTH SIDE | 1d | 2022-06-02 A | 2022-06-02 A | 1-0317 | 100% | 2023-04-30 | 2023-04-30 | WEEKEND ONLY | MBRT BASE |  | 8 | 0 | WCOL | ZONE-1 | SPRING | ROADWAY |  | NT_WE | IXN | SOUTH |  | PAVE-R |  |  |

| ID | WBS | Activity | Duration | Start | Finish | Predecessors | Complete | Planned start | Planned finish | Calendar | Resources | Cost | Actual cost | user_text2 | user_number6 | user_text10 | user_text8 | MBRT-ZONE | MBRT-LOCATION | MBRT-TYPE | MBRT-RESP | MBRT-NIGHT | MBRT-ROADWAY | MBRT-SIDE | MBRT-SCOPE | MBRT-DELAY |
| --- | --- | --- | --- | --- | --- | --- | --- | --- | --- | --- | --- | --- | --- | --- | --- | --- | --- | --- | --- | --- | --- | --- | --- | --- | --- | --- |
|  | 14 | **SPRING AND 9TH SW CORNER** |  | 2023-08-05 | 2023-09-06 |  |  |  |  |  |  |  |  |  |  |  |  |  |  |  |  |  |  |  |  |  |
| 1-0321 |  | TRENCH CONDUIT, SPRING AND 9TH SW CORNER | 1d | 2023-08-05 A | 2023-08-07 A | 1-0170 SS | 100% | 2023-08-28 | 2023-08-28 |  | MBRT BASE [8 h] | 8 | 8 | ELECRICAL SUB | 8 | 1-0321 | 1-0321 | ZONE-1 | SPRING | ROADWAY | PRIME | NT_WE | IXN | SOUTH |  |  |
| 1-0355 |  | DSC 572 GAS LINE CONFLICT | 1d | 2023-08-05 A | 2023-08-07 A | 1-0321 SS | 100% | 2023-07-03 | 2023-07-03 |  | MBRT DSC [8 h] | 8 | 8 |  | 8 |  |  |  |  |  |  |  |  |  |  |  |
| 1-0375 |  | DSC 573 DUCT BANK CONFLICT | 1d | 2023-08-05 A | 2023-08-07 A | 1-0321 SS | 100% | 2023-07-03 | 2023-07-03 |  | MBRT DSC [8 h] | 8 | 8 |  | 8 |  |  |  |  |  |  |  |  |  |  |  |
| 1-0395 |  | DSC 574 UNKNOWN STEEL LINE | 1d | 2023-08-05 A | 2023-08-07 A | 1-0321 SS | 100% | 2023-07-03 | 2023-07-03 |  | MBRT DSC [8 h] | 8 | 8 |  | 8 |  |  |  |  |  |  |  |  |  |  |  |
| 1-0320 |  | DEMO ROAD - COMMON EX - TYPE 2, SPRING & 9TH SW CORNER | 5d | 2023-08-15 A | 2023-08-21 A | 1-0318, 1-0078, 1-0294, 1-0321, 1-0395, 1-0375, 1-0355 FF | 100% | 2023-08-14 | 2023-08-18 |  | MBRT BASE [40 h] | 40 | 40 | WGRM | 40 | 1-0320 | 1-0320 | ZONE-1 | SPRING | ROADWAY |  | NT_WE | IXN | SOUTH |  |  |
| 1-0322 |  | ROADWAY PAVING, SPRING AND 9TH SW CORNER | 4d | 2023-08-31 A | 2023-09-06 A | 1-0321, 1-0320 | 100% | 2023-08-21 | 2023-08-24 |  | MBRT BASE [32 h] | 32 | 32 | WCOL | 32 | 1-0322 | 1-0322 | ZONE-1 | SPRING | ROADWAY |  | NT_WE | IXN | SOUTH | PAVE-R |  |
|  | 15 | **SPRING AND 9TH SE CORNER** |  | 2023-08-05 | 2023-09-06 |  |  |  |  |  |  |  |  |  |  |  |  |  |  |  |  |  |  |  |  |  |
| 1-0325 |  | TRENCH CONDUIT, SPRING AND 9TH SE CORNER | 1d | 2023-08-05 A | 2023-08-07 A | 1-0321 SS | 100% | 2023-09-05 | 2023-09-05 |  | MBRT BASE [8 h] | 8 | 8 | ELECRICAL SUB | 8 | 1-0325 | 1-0325 | ZONE-1 | SPRING | ROADWAY | PRIME | NT_WE | IXN | SOUTH |  |  |
| 1-0324 |  | DEMO ROAD - COMMON EX - TYPE 2, SPRING & 9TH SE CORNER | 4d | 2023-08-15 A | 2023-08-21 A | 1-0322 SS+1d, 1-0320 SS, 1-0325, 1-0322 | 100% | 2023-08-25 | 2023-08-30 |  | MBRT BASE [40 h] | 40 | 40 | WGRM | 40 | 1-0324 | 1-0324 | ZONE-1 | SPRING | ROADWAY |  | NT_WE | IXN | SOUTH |  |  |
| 1-0326 |  | ROADWAY PAVING, SPRING AND 9TH SE CORNER | 5d | 2023-08-31 A | 2023-09-06 A | 1-0325, 1-0322, 1-0324 | 100% | 2023-08-31 | 2023-09-07 |  | MBRT BASE [32 h] | 32 | 32 | WCOL | 32 | 1-0326 | 1-0326 | ZONE-1 | SPRING | ROADWAY |  | NT_WE | IXN | SOUTH | PAVE-R |  |
|  | 19 | **SPRING AND 9TH NW CORNER** |  | 2022-05-10 | 2023-09-22 |  |  |  |  |  |  |  |  |  |  |  |  |  |  |  |  |  |  |  |  |  |
| PCO242.01 |  | DSC 176-NW Corner 9th & Spring Elevation Bust | 5d | 2022-05-10 A | 2022-05-13 A | MS-0025 | 100% | 2023-02-27 | 2023-03-03 |  | MBRT DSC [24 h] | 24 | 24 |  | 24 |  |  |  |  |  |  |  |  |  |  |  |
| 1-0340 |  | DEMO ROAD - COMMON EX - TYPE 2, SPRING & 9TH NW CORNER | 1d | 2023-09-21 A | 2023-09-21 A | 1-0338, 1-0324 SS, 1-0346 | 100% | 2023-09-14 | 2023-09-14 |  | MBRT BASE [8 h] | 8 | 8 | WGRM | 8 | 1-0340 | 1-0340 | ZONE-1 | SPRING | ROADWAY |  | NT_WE | IXN | NORTH |  |  |
| 1-0341 |  | TRENCH CONDUIT, SPRING AND 9TH NW CORNER | 1d | 2023-09-21 A | 2023-09-21 A | 1-0340 SS | 100% | 2023-09-14 | 2023-09-14 |  | MBRT BASE [8 h] | 8 | 8 | ELECRICAL SUB | 8 | 1-0341 | 1-0341 | ZONE-1 | SPRING | ROADWAY | PRIME | NT_WE | IXN | NORTH |  |  |
| 1-0342 |  | ROADWAY PAVING, SPRING AND 9TH NW CORNER | 1d | 2023-09-22 A | 2023-09-22 A | 1-0341, 1-2765 | 100% | 2023-09-15 | 2023-09-15 |  | MBRT BASE [8 h] | 8 | 8 | WCOL | 8 | 1-0342 | 1-0342 | ZONE-1 | SPRING | ROADWAY |  | NT_WE | IXN | NORTH | PAVE-R |  |
|  | 20 | **SPRING AND 9TH NE CORNER** |  | 2023-09-15 | 2023-09-16 |  |  |  |  |  |  |  |  |  |  |  |  |  |  |  |  |  |  |  |  |  |
| 1-0344 |  | DEMO ROAD - COMMON EX - TYPE 2, SPRING & 9TH NE CORNER | 1d | 2023-09-15 A | 2023-09-15 A | 1-0326 | 100% | 2023-09-18 | 2023-09-18 |  | MBRT BASE [8 h] | 8 | 8 | WGRM | 8 | 1-0344 | 1-0344 | ZONE-1 | SPRING | ROADWAY |  | NT_WE | IXN | NORTH |  |  |
| 1-0345 |  | TRENCH CONDUIT, SPRING AND 9TH NE CORNER | 1d | 2023-09-15 A | 2023-09-15 A | 1-0344 SS | 100% | 2023-09-18 | 2023-09-18 |  | MBRT BASE [8 h] | 8 | 8 | ELECRICAL SUB | 8 | 1-0345 | 1-0345 | ZONE-1 | SPRING | ROADWAY | PRIME | NT_WE | IXN | NORTH |  |  |
| 1-0346 |  | ROADWAY PAVING, SPRING AND 9TH NE CORNER | 1d | 2023-09-16 A | 2023-09-16 A | 1-0345 | 100% | 2023-09-19 | 2023-09-19 |  | MBRT BASE |  | 8 | WCOL | 0 | 1-0346 | 1-0346 | ZONE-1 | SPRING | ROADWAY |  | NT_WE | IXN | NORTH | PAVE-R |  |
|  | 7 | **MADISON AND 1ST** |  | 2022-04-12 | 2023-06-11 |  |  |  |  |  |  |  |  |  |  |  |  |  |  |  |  |  |  |  |  |  |
| PCO212.01 |  | DSC 151-Sidwalk Remove Thickness SW 1st and Mad | 5d | 2022-04-12 A | 2022-04-13 A | MS-0025 | 100% | 2023-02-27 | 2023-03-03 |  | MBRT DSC [8 h] | 8 | 8 |  | 8 |  |  |  |  |  |  |  |  |  |  |  |
| PCO214.01 |  | DSC 152-SCL Vault Sw Corner 1st and Mad | 5d | 2022-04-12 A | 2022-11-05 A | MS-0025 | 100% | 2023-02-27 | 2023-03-03 |  | MBRT DSC [1168 h] | 1,168 | 1,168 |  | 1168 |  |  |  |  |  |  |  |  |  |  |  |
| PCO215.01 |  | DSC 153-SW Corner 1st and Mad SDOT core into SCL | 5d | 2022-04-14 A | 2022-04-19 A | MS-0025 | 100% | 2023-02-27 | 2023-03-03 |  | MBRT DSC [24 h] | 24 | 24 |  | 24 |  |  |  |  |  |  |  |  |  |  |  |
| PCO241.01 |  | DSC 175-Unknown Conduit 1st and Madison South Side | 5d | 2022-05-10 A | 2022-05-11 A | MS-0025 | 100% | 2023-02-27 | 2023-03-03 |  | MBRT DSC [8 h] | 8 | 8 |  | 8 |  |  |  |  |  |  |  |  |  |  |  |
| PCO681.01 |  | DSC 483-UNKNOWN DUCT BANK CONFLICT | 5d | 2023-05-13 A | 2023-05-13 A | MS-0025 | 100% | 2023-02-27 | 2023-03-03 |  | MBRT DSC [8 h] | 8 | 8 |  | 8 | PCO681.01 | PCO681.01 |  |  |  |  |  |  |  |  |  |
| PCO683.01 |  | DSC 485-EXISTING DUCT BANK CONFLICT WITH SCL SERVICE | 5d | 2023-05-13 A | 2023-05-13 A | MS-0025 | 100% | 2023-02-27 | 2023-03-03 |  | MBRT DSC [8 h] | 8 | 8 |  | 8 | PCO683.01 | PCO683.01 |  |  |  |  |  |  |  |  |  |
| PCO685.01 |  | DSC 487-UKNOWN UNLOCATED UTILITIES CONFLICT WITH SCL SERVICE | 5d | 2023-05-13 A | 2023-05-13 A | MS-0025 | 100% | 2023-02-27 | 2023-03-03 |  | MBRT DSC [8 h] | 8 | 8 |  | 8 | PCO685.01 | PCO685.01 |  |  |  |  |  |  |  |  |  |
| PCO686.01 |  | DSC 488-UKNOWN UNLOCATED STEEL PIPE CONFLICT | 5d | 2023-05-13 A | 2023-05-13 A | MS-0025 | 100% | 2023-02-27 | 2023-03-03 |  | MBRT DSC [8 h] | 8 | 8 |  | 8 | PCO686.01 | PCO686.01 |  |  |  |  |  |  |  |  |  |
| PCO690.01 |  | DSC 492-UNKNOWN UNLOCATED CLAY PIPE | 5d | 2023-05-13 A | 2023-05-14 A | MS-0025 | 100% | 2023-02-27 | 2023-03-03 |  | MBRT DSC [8 h] | 8 | 8 |  | 8 | PCO690.01 | PCO690.01 |  |  |  |  |  |  |  |  |  |
| 1-0292 |  | TRENCH CONDUIT, MAD AND 1ST | 2d | 2023-05-13 A | 2023-05-14 A | 1-0284 | 100% | 2023-05-27 | 2023-05-28 | WEEKEND ONLY | MBRT BASE [16 h] | 16 | 16 | EA3,ELECRICAL SUB | 16 | 1-0292 | 1-0292 | ZONE-1 |  | ROADWAY | PRIME | NT_WE | IXN |  |  |  |
| PCO687.01 |  | DSC 489-UNKNOWN STEEL PIPE REMOVED | 5d | 2023-05-14 A | 2023-05-14 A | MS-0025 | 100% | 2023-02-27 | 2023-03-03 |  | MBRT DSC [8 h] | 8 | 8 |  | 8 | PCO687.01 | PCO687.01 |  |  |  |  |  |  |  |  |  |
| PCO688.01 |  | DSC 490-2 UNKNOWN CONDUITS SCL SERVICE | 5d | 2023-05-14 A | 2023-05-14 A | MS-0025 | 100% | 2023-02-27 | 2023-03-03 |  | MBRT DSC [8 h] | 8 | 8 |  | 8 | PCO688.01 | PCO688.01 |  |  |  |  |  |  |  |  |  |
| PCO689.01 |  | DSC 491-CDF ENCASED WATERLINE CONFLICT WITH SCL SERVICE | 5d | 2023-05-14 A | 2023-05-28 A | MS-0025 | 100% | 2023-02-27 | 2023-03-03 |  | MBRT DSC [80 h] | 80 | 80 |  | 80 | PCO689.01 | PCO689.01 |  |  |  |  |  |  |  |  |  |
| 1-3190 |  | INSTALL CONDUIT, MAD AND 1ST | 2d | 2023-05-20 A | 2023-05-20 A | 1-0292 | 100% | 2023-05-27 | 2023-05-28 | WEEKEND ONLY | MBRT NEW [16 h] | 16 | 8 | EA3,ELECRICAL SUB | 8 | 1-3190 | 1-3190 | ZONE-1 |  | ROADWAY | PRIME | NT_WE | IXN |  |  |  |
| 1-2965 |  | COMPLETE CONDUIT AFTER DSC 491 | 1d | 2023-06-03 A | 2023-06-03 A | PCO689.01, PCO688.01, PCO687.01, PCO686.01, PCO685.01, PCO683.01, PCO681.01, 1-3190 | 100% |  |  | WEEKEND ONLY | MBRT DSC [8 h] | 8 | 8 | EA3,ELECRICAL SUB | 8 | 1-2965 | 1-2965 | ZONE-1 |  | ROADWAY | PRIME | NT_WE | IXN |  |  |  |
| 1-2970 |  | CDF BACKFILL, MAD AND 1ST | 1d | 2023-06-03 A | 2023-06-03 A | 1-2965 SS | 100% |  |  | WEEKEND ONLY | MBRT NEW [8 h] | 8 | 8 | WCOL | 8 | 1-2970 | 1-2970 | ZONE-1 |  | ROADWAY |  | NT_WE | IXN |  | PAVE-R | SCL-FC |
| 1-0293 |  | DEMO ROAD - COMMON EX - TYPE 2, MAD & 1ST | 2d | 2023-06-10 A | 2023-06-11 A | 1-0292, PCO690.01, 1-2970 FS+1d | 100% |  |  | WEEKEND ONLY | MBRT BASE [16 h] | 16 | 16 | WGRM | 16 | 1-0293 | 1-0293 | ZONE-1 | 01 | ROADWAY |  | NT_WE | IXN |  |  | SCL-FC |
| 1-0294 |  | ROADWAY PAVING, MAD AND 1ST | 2d | 2023-06-10 A | 2023-06-11 A | 1-0293 SS | 100% |  |  | WEEKEND ONLY | MBRT BASE [16 h] | 16 | 16 | WCOL | 16 | 1-0294 | 1-0294 | ZONE-1 |  | ROADWAY |  | NT_WE | IXN |  | PAVE-R | SCL-FC |

| ID | WBS | Activity | Duration | Start | Finish | Predecessors | Complete | Planned start | Planned finish | Calendar | Resources | Cost | Actual cost | user_text2 | user_number6 | MBRT-ZONE | MBRT-LOCATION | MBRT-TYPE | MBRT-NIGHT | MBRT-ROADWAY | MBRT-SIDE | MBRT-RESP | MBRT-SCOPE | MBRT-DELAY |
| --- | --- | --- | --- | --- | --- | --- | --- | --- | --- | --- | --- | --- | --- | --- | --- | --- | --- | --- | --- | --- | --- | --- | --- | --- |
|  | 26 | **MADISON AND 2ND SOUTH SIDE** |  | 2022-06-18 | 2022-06-18 |  |  |  |  |  |  |  |  |  |  |  |  |  |  |  |  |  |  |  |
| 1-0368 |  | DEMO ROAD - COMMON EX - TYPE 2, MAD & 2ND SOUTH SIDE | 1d | 2022-06-18 A | 2022-06-18 A | 1-0214, 1-0366 | 100% | 2023-04-01 | 2023-04-01 | WEEKEND ONLY | MBRT BASE [8 h] | 8 | 8 | WGRM | 8 | ZONE-1 | 02 | ROADWAY | NT_WE | IXN | SOUTH |  |  |  |
| 1-0369 |  | TRENCH CONDUIT, MAD & 2ND SOUTH SIDE | 1d | 2022-06-18 A | 2022-06-18 A | 1-0368 SS | 100% | 2023-04-01 | 2023-04-01 | WEEKEND ONLY | MBRT BASE [8 h] | 8 | 8 | ELECRICAL SUB | 8 | ZONE-1 | 02 | ROADWAY | NT_WE | IXN | SOUTH | PRIME |  |  |
| 1-0370 |  | ROADWAY PAVING, MAD & 2ND SOUTH SIDE | 1d | 2022-06-18 A | 2022-06-18 A | 1-0369 | 100% | 2023-04-02 | 2023-04-02 | WEEKEND ONLY | MBRT BASE [8 h] | 8 | 8 | WCOL | 8 | ZONE-1 | 02 | ROADWAY | NT_WE | IXN | SOUTH |  | PAVE-R |  |
|  | 6 | **MADISON AND 3RD NORTH SIDE** |  | 2022-05-06 | 2022-05-07 |  |  |  |  |  |  |  |  |  |  |  |  |  |  |  |  |  |  |  |
| 1-0295 |  | ELECTRICAL VAULT WORK, MAD & 3ND NORTH SIDE | 1d | 2022-05-06 A | 2022-05-06 A | 1-SCL-1200 | 100% | 2022-05-31 | 2022-05-31 |  | MBRT BASE [8 h] | 8 | 8 |  | 8 | ZONE-1 | 03 | ROADWAY | NT_WE | IXN | NORTH | PRIME | ELECTRICAL |  |
| 1-0288 |  | DEMO ROAD - COMMON EX - TYPE 2, MAD & 3ND NORTH SIDE | 1d | 2022-05-07 A | 2022-05-07 A | 1-0121, 1-0291 | 100% | 2022-06-25 | 2022-06-25 | WEEKEND ONLY | MBRT BASE [8 h] | 8 | 8 | WGRM | 8 | ZONE-1 |  | ROADWAY | NT_WE | IXN | NORTH |  |  | SCL-FC |
| 1-0289 |  | TRENCH CONDUIT, MAD & 3ND NORTH SIDE | 1d | 2022-05-07 A | 2022-05-07 A | 1-0288 SS | 100% | 2022-06-25 | 2022-06-25 | WEEKEND ONLY | MBRT BASE [8 h] | 8 | 8 | ELECRICAL SUB | 8 | ZONE-1 |  | ROADWAY | NT_WE | IXN | NORTH | PRIME |  | SCL-FC |
| 1-0290 |  | ROADWAY PAVING, MAD & 3ND NORTH SIDE | 1d | 2022-05-07 A | 2022-05-07 A | 1-0289 SS, 1-0295 | 100% | 2022-06-26 | 2022-06-26 | WEEKEND ONLY | MBRT BASE [8 h] | 8 | 8 | WCOL | 8 | ZONE-1 |  | ROADWAY | NT_WE | IXN | NORTH |  | PAVE-R | SCL-FC |
|  | 27 | **MADISON AND 4TH SOUTH SIDE** |  | 2022-10-22 | 2022-10-23 |  |  |  |  |  |  |  |  |  |  |  |  |  |  |  |  |  |  |  |
| 1-0372 |  | DEMO ROAD - COMMON EX - TYPE 2, MAD & 4TH SOUTH SIDE | 1d | 2022-10-22 A | 2022-10-22 A | 1-0370 | 100% | 2023-04-08 | 2023-04-08 | WEEKEND ONLY | MBRT BASE [8 h] | 8 | 8 | WGRM | 8 | ZONE-1 | 04 | ROADWAY | NT_WE | IXN | SOUTH |  |  |  |
| 1-0373 |  | TRENCH CONDUIT, MAD & 4TH SOUTH SIDE | 1d | 2022-10-22 A | 2022-10-22 A | 1-0372 SS | 100% | 2023-04-08 | 2023-04-08 | WEEKEND ONLY | MBRT BASE [8 h] | 8 | 8 | ELECRICAL SUB | 8 | ZONE-1 | 04 | ROADWAY | NT_WE | IXN | SOUTH | PRIME |  |  |
| 1-0374 |  | ROADWAY PAVING, MAD & 4TH SOUTH SIDE | 1d | 2022-10-23 A | 2022-10-23 A | 1-0373 | 100% | 2023-04-09 | 2023-04-09 | WEEKEND ONLY | MBRT BASE [8 h] | 8 | 8 | WCOL | 8 | ZONE-1 | 04 | ROADWAY | NT_WE | IXN | SOUTH |  | PAVE-R |  |
|  | 8 | **MADISON AND 5TH NORTH SIDE** |  | 2022-09-24 | 2022-09-25 |  |  |  |  |  |  |  |  |  |  |  |  |  |  |  |  |  |  |  |
| 1-0296 |  | DEMO ROAD - COMMON EX - TYPE 2, MAD & 5TH NORTH SIDE | 1d | 2022-09-24 A | 2022-09-24 A | 1-0290, 1-0129 | 100% | 2022-11-05 | 2022-11-05 | WEEKEND ONLY | MBRT BASE [8 h] | 8 | 8 | WGRM | 8 | ZONE-1 | 05 | ROADWAY | NT_WE | IXN | NORTH |  |  | SCL-FC |
| 1-0297 |  | TRENCH CONDUIT, MAD & 5TH NORTH SIDE | 1d | 2022-09-24 A | 2022-09-24 A | 1-0296 SS | 100% | 2022-11-05 | 2022-11-05 | WEEKEND ONLY | MBRT BASE [8 h] | 8 | 8 | ELECRICAL SUB | 8 | ZONE-1 |  | ROADWAY | NT_WE | IXN | NORTH | PRIME |  |  |
| 1-0298 |  | ROADWAY PAVING, MAD & 5TH NORTH SIDE | 1d | 2022-09-24 A | 2022-09-25 A | 1-0297 | 100% | 2022-11-06 | 2022-11-06 | WEEKEND ONLY | MBRT BASE [16 h] | 16 | 16 | WCOL | 16 | ZONE-1 |  | ROADWAY | NT_WE | IXN | NORTH |  | PAVE-R |  |
|  | 28 | **MADISON AND 5TH SOUTH SIDE** |  | 2022-10-10 | 2022-11-20 |  |  |  |  |  |  |  |  |  |  |  |  |  |  |  |  |  |  |  |
| PCO411.01 |  | DSC 301-unknown unlocated conduit 5th and madison | 5d | 2022-10-10 A | 2022-10-30 A | MS-0025 | 100% | 2023-02-27 | 2023-03-03 |  | MBRT DSC [120 h] | 120 | 120 |  | 120 |  |  |  |  |  |  |  |  |  |
| PCO441.01 |  | DSC 322-Conduit Crossing Conflicts 5th and Madison | 5d | 2022-10-31 A | 2022-11-03 A | MS-0025 | 100% | 2023-02-27 | 2023-03-03 |  | MBRT DSC [24 h] | 24 | 24 |  | 24 |  |  |  |  |  |  |  |  |  |
| PCO469.01 |  | DSC 341-Void under road at 5th and madison | 5d | 2022-11-18 A | 2022-11-19 A | MS-0025 | 100% | 2023-02-27 | 2023-03-03 |  | MBRT DSC [8 h] | 8 | 8 |  | 8 |  |  |  |  |  |  |  |  |  |
| PCO470.01 |  | DSC 342-Concrete 20" thick at 5th and Madison | 5d | 2022-11-18 A | 2022-11-19 A | MS-0025 | 100% | 2023-02-27 | 2023-03-03 |  | MBRT DSC [8 h] | 8 | 8 |  | 8 |  |  |  |  |  |  |  |  |  |
| 1-0376 |  | DEMO ROAD - COMMON EX - TYPE 2, MAD & 5TH SOUTH SIDE | 1d | 2022-11-19 A | 2022-11-19 A | 1-0298 | 100% | 2022-12-10 | 2022-12-10 | WEEKEND ONLY | MBRT BASE [8 h] | 8 | 8 | WGRM | 8 | ZONE-1 | 05 | ROADWAY | NT_WE | IXN | SOUTH |  |  |  |
| 1-0377 |  | TRENCH CONDUIT, MAD & 5TH SOUTH SIDE | 1d | 2022-11-19 A | 2022-11-19 A | 1-0376 SS | 100% | 2022-12-10 | 2022-12-10 | WEEKEND ONLY | MBRT BASE [8 h] | 8 | 8 | ELECRICAL SUB | 8 | ZONE-1 | 05 | ROADWAY | NT_WE | IXN | SOUTH | PRIME |  |  |
| 1-0378 |  | ROADWAY PAVING, MAD & 5TH SOUTH SIDE | 1d | 2022-11-20 A | 2022-11-20 A | 1-0377 | 100% | 2022-12-11 | 2022-12-11 | WEEKEND ONLY | MBRT BASE [8 h] | 8 | 8 | WCOL | 8 | ZONE-1 | 05 | ROADWAY | NT_WE | IXN | SOUTH |  | PAVE-R |  |

| ID | WBS | Activity | Duration | Start | Finish | Predecessors | Complete | Planned start | Planned finish | Calendar | Resources | Cost | Actual cost | user_text2 | user_number6 | user_text10 | user_text8 | MBRT-ZONE | MBRT-LOCATION | MBRT-TYPE | MBRT-NIGHT | MBRT-ROADWAY | MBRT-SIDE | MBRT-RESP | MBRT-SCOPE |
| --- | --- | --- | --- | --- | --- | --- | --- | --- | --- | --- | --- | --- | --- | --- | --- | --- | --- | --- | --- | --- | --- | --- | --- | --- | --- |
|  | 29 | **MADISON AND 6TH SOUTH SIDE** |  | 2023-06-03 | 2023-08-21 |  |  |  |  |  |  |  |  |  |  |  |  |  |  |  |  |  |  |  |  |
| 1-0380 |  | DEMO ROAD - COMMON EX - TYPE 2, MAD & 6TH SOUTH SIDE | 1d | 2023-06-03 A | 2023-06-03 A | 1-0378, 1-0302 | 100% |  |  | WEEKEND ONLY | MBRT BASE [8 h] | 8 | 8 | WGRM | 8 | 1-0380 | 1-0380 | ZONE-1 | 06 | ROADWAY | NT_WE | IXN | SOUTH |  |  |
| 1-0381 |  | TRENCH CONDUIT, MAD & 6TH SOUTH SIDE | 1d | 2023-06-03 A | 2023-06-03 A | 1-0380 SS | 100% |  |  | WEEKEND ONLY | MBRT BASE [8 h] | 8 | 8 | ELECRICAL SUB | 8 | 1-0381 | 1-0381 | ZONE-1 | 06 | ROADWAY | NT_WE | IXN | SOUTH | PRIME |  |
| 1-0382 |  | ROADWAY PAVING, MAD & 6TH SOUTH SIDE | 1d | 2023-08-19 A | 2023-08-21 A | 1-0381 FS+9d | 100% | 2023-08-19 | 2023-08-19 | WEEKEND ONLY | MBRT BASE [16 h] | 16 | 16 | WCOL | 16 | 1-0382 | 1-0382 | ZONE-1 | 06 | ROADWAY | NT_WE | IXN | SOUTH |  | PAVE-R |
|  | 9 | **MADISON AND 8TH NORTH SIDE** |  | 2023-04-17 | 2023-05-09 |  |  |  |  |  |  |  |  |  |  |  |  |  |  |  |  |  |  |  |  |
| 1-0300 |  | DEMO ROAD - COMMON EX - TYPE 2, MAD & 8TH NORTH SIDE | 1d | 2023-04-17 A | 2023-04-18 A | 1-0133, 1-0298, 1-0067, 1-0282, 1-0374 | 100% | 2023-04-15 | 2023-04-15 | WEEKEND ONLY | MBRT BASE |  | 8 | WGRM | 0 | 1-0300 | 1-0300 | ZONE-1 | 08 | ROADWAY | NT_WE | IXN | NORTH |  |  |
| 1-0301 |  | TRENCH CONDUIT PRIOR TO DSC, MAD & 8TH NORTH SIDE | 1d | 2023-04-19 A | 2023-04-20 A | 1-0300 SS | 100% | 2023-04-15 | 2023-04-15 | WEEKEND ONLY | MBRT BASE [8 h] | 8 | 8 | ELECRICAL SUB | 8 | 1-0301 | 1-0301 | ZONE-1 |  | ROADWAY | NT_WE | IXN | NORTH | PRIME |  |
| PCO642.01 |  | DSC 452-CONDUIT CONFLICTS | 1d | 2023-04-21 A | 2023-04-21 A | 1-0301 | 100% | 2023-04-15 | 2023-04-15 | WEEKEND ONLY | MBRT DSC [8 h] | 8 | 8 | ELECRICAL SUB | 8 | PCO642.01 | PCO642.01 | ZONE-1 |  | ROADWAY | NT_WE | IXN | NORTH | PRIME |  |
| 1-2770 |  | TRENCH CONDUIT AFTER DSC, MAD & 8TH NORTH SIDE | 1d | 2023-04-24 A | 2023-04-24 A | PCO642.01 | 100% | 2023-04-15 | 2023-04-15 | WEEKEND ONLY | MBRT DSC [8 h] | 8 | 8 | ELECRICAL SUB | 8 | 1-2770 | 1-2770 | ZONE-1 |  | ROADWAY | NT_WE | IXN | NORTH | PRIME |  |
| 1-2775 |  | INSTALL CONDUIT, MAD & 8TH NORTH SIDE | 1d | 2023-04-25 A | 2023-04-28 A | 1-2770 | 100% | 2023-04-15 | 2023-04-15 | WEEKEND ONLY | MBRT NEW [8 h] | 8 | 8 | ELECRICAL SUB | 0 | 1-2775 | 1-2775 | ZONE-1 |  | ROADWAY | NT_WE | IXN | NORTH | PRIME |  |
| 1-0302 |  | ROADWAY PAVING, MAD & 8TH NORTH SIDE | 1d | 2023-05-04 A | 2023-05-09 A | 1-0301, 1-2775 | 100% | 2023-05-06 | 2023-05-06 | WEEKEND ONLY | MBRT BASE [16 h] | 16 | 16 | WCOL | 16 | 1-0302 | 1-0302 | ZONE-1 |  | ROADWAY | NT_WE | IXN | NORTH |  | PAVE-R |
|  | 30 | **MADISON AND 8TH SOUTH SIDE** |  | 2023-02-27 | 2023-03-15 |  |  |  |  |  |  |  |  |  |  |  |  |  |  |  |  |  |  |  |  |
| 1-0384 |  | DEMO ROAD - COMMON EX - TYPE 2, MAD & 8TH SOUTH SIDE | 1d | 2023-02-27 A | 2023-02-27 A | 1-0376 | 100% | 2023-04-22 | 2023-04-22 | WEEKEND ONLY | MBRT BASE |  | 8 | WGRM | 0 |  |  | ZONE-1 | 08 | ROADWAY | NT_WE | IXN | SOUTH |  |  |
| 1-0385 |  | TRENCH CONDUIT, MAD & 8TH SOUTH SIDE | 1d | 2023-02-27 A | 2023-02-28 A | 1-0384 SS | 100% | 2023-04-22 | 2023-04-22 | WEEKEND ONLY | MBRT BASE |  | 8 | ELECRICAL SUB | 0 |  |  | ZONE-1 | 08 | ROADWAY | NT_WE | IXN | SOUTH | PRIME |  |
| 1-0386 |  | ROADWAY PAVING, MAD & 8TH SOUTH SIDE | 1d | 2023-03-10 A | 2023-03-15 A | 1-0385 | 100% | 2023-04-23 | 2023-04-23 | WEEKEND ONLY | MBRT BASE [16 h] | 16 | 16 | WCOL | 16 |  |  | ZONE-1 | 08 | ROADWAY | NT_WE | IXN | SOUTH |  | PAVE-R |
|  | 11 | **MADISON AND 9TH NE CORNER** |  | 2022-04-30 | 2022-05-01 |  |  |  |  |  |  |  |  |  |  |  |  |  |  |  |  |  |  |  |  |
| 1-0308 |  | DEMO ROAD - COMMON EX - TYPE 2, MAD & 9TH NE CORNER | 1d | 2022-04-30 A | 2022-04-30 A | 1-0306 | 100% | 2022-06-25 | 2022-06-25 | WEEKEND ONLY | MBRT BASE [8 h] | 8 | 8 | WGRM | 8 |  |  | ZONE-1 | 09 | ROADWAY | NT_WE | IXN | NORTH |  |  |
| 1-0309 |  | TRENCH CONDUIT, MAD & 9TH NE CORNER | 1d | 2022-04-30 A | 2022-04-30 A | 1-0308 SS | 100% | 2022-06-25 | 2022-06-25 | WEEKEND ONLY | MBRT BASE [8 h] | 8 | 8 | ELECRICAL SUB | 8 |  |  | ZONE-1 |  | ROADWAY | NT_WE | IXN | NORTH | PRIME |  |
| 1-0310 |  | ROADWAY PAVING, MAD & 9TH NE CORNER | 1d | 2022-05-01 A | 2022-05-01 A | 1-0309 | 100% |  |  | WEEKEND ONLY | MBRT BASE [8 h] | 8 | 8 | WCOL | 8 |  |  | ZONE-1 |  | ROADWAY | NT_WE | IXN | NORTH |  | PAVE-R |
|  | 10 | **MADISON AND 9TH NW CORNER** |  | 2022-04-23 | 2022-04-24 |  |  |  |  |  |  |  |  |  |  |  |  |  |  |  |  |  |  |  |  |
| 1-0304 |  | DEMO ROAD - COMMON EX - TYPE 2, MAD & 9TH NW CORNER | 1d | 2022-04-23 A | 2022-04-23 A | 1-0136 | 100% | 2022-06-18 | 2022-06-18 | WEEKEND ONLY | MBRT BASE [8 h] | 8 | 8 | WGRM | 8 |  |  | ZONE-1 | 09 | ROADWAY | NT_WE | IXN | NORTH |  |  |
| 1-0305 |  | TRENCH CONDUIT, MAD & 9TH NW CORNER | 1d | 2022-04-23 A | 2022-04-23 A | 1-0304 SS | 100% | 2022-06-18 | 2022-06-18 | WEEKEND ONLY | MBRT BASE [8 h] | 8 | 8 | ELECRICAL SUB | 8 |  |  | ZONE-1 |  | ROADWAY | NT_WE | IXN | NORTH | PRIME |  |
| 1-0306 |  | ROADWAY PAVING, MAD & 9TH NW CORNER | 1d | 2022-04-24 A | 2022-04-24 A | 1-0305 | 100% | 2022-06-19 | 2022-06-19 | WEEKEND ONLY | MBRT BASE [8 h] | 8 | 8 | WCOL | 8 |  |  | ZONE-1 |  | ROADWAY | NT_WE | IXN | NORTH |  | PAVE-R |
|  | 31 | **MADISON AND 9TH SW CORNER** |  | 2023-03-11 | 2023-03-18 |  |  |  |  |  |  |  |  |  |  |  |  |  |  |  |  |  |  |  |  |
| 1-0388 |  | DEMO ROAD - COMMON EX - TYPE 2, MAD & 9TH SW CORNER | 1d | 2023-03-11 A | 2023-03-11 A | 1-0384 | 100% | 2023-04-29 | 2023-04-29 | WEEKEND ONLY | MBRT BASE [8 h] | 8 | 8 | WGRM | 8 |  |  | ZONE-1 | 09 | ROADWAY | NT_WE | IXN | SOUTH |  |  |
| 1-0389 |  | TRENCH CONDUIT, MAD & 9TH SW CORNER | 1d | 2023-03-11 A | 2023-03-11 A | 1-0388 SS | 100% | 2023-04-29 | 2023-04-29 | WEEKEND ONLY | MBRT BASE [8 h] | 8 | 8 | ELECRICAL SUB | 8 |  |  | ZONE-1 | 09 | ROADWAY | NT_WE | IXN | SOUTH | PRIME |  |
| 1-0390 |  | ROADWAY PAVING, MAD & 9TH SW CORNER | 1d | 2023-03-18 A | 2023-03-18 A | 1-0389 | 100% | 2023-04-08 | 2023-04-08 | WEEKEND ONLY | MBRT BASE [8 h] | 8 | 8 | WCOL | 8 |  |  | ZONE-1 | 09 | ROADWAY | NT_WE | IXN | SOUTH |  | PAVE-R |

| ID | WBS | Activity | Duration | Start | Finish | Predecessors | Complete | Planned start | Planned finish | Calendar | Resources | Cost | Actual cost | user_text2 | user_number6 | MBRT-ZONE | MBRT-LOCATION | MBRT-TYPE | MBRT-NIGHT | MBRT-ROADWAY | MBRT-SIDE | MBRT-RESP | MBRT-SCOPE | user_text10 | user_text8 |
| --- | --- | --- | --- | --- | --- | --- | --- | --- | --- | --- | --- | --- | --- | --- | --- | --- | --- | --- | --- | --- | --- | --- | --- | --- | --- |
|  | 32 | **MADISON AND 9TH SE CORNER** |  | 2023-03-11 | 2023-03-18 |  |  |  |  |  |  |  |  |  |  |  |  |  |  |  |  |  |  |  |  |
| 1-0392 |  | DEMO ROAD - COMMON EX - TYPE 2, MAD & 9TH SE CORNER | 1d | 2023-03-11 A | 2023-03-11 A | 1-0390 | 100% | 2023-05-06 | 2023-05-06 | WEEKEND ONLY | MBRT BASE [8 h] | 8 | 8 | WGRM | 8 | ZONE-1 | 09 | ROADWAY | NT_WE | IXN | SOUTH |  |  |  |  |
| 1-0393 |  | TRENCH CONDUIT, MAD & 9TH SE CORNER | 1d | 2023-03-11 A | 2023-03-11 A | 1-0392 SS | 100% | 2023-05-06 | 2023-05-06 | WEEKEND ONLY | MBRT BASE [8 h] | 8 | 8 | ELECRICAL SUB | 8 | ZONE-1 | 09 | ROADWAY | NT_WE | IXN | SOUTH | PRIME |  |  |  |
| 1-0394 |  | ROADWAY PAVING, MAD & 9TH SE CORNER | 1d | 2023-03-18 A | 2023-03-18 A | 1-0393 | 100% | 2023-04-09 | 2023-04-09 | WEEKEND ONLY | MBRT BASE [8 h] | 8 | 8 | WCOL | 8 | ZONE-1 | 09 | ROADWAY | NT_WE | IXN | SOUTH |  | PAVE-R |  |  |
|  | 21 | **MADISON AND TERRY NORTH SIDE** |  | 2022-09-20 | 2022-09-26 |  |  |  |  |  |  |  |  |  |  |  |  |  |  |  |  |  |  |  |  |
| 1-0348 |  | DEMO ROAD - COMMON EX - TYPE 2, MAD & TERRY NORTH SIDE | 1d | 2022-09-20 A | 2022-09-21 A | 1-0183 | 100% | 2022-11-15 | 2022-11-15 |  | MBRT BASE [16 h] | 16 | 16 | WGRM | 16 | ZONE-1 | TERRY | ROADWAY | NT_WE | IXN | NORTH |  |  |  |  |
| 1-0349 |  | TRENCH CONDUIT, MAD & TERRY NORTH SIDE | 1d | 2022-09-20 A | 2022-09-21 A | 1-0348 SS | 100% | 2022-10-03 | 2022-10-03 |  | MBRT BASE [16 h] | 16 | 16 | ELECRICAL SUB | 16 | ZONE-1 |  | ROADWAY | NT_WE | IXN | NORTH | PRIME |  |  |  |
| 1-0350 |  | ROADWAY PAVING, MAD & TERRY NORTH SIDE | 1d | 2022-09-22 A | 2022-09-26 A | 1-0349 | 100% | 2022-10-02 | 2022-10-02 | WEEKEND ONLY | MBRT BASE [16 h] | 16 | 16 | WCOL | 16 | ZONE-1 |  | ROADWAY | NT_WE | IXN | NORTH |  | PAVE-R |  |  |
|  | 33 | **MADISON AND TERRY SOUTH SIDE** |  | 2022-06-20 | 2022-07-11 |  |  |  |  |  |  |  |  |  |  |  |  |  |  |  |  |  |  |  |  |
| 1-0396 |  | DEMO ROAD - COMMON EX - TYPE 2, MAD & TERRY SOUTH SIDE | 1d | 2022-06-20 A | 2022-07-05 A | 1-0238 | 100% | 2023-01-14 | 2023-01-14 | WEEKEND ONLY | MBRT BASE [32 h] | 32 | 32 | WGRM | 32 | ZONE-1 | TERRY | ROADWAY | NT_WE | IXN | SOUTH |  |  |  |  |
| 1-0397 |  | TRENCH CONDUIT, MAD & TERRY SOUTH SIDE | 1d | 2022-06-20 A | 2022-07-05 A | 1-0396 SS | 100% | 2023-01-14 | 2023-01-14 | WEEKEND ONLY | MBRT BASE [32 h] | 32 | 32 | ELECRICAL SUB | 32 | ZONE-1 | TERRY | ROADWAY | NT_WE | IXN | SOUTH | PRIME |  |  |  |
| 1-0398 |  | ROADWAY PAVING, MAD & TERRY SOUTH SIDE | 1d | 2022-07-06 A | 2022-07-11 A | 1-0397 | 100% | 2023-01-15 | 2023-01-15 | WEEKEND ONLY | MBRT BASE [16 h] | 16 | 16 | WCOL | 16 | ZONE-1 | TERRY | ROADWAY | NT_WE | IXN | SOUTH |  | PAVE-R |  |  |
|  | 22 | **MADISON AND BOREN NORTH SIDE** |  | 2023-01-14 | 2023-06-04 |  |  |  |  |  |  |  |  |  |  |  |  |  |  |  |  |  |  |  |  |
| 1-0353 |  | TRENCH CONDUIT, MAD & BOREN NORTH SIDE | 1d | 2023-01-14 A | 2023-01-14 A | 1-0398 | 100% | 2022-12-31 | 2022-12-31 | WEEKEND ONLY | MBRT BASE [8 h] | 8 | 8 | ELECRICAL SUB | 8 | ZONE-1 |  | ROADWAY | NT_WE | IXN | NORTH | PRIME |  |  |  |
| 1-0352 |  | DEMO ROAD - COMMON EX - TYPE 2, MAD & BOREN NORTH SIDE | 1d | 2023-06-03 A | 2023-06-03 A | 1-0190, 1-0350 | 100% |  |  | WEEKEND ONLY | MBRT BASE [8 h] | 8 | 8 | WGRM | 8 | ZONE-1 | BOREN | ROADWAY | NT_WE | IXN | NORTH |  |  | 1-0352 | 1-0352 |
| 1-0354 |  | ROADWAY PAVING, MAD & BOREN NORTH SIDE | 1d | 2023-06-04 A | 2023-06-04 A | 1-0353, 1-0352 | 100% |  |  | WEEKEND ONLY | MBRT BASE [8 h] | 8 | 8 | WCOL | 8 | ZONE-1 |  | ROADWAY | NT_WE | IXN | NORTH |  | PAVE-R | 1-0354 | 1-0354 |
|  | 39 | **MADISON AND BOREN WEST SIDE** |  | 2023-01-28 | 2023-08-22 |  |  |  |  |  |  |  |  |  |  |  |  |  |  |  |  |  |  |  |  |
| 1-2980 |  | TRENCH CONDUIT, MAD & BOREN WEST SIDE | 1d | 2023-01-28 A | 2023-01-28 A | 1-0353 | 100% | 2022-12-31 | 2022-12-31 | WEEKEND ONLY | MBRT NEW [8 h] | 8 | 8 | ELECRICAL SUB | 8 | ZONE-1 |  | ROADWAY | NT_WE | IXN | NORTH | PRIME |  |  |  |
| 1-2975 |  | DEMO ROAD - COMMON EX - TYPE 2, MAD & BOREN WEST SIDE | 1d | 2023-08-22 A | 2023-08-22 A | 1-0380, 1-0382 | 100% | 2023-08-20 | 2023-08-20 | WEEKEND ONLY | MBRT NEW [8 h] | 8 | 8 | WGRM | 0 | ZONE-1 | BOREN | ROADWAY | NT_WE | IXN | NORTH |  |  | 1-2975 | 1-2975 |
| 1-2985 |  | ROADWAY PAVING, MAD & BOREN WEST SIDE | 1d | 2023-08-22 A | 2023-08-22 A | 1-2980, 1-2975 SS, 1-3000 SS, 1-0402, 1-0382 | 100% | 2023-08-20 | 2023-08-20 | WEEKEND ONLY | MBRT NEW [8 h] | 8 | 8 | WCOL | 0 | ZONE-1 |  | ROADWAY | NT_WE | IXN | NORTH |  | PAVE-R | 1-2985 | 1-2985 |
|  | 40 | **MADISON AND BOREN EAST SIDE** |  | 2023-01-14 | 2023-06-04 |  |  |  |  |  |  |  |  |  |  |  |  |  |  |  |  |  |  |  |  |
| 1-2995 |  | TRENCH CONDUIT, MAD & BOREN EAST SIDE | 1d | 2023-01-14 A | 2023-01-14 A | 1-0353 SS | 100% | 2022-12-31 | 2022-12-31 | WEEKEND ONLY | MBRT NEW [8 h] | 8 | 8 | ELECRICAL SUB | 8 | ZONE-1 |  | ROADWAY | NT_WE | IXN | NORTH | PRIME |  |  |  |
| 1-2990 |  | DEMO ROAD - COMMON EX - TYPE 2, MAD & BOREN EAST SIDE | 1d | 2023-05-20 A | 2023-06-04 A | 1-0348 | 100% | 2023-05-06 | 2023-05-06 | WEEKEND ONLY | MBRT NEW [8 h] | 8 | 48 | WGRM | 48 | ZONE-1 | BOREN | ROADWAY | NT_WE | IXN | NORTH |  |  | 1-2990 | 1-2990 |
| 1-3000 |  | ROADWAY PAVING, MAD & BOREN EAST SIDE | 1d | 2023-05-20 A | 2023-06-04 A | 1-2995, 1-2990 SS | 100% | 2023-05-07 | 2023-05-07 | WEEKEND ONLY | MBRT NEW [8 h] | 8 | 48 | WCOL | 48 | ZONE-1 |  | ROADWAY | NT_WE | IXN | NORTH |  | PAVE-R | 1-3000 | 1-3000 |
| PCO700.01 |  | DSC 502-ABANDONED WATERLINE CONFLICT | 1d | 2023-05-23 A | 2023-05-24 A | MS-0025 | 100% | 2022-12-31 | 2022-12-31 | WEEKEND ONLY | MBRT DSC [8 h] | 8 | 8 | ELECRICAL SUB | 8 | ZONE-1 |  | ROADWAY | NT_WE | IXN | NORTH | PRIME |  | PCO700.01 | PCO700.01 |
| PCO701.01 |  | DSC 503-UNKNOWN UNLOCATED DUCTBANK CONFLICT | 1d | 2023-05-24 A | 2023-05-25 A | MS-0025 | 100% | 2022-12-31 | 2022-12-31 | WEEKEND ONLY | MBRT DSC [8 h] | 8 | 8 | ELECRICAL SUB | 8 | ZONE-1 |  | ROADWAY | NT_WE | IXN | NORTH | PRIME |  | PCO701.01 | PCO701.01 |

| ID | WBS | Activity | Duration | Start | Finish | Predecessors | Complete | Planned start | Planned finish | Calendar | Resources | Cost | Actual cost | user_text2 | user_number6 | MBRT-ZONE | MBRT-LOCATION | MBRT-TYPE | MBRT-RESP | MBRT-NIGHT | MBRT-ROADWAY | MBRT-SIDE | user_text10 | user_text8 | MBRT-SCOPE | user_text1 |
| --- | --- | --- | --- | --- | --- | --- | --- | --- | --- | --- | --- | --- | --- | --- | --- | --- | --- | --- | --- | --- | --- | --- | --- | --- | --- | --- |
|  | 34 | **MADISON AND BOREN SOUTH SIDE** |  | 2023-01-28 | 2023-06-11 |  |  |  |  |  |  |  |  |  |  |  |  |  |  |  |  |  |  |  |  |  |
| 1-0401 |  | TRENCH CONDUIT, MAD & BOREN SOUTH SIDE | 1d | 2023-01-28 A | 2023-01-28 A | 1-0353 | 100% | 2023-03-04 | 2023-03-04 | WEEKEND ONLY | MBRT BASE [8 h] | 8 | 8 | ELECRICAL SUB | 8 | ZONE-1 | BOREN | ROADWAY | PRIME | NT_WE | IXN | SOUTH |  |  |  |  |
| 1-0400 |  | DEMO ROAD - COMMON EX - TYPE 2, MAD & BOREN SOUTH SIDE | 1d | 2023-06-10 A | 2023-06-10 A | 1-0245, 1-0398, 1-0354 | 100% |  |  | WEEKEND ONLY | MBRT BASE [8 h] | 8 | 8 | WGRM | 8 | ZONE-1 | BOREN | ROADWAY |  | NT_WE | IXN | SOUTH | 1-0400 | 1-0400 |  |  |
| 1-0402 |  | ROADWAY PAVING, MAD & BOREN SOUTH SIDE | 1d | 2023-06-11 A | 2023-06-11 A | 1-0401, 1-0400 | 100% |  |  | WEEKEND ONLY | MBRT BASE [8 h] | 8 | 8 | WCOL | 8 | ZONE-1 | BOREN | ROADWAY |  | NT_WE | IXN | SOUTH | 1-0402 | 1-0402 | PAVE-R |  |
|  | 23 | **MADISON AND MINOR NORTH SIDE** |  | 2022-09-22 | 2022-09-28 |  |  |  |  |  |  |  |  |  |  |  |  |  |  |  |  |  |  |  |  |  |
| 1-0356 |  | DEMO ROAD - COMMON EX - TYPE 2, MAD & MINOR NORTH SIDE | 1d | 2022-09-22 A | 2022-09-23 A | 1-0195 | 100% | 2022-12-27 | 2022-12-27 |  | MBRT BASE [16 h] | 16 | 16 | WGRM | 16 | ZONE-1 | MINOR | ROADWAY |  | NT_WE | IXN | NORTH |  |  |  |  |
| 1-0357 |  | TRENCH CONDUIT, MAD & MINOR NORTH SIDE | 1d | 2022-09-22 A | 2022-09-23 A | 1-0356 SS | 100% | 2022-10-03 | 2022-10-03 |  | MBRT BASE [16 h] | 16 | 16 | ELECRICAL SUB | 16 | ZONE-1 |  | ROADWAY | PRIME | NT_WE | IXN | NORTH |  |  |  |  |
| 1-0358 |  | ROADWAY PAVING, MAD & MINOR NORTH SIDE | 1d | 2022-09-26 A | 2022-09-28 A | 1-0357 | 100% | 2022-10-04 | 2022-10-04 |  | MBRT BASE [24 h] | 24 | 24 | WCOL | 24 | ZONE-1 |  | ROADWAY |  | NT_WE | IXN | NORTH |  |  | PAVE-R |  |
|  | 35 | **MADISON AND MINOR SOUTH SIDE** |  | 2022-08-13 | 2022-08-21 |  |  |  |  |  |  |  |  |  |  |  |  |  |  |  |  |  |  |  |  |  |
| 1-0405 |  | TRENCH CONDUIT, MAD & MINOR SOUTH SIDE | 1d | 2022-08-13 A | 2022-08-13 A | 1-0274 | 100% | 2023-01-07 | 2023-01-07 | WEEKEND ONLY | MBRT BASE [8 h] | 8 | 8 | ELECRICAL SUB | 8 | ZONE-1 | MINOR | ROADWAY | PRIME | NT_WE | IXN | SOUTH |  |  |  |  |
| 1-0404 |  | DEMO ROAD - COMMON EX - TYPE 2, MAD & MINOR SOUTH SIDE | 1d | 2022-08-20 A | 2022-08-20 A | 1-0405 | 100% | 2023-01-07 | 2023-01-07 | WEEKEND ONLY | MBRT BASE [8 h] | 8 | 8 | WGRM | 8 | ZONE-1 | MINOR | ROADWAY |  | NT_WE | IXN | SOUTH |  |  |  |  |
| 1-0406 |  | ROADWAY PAVING, MAD & MINOR SOUTH SIDE | 1d | 2022-08-21 A | 2022-08-21 A | 1-0405, 1-0404 | 100% | 2023-01-08 | 2023-01-08 | WEEKEND ONLY | MBRT BASE [8 h] | 8 | 8 | WCOL | 8 | ZONE-1 | MINOR | ROADWAY |  | NT_WE | IXN | SOUTH |  |  | PAVE-R |  |
|  | 24 | **MADISON AND SUMMIT NORTH SIDE** |  | 2022-10-15 | 2022-11-11 |  |  |  |  |  |  |  |  |  |  |  |  |  |  |  |  |  |  |  |  |  |
| PCO421.01 |  | DSC 308-Sinkhole at Summitt | 5d | 2022-10-15 A | 2022-10-18 A | MS-0025 | 100% | 2023-02-27 | 2023-03-03 |  | MBRT DSC [16 h] | 16 | 16 |  | 16 |  |  |  |  |  |  |  |  |  |  | ROADWAY |
| 1-0360 |  | DEMO ROAD - COMMON EX - TYPE 2, MAD & SUMMIT NORTH SIDE | 1d | 2022-10-17 A | 2022-10-18 A | 1-0202, 1-0358 | 100% | 2022-10-01 | 2022-10-01 | WEEKEND ONLY | MBRT BASE |  | 8 | WGRM | 0 | ZONE-1 | SUMMIT | ROADWAY |  | NT_WE | IXN | NORTH |  |  |  |  |
| 1-0361 |  | TRENCH CONDUIT, MAD & SUMMIT NORTH SIDE | 1d | 2022-10-19 A | 2022-10-20 A | 1-0360 SS | 100% | 2022-10-01 | 2022-10-01 | WEEKEND ONLY | MBRT BASE |  | 8 | ELECRICAL SUB | 0 | ZONE-1 | SUMMIT | ROADWAY | PRIME | NT_WE | IXN | NORTH |  |  |  |  |
| PCO435.01 |  | DSC 317-SCL Conduit Conflict with Waterline North Summit | 5d | 2022-10-25 A | 2022-10-27 A | MS-0025 | 100% | 2023-02-27 | 2023-03-03 |  | MBRT DSC [16 h] | 16 | 16 |  | 16 |  |  |  |  |  |  |  |  |  |  |  |
| PCO436.01 |  | DSC 318-Unknown unlocated conduit Summit North Side | 5d | 2022-10-25 A | 2022-10-26 A | MS-0025 | 100% | 2023-02-27 | 2023-03-03 |  | MBRT DSC [8 h] | 8 | 8 |  | 8 |  |  |  |  |  |  |  |  |  |  |  |
| 1-0362 |  | ROADWAY PAVING, MAD & SUMMIT NORTH SIDE | 1d | 2022-11-08 A | 2022-11-11 A | 1-0361 | 100% | 2022-11-05 | 2022-11-05 | WEEKEND ONLY | MBRT BASE |  | 8 | WCOL | 0 | ZONE-1 | SUMMIT | ROADWAY |  | NT_WE | IXN | NORTH |  |  | PAVE-R |  |
|  | 36 | **MADISON AND SUMMIT SW CORNER** |  | 2022-12-04 | 2022-12-04 |  |  |  |  |  |  |  |  |  |  |  |  |  |  |  |  |  |  |  |  |  |
| 1-0408 |  | DEMO ROAD - COMMON EX - TYPE 2, MAD & SUMMIT SW CORNER | 1d | 2022-12-04 A | 2022-12-04 A | 1-0406, 1-0362 | 100% | 2022-12-03 | 2022-12-03 | WEEKEND ONLY | MBRT BASE [8 h] | 8 | 8 | WGRM | 8 | ZONE-1 | SUMMIT | ROADWAY |  | NT_WE | IXN | SOUTH |  |  |  |  |
| 1-0409 |  | TRENCH CONDUIT, MAD & SUMMIT SW CORNER | 1d | 2022-12-04 A | 2022-12-04 A | 1-0408 SS | 100% | 2022-12-03 | 2022-12-03 | WEEKEND ONLY | MBRT BASE [8 h] | 8 | 8 | ELECRICAL SUB | 8 | ZONE-1 | SUMMIT | ROADWAY | PRIME | NT_WE | IXN | SOUTH |  |  |  |  |
| 1-0410 |  | ROADWAY PAVING, MAD & SUMMIT SW CORNER | 1d | 2022-12-04 A | 2022-12-04 A | 1-0409 | 100% |  |  | WEEKEND ONLY | MBRT BASE [8 h] | 8 | 8 | WCOL | 8 | ZONE-1 | SUMMIT | ROADWAY |  | NT_WE | IXN | SOUTH |  |  | PAVE-R |  |
|  | 37 | **MADISON AND SUMMIT SE CORNER** |  | 2023-01-07 | 2023-01-08 |  |  |  |  |  |  |  |  |  |  |  |  |  |  |  |  |  |  |  |  |  |
| 1-0412 |  | DEMO ROAD - COMMON EX - TYPE 2, MAD & SUMMIT SE CORNER | 1d | 2023-01-07 A | 2023-01-07 A | 1-0410 | 100% | 2023-03-11 | 2023-03-11 | WEEKEND ONLY | MBRT BASE [8 h] | 8 | 8 | WGRM | 8 | ZONE-1 | SUMMIT | ROADWAY |  | NT_WE | IXN | SOUTH |  |  |  |  |
| 1-0413 |  | TRENCH CONDUIT, MAD & SUMMIT SE CORNER | 1d | 2023-01-07 A | 2023-01-07 A | 1-0412 | 100% | 2023-03-12 | 2023-03-12 | WEEKEND ONLY | MBRT BASE [8 h] | 8 | 8 | ELECRICAL SUB | 8 | ZONE-1 | SUMMIT | ROADWAY | PRIME | NT_WE | IXN | SOUTH |  |  |  |  |
| 1-0414 |  | ROADWAY PAVING, MAD & SUMMIT SE CORNER | 1d | 2023-01-08 A | 2023-01-08 A | 1-0413 | 100% | 2023-03-18 | 2023-03-18 | WEEKEND ONLY | MBRT BASE [8 h] | 8 | 8 | WCOL | 8 | ZONE-1 | SUMMIT | ROADWAY |  | NT_WE | IXN | SOUTH |  |  | PAVE-R |  |

| ID | WBS | Activity | Duration | Start | Finish | Predecessors | Complete | Planned start | Planned finish | Calendar | Resources | Cost | Actual cost | user_text2 | user_number6 | MBRT-ZONE | MBRT-LOCATION | MBRT-TYPE | MBRT-NIGHT | MBRT-ROADWAY | MBRT-SIDE | MBRT-RESP | MBRT-SCOPE | user_text10 | user_text8 |
| --- | --- | --- | --- | --- | --- | --- | --- | --- | --- | --- | --- | --- | --- | --- | --- | --- | --- | --- | --- | --- | --- | --- | --- | --- | --- |
|  | 25 | **MADISON AND BOYLSTON NORTH SIDE** |  | 2022-10-01 | 2022-10-02 |  |  |  |  |  |  |  |  |  |  |  |  |  |  |  |  |  |  |  |  |
| 1-0364 |  | DEMO ROAD - COMMON EX - TYPE 2, MAD & BOYLSTON NORTH SIDE | 1d | 2022-10-01 A | 2022-10-01 A | 1-0406 | 100% | 2022-12-10 | 2022-12-10 | WEEKEND ONLY | MBRT BASE [8 h] | 8 | 8 | WGRM | 8 | ZONE-1 | BOYLSTON | ROADWAY | NT_WE | IXN | NORTH |  |  |  |  |
| 1-0365 |  | TRENCH CONDUIT, MAD & BOYLSTON NORTH SIDE | 1d | 2022-10-01 A | 2022-10-01 A | 1-0364 SS | 100% |  |  | WEEKEND ONLY | MBRT BASE [8 h] | 8 | 8 | ELECRICAL SUB | 8 | ZONE-1 | BOYLSTON | ROADWAY | NT_WE | IXN | NORTH | PRIME |  |  |  |
| 1-0366 |  | ROADWAY PAVING, MAD & BOYLSTON NORTH SIDE | 1d | 2022-10-02 A | 2022-10-02 A | 1-0365 | 100% |  |  | WEEKEND ONLY | MBRT BASE [8 h] | 8 | 8 | WCOL | 8 | ZONE-1 | BOYLSTON | ROADWAY | NT_WE | IXN | NORTH |  | PAVE-R |  |  |
|  | 38 | **MADISON AND BOYLSTON SOUTH SIDE** |  | 2023-04-04 | 2023-06-03 |  |  |  |  |  |  |  |  |  |  |  |  |  |  |  |  |  |  |  |  |
| 1-0416 |  | DEMO ROAD - COMMON EX - TYPE 2, MAD & BOYLSTON SOUTH SIDE | 1d | 2023-04-04 A | 2023-04-04 A | 1-0414, 1-0394 | 100% | 2023-05-14 | 2023-05-14 | WEEKEND ONLY | MBRT BASE |  | 8 | WGRM | 0 | ZONE-1 | BOYLSTON | ROADWAY | NT_WE | IXN | SOUTH |  |  | 1-0416 | 1-0416 |
| 1-0418 |  | ROADWAY PAVING, MAD & BOYLSTON SOUTH SIDE | 1d | 2023-05-19 A | 2023-06-03 A | 1-0416 | 100% | 2023-05-20 | 2023-05-20 | WEEKEND ONLY | MBRT BASE [40 h] | 40 | 40 | WCOL | 40 | ZONE-1 | BOYLSTON | ROADWAY | NT_WE | IXN | SOUTH |  | PAVE-R | 1-0418 | 1-0418 |
|  | 7 | **POLE FOUNDATIONS** |  | 2022-05-23 | 2024-02-09 |  |  |  |  |  |  |  |  |  |  |  |  |  |  |  |  |  |  |  |  |
| 1-0423 |  | MAD 6TH TO BROADWAY POLE FOUNDATIONS | 20d | 2022-05-23 A | 2022-05-24 A | PSR-0004 | 100% | 2022-08-29 | 2022-09-26 |  | MBRT BASE [16 h] | 16 | 16 | ELECRICAL SUB | 16 | ZONE-1 |  |  |  |  |  |  |  |  |  |
| 1-0424 |  | 9TH AVE - 8 EACH, POLE FOUNDATIONS | 16d | 2022-05-23 A | 2022-06-24 A | 1-0055 | 100% | 2022-07-01 | 2022-07-25 |  | MBRT BASE [192 h] | 192 | 192 | ELECRICAL SUB | 192 | ZONE-1 |  |  |  |  |  |  |  |  |  |
| 1-0422 |  | SPRING 6TH TO 9TH - 5 EACH, POLE FOUNDATIONS | 10d | 2022-05-27 A | 2022-06-03 A | 1-0051 | 100% | 2022-05-27 | 2022-06-10 |  | MBRT BASE [40 h] | 40 | 40 | ELECRICAL SUB | 40 | ZONE-1 | SPRING |  |  |  |  |  |  |  |  |
| 1-0420 |  | SPRING 1ST TO 6TH 1 EACH, POLE FOUNDATIONS | 2d | 2022-07-27 A | 2022-07-28 A | 1-0047, MS-2571, OCS-0037 | 100% |  |  |  | MBRT BASE [16 h] | 16 | 16 | ELECRICAL SUB | 16 | ZONE-1 | SPRING |  |  |  |  |  | POLEFDN |  |  |
| 1-0421 |  | MAD 1ST TO 6TH - 3 EACH, POLE FOUNDATIONS | 6d | 2022-07-29 A | 2022-08-03 A | 1-0049, 1-0420, 1-0423 | 100% | 2022-07-29 | 2022-08-05 |  | MBRT BASE [32 h] | 32 | 32 | ELECRICAL SUB | 32 | ZONE-1 |  |  |  |  |  |  |  |  |  |
| 1-0453 |  | MAD 6TH TO BROADWAY POLE FOUNDATIONS (30 ea.) | 5d | 2022-10-10 A | 2024-02-09 A | 1-0423 | 100% | 2023-05-31 | 2023-06-06 |  | MBRT BASE |  |  |  | 2672 |  |  |  |  |  |  |  |  | 1-0453 | 1-0453 |
| PCO643.01 |  | DSC 453-TIE BACK AT BROADWAY FOUNDATION | 20d | 2023-04-22 A | 2023-04-24 A | MS-0025 | 100% | 2022-08-29 | 2022-09-26 |  | MBRT DSC [8 h] | 8 | 8 | ELECRICAL SUB | 8 | ZONE-1 |  |  |  |  |  |  |  | PCO643.01 | PCO643.01 |
|  | 8 | **SIDEWALKS** |  | 2021-11-01 | 2024-04-24 |  |  |  |  |  |  |  |  |  |  |  |  |  |  |  |  |  |  |  |  |
|  | 73 | **MID BLOCK TERRY TO BOREN TO BOREN SOUTH SIDE** |  | 2023-07-12 | 2023-10-06 |  |  |  |  |  |  |  |  |  |  |  |  |  |  |  |  |  |  |  |  |
| 1-7000 |  | REM SIDEWALK | 1d | 2023-07-12 A | 2023-07-12 A | 1-3215 | 100% | 2023-07-03 | 2023-07-03 |  | MBRT NEW [8 h] | 8 | 8 |  | 8 |  |  |  |  |  |  |  |  |  |  |
| 1-7005 |  | TRENCH CONDUIT | 2d | 2023-07-13 A | 2023-07-14 A | 1-7000 | 100% | 2023-07-03 | 2023-07-05 |  | MBRT NEW [16 h] | 16 | 16 |  | 16 |  |  |  |  |  |  |  |  |  |  |
| 1-7010 |  | DSC 562 SWC BOREN MULTIPLE ELECTRICAL CONFLICTS | 1d | 2023-07-14 A | 2023-07-14 A | 1-7005 | 100% | 2023-07-03 | 2023-07-03 |  | MBRT DSC [8 h] | 8 | 8 |  | 8 |  |  |  |  |  |  |  |  |  |  |
| 1-7015 |  | DSC 563 SWC BOREN DUCTBANK & FDN CONFLICT w/CONDUIT | 1d | 2023-07-14 A | 2023-07-14 A | 1-7010 SS | 100% | 2023-07-03 | 2023-07-03 |  | MBRT DSC [8 h] | 8 | 8 |  | 8 |  |  |  |  |  |  |  |  |  |  |
| 1-7020 |  | INST CONDUIT | 22d | 2023-07-17 A | 2023-08-15 A | 1-7015 | 100% | 2023-07-03 | 2023-08-02 |  | MBRT NEW [176 h] | 176 | 176 |  | 176 |  |  |  |  |  |  |  |  |  |  |
| 1-7025 |  | GRADE SIDEWALK | 2d | 2023-08-16 A | 2023-08-17 A | 1-7020 | 100% |  |  |  | MBRT NEW [16 h] | 16 | 16 |  | 16 |  |  |  |  |  |  |  |  |  |  |
| 1-7030 |  | POUR SIDEWALK | 3d | 2023-08-18 A | 2023-08-22 A | 1-7025 | 100% |  |  |  | MBRT NEW [24 h] | 24 | 24 |  | 24 |  |  |  |  |  |  |  |  |  |  |
| 1-7035 |  | Bore Conduit | 27d | 2023-08-23 A | 2023-09-29 A | 1-7030 | 100% | 2023-08-24 | 2023-10-02 |  | MBRT NEW [216 h] | 216 | 216 |  | 216 |  |  |  |  |  |  |  |  |  |  |
| 1-7040 |  | Finish Sidewalk After Bore | 1d | 2023-10-06 A | 2023-10-06 A | 1-7035 | 100% | 2023-11-02 | 2023-11-02 |  | MBRT NEW [8 h] | 8 | 8 |  | 8 |  |  |  |  |  |  |  |  |  |  |

| ID | WBS | Activity | Duration | Start | Finish | Predecessors | Complete | Planned start | Planned finish | Calendar | Resources | Cost | Actual cost | user_number6 | user_text2 | MBRT-ZONE | MBRT-LOCATION | MBRT-SIDE | MBRT-TYPE | MBRT-SCOPE |
| --- | --- | --- | --- | --- | --- | --- | --- | --- | --- | --- | --- | --- | --- | --- | --- | --- | --- | --- | --- | --- |
|  | 74 | **SUMMIT NWC** |  | 2023-08-31 | 2023-10-06 |  |  |  |  |  |  |  |  |  |  |  |  |  |  |  |
| 1-7045 |  | REMOVE SIDEWALK | 1d | 2023-08-31 A | 2023-08-31 A | 1-7030 | 100% | 2023-08-14 | 2023-08-14 |  | MBRT NEW [8 h] | 8 | 8 | 8 |  |  |  |  |  |  |
| 1-7050 |  | DSC 611 CONCRETE OBSTRUCTION | 2d | 2023-08-31 A | 2023-09-01 A | 1-7045 SS | 100% | 2023-08-14 | 2023-08-15 |  | MBRT DSC [16 h] | 16 | 16 | 16 |  |  |  |  |  |  |
| 1-7055 |  | TRENCH CONDUIT | 3d | 2023-09-01 A | 2023-09-06 A | 1-7045, 1-7050 | 100% | 2023-08-14 | 2023-08-16 |  | MBRT NEW [24 h] | 24 | 24 | 24 |  |  |  |  |  |  |
| 1-7060 |  | DSC 612 SINK HOLE | 1d | 2023-09-05 A | 2023-09-05 A | 1-7055 SS | 100% | 2023-08-14 | 2023-08-14 |  | MBRT DSC [8 h] | 8 | 8 | 8 |  |  |  |  |  |  |
| 1-7065 |  | INSTALL CONDUIT | 14d | 2023-09-07 A | 2023-09-26 A | 1-7055, 1-7060 | 100% |  |  |  | MBRT NEW [112 h] | 112 | 112 | 112 |  |  |  |  |  |  |
| 1-7070 |  | GRADE SIDEWALKS | 1d | 2023-09-27 A | 2023-09-27 A | 1-7065 | 100% | 2023-09-15 | 2023-09-15 |  | MBRT NEW [8 h] | 8 | 8 | 8 |  |  |  |  |  |  |
| 1-7075 |  | CURB RAMPS | 1d | 2023-10-05 A | 2023-10-05 A | 1-7070 | 100% | 2023-11-02 | 2023-11-02 |  | MBRT NEW [8 h] | 8 | 8 | 8 |  |  |  |  |  |  |
| 1-7080 |  | SIDEWALKS | 1d | 2023-10-06 A | 2023-10-06 A | 1-7075 | 100% | 2023-11-06 | 2023-11-06 |  | MBRT NEW [8 h] | 8 | 8 | 8 |  |  |  |  |  |  |
|  | 2 | **SPRING 1ST TO 2ND SOUTH SIDE** |  | 2021-11-16 | 2022-04-25 |  |  |  |  |  |  |  |  |  |  |  |  |  |  |  |
| 1-0438 |  | REM SIDEWALK, SPRING 1ST TO 2ND SOUTH SIDE | 2d | 2021-11-16 A | 2021-11-17 A | 1-0109 | 100% | 2021-11-22 | 2021-11-23 |  | MBRT BASE [16 h] | 16 | 16 | 16 | EA3 | ZONE-1 | SPRING | SOUTH |  |  |
| 1-0439 |  | TRENCH CONDUIT, SPRING 1ST TO 2ND SOUTH SIDE | 2d | 2021-11-16 A | 2021-11-17 A | 1-0438 SS | 100% | 2021-11-22 | 2021-11-23 |  | MBRT BASE [16 h] | 16 | 16 | 16 |  | ZONE-1 | SPRING | SOUTH |  |  |
| 1-0440 |  | INST CONDUIT, SPRING 1ST TO 2ND SOUTH SIDE | 2d | 2021-11-16 A | 2021-11-17 A | 1-0439 SS | 100% | 2021-11-22 | 2021-11-23 |  | MBRT BASE [16 h] | 16 | 16 | 16 | ELECRICAL SUB | ZONE-1 | SPRING | SOUTH | ELECTRICAL |  |
| PCO043.01 |  | DSC 29-Conduit Conflict ITS SE Corner Spring and 2nd | 5d | 2021-11-18 A | 2021-12-02 A | MS-0025 | 100% | 2023-02-27 | 2023-03-03 |  | MBRT DSC [64 h] | 64 | 64 | 64 |  |  |  |  |  |  |
| 1-0441 |  | GRADE SIDEWALK, SPRING 1ST TO 2ND SOUTH SIDE | 1d | 2021-11-18 A | 2021-11-18 A | 1-0440 | 100% | 2021-11-24 | 2021-11-24 |  | MBRT BASE [8 h] | 8 | 8 | 8 | EA3 | ZONE-1 | SPRING | SOUTH |  | SIDEWALKS |
| 1-0443 |  | POUR SIDEWALK, SPRING 1ST TO 2ND SOUTH SIDE | 3d | 2021-11-19 A | 2021-11-19 A | PMP-0021, 1-0441 | 100% | 2021-11-30 | 2021-12-02 |  | MBRT BASE [8 h] | 8 | 8 | 8 | COM | ZONE-1 | SPRING | SOUTH |  |  |
| 1-0442 |  | POUR DRIVEWAY, SPRING 1ST TO 2ND SOUTH SIDE | 1d | 2022-04-25 A | 2022-04-25 A | 1-0441, 1-0443, MS-2571 | 100% | 2022-04-06 | 2022-04-06 |  | MBRT BASE [8 h] | 8 | 8 | 8 | COM | ZONE-1 | SPRING | SOUTH |  |  |
|  | 4 | **DRIVEWAYS SPRING 2ND TO 3RD SOUTH SIDE** |  | 2022-03-25 | 2022-05-14 |  |  |  |  |  |  |  |  |  |  |  |  |  |  |  |
| PCO181.01 |  | DSC 127-Vault and ductbank conflict with paving Spring 2nd to 3rd Alley | 5d | 2022-03-25 A | 2022-05-05 A | MS-0025 | 100% | 2023-02-27 | 2023-03-03 |  | MBRT DSC [232 h] | 232 | 232 | 232 |  |  |  |  |  |  |
| 1-0454 |  | REM & GRADE DRIVEWAYS, DRIVEWAYS SPRING 2ND TO 3RD SOUTH SIDE | 1d | 2022-05-14 A | 2022-05-14 A | 1-0447, MS-2571 | 100% | 2022-05-01 | 2022-05-01 | WEEKEND ONLY | MBRT BASE [8 h] | 8 | 8 | 8 | WEA3 | ZONE-1 | SPRING | SOUTH |  |  |
| 1-0455 |  | POUR DRIVEWAYS, DRIVEWAYS SPRING 2ND TO 3RD SOUTH SIDE | 1d | 2022-05-14 A | 2022-05-14 A | 1-0454 SS | 100% | 2022-05-01 | 2022-05-01 | WEEKEND ONLY | MBRT BASE [8 h] | 8 | 8 | 8 | WCOM | ZONE-1 | SPRING | SOUTH |  |  |
|  | 3 | **SPRING 2ND TO 3RD SOUTH SIDE** |  | 2021-11-09 | 2022-06-10 |  |  |  |  |  |  |  |  |  |  |  |  |  |  |  |
| PCO027.01 |  | DSC 18-Type 6 conflict 3rd and Spring SW Corner | 5d | 2021-11-09 A | 2021-12-02 A | MS-0025 | 100% | 2023-02-27 | 2023-03-03 |  | MBRT DSC [112 h] | 112 | 112 | 112 |  |  |  |  |  |  |
| PCO029.01 |  | DSC 20-Shallow Inlet Spring and 2nd | 5d | 2021-11-09 A | 2021-11-10 A | MS-0025 | 100% | 2023-02-27 | 2023-03-03 |  | MBRT DSC [8 h] | 8 | 8 | 8 |  |  |  |  |  |  |
| PCO030.01 |  | DSC 21-Type 6 Conflict 3rd and Spring SW Corner II | 5d | 2021-11-10 A | 2021-12-03 A | MS-0025 | 100% | 2023-02-27 | 2023-03-03 |  | MBRT DSC [112 h] | 112 | 112 | 112 |  |  |  |  |  |  |
| 1-0445 |  | REM SIDEWALK, SPRING 2ND TO 3RD SOUTH SIDE | 1d | 2021-11-18 A | 2021-11-18 A | 1-0438 | 100% | 2021-11-24 | 2021-11-24 |  | MBRT BASE [8 h] | 8 | 8 | 8 | EA3 | ZONE-1 | SPRING | SOUTH |  |  |
| 1-0446 |  | TRENCH CONDUIT, SPRING 2ND TO 3RD SOUTH SIDE | 2d | 2021-11-19 A | 2021-11-22 A | 1-0445 | 100% | 2021-11-29 | 2021-11-30 |  | MBRT BASE [16 h] | 16 | 16 | 16 | EA3 | ZONE-1 | SPRING | SOUTH |  |  |
| 1-0447 |  | INTALL CONDUIT, SPRING 2ND TO 3RD SOUTH SIDE | 2d | 2021-11-19 A | 2021-11-22 A | 1-0446 SS | 100% | 2021-11-29 | 2021-11-30 |  | MBRT BASE [16 h] | 16 | 16 | 16 | ELECRICAL SUB | ZONE-1 | SPRING | SOUTH |  |  |
| PCO052.01 |  | DSC 33-ITS Conflict SE Spring and 2nd | 5d | 2021-11-23 A | 2021-11-30 A | MS-0025 | 100% | 2023-02-27 | 2023-03-03 |  | MBRT DSC [24 h] | 24 | 24 | 24 |  |  |  |  |  |  |
| 1-0448 |  | FORM FOUNDATIONS, SPRING 2ND TO 3RD SOUTH SIDE | 1d | 2022-05-16 A | 2022-05-16 A | 1-0446, 1-0443, MS-2571 | 100% | 2022-05-06 | 2022-05-06 |  | MBRT BASE [8 h] | 8 | 8 | 8 | COM | ZONE-1 | SPRING | SOUTH |  |  |
| PCO252.01 |  | DSC 184-FM 124, V133-M-007 Vault Riser Conflict | 5d | 2022-05-18 A | 2022-05-22 A | MS-0025 | 100% | 2023-02-27 | 2023-03-03 |  | MBRT DSC [24 h] | 24 | 24 | 24 |  |  |  |  |  |  |
| PCO253.01 |  | DSC 185-3rd & Spring Bus Foundation Conflicts | 5d | 2022-05-19 A | 2022-05-29 A | MS-0025 | 100% | 2023-02-27 | 2023-03-03 |  | MBRT DSC [56 h] | 56 | 56 | 56 |  |  |  |  |  |  |
| 1-0450 |  | GRADE SIDEWALK, SPRING 2ND TO 3RD SOUTH SIDE | 1d | 2022-05-31 A | 2022-05-31 A | 1-0449 | 100% |  |  |  | MBRT BASE [8 h] | 8 | 8 | 8 | COM | ZONE-1 | SPRING | SOUTH |  | SIDEWALKS |
| 1-0451 |  | POUR SIDEWALK, SPRING 2ND TO 3RD SOUTH SIDE | 5d | 2022-06-01 A | 2022-06-07 A | 1-0450, 1-0436 | 100% |  |  |  | MBRT BASE [40 h] | 40 | 40 | 40 | COM | ZONE-1 | SPRING | SOUTH |  |  |
| 1-0449 |  | POUR FOUNDATIONS, SPRING 2ND TO 3RD SOUTH SIDE | 2d | 2022-06-06 A | 2022-06-07 A | 1-0447, 1-0448 | 100% | 2022-05-31 | 2022-06-01 |  | MBRT BASE [8 h] | 8 | 8 | 8 | COM | ZONE-1 | SPRING | SOUTH |  |  |
| 1-0460 |  | INSTALL WHEEL GUIDES | 1d | 2022-06-08 A | 2022-06-08 A | 1-0451 | 100% |  |  |  | MBRT NEW [8 h] | 8 | 8 | 8 |  |  |  |  |  |  |
| 1-0452 |  | POUR STATION STEM WALL, SPRING 2ND TO 3RD SOUTH SIDE | 1d | 2022-06-10 A | 2022-06-10 A | 1-0451, 1-0442, 1-0460 FF | 100% | 2022-06-08 | 2022-06-08 |  | MBRT BASE [8 h] | 8 | 8 | 8 | COM | ZONE-1 | SPRING | SOUTH |  |  |

| ID | WBS | Activity | Duration | Start | Finish | Predecessors | Complete | Planned start | Planned finish | Resources | Cost | Actual cost | user_number6 | user_text2 | MBRT-ZONE | MBRT-LOCATION | MBRT-SIDE | MBRT-TYPE | MBRT-DELAY | MBRT-SCOPE | user_text10 | user_text8 |
| --- | --- | --- | --- | --- | --- | --- | --- | --- | --- | --- | --- | --- | --- | --- | --- | --- | --- | --- | --- | --- | --- | --- |
|  | 23 | **SPRING AND 3RD NW CORNER** |  | 2022-11-01 | 2023-01-27 |  |  |  |  |  |  |  |  |  |  |  |  |  |  |  |  |  |
| PCO445.01 |  | DSC 325-Reinforced Sidewalk 3rd & Spring | 5d | 2022-11-01 A | 2022-11-03 A | MS-0025 | 100% | 2023-02-27 | 2023-03-03 | MBRT DSC [16 h] | 16 | 16 | 16 |  |  |  |  |  |  |  |  |  |
| 1-0561 |  | REM SIDEWALK, SPRING & 3RD NW CORNER | 1d | 2022-11-01 A | 2022-11-01 A | 1-0330 | 100% | 2022-10-31 | 2022-10-31 | MBRT BASE [8 h] | 8 | 8 | 8 | EA3 | ZONE-1 | SPRING | NORTH |  |  |  |  |  |
| PCO447.01 |  | DSC 327-3rd & Spring NWC CDF Duct Bank Conflict | 5d | 2022-11-02 A | 2023-01-27 A | MS-0025 | 100% | 2023-02-27 | 2023-03-03 | MBRT DSC [448 h] | 448 | 40 | 448 |  |  |  |  |  |  |  |  |  |
| PCO449.01 |  | DSC 328-3rd & Spring NWC Conduit Conflicts | 5d | 2022-11-03 A | 2022-11-08 A | MS-0025 | 100% | 2023-02-27 | 2023-03-03 | MBRT DSC [24 h] | 24 | 24 | 24 |  |  |  |  |  |  |  |  |  |
| 1-0562 |  | INST CONDUIT, SPRING & 3RD NW CORNER | 1d | 2022-11-03 A | 2022-11-22 A | 1-0561 | 100% | 2022-11-01 | 2022-11-01 | MBRT BASE [104 h] | 104 | 104 | 104 | EA3 | ZONE-1 | SPRING | NORTH | ELECTRICAL |  |  |  |  |
| PCO455.01 |  | DSC 332-NW 3rd and Spring conduit conflicts | 5d | 2022-11-08 A | 2022-11-10 A | MS-0025 | 100% | 2023-02-27 | 2023-03-03 | MBRT DSC [16 h] | 16 | 16 | 16 |  |  |  |  |  |  |  |  |  |
| PCO457.01 |  | DSC 334-existing broken conduit 3rd and Spring | 5d | 2022-11-09 A | 2022-11-11 A | MS-0025 | 100% | 2023-02-27 | 2023-03-03 | MBRT DSC [16 h] | 16 | 16 | 16 |  |  |  |  |  |  |  |  |  |
| PCO465.01 |  | DSC 337-Type 5 HH elevation conflict with curb ramp | 5d | 2022-11-16 A | 2022-11-19 A | MS-0025 | 100% | 2023-02-27 | 2023-03-03 | MBRT DSC [24 h] | 24 | 24 | 24 |  |  |  |  |  |  |  |  |  |
| 1-0563 |  | POUR CURB RAMP, SPRING AND 3RD NW CORNER | 1d | 2022-11-23 A | 2022-11-23 A | 1-0562 | 100% | 2022-11-02 | 2022-11-02 | MBRT BASE [8 h] | 8 | 8 | 8 | COM | ZONE-1 | SPRING | NORTH |  |  |  |  |  |
| 1-0564 |  | POUR SIDEWALKS, SPRING AND 3RD NW CORNER | 1d | 2022-11-28 A | 2022-11-30 A | 1-0563 | 100% | 2022-12-01 | 2022-12-01 | MBRT BASE [24 h] | 24 | 24 | 24 | COM | ZONE-1 | SPRING | NORTH |  | SCL-FC |  |  |  |
|  | 5 | **SPRING AND 3RD TO 4TH SOUTH SIDE** |  | 2022-08-31 | 2022-10-21 |  |  |  |  |  |  |  |  |  |  |  |  |  |  |  |  |  |
| 1-0457 |  | REM SIDEWALK & GRADE, SPRING & 3RD TO 4TH SOUTH SIDE | 2d | 2022-08-31 A | 2022-09-01 A | 1-0450 | 100% |  |  | MBRT BASE [16 h] | 16 | 16 | 16 |  | ZONE-1 | SPRING | SOUTH |  |  |  |  |  |
| 1-0458 |  | POUR CURB RAMPS, SPRING & 3RD TO 4TH SOUTH SIDE | 2d | 2022-09-02 A | 2022-09-06 A | 1-0457, 1-0421 | 100% |  |  | MBRT BASE [16 h] | 16 | 16 | 16 |  | ZONE-1 | SPRING | SOUTH |  |  |  |  |  |
| 1-0459 |  | POUR SIDEWALK, SPRING & 3RD TO 4TH SOUTH SIDE | 2d | 2022-09-07 A | 2022-09-08 A | 1-0458 | 100% |  |  | MBRT BASE [16 h] | 16 | 16 | 16 |  | ZONE-1 | SPRING | SOUTH |  |  |  |  |  |
| PCO414.01 |  | DSC 304-8" Sidewalk SW 4th and Spring | 5d | 2022-10-11 A | 2022-10-21 A | MS-0025 | 100% | 2023-02-27 | 2023-03-03 | MBRT DSC [64 h] | 64 | 64 | 64 |  |  |  |  |  |  |  |  |  |
|  | 6 | **SPRING 4TH TO 5TH SOUTH SIDE** |  | 2022-08-12 | 2023-05-31 |  |  |  |  |  |  |  |  |  |  |  |  |  |  |  |  |  |
| PCO348.01 |  | DSC 257-Spring 4th-5th, Bus Foundation Conflict | 5d | 2022-08-12 A | 2022-09-30 A | MS-0025 | 100% | 2023-02-27 | 2023-03-03 | MBRT DSC [272 h] | 272 | 272 | 272 |  |  |  |  |  |  |  |  |  |
| 1-0461 |  | REM SIDEWALK, SPRING 4TH TO 5TH SOUTH SIDE | 2d | 2022-08-12 A | 2022-08-19 A | 1-0422, 1-0117, 1-1190 | 100% | 2022-08-10 | 2022-08-11 | MBRT BASE [48 h] | 48 | 48 | 48 | EA3 | ZONE-1 | SPRING | SOUTH |  |  |  |  |  |
| 1-0464 |  | FORM FOUNDATIONS, SPRING 4TH TO 5TH SOUTH SIDE | 1d | 2022-08-17 A | 2022-08-17 A | 1-0452, 1-0455, 1-0463 | 100% | 2022-08-16 | 2022-08-16 | MBRT BASE [8 h] | 8 | 8 | 8 | COM | ZONE-1 | SPRING | SOUTH |  |  |  |  |  |
| PCO354.01 |  | DSC 259-Type 5 Vault Conflicts 4th to 5th Spring | 5d | 2022-08-18 A | 2022-08-20 A | MS-0025 | 100% | 2023-02-27 | 2023-03-03 | MBRT DSC [16 h] | 16 | 16 | 16 |  |  |  |  |  |  |  |  |  |
| 1-0465 |  | POUR FOUNDATIONS, SPRING 4TH TO 5TH SOUTH SIDE | 2d | 2022-08-18 A | 2022-08-19 A | 1-0464 | 100% | 2022-08-17 | 2022-08-18 | MBRT BASE [16 h] | 16 | 16 | 16 | COM | ZONE-1 | SPRING | SOUTH |  |  |  |  |  |
| 1-0462 |  | TRENCH CONDUIT, SPRING 4TH TO 5TH SOUTH SIDE | 2d | 2022-08-22 A | 2022-08-23 A | 1-0461 | 100% | 2022-08-12 | 2022-08-15 | MBRT BASE [16 h] | 16 | 16 | 16 | EA3 | ZONE-1 | SPRING | SOUTH |  |  |  |  |  |
| 1-0463 |  | INSTALL CONDUIT, SPRING 4TH TO 5TH SOUTH SIDE | 2d | 2022-08-22 A | 2022-08-23 A | 1-0462 SS | 100% | 2022-08-12 | 2022-08-15 | MBRT BASE [16 h] | 16 | 16 | 16 | ELECRICAL SUB | ZONE-1 | SPRING | SOUTH |  |  |  |  |  |
| 1-0467 |  | GRADE SIDEWALK, SPRING 4TH TO 5TH SOUTH SIDE | 1d | 2022-08-22 A | 2022-08-22 A | 1-0465 | 100% | 2022-08-19 | 2022-08-19 | MBRT BASE [8 h] | 8 | 8 | 8 | EA3 | ZONE-1 | SPRING | SOUTH |  |  | SIDEWALKS |  |  |
| 1-0469 |  | POUR STATION STEM WALL, SPRING 4TH TO 5TH SOUTH SIDE | 2d | 2022-08-22 A | 2022-08-23 A | 1-0463 | 100% | 2022-08-26 | 2022-08-29 | MBRT BASE [16 h] | 16 | 16 | 16 | COM | ZONE-1 | SPRING | SOUTH |  |  |  |  |  |
| 1-0466 |  | POUR DRIVEWAY, SPRING 4TH TO 5TH SOUTH SIDE | 1d | 2022-08-24 A | 2022-09-02 A | 1-0465 | 100% | 2022-08-19 | 2022-08-19 | MBRT BASE [64 h] | 64 | 64 | 64 | COM | ZONE-1 | SPRING | SOUTH |  |  |  |  |  |
| 1-0468 |  | POUR SIDEWALK, SPRING 4TH TO 5TH SOUTH SIDE | 4d | 2022-09-02 A | 2022-09-08 A | 1-0466, 1-0467 | 100% | 2022-09-01 | 2022-09-07 | MBRT BASE [24 h] | 24 | 24 | 24 | COM | ZONE-1 | SPRING | SOUTH |  |  |  |  |  |
| 1-0484 |  | INSTALL WHEEL GUIDES | 1d | 2023-05-31 A | 2023-05-31 A | 1-0468, 1-0469 | 100% |  |  | MBRT NEW [8 h] | 8 | 8 | 8 |  |  |  |  |  |  |  | 1-0484 | 1-0484 |

| ID | WBS | Activity | Duration | Start | Finish | Predecessors | Complete | Planned start | Planned finish | Resources | Cost | Actual cost | user_number6 | user_text2 | MBRT-ZONE | MBRT-LOCATION | MBRT-SIDE | MBRT-DELAY |
| --- | --- | --- | --- | --- | --- | --- | --- | --- | --- | --- | --- | --- | --- | --- | --- | --- | --- | --- |
|  | 25 | **SPRING AND 4TH NW CORNER** |  | 2022-12-21 | 2023-02-26 |  |  |  |  |  |  |  |  |  |  |  |  |  |
| PCO495.01 |  | DSC 354-Prime NW 4th and Spring HH | 5d | 2022-12-21 A | 2023-02-20 A | MS-0025 | 100% | 2023-02-27 | 2023-03-03 | MBRT DSC [320 h] | 320 | 40 | 320 |  |  |  |  |  |
| PCO497.01 |  | DSC 355-SCL Vault Conflict NW 4th and Spring | 5d | 2022-12-27 A | 2022-12-28 A | MS-0025 | 100% | 2023-02-27 | 2023-03-03 | MBRT DSC [8 h] | 8 | 8 | 8 |  |  |  |  |  |
| PCO498.01 |  | DSC 356-Old Light pole base NW 4th and Spring | 5d | 2022-12-27 A | 2023-02-26 A | MS-0025 | 100% | 2023-02-27 | 2023-03-03 | MBRT DSC [328 h] | 328 | 40 | 328 |  |  |  |  |  |
| 1-0570 |  | REM SIDEWALK, SPRING & 4TH NW CORNER | 1d | 2022-12-27 A | 2022-12-27 A | 1-0568 | 100% | 2022-12-07 | 2022-12-07 | MBRT BASE [8 h] | 8 | 8 | 8 | EA3 | ZONE-1 | SPRING | NORTH | SCL-FC |
| 1-1330 |  | CITY DELAY - SCL VAULT IN CONFLICT WITH SIDEWALK, SPRING & 4TH NW CORNER | 1d | 2022-12-27 A | 2023-02-16 A | 1-0570 | 100% | 2022-12-07 | 2022-12-07 | MBRT NEW [8 h] | 8 | 280 | 280 | EA3 | ZONE-1 | SPRING | NORTH | SCL-FC |
| 1-0571 |  | POUR CURB RAMP, SPRING AND 4TH NW CORNER | 1d | 2023-02-17 A | 2023-02-17 A | 1-0570, 1-1330 | 100% | 2023-01-31 | 2023-01-31 | MBRT BASE [8 h] | 8 | 8 | 8 | COM | ZONE-1 | SPRING | NORTH | SCL-FC |
| 1-0572 |  | POUR SIDEWALKS, SPRING AND 4TH NW CORNER | 1d | 2023-02-20 A | 2023-02-20 A | 1-0571 | 100% | 2023-02-01 | 2023-02-01 | MBRT BASE |  | 8 | 0 | COM | ZONE-1 | SPRING | NORTH | SCL-FC |
|  | 27 | **SPRING AND 5TH NE CORNER** |  | 2023-02-07 | 2023-02-24 |  |  |  |  |  |  |  |  |  |  |  |  |  |
| 1-0578 |  | REM SIDEWALK, SPRING & 5TH NE CORNER | 1d | 2023-02-07 A | 2023-02-07 A | 1-0576, 1-0517, 1-0572 | 100% | 2023-02-06 | 2023-02-06 | MBRT BASE [8 h] | 8 | 8 | 8 | EA3 | ZONE-1 | SPRING | NORTH | SCL-FC |
| PCO557.01 |  | DSC 393-Existing Hydrant Leaking NE 5th and Spring | 5d | 2023-02-08 A | 2023-02-24 A | MS-0025 | 100% | 2023-02-27 | 2023-03-03 | MBRT DSC [88 h] | 88 | 88 | 88 |  |  |  |  |  |
| 1-1370 |  | CITY CAUSED DELAY - LEAKING HYDRANT | 1d | 2023-02-08 A | 2023-02-15 A | 1-0578 | 100% | 2023-02-07 | 2023-02-07 | MBRT NEW [8 h] | 8 | 48 | 48 | COM | ZONE-1 | SPRING | NORTH | SCL-FC |
| 1-1375 |  | ADDITIONAL WORK - LEAKING HYDRANT | 1d | 2023-02-16 A | 2023-02-17 A | 1-1370 | 100% | 2023-02-07 | 2023-02-07 | MBRT NEW [8 h] | 8 | 16 | 16 | COM | ZONE-1 | SPRING | NORTH | SCL-FC |
| 1-0579 |  | POUR CURB RAMP, SPRING AND 5TH NE CORNER | 1d | 2023-02-17 A | 2023-02-17 A | 1-0578, 1-1375, 1-1370 | 100% | 2023-02-07 | 2023-02-07 | MBRT BASE [8 h] | 8 | 8 | 8 | COM | ZONE-1 | SPRING | NORTH | SCL-FC |
| 1-0580 |  | POUR SIDEWALKS, SPRING AND 5TH NE CORNER | 1d | 2023-02-21 A | 2023-02-22 A | 1-0579 | 100% | 2023-02-08 | 2023-02-08 | MBRT BASE [16 h] | 16 | 16 | 16 | COM | ZONE-1 | SPRING | NORTH | SCL-FC |
|  | 26 | **SPRING AND 5TH NW CORNER** |  | 2023-01-25 | 2023-01-30 |  |  |  |  |  |  |  |  |  |  |  |  |  |
| 1-0574 |  | REM SIDEWALK, SPRING & 5TH NW CORNER | 1d | 2023-01-25 A | 2023-01-25 A | 1-0570 | 100% | 2023-01-05 | 2023-01-05 | MBRT BASE [8 h] | 8 | 8 | 8 | EA3 | ZONE-1 | SPRING | NORTH | SCL-FC |
| 1-0575 |  | POUR CURB RAMP, SPRING AND 5TH NW CORNER | 1d | 2023-01-26 A | 2023-01-26 A | 1-0574 | 100% | 2023-01-06 | 2023-01-06 | MBRT BASE [8 h] | 8 | 8 | 8 | COM | ZONE-1 | SPRING | NORTH | SCL-FC |
| 1-0576 |  | POUR SIDEWALKS, SPRING AND 5TH NW CORNER | 1d | 2023-01-27 A | 2023-01-30 A | 1-0575 | 100% | 2023-01-09 | 2023-01-09 | MBRT BASE [16 h] | 16 | 16 | 16 | COM | ZONE-1 | SPRING | NORTH | SCL-FC |
|  | 7 | **SPRING 5TH TO 6TH** |  | 2022-12-19 | 2023-02-28 |  |  |  |  |  |  |  |  |  |  |  |  |  |
| 1-0471 |  | REM SIDEWALK & GRADE, SPRING 5TH TO 6TH | 2d | 2022-12-19 A | 2023-02-24 A | 1-0463 | 100% | 2022-12-01 | 2022-12-02 | MBRT BASE [368 h] | 368 | 368 | 368 | EA3 | ZONE-1 | SPRING |  |  |
| 1-0472 |  | POUR SIDEWALK, SPRING 5TH TO 6TH | 4d | 2022-12-28 A | 2023-02-28 A | 1-0471 | 100% | 2022-12-05 | 2022-12-08 | MBRT BASE [336 h] | 336 | 336 | 336 | COM | ZONE-1 | SPRING |  |  |
|  | 28 | **SPRING AND 6TH NW CORNER** |  | 2023-01-20 | 2023-01-24 |  |  |  |  |  |  |  |  |  |  |  |  |  |
| 1-0582 |  | REM SIDEWALK, SPRING & 6TH NW CORNER | 1d | 2023-01-20 A | 2023-01-20 A | 1-0472 | 100% | 2023-01-03 | 2023-01-03 | MBRT BASE [8 h] | 8 | 8 | 8 |  | ZONE-1 | SPRING | NORTH | SCL-FC |
| 1-0583 |  | POUR CURB RAMP, SPRING AND 6TH NW CORNER | 1d | 2023-01-23 A | 2023-01-23 A | 1-0582 | 100% | 2023-02-09 | 2023-02-09 | MBRT BASE [8 h] | 8 | 8 | 8 |  | ZONE-1 | SPRING | NORTH | SCL-FC |
| 1-0584 |  | POUR SIDEWALKS, SPRING AND 6TH NW CORNER | 1d | 2023-01-24 A | 2023-01-24 A | 1-0583 | 100% | 2023-02-10 | 2023-02-10 | MBRT BASE [8 h] | 8 | 8 | 8 |  | ZONE-1 | SPRING | NORTH | SCL-FC |

| ID | WBS | Activity | Duration | Start | Finish | Predecessors | Complete | Planned start | Planned finish | Resources | Cost | Actual cost | user_text2 | user_number6 | MBRT-ZONE | MBRT-LOCATION | MBRT-SIDE | MBRT-DELAY | MBRT-TYPE | MBRT-SCOPE | user_text10 | user_text8 |
| --- | --- | --- | --- | --- | --- | --- | --- | --- | --- | --- | --- | --- | --- | --- | --- | --- | --- | --- | --- | --- | --- | --- |
|  | 19 | **SPRING 7TH TO 8TH SOUTH SIDE** |  | 2022-10-13 | 2023-06-29 |  |  |  |  |  |  |  |  |  |  |  |  |  |  |  |  |  |
| 1-0540 |  | REM SIDEWALK, SPRING 7TH TO 8TH SOUTH SIDE | 2d | 2022-10-13 A | 2022-10-14 A | 1-0143 | 100% | 2022-09-13 | 2022-09-14 | MBRT BASE [16 h] | 16 | 16 | EA3 | 16 | ZONE-1 | SPRING | SOUTH | SCL-FC |  |  |  |  |
| 1-0541 |  | TRENCH CONDUIT, SPRING 7TH TO 8TH SOUTH SIDE | 2d | 2022-10-17 A | 2022-10-18 A | 1-0540 | 100% | 2022-07-06 | 2022-07-07 | MBRT BASE [16 h] | 16 | 16 | EA3 | 16 | ZONE-1 | SPRING | SOUTH | SCL-FC |  |  |  |  |
| 1-0542 |  | INST CONDUIT, SPRING 7TH TO 8TH SOUTH SIDE | 2d | 2022-10-17 A | 2022-10-18 A | 1-0541 SS | 100% | 2022-07-06 | 2022-07-07 | MBRT BASE [16 h] | 16 | 16 | ELECRICAL SUB | 16 | ZONE-1 | SPRING | SOUTH | SCL-FC | ELECTRICAL |  |  |  |
| 1-0543 |  | FORM FOUNDATIONS, SPRING 7TH TO 8TH SOUTH SIDE | 1d | 2022-10-17 A | 2022-10-17 A | 1-0542 SS | 100% | 2022-07-06 | 2022-07-06 | MBRT BASE [8 h] | 8 | 8 | COM | 8 | ZONE-1 | SPRING | SOUTH | SCL-FC |  |  |  |  |
| 1-0544 |  | POUR FOUNDATIONS, SPRING 7TH TO 8TH SOUTH SIDE | 2d | 2022-10-18 A | 2022-10-19 A | 1-0543 | 100% | 2022-07-18 | 2022-07-19 | MBRT BASE [16 h] | 16 | 16 | COM | 16 | ZONE-1 | SPRING | SOUTH | SCL-FC |  |  |  |  |
| 1-0545 |  | GRADE SIDEWALK, SPRING 7TH TO 8TH SOUTH SIDE | 2d | 2022-10-20 A | 2022-10-21 A | 1-0544 | 100% | 2022-07-11 | 2022-07-12 | MBRT BASE [16 h] | 16 | 16 | EA3 | 16 | ZONE-1 | SPRING | SOUTH | SCL-FC |  | SIDEWALKS |  |  |
| 1-0560 |  | INSTALL WHEEL GUIDES | 1d | 2022-10-23 A | 2022-10-23 A | 1-0545 | 100% | 2022-07-11 | 2022-07-11 | MBRT NEW [8 h] | 8 | 8 |  | 0 |  |  |  |  |  |  |  |  |
| 1-0546 |  | POUR SIDEWALK, SPRING 7TH TO 8TH SOUTH SIDE | 4d | 2022-10-24 A | 2022-10-27 A | 1-0545, 1-0560 FF | 100% | 2022-07-22 | 2022-07-27 | MBRT BASE [32 h] | 32 | 32 | COM | 32 | ZONE-1 | SPRING | SOUTH |  |  |  |  |  |
| 1-2820 |  | CITY CAUSED DELAY, SPRING 7TH TO 8TH SOUTH SIDE | 4d | 2022-10-28 A | 2023-05-05 A | 1-0546 | 100% | 2022-07-22 | 2022-07-27 | MBRT NEW |  |  | COM | 1032 | ZONE-1 | SPRING | SOUTH |  |  |  | 1-2820 | 1-2820 |
| 1-2825 |  | TEMP LIGHTING, SPRING 7TH TO 8TH SOUTH SIDE | 6d | 2023-05-08 A | 2023-06-23 A | 1-2820 | 100% | 2023-05-08 | 2023-05-15 | MBRT NEW [48 h] | 48 | 272 | COM | 272 | ZONE-1 | SPRING | SOUTH |  |  |  | 1-2825 | 1-2825 |
| 1-2830 |  | ELECTRICAL AFTER DELAY, SPRING 7TH TO 8TH SOUTH SIDE | 2d | 2023-06-26 A | 2023-06-27 A | 1-2825, 1-2820 | 100% |  |  | MBRT NEW [16 h] | 16 | 16 | COM | 16 | ZONE-1 | SPRING | SOUTH |  |  |  | 1-2830 | 1-2830 |
| 1-2835 |  | SIDEWALK AFTER DELAY, SPRING 7TH TO 8TH SOUTH SIDE | 2d | 2023-06-28 A | 2023-06-29 A | 1-2830 | 100% |  |  | MBRT NEW [16 h] | 16 | 16 | COM | 16 | ZONE-1 | SPRING | SOUTH |  |  |  | 1-2835 | 1-2835 |
|  | 29 | **SPRING AND 7TH NE CORNER** |  | 2023-01-04 | 2023-01-06 |  |  |  |  |  |  |  |  |  |  |  |  |  |  |  |  |  |
| 1-0586 |  | REM SIDEWALK, SPRING & 7TH NE CORNER | 1d | 2023-01-04 A | 2023-01-04 A | 1-0584 | 100% | 2023-01-03 | 2023-01-03 | MBRT BASE [8 h] | 8 | 8 | EA3 | 8 | ZONE-1 | SPRING | NORTH | SCL-FC |  |  |  |  |
| 1-0587 |  | POUR CURB RAMP, SPRING AND 7TH NE CORNER | 1d | 2023-01-05 A | 2023-01-05 A | 1-0586 | 100% | 2023-01-03 | 2023-01-03 | MBRT BASE [8 h] | 8 | 8 | COM | 8 | ZONE-1 | SPRING | NORTH | SCL-FC |  |  |  |  |
| 1-0588 |  | POUR SIDEWALKS, SPRING AND 7TH NE CORNER | 1d | 2023-01-06 A | 2023-01-06 A | 1-0587 | 100% | 2023-01-04 | 2023-01-04 | MBRT BASE [8 h] | 8 | 8 | COM | 8 | ZONE-1 | SPRING | NORTH | SCL-FC |  |  |  |  |
|  | 30 | **SPRING AND 8TH NW CORNER** |  | 2023-01-09 | 2023-01-17 |  |  |  |  |  |  |  |  |  |  |  |  |  |  |  |  |  |
| 1-0590 |  | REM SIDEWALK, SPRING & 8TH NW CORNER | 1d | 2023-01-09 A | 2023-01-17 A | 1-0588 | 100% | 2023-02-09 | 2023-02-09 | MBRT BASE [48 h] | 48 | 48 | EA3 | 48 | ZONE-1 | SPRING | NORTH | SCL-FC |  |  |  |  |
| 1-0591 |  | INST CONDUIT, SPRING & 8TH NW CORNER | 1d | 2023-01-10 A | 2023-01-10 A | 1-0590 | 100% | 2023-02-10 | 2023-02-10 | MBRT BASE [8 h] | 8 | 8 | EA3 | 8 | ZONE-1 | SPRING | NORTH | SCL-FC | ELECTRICAL |  |  |  |
| 1-0592 |  | POUR CURB RAMP, SPRING AND 8TH NW CORNER | 2d | 2023-01-11 A | 2023-01-12 A | 1-0591 | 100% | 2023-02-13 | 2023-02-14 | MBRT BASE [16 h] | 16 | 16 | COM | 16 | ZONE-1 | SPRING | NORTH | SCL-FC |  |  |  |  |
| 1-0593 |  | POUR SIDEWALKS, SPRING AND 8TH NW CORNER | 2d | 2023-01-13 A | 2023-01-17 A | 1-0592 | 100% | 2023-02-15 | 2023-02-16 | MBRT BASE [16 h] | 16 | 16 | COM | 16 | ZONE-1 | SPRING | NORTH | SCL-FC |  |  |  |  |
|  | 31 | **SPRING 8TH TO 9TH NORTH SIDE** |  | 2023-01-03 | 2023-02-17 |  |  |  |  |  |  |  |  |  |  |  |  |  |  |  |  |  |
| 1-0595 |  | REM SIDEWALK, SPRING 8TH TO 9TH NORTH SIDE | 2d | 2023-01-03 A | 2023-01-04 A | 1-0165 | 100% |  |  | MBRT BASE [16 h] | 16 | 16 | EA3 | 16 | ZONE-1 | SPRING | NORTH | SCL-FC |  |  |  |  |
| 1-0596 |  | TRENCH CONDUIT, SPRING 8TH TO 9TH NORTH SIDE | 2d | 2023-01-05 A | 2023-01-06 A | 1-0595 | 100% |  |  | MBRT BASE [16 h] | 16 | 16 | EA3 | 16 | ZONE-1 | SPRING | NORTH | SCL-FC |  |  |  |  |
| 1-1350 |  | OWNER CAUSED DELAY SEWER DISCHARGING INTO TRENCH, SPRING 8TH TO 9TH NORTH SIDE | 2d | 2023-01-09 A | 2023-01-13 A | 1-0596 | 100% | 2023-01-05 | 2023-01-06 | MBRT NEW [16 h] | 16 | 40 | EA3 | 40 | ZONE-1 | SPRING | NORTH | SCL-FC |  |  |  |  |
| PCO505.01 |  | DSC 361-NEC 8th & Spring Public Sewage Discharge | 5d | 2023-01-10 A | 2023-01-11 A | MS-0025 | 100% | 2023-02-27 | 2023-03-03 | MBRT DSC [8 h] | 8 | 8 |  | 8 |  |  |  |  |  |  |  |  |
| PCO509.01 |  | DSC 364-Bike Lane Curbs Spring 8th-9th | 5d | 2023-01-11 A | 2023-02-17 A | MS-0025 | 100% | 2023-02-27 | 2023-03-03 | MBRT DSC [208 h] | 208 | 208 |  | 208 |  |  |  |  |  |  |  |  |
| 1-0597 |  | INST CONDUIT, SPRING 8TH TO 9TH NORTH SIDE | 2d | 2023-01-17 A | 2023-01-20 A | 1-0596 SS, 1-1350 | 100% | 2023-01-05 | 2023-01-06 | MBRT BASE [32 h] | 32 | 32 | ELECRICAL SUB | 32 | ZONE-1 | SPRING | NORTH | SCL-FC | ELECTRICAL |  |  |  |
| 1-1355 |  | OWNER CAUSED DELAY SCL INSPECTION SPRING 8TH TO 9TH NORTH SIDE | 2d | 2023-01-23 A | 2023-01-26 A | 1-0597 | 100% | 2023-01-05 | 2023-01-06 | MBRT NEW [16 h] | 16 | 32 | EA3 | 32 | ZONE-1 | SPRING | NORTH | SCL-FC |  |  |  |  |
| 1-0598 |  | GRADE SIDEWALK, SPRING 8TH TO 9TH NORTH SIDE | 1d | 2023-01-27 A | 2023-01-27 A | 1-0597, 1-1355 | 100% | 2023-01-09 | 2023-01-09 | MBRT BASE [8 h] | 8 | 8 | EA3 | 8 | ZONE-1 | SPRING | NORTH | SCL-FC |  | SIDEWALKS |  |  |
| 1-0599 |  | POUR SIDEWALK, SPRING 8TH TO 9TH NORTH SIDE | 5d | 2023-01-30 A | 2023-02-07 A | 1-0598 | 100% | 2023-01-10 | 2023-01-17 | MBRT BASE [56 h] | 56 | 56 | COM | 56 | ZONE-1 | SPRING | NORTH | SCL-FC |  |  |  |  |
| PCO553.01 |  | DSC 390-Prime Re-Work Conduits 7th and Mad and 9th and Spring | 5d | 2023-02-04 A | 2023-02-05 A | MS-0025 | 100% | 2023-02-27 | 2023-03-03 | MBRT DSC [8 h] | 8 | 8 |  | 8 |  |  |  |  |  |  |  |  |

| ID | WBS | Activity | Duration | Start | Finish | Predecessors | Complete | Planned start | Planned finish | Calendar | Resources | Cost | Actual cost | user_number6 | user_text2 | MBRT-ZONE | MBRT-LOCATION | MBRT-SIDE | MBRT-DELAY | MBRT-TYPE | MBRT-SCOPE | user_text10 | user_text8 |
| --- | --- | --- | --- | --- | --- | --- | --- | --- | --- | --- | --- | --- | --- | --- | --- | --- | --- | --- | --- | --- | --- | --- | --- |
|  | 59 | **SPRING 8TH TO 9TH SOUTH SIDE** |  | 2022-08-05 | 2022-10-08 |  |  |  |  |  |  |  |  |  |  |  |  |  |  |  |  |  |  |
| PCO340.01 |  | DSC 250-8th & Spring, CDF Ductbank Conflict | 5d | 2022-08-05 A | 2022-08-23 A | MS-0025 | 100% | 2023-02-27 | 2023-03-03 |  | MBRT DSC [96 h] | 96 | 96 | 96 |  |  |  |  |  |  |  |  |  |
| PCO341.01 |  | DSC 251-9th & Spring, SCL HH Size Conflict | 5d | 2022-08-05 A | 2022-08-27 A | MS-0025 | 100% | 2023-02-27 | 2023-03-03 |  | MBRT DSC [128 h] | 128 | 128 | 128 |  |  |  |  |  |  |  |  |  |
| PCO361.01 |  | DSC 262-FM 262 T5 Handhole conflict 8th and Spring | 5d | 2022-08-25 A | 2022-08-27 A | MS-0025 | 100% | 2023-02-27 | 2023-03-03 |  | MBRT DSC [16 h] | 16 | 16 | 16 |  |  |  |  |  |  |  |  |  |
| PCO362.01 |  | DSC 263-SW 8th and Spring wire note 13 not installed | 5d | 2022-08-25 A | 2022-09-02 A | MS-0025 | 100% | 2023-02-27 | 2023-03-03 |  | MBRT DSC [48 h] | 48 | 48 | 48 |  |  |  |  |  |  |  |  |  |
| PCO365.01 |  | DSC 266-Unknown Unlocated Gas line 8th and Spring | 5d | 2022-08-31 A | 2022-08-31 A | MS-0025 | 100% | 2023-02-27 | 2023-03-03 |  | MBRT DSC [8 h] | 8 | 8 | 8 |  |  |  |  |  |  |  |  |  |
| PCO366.01 |  | DSC 267-SCL Handhole Conflict 8th and Spring | 5d | 2022-09-01 A | 2022-09-22 A | MS-0025 | 100% | 2023-02-27 | 2023-03-03 |  | MBRT DSC [112 h] | 112 | 112 | 112 |  |  |  |  |  |  |  |  |  |
| 1-1235 |  | REM SIDEWALK, SPRING 8TH TO 9TH SOUTH SIDE | 2d | 2022-09-01 A | 2022-09-02 A | 1-0546 | 100% | 2022-08-31 | 2022-09-01 |  | MBRT NEW [16 h] | 16 | 16 | 16 | EA3 | ZONE-1 | SPRING | SOUTH | SCL-FC |  |  |  |  |
| 1-1240 |  | TRENCH CONDUIT, SPRING 8TH TO 9TH SOUTH SIDE | 2d | 2022-09-01 A | 2022-09-02 A | 1-1235 | 100% | 2022-09-02 | 2022-09-06 |  | MBRT NEW [16 h] | 16 | 16 | 16 | EA3 | ZONE-1 | SPRING | SOUTH | SCL-FC |  |  |  |  |
| 1-1245 |  | INST ELECTRICAL SERVICE CONNECTIONS, SPRING 8TH TO 9TH SOUTH SIDE | 10d | 2022-09-02 A | 2022-09-27 A | 1-1240 SS | 100% | 2022-09-02 | 2022-09-16 |  | MBRT NEW [80 h] | 80 | 136 | 136 | ELECRICAL SUB | ZONE-1 | SPRING | SOUTH | SCL-FC | ELECTRICAL |  |  |  |
| 1-1260 |  | VAULT WORK, SPRING 8TH TO 9TH SOUTH SIDE | 10d | 2022-09-02 A | 2022-09-27 A | 1-1245 SS | 100% | 2022-09-02 | 2022-09-16 |  | MBRT NEW [80 h] | 80 | 136 | 136 | COM | ZONE-1 | SPRING | SOUTH | SCL-FC |  |  |  |  |
| 1-1265 |  | INSTALL FOUNDATION - P09-05, SPRING 8TH TO 9TH SOUTH SIDE | 10d | 2022-09-05 A | 2022-09-27 A | 1-1260 | 100% | 2022-09-06 | 2022-09-19 |  | MBRT NEW [80 h] | 80 | 128 | 128 | COM | ZONE-1 | SPRING | SOUTH | SCL-FC |  |  |  |  |
| PCO380.01 |  | DSC 277-Electrical Service Conflict SE 8th and Spring | 5d | 2022-09-09 A | 2022-09-16 A | MS-0025 | 100% | 2023-02-27 | 2023-03-03 |  | MBRT DSC [40 h] | 40 | 40 | 40 |  |  |  |  |  |  |  |  |  |
| PCO400.01 |  | DSC 292-Duct Bank conflict With Signal Controler SE 8th and Spring | 5d | 2022-09-19 A | 2022-09-27 A | MS-0025 | 100% | 2023-02-27 | 2023-03-03 |  | MBRT DSC [56 h] | 56 | 56 | 56 |  |  |  |  |  |  |  |  |  |
| PCO403.01 |  | DSC 294-Spring and 8th Prime DSC | 5d | 2022-09-22 A | 2022-10-08 A | MS-0025 | 100% | 2023-02-27 | 2023-03-03 |  | MBRT DSC [96 h] | 96 | 96 | 96 |  |  |  |  |  |  |  |  |  |
| 1-1250 |  | GRADE SIDEWALK, SPRING 8TH TO 9TH SOUTH SIDE | 1d | 2022-09-28 A | 2022-09-29 A | 1-1265 | 100% | 2022-09-09 | 2022-09-09 |  | MBRT NEW [8 h] | 8 | 16 | 16 | EA3 | ZONE-1 | SPRING | SOUTH | SCL-FC |  | SIDEWALKS |  |  |
| 1-1255 |  | POUR RAMPS AND SIDEWALK, SPRING 8TH TO 9TH SOUTH SIDE | 4d | 2022-09-30 A | 2022-10-05 A | 1-1250, 1-1155 | 100% | 2023-05-01 | 2023-05-04 |  | MBRT NEW [32 h] | 32 | 32 | 32 | COM | ZONE-1 | SPRING | SOUTH |  |  |  |  |  |
|  | 8 | **SPRING AND 6TH SE CORNER 1-5 ON-RAMP** |  | 2023-04-06 | 2023-05-08 |  |  |  |  |  |  |  |  |  |  |  |  |  |  |  |  |  |  |
| 1-0474 |  | REM SIDEWALK & GRADE, SPRING & 6TH SE CORNER 1-5 ON-RAMP | 1d | 2023-04-06 A | 2023-04-06 A | 1-0467, 1-0459, 1-1255, 1-0580 | 100% | 2023-05-06 | 2023-05-06 | WEEKEND ONLY | MBRT BASE |  | 8 | 0 | WEA3 | ZONE-1 | SPRING |  |  |  |  | 1-0474 | 1-0474 |
| 1-3145 |  | DELAY AWAITING SUBMITTAL RETURNS | 1d | 2023-04-07 A | 2023-05-01 A | 1-0474 | 100% | 2023-05-06 | 2023-05-06 | WEEKEND ONLY | MBRT NEW |  |  | 64 | WCOM | ZONE-1 | SPRING |  |  |  |  | 1-3145 | 1-3145 |
| 1-0475 |  | POUR CURB RAMPS, SPRING & 6TH SE CORNER 1-5 ON-RAMP | 1d | 2023-05-02 A | 2023-05-03 A | 1-0474 SS, 1-3145 | 100% | 2023-05-06 | 2023-05-06 | WEEKEND ONLY | MBRT BASE |  | 8 | 0 | WCOM | ZONE-1 | SPRING |  |  |  |  | 1-0475 | 1-0475 |
| 1-0476 |  | POUR SIDEWALK, SPRING & 6TH SE CORNER 1-5 ON-RAMP | 1d | 2023-05-08 A | 2023-05-08 A | 1-0475 | 100% | 2023-05-07 | 2023-05-07 | WEEKEND ONLY | MBRT BASE |  | 8 | 0 | WCOM | ZONE-1 | SPRING |  |  |  |  | 1-0476 | 1-0476 |
|  | 24 | **SPRING AND 3RD NE CORNER** |  | 2022-12-01 | 2022-12-07 |  |  |  |  |  |  |  |  |  |  |  |  |  |  |  |  |  |  |
| 1-0566 |  | REM SIDEWALK, SPRING & 3RD NE CORNER | 1d | 2022-12-01 A | 2022-12-01 A | 1-0564, 1-0162, 1-1230 | 100% | 2022-12-02 | 2022-12-02 |  | MBRT BASE [8 h] | 8 | 8 | 8 | EA3 | ZONE-1 | SPRING | NORTH | SCL-FC |  |  |  |  |
| 1-0567 |  | INST CONDUIT, SPRING & 3RD NE CORNER | 1d | 2022-12-02 A | 2022-12-02 A | 1-0566 | 100% | 2022-12-05 | 2022-12-05 |  | MBRT BASE [8 h] | 8 | 8 | 8 | EA3 | ZONE-1 | SPRING | NORTH | SCL-FC | ELECTRICAL |  |  |  |
| 1-0568 |  | POUR SIDEWALKS, SPRING AND 3RD NE CORNER | 1d | 2022-12-05 A | 2022-12-07 A | 1-0567 | 100% | 2022-12-06 | 2022-12-06 |  | MBRT BASE [24 h] | 24 | 24 | 24 | COM | ZONE-1 | SPRING | NORTH | SCL-FC |  |  |  |  |

| ID | WBS | Activity | Duration | Start | Finish | Predecessors | Complete | Remaining | Planned start | Planned finish | Total float | Free float | Resources | Cost | Actual cost | user_text2 | user_number6 | MBRT-ZONE | MBRT-LOCATION | MBRT-SIDE | MBRT-TYPE | user_text10 | user_text8 | MBRT-DELAY | MBRT-SCOPE |
| --- | --- | --- | --- | --- | --- | --- | --- | --- | --- | --- | --- | --- | --- | --- | --- | --- | --- | --- | --- | --- | --- | --- | --- | --- | --- |
|  | 1 | **1ST AVE SPRING TO MADISON NB** |  | 2021-11-03 | 2022-05-31 |  |  |  |  |  |  |  |  |  |  |  |  |  |  |  |  |  |  |  |  |
| 1-0427 |  | REM SIDEWALK, 1ST AVE SPRING TO MAD NB | 1d | 2021-11-03 A | 2021-11-03 A | MS-0026 | 100% |  | 2021-10-29 | 2021-10-29 |  |  | MBRT BASE [8 h] | 8 | 8 | EA3 | 8 | ZONE-1 | 01 | EAST |  |  |  |  |  |
| 1-0428 |  | EXCAVATE FOR BUS SHELTER FOOTINGS, 1ST AVE SPRING TO MAD NB | 1d | 2021-11-04 A | 2021-11-04 A | 1-0427 | 100% |  | 2021-11-01 | 2021-11-01 |  |  | MBRT BASE [8 h] | 8 | 8 | EA3 | 8 | ZONE-1 | 01 | EAST |  |  |  |  |  |
| 1-0429 |  | FORM FOOTINGS, 1ST AVE SPRING TO MAD NB | 1d | 2021-11-05 A | 2021-11-05 A | 1-0428 | 100% |  | 2021-11-02 | 2021-11-02 |  |  | MBRT BASE [8 h] | 8 | 8 | COM | 8 | ZONE-1 | 01 | EAST |  |  |  |  |  |
| 1-0430 |  | TRENCH CONDUIT, 1ST AVE SPRING TO MAD NB | 1d | 2021-11-05 A | 2021-11-05 A | 1-0428 | 100% |  | 2021-11-02 | 2021-11-02 |  |  | MBRT BASE [8 h] | 8 | 8 | EA3 | 8 | ZONE-1 | 01 | EAST |  |  |  |  |  |
| 1-0431 |  | INST CONDUIT, 1ST AVE SPRING TO MAD NB | 1d | 2021-11-08 A | 2021-11-08 A | 1-0430, 1-0429 | 100% |  | 2021-11-03 | 2021-11-03 |  |  | MBRT BASE [8 h] | 8 | 8 | ELECRICAL SUB | 8 | ZONE-1 | 01 | EAST | ELECTRICAL |  |  |  |  |
| 1-0432 |  | INST REBAR, 1ST AVE SPRING TO MAD NB | 1d | 2021-11-09 A | 2021-11-09 A | 1-0431 | 100% |  | 2021-11-04 | 2021-11-04 |  |  | MBRT BASE [8 h] | 8 | 8 | COM | 8 | ZONE-1 | 01 | EAST |  |  |  |  |  |
| 1-0433 |  | POUR FOOTINGS, 1ST AVE SPRING TO MAD NB | 1d | 2021-11-10 A | 2021-11-10 A | 1-0432 | 100% |  | 2021-11-05 | 2021-11-05 |  |  | MBRT BASE [8 h] | 8 | 8 | COM | 8 | ZONE-1 | 01 | EAST |  |  |  |  |  |
| 1-0444 |  | DELAY DESIGN ISSUES, DSC-023/RFI-032 | 5d | 2021-11-11 A | 2022-05-17 A | 1-0433 | 100% |  | 2021-09-20 | 2021-09-24 |  |  | MBRT DSC [1016 h] | 1,016 | 1,016 |  | 1016 |  |  |  |  |  |  |  |  |
| 1-0434 |  | BF FOOTINGS, CONDUIT & GRADE SIDEWALK, 1ST AVE SPRING TO MAD NB | 1d | 2022-05-18 A | 2022-05-18 A | 1-0433, 1-0444 | 100% |  | 2022-05-03 | 2022-05-03 |  |  | MBRT BASE [8 h] | 8 | 8 | EA3 | 8 | ZONE-1 | 01 | EAST |  |  |  |  |  |
| 1-0435 |  | POUR CURB, 1ST AVE SPRING TO MAD NB | 1d | 2022-05-19 A | 2022-05-19 A | 1-0434, MS-2571 | 100% |  | 2022-05-04 | 2022-05-04 |  |  | MBRT BASE [8 h] | 8 | 8 | COM | 8 | ZONE-1 | 01 | EAST |  |  |  |  |  |
| 1-0436 |  | POUR SIDEWALK, 1ST AVE SPRING TO MAD NB | 1d | 2022-05-31 A | 2022-05-31 A | 1-0435 | 100% |  |  |  |  |  | MBRT BASE [8 h] | 8 | 8 | COM | 8 | ZONE-1 | 01 | EAST |  |  |  |  |  |
|  | 32 | **9TH SPRING TO MADISON EAST SIDE** |  | 2023-08-10 | 2024-04-24 |  |  |  |  |  |  |  |  |  |  |  |  |  |  |  |  |  |  |  |  |
| DSC-580 |  | DSC 580 OFFSET FOUNDATION CONFLICTS | 76d | 2023-08-10 A | 2023-11-29 A | MS-0025 | 100% |  | 2023-08-14 | 2023-12-01 |  |  | MBRT DSC [608 h] | 608 | 600 |  | 608 |  |  |  |  |  |  |  |  |
| 1-0601 |  | REM SIDEWALK, 9TH SPRING TO MAD EASE SIDE | 1d | 2023-12-19 A | 2023-12-22 A | 1-0174, 1-0599, 1-0346, 1-0334, DSC-580, 1-0342 | 100% |  | 2023-12-11 | 2023-12-11 |  |  | MBRT BASE [32 h] | 32 | 32 | EA3 | 32 | ZONE-1 | SPRING | EAST |  | 1-0601 | 1-0601 | SCL-FC |  |
| DSC-672 |  | DSC 672 INTERCEPT NEC MADISON TO SHALLOW | 29d | 2023-12-21 A | 2024-02-02 A | DSC-674 | 100% |  | 2023-12-11 | 2024-01-23 |  |  | MBRT DSC [232 h] | 232 | 232 |  | 232 |  |  |  |  |  |  |  |  |
| DSC-674 |  | DSC 674 OLD HYDRANT CONFLICT | 2d | 2023-12-21 A | 2023-12-22 A | 1-0601 SS | 100% |  | 2023-12-11 | 2023-12-12 |  |  | MBRT DSC [16 h] | 16 | 16 |  | 16 |  |  |  |  |  |  |  |  |
| 1-0602 |  | TRENCH CONDUIT, 9TH SPRING TO MAD EAST SIDE | 1d | 2023-12-22 A | 2023-12-29 A | 1-0601, DSC-674 | 100% |  | 2023-12-12 | 2023-12-12 |  |  | MBRT BASE [40 h] | 40 | 40 | EA3 | 40 | ZONE-1 | SPRING | EAST |  | 1-0602 | 1-0602 | SCL-FC |  |
| DSC-677 |  | DSC 677 DUCT BANK CONFLICT | 49d | 2023-12-28 A | 2024-04-08 | 1-0602 | 90% | 5d | 2023-12-11 | 2024-02-21 | -142d | 0d | MBRT DSC [392 h] | 392 |  |  | 392 |  |  |  |  |  |  |  |  |
| 1-0603 |  | INST CONDUIT, 9TH SPRING TO MAD EAST SIDE | 1d | 2024-01-02 A | 2024-04-22 | 1-0602 SS, DSC-672 SS, DSC-699 FF, DSC-696 FF, DSC-679 SS, DSC-677 SS, DSC-674 |  | 15d | 2023-12-12 | 2023-12-12 | -142d | 0d | MBRT BASE [336 h] | 336 | 8 | ELECRICAL SUB | 336 | ZONE-1 | SPRING | EAST | ELECTRICAL | 1-0603 | 1-0603 | SCL-FC |  |
| DSC-679 |  | DSC 679 TEMP LIGHTING | 5d | 2024-01-02 A | 2024-01-08 A | 1-0602 | 100% |  | 2023-12-11 | 2023-12-15 |  |  | MBRT DSC [40 h] | 40 | 40 |  | 40 |  |  |  |  |  |  |  |  |
| 1-0605 |  | POUR SIDEWALK, 9TH SPRING TO MAD EAST SIDE | 2d | 2024-02-02 A | 2024-04-23 | 1-0604 FF, 1-7040, 1-0603 SS |  | 16d | 2023-12-14 | 2023-12-15 | -142d | 0d | MBRT BASE [160 h] | 160 | 16 | COM | 160 | ZONE-1 | SPRING | EAST |  | 1-0605 | 1-0605 | SCL-FC |  |
| DSC-696 |  | DSC 696 DUCT BANK CONFLICTS | 24d | 2024-02-05 A | 2024-04-08 | DSC-672 | 79% | 5d | 2023-12-11 | 2024-01-16 | -132d | 10d | MBRT DSC [192 h] | 192 |  |  | 192 |  |  |  |  |  |  |  |  |
| DSC-699 |  | DSC 699 BUILDING FOOTING CONFLICT WITH SIDEWALKS NEC MADISON AND 9TH | 1d | 2024-02-06 A | 2024-02-06 A | DSC-672 | 100% |  | 2023-12-11 | 2023-12-11 |  |  | MBRT DSC [8 h] | 8 | 8 |  | 8 |  |  |  |  |  |  |  |  |
| 1-0604 |  | GRADE SIDWALKS, 9TH SPRING TO MAD EAST SIDE | 1d | 2024-04-23 | 2024-04-23 | 1-0603, DSC-672, DSC-677, DSC-696 |  |  |  |  | -142d | 0d | MBRT BASE [8 h] | 8 |  | EA3 | 8 | ZONE-1 | SPRING | EAST |  | 1-0604 | 1-0604 | SCL-FC | SIDEWALKS |
| 1-0650 |  | POUR SIDEWALK, 9TH SPRING TO MAD EAST SIDE Complete | 0d | 2024-04-24 | 2024-04-24 | 1-0552, 1-0605, 1-0604 |  |  |  |  | -142d | 0d | MBRT NEW |  |  |  | 0 |  |  |  |  |  |  |  |  |

Notes:
- 1-0444: Description: DSC-023 / Design issues with foundation locations and conduit tie-ins and routing. / Foundations need some modifications in locations and conduit routing sitll not / resolved as of 1/6/22 / RFI032 requested for clarification on conduit routing & connections. A / response was provided to RFI but the conduit issues were not resolved by the / response.

| ID | WBS | Activity | Duration | Start | Finish | Predecessors | Complete | Remaining | Planned start | Planned finish | Total float | Free float | Resources | Cost | Actual cost | user_text2 | user_number6 | user_text10 | user_text8 | MBRT-ZONE | MBRT-LOCATION | MBRT-SIDE | MBRT-DELAY | MBRT-TYPE | MBRT-SCOPE |
| --- | --- | --- | --- | --- | --- | --- | --- | --- | --- | --- | --- | --- | --- | --- | --- | --- | --- | --- | --- | --- | --- | --- | --- | --- | --- |
|  | 20 | **9TH SPRING TO MADISON WEST SIDE** |  | 2024-02-13 | 2024-04-17 |  |  |  |  |  |  |  |  |  |  |  |  |  |  |  |  |  |  |  |  |
| 1-0548 |  | REM SIDEWALK, 9TH SPRING TO MAD WEST SIDE | 3d | 2024-02-13 A | 2024-02-14 A | 1-0424, 1-0150, 1-0545, 1-0538, 1-2800, 1-0453, 1-0453 FF | 100% |  | 2024-02-23 | 2024-02-27 |  |  | MBRT BASE [16 h] | 16 | 16 | EA3 | 16 | 1-0548 | 1-0548 | ZONE-1 | SPRING | WEST | SCL-FC |  |  |
| 1-0549 |  | TRENCH CONDUIT, 9TH SPRING TO MAD WEST SIDE | 2d | 2024-02-14 A | 2024-02-23 A | 1-0548 | 100% |  | 2024-02-28 | 2024-02-29 |  |  | MBRT BASE [56 h] | 56 | 56 | EA3 | 56 | 1-0549 | 1-0549 | ZONE-1 | SPRING | WEST | SCL-FC |  |  |
| DSC-703 |  | DSC 703 WATER VAULT CONFLICT WITH CONDUIT | 11d | 2024-02-14 A | 2024-03-01 A | 1-0549 SS | 100% |  | 2024-02-12 | 2024-02-27 |  |  | MBRT DSC [88 h] | 88 | 88 |  | 88 |  |  |  |  |  |  |  |  |
| DSC-706 |  | DSC 706 CONCRETE WALL CONFLICT WITH CONDUIT | 11d | 2024-02-14 A | 2024-03-01 A | 1-0549 SS | 100% |  | 2024-02-12 | 2024-02-27 |  |  | MBRT DSC [88 h] | 88 | 88 |  | 88 |  |  |  |  |  |  |  |  |
| DSC-707 |  | DSC 707 ROTTEN FRENCH DRAIN | 13d | 2024-02-15 A | 2024-03-08 A | 1-0549 SS | 100% |  | 2024-02-12 | 2024-02-29 |  |  | MBRT DSC [104 h] | 104 | 104 |  | 104 |  |  |  |  |  |  |  |  |
| DSC-709 |  | DSC 709 SECOND WALL CONFLICT | 4d | 2024-02-19 A | 2024-02-23 A | DSC-706 SS | 100% |  | 2024-02-12 | 2024-02-15 |  |  | MBRT DSC [32 h] | 32 | 32 |  | 32 |  |  |  |  |  |  |  |  |
| DSC-710 |  | DSC 710 SHALLOW CONDUIT | 8d | 2024-02-20 A | 2024-03-01 A | 1-0549 SS | 100% |  | 2024-02-12 | 2024-02-22 |  |  | MBRT DSC [64 h] | 64 | 64 |  | 64 |  |  |  |  |  |  |  |  |
| 1-0550 |  | INST CONDUIT, 9TH SPRING TO MAD WEST SIDE | 2d | 2024-02-27 A | 2024-04-08 | 1-0549 SS, DSC-703 FF, DSC-707 FF, DSC-709, DSC-710 FF |  | 5d | 2024-02-28 | 2024-02-29 | -138d | 0d | MBRT BASE [32 h] | 32 | 16 | ELECRICAL SUB | 32 | 1-0550 | 1-0550 | ZONE-1 | SPRING | WEST | SCL-FC | ELECTRICAL |  |
| 1-0551 |  | GRADE SIDEWALK, 9TH SPRING TO MAD WEST SIDE | 1d | 2024-04-09 | 2024-04-09 | 1-0550, DSC-707 |  |  |  |  | -138d | 0d | MBRT BASE [8 h] | 8 |  | EA3 | 8 | 1-0551 | 1-0551 | ZONE-1 | SPRING | WEST | SCL-FC |  | SIDEWALKS |
| 1-0552 |  | POUR SIDEWALK, 9TH SPRING TO MAD WEST SIDE | 6d | 2024-04-10 | 2024-04-17 | 1-0551, 1-0546, 1-0610 FF |  |  |  |  | -138d | 2d | MBRT BASE [48 h] | 48 |  | COM | 48 | 1-0552 | 1-0552 | ZONE-1 | SPRING | WEST | SCL-FC |  |  |
|  | 33 | **SPRING AND 9TH NE CORNER** |  | 2024-01-05 | 2024-02-06 |  |  |  |  |  |  |  |  |  |  |  |  |  |  |  |  |  |  |  |  |
| 1-0607 |  | REM SIDEWALK, SPRING & 9TH NE CORNER | 1d | 2024-01-05 A | 2024-01-08 A | 1-0593, 1-2835 | 100% |  | 2023-12-18 | 2023-12-18 |  |  | MBRT BASE [16 h] | 16 | 16 |  | 16 | 1-0607 | 1-0607 | ZONE-1 | SPRING | NORTH | SCL-FC |  |  |
| 1-0608 |  | INST CONDUIT, SPRING & 9TH NE CORNER | 1d | 2024-01-09 A | 2024-02-02 A | 1-0607 | 100% |  | 2023-12-19 | 2023-12-19 |  |  | MBRT BASE [144 h] | 144 | 144 |  | 144 | 1-0608 | 1-0608 | ZONE-1 | SPRING | NORTH | SCL-FC | ELECTRICAL |  |
| DSC-684 |  | DSC 684 UNKNOWN UNLOCATED CONDUITS | 13d | 2024-01-09 A | 2024-01-26 A | 1-0608 SS | 100% |  | 2023-12-11 | 2023-12-28 |  |  | MBRT DSC [104 h] | 104 | 104 |  | 104 |  |  |  |  |  |  |  |  |
| DSC-687 |  | DSC 687 CONDUIT CONFLICTS | 10d | 2024-01-12 A | 2024-01-26 A | 1-0608 SS | 100% |  | 2023-12-11 | 2023-12-22 |  |  | MBRT DSC [80 h] | 80 | 80 |  | 80 |  |  |  |  |  |  |  |  |
| 1-0609 |  | POUR CURB RAMP, SPRING AND 9TH NE CORNER | 1d | 2024-02-05 A | 2024-02-05 A | 1-0608, DSC-687, DSC-684 | 100% |  | 2023-12-20 | 2023-12-20 |  |  | MBRT BASE [8 h] | 8 | 8 |  | 8 | 1-0609 | 1-0609 | ZONE-1 | SPRING | NORTH |  |  |  |
| 1-0610 |  | POUR SIDEWALKS, SPRING AND 9TH NE CORNER | 1d | 2024-02-06 A | 2024-02-06 A | 1-0609 | 100% |  | 2023-12-21 | 2023-12-21 |  |  | MBRT BASE [8 h] | 8 | 8 |  | 8 | 1-0610 | 1-0610 | ZONE-1 | SPRING | NORTH |  |  |  |
|  | 9 | **MADISON AND 1ST SW CORNER** |  | 2022-04-12 | 2023-04-24 |  |  |  |  |  |  |  |  |  |  |  |  |  |  |  |  |  |  |  |  |
| 1-0478 |  | REM SIDEWALK, MAD & 1ST SW CORNER | 0.5d | 2022-04-12 A | 2022-04-12 A | 1-0502 | 100% |  | 2022-06-24 | 2022-06-24 |  |  | MBRT BASE [4 h] | 4 | 8 | EA3 | 4 |  |  | ZONE-1 | 01 |  | SCL-FC |  |  |
| 1-0480 |  | INST CONDUIT, MAD & 1ST SW CORNER | 1d | 2022-04-13 A | 2022-04-15 A | 1-0478, 1-0479 SS | 100% |  | 2022-06-24 | 2022-06-24 |  |  | MBRT BASE [24 h] | 24 | 24 | ELECRICAL SUB | 24 |  |  | ZONE-1 | 01 |  |  | ELECTRICAL |  |
| 1-0479 |  | TRENCH CONDUIT, MAD & 1ST SW CORNER | 0.5d | 2022-04-13 A | 2022-04-13 A | 1-0478 | 100% |  | 2022-06-24 | 2022-06-24 |  |  | MBRT BASE [4 h] | 4 | 8 | EA3 | 4 |  |  | ZONE-1 | 01 |  | SCL-FC |  |  |
| 1-0491 |  | DSC 153 - SCL VAULT CONFLICT | 5d | 2022-04-18 A | 2023-03-08 A | 1-0480 | 100% |  | 2022-03-31 | 2022-04-06 |  |  | MBRT DSC [1784 h] | 1,784 | 1,784 |  | 1784 |  |  |  |  |  |  |  |  |
| 1-0481 |  | GRADE SIDEWALK, MAD & 1ST SW CORNER | 1d | 2023-03-29 A | 2023-03-29 A | 1-0479, 1-0480, 1-0491 | 100% |  | 2023-03-01 | 2023-03-01 |  |  | MBRT BASE [8 h] | 8 | 8 | EA3 | 8 |  |  | ZONE-1 | 01 |  | SCL-FC |  | SIDEWALKS |
| 1-0482 |  | POUR CURB RAMPS, MAD & 1ST SW CORNER | 2d | 2023-04-03 A | 2023-04-04 A | 1-0481, 1-0472 | 100% |  | 2023-03-31 | 2023-04-03 |  |  | MBRT BASE [16 h] | 16 | 16 | COM | 16 | 1-0482 | 1-0482 | ZONE-1 | 01 |  | SCL-FC |  |  |
| 1-2780 |  | OWNER CAUSED DELAY-SCL DID NOT COMPLETE VAULT | 2d | 2023-04-03 A | 2023-04-21 A | 1-0482 | 100% |  | 2023-03-31 | 2023-04-03 |  |  | MBRT NEW [16 h] | 16 | 120 | COM | 120 | 1-2780 | 1-2780 | ZONE-1 | 01 |  | SCL-FC |  |  |
| 1-0483 |  | POUR SIDEWALK, MAD & 1ST SW CORNER | 1d | 2023-04-24 A | 2023-04-24 A | 1-0482, 1-2780 | 100% |  | 2023-04-04 | 2023-04-04 |  |  | MBRT BASE [8 h] | 8 | 8 | COM | 8 | 1-0483 | 1-0483 | ZONE-1 | 01 |  | SCL-FC |  |  |

| ID | WBS | Activity | Duration | Start | Finish | Predecessors | Complete | Planned start | Planned finish | Total float | Free float | Resources | Cost | Actual cost | user_number6 | user_text10 | user_text8 | user_text2 | MBRT-ZONE | MBRT-LOCATION | MBRT-SIDE | MBRT-DELAY | MBRT-TYPE | MBRT-SCOPE |
| --- | --- | --- | --- | --- | --- | --- | --- | --- | --- | --- | --- | --- | --- | --- | --- | --- | --- | --- | --- | --- | --- | --- | --- | --- |
|  | 10 | **MADISON AND 1ST NW CORNER** |  | 2023-07-06 | 2024-02-22 |  |  |  |  |  |  |  |  |  |  |  |  |  |  |  |  |  |  |  |
| 1-0510 |  | DE:LAY - City Won't Allow During MLB All-Star | 5d | 2023-07-06 A | 2023-07-12 A | 1-3280 SS | 100% |  |  |  |  | MBRT NEW [40 h] | 40 | 40 | 40 | 1-0510 | 1-0510 |  |  |  |  |  |  |  |
| 1-0485 |  | REM SIDEWALK, MAD & 1ST NW CORNER | 0.5d | 2023-08-08 A | 2023-08-08 A | 1-0483, 1-0476, 1-0565, 1-0510 | 100% | 2023-07-13 | 2023-07-13 |  |  | MBRT BASE [8 h] | 8 | 8 | 8 | 1-0485 | 1-0485 | EA3 | ZONE-1 | 01 | NORTH | SCL-FC |  |  |
| 1-0486 |  | TRENCH CONDUIT, MAD & 1ST NW CORNER | 0.5d | 2023-08-08 A | 2023-08-08 A | 1-0485 | 100% | 2023-07-13 | 2023-07-13 |  |  | MBRT BASE [4 h] | 4 | 8 | 4 | 1-0486 | 1-0486 | EA3 | ZONE-1 | 01 | NORTH | SCL-FC |  |  |
| DSC-582 |  | DSC 582 HH REPLACEMENT CONFLICT | 127d | 2023-08-10 A | 2024-02-13 A | 1-0486 | 100% | 2023-07-03 | 2024-01-04 |  |  | MBRT DSC [1016 h] | 1,016 | 1,016 | 1016 |  |  |  |  |  |  |  |  |  |
| 1-0487 |  | INST CONDUIT, MAD & 1ST NW CORNER | 1d | 2024-02-13 A | 2024-02-13 A | 1-0485 SS, 1-0486, DSC-582 | 100% | 2024-02-16 | 2024-02-16 |  |  | MBRT BASE [8 h] | 8 | 8 | 8 | 1-0487 | 1-0487 | ELECRICAL SUB | ZONE-1 | 01 | NORTH |  | ELECTRICAL |  |
| 1-0488 |  | GRADE SIDEWALK, MAD & 1ST NW CORNER | 1d | 2024-02-13 A | 2024-02-13 A | 1-0487, 1-0486 | 100% | 2024-02-20 | 2024-02-20 |  |  | MBRT BASE [8 h] | 8 | 8 | 8 | 1-0488 | 1-0488 | EA3 | ZONE-1 | 01 | NORTH | SCL-FC |  | SIDEWALKS |
| 1-0489 |  | POUR CURB RAMPS, MAD & 1ST NW CORNER | 2d | 2024-02-21 A | 2024-02-21 A | 1-0488, 1-0484 | 100% | 2024-02-21 | 2024-02-22 |  |  | MBRT BASE [8 h] | 8 | 8 | 8 | 1-0489 | 1-0489 | COM | ZONE-1 | 01 | NORTH | SCL-FC |  |  |
| 1-0490 |  | POUR SIDEWALK, MAD & 1ST NW CORNER | 1d | 2024-02-22 A | 2024-02-22 A | 1-0489 | 100% | 2024-02-23 | 2024-02-23 |  |  | MBRT BASE [8 h] | 8 | 8 | 8 | 1-0490 | 1-0490 | COM | ZONE-1 | 01 | NORTH | SCL-FC |  |  |
|  | 71 | **MADISON AND 1ST NE CORNER** |  | 2023-06-13 | 2023-07-06 |  |  |  |  |  |  |  |  |  |  |  |  |  |  |  |  |  |  |  |
| 1-3285 |  | Remove Roadway Panel 1ST NE CORNER | 1d | 2023-06-13 A | 2023-06-13 A | 1-2935 | 100% |  |  |  |  | MBRT NEW [8 h] | 8 | 8 | 8 | 1-3285 | 1-3285 |  |  |  |  |  |  |  |
| 1-3295 |  | DSC 520 - Unlocated Storm Line COnflict | 1d | 2023-06-13 A | 2023-06-13 A | 1-3285 SS | 100% |  |  |  |  | MBRT DSC [8 h] | 8 | 8 | 8 | 1-3295 | 1-3295 |  |  |  |  |  |  |  |
| 1-3290 |  | Form & Pour Roadway Panel 1ST NE CORNER | 2d | 2023-06-14 A | 2023-06-15 A | 1-3285 | 100% |  |  |  |  | MBRT NEW [16 h] | 16 | 16 | 16 | 1-3290 | 1-3290 |  |  |  |  |  |  |  |
| 1-3255 |  | REM SIDEWALK, MAD & 1ST NE CORNER | 1d | 2023-06-16 A | 2023-06-16 A | 1-3290 | 100% |  |  |  |  | MBRT NEW [8 h] | 8 | 8 | 8 | 1-3255 | 1-3255 | EA3 | ZONE-1 | 01 | NORTH | SCL-FC |  |  |
| 1-3300 |  | DSC 528 - Extra Thick Sidewalk | 1d | 2023-06-16 A | 2023-06-16 A | 1-3295, 1-3290 | 100% |  |  |  |  | MBRT DSC [8 h] | 8 | 8 | 8 | 1-3300 | 1-3300 |  |  |  |  |  |  |  |
| 1-3260 |  | TRENCH CONDUIT, MAD & 1ST NE CORNER | 1d | 2023-06-19 A | 2023-06-19 A | 1-3255 | 100% |  |  |  |  | MBRT NEW [8 h] | 8 | 8 | 8 | 1-3260 | 1-3260 | EA3 | ZONE-1 | 01 | NORTH | SCL-FC |  |  |
| 1-3305 |  | DSC 530 - Unknown Unloacted Conduits | 3d | 2023-06-19 A | 2023-06-21 A | 1-3300 | 100% |  |  |  |  | MBRT DSC [24 h] | 24 | 24 | 24 | 1-3305 | 1-3305 |  |  |  |  |  |  |  |
| 1-3265 |  | INST ELECTRICAL MAD & 1ST NE CORNER | 6d | 2023-06-22 A | 2023-06-29 A | 1-3255 SS, 1-3260, 1-3305 | 100% |  |  |  |  | MBRT NEW [48 h] | 48 | 48 | 48 | 1-3265 | 1-3265 | ELECRICAL SUB | ZONE-1 | 01 | NORTH |  | ELECTRICAL |  |
| 1-3270 |  | GRADE SIDEWALK, MAD & 1ST NE CORNER | 1d | 2023-06-30 A | 2023-06-30 A | 1-3265, 1-3260 | 100% |  |  |  |  | MBRT NEW [8 h] | 8 | 8 | 8 | 1-3270 | 1-3270 | EA3 | ZONE-1 | 01 | NORTH | SCL-FC |  | SIDEWALKS |
| 1-3275 |  | POUR CURB RAMPS, MAD & 1ST NE CORNER | 2d | 2023-07-03 A | 2023-07-05 A | 1-3270 | 100% |  |  |  |  | MBRT NEW [16 h] | 16 | 16 | 16 | 1-3275 | 1-3275 | COM | ZONE-1 | 01 | NORTH | SCL-FC |  |  |
| 1-3280 |  | POUR SIDEWALK, MAD & 1ST NE CORNER | 1d | 2023-07-06 A | 2023-07-06 A | 1-3275 | 100% |  |  |  |  | MBRT NEW [8 h] | 8 | 8 | 8 | 1-3280 | 1-3280 | COM | ZONE-1 | 01 | NORTH | SCL-FC |  |  |
|  | 43 | **MADISON AND 1ST SE CORNER** |  | 2023-08-16 | 2024-04-04 |  |  |  |  |  |  |  |  |  |  |  |  |  |  |  |  |  |  |  |
| 1-0663 |  | REMOVE BRICK, MAD AND 1ST SE CORNER | 1d | 2023-08-16 A | 2023-08-18 A | 1-0214, 1-0657 | 100% | 2023-08-14 | 2023-08-14 |  |  | MBRT BASE [24 h] | 24 | 24 | 24 | 1-0663 | 1-0663 | EA3 | ZONE-1 | 01 | SOUTH | SCL-FC |  |  |
| 1-0678 |  | DSC 589 Non Standard MH Adjustment/SCL Vault | 123d | 2023-08-16 A | 2024-02-13 A | 1-0663 SS | 100% | 2023-08-14 | 2024-02-09 |  |  | MBRT DSC [984 h] | 984 | 984 | 984 |  |  |  |  |  |  |  |  |  |
| 1-0683 |  | DSC 593 SEC 1st and Mad Unknown Unlocated Conduits | 122d | 2023-08-17 A | 2024-02-13 A | 1-0663 SS, 1-0678 SS+1d | 100% | 2023-08-15 | 2024-02-09 |  |  | MBRT DSC [976 h] | 976 | 976 | 976 |  |  |  |  |  |  |  |  |  |
| 1-0688 |  | DSC 592 Concrete Cast Into SCL HH | 121d | 2023-08-18 A | 2024-02-13 A | 1-0663 SS, 1-0683 SS+1d | 100% | 2023-08-16 | 2024-02-09 |  |  | MBRT DSC [968 h] | 968 | 968 | 968 |  |  |  |  |  |  |  |  |  |
| 1-0664 |  | INST ELLECTRICAL, MAD & 1ST SE CORNER | 2d | 2024-02-14 A | 2024-02-20 A | 1-0663, 1-0688, 1-0683, 1-0678 | 100% | 2024-02-15 | 2024-02-16 |  |  | MBRT BASE [32 h] | 32 | 32 | 32 | 1-0664 | 1-0664 | ELECRICAL SUB | ZONE-1 | 01 | SOUTH | SCL-FC |  |  |
| 1-0665 |  | POUR CURB RAMP, MAD & 1ST SE CORNER | 1d | 2024-02-21 A | 2024-02-21 A | 1-0664 | 100% | 2024-02-20 | 2024-02-20 |  |  | MBRT BASE [8 h] | 8 | 8 | 8 | 1-0665 | 1-0665 | COM | ZONE-1 | 01 | SOUTH | SCL-FC |  |  |
| 1-0666 |  | INST BRICK PAVERS, MAD & 1ST SE CORNER | 3d | 2024-04-02 | 2024-04-04 | 1-0665 |  |  |  | -99d | 3d | MBRT BASE [24 h] | 24 |  | 24 | 1-0666 | 1-0666 | COM | ZONE-1 | 01 | SOUTH | SCL-FC |  |  |

| ID | WBS | Activity | Duration | Start | Finish | Predecessors | Complete | Remaining | Planned start | Planned finish | Total float | Free float | Resources | Cost | Actual cost | user_number6 | user_text2 | MBRT-ZONE | MBRT-LOCATION | MBRT-SIDE | MBRT-DELAY | MBRT-TYPE | MBRT-SCOPE | user_text10 | user_text8 |
| --- | --- | --- | --- | --- | --- | --- | --- | --- | --- | --- | --- | --- | --- | --- | --- | --- | --- | --- | --- | --- | --- | --- | --- | --- | --- |
|  | 11 | **MADISON 1ST TO 2ND NORTH SIDE** |  | 2021-11-01 | 2022-06-03 |  |  |  |  |  |  |  |  |  |  |  |  |  |  |  |  |  |  |  |  |
| PCO018.01 |  | DSC 11-ITS Conflict Madison and 2nd NW Corner | 5d | 2021-11-01 A | 2022-06-03 A | MS-0025 | 100% |  | 2023-02-27 | 2023-03-03 |  |  | MBRT DSC [1168 h] | 1,168 | 1,168 | 1168 |  |  |  |  |  |  |  |  |  |
| 1-0492 |  | REM SIDEWALK, MAD 1ST TO 2ND NORTH SIDE | 1d | 2022-03-21 A | 2022-03-22 A | 1-0137 | 100% |  | 2022-07-11 | 2022-07-11 |  |  | MBRT BASE [16 h] | 16 | 16 | 16 | EA3 | ZONE-1 | 01 | NORTH | SCL-FC |  |  |  |  |
| 1-0493 |  | TRENCH CONUIT, MAD 1ST TO 2ND NORTH SIDE | 1d | 2022-03-22 A | 2022-03-22 A | 1-0492 | 100% |  | 2022-07-12 | 2022-07-12 |  |  | MBRT BASE [8 h] | 8 | 8 | 8 | EA3 | ZONE-1 | 01 | NORTH | SCL-FC |  |  |  |  |
| 1-0494 |  | INST CONDUIT, MAD 1ST TO 2ND NORTH SIDE | 1d | 2022-03-22 A | 2022-03-22 A | 1-0493 SS | 100% |  | 2022-07-12 | 2022-07-12 |  |  | MBRT BASE [8 h] | 8 | 8 | 8 | ELECRICAL SUB | ZONE-1 | 01 | NORTH | SCL-FC | ELECTRICAL |  |  |  |
| 1-0495 |  | GRADE SIDEWALK, MAD 1ST TO 2ND NORTH SIDE | 1d | 2022-03-23 A | 2022-03-23 A | 1-0494 | 100% |  | 2022-07-13 | 2022-07-13 |  |  | MBRT BASE [8 h] | 8 | 8 | 8 | EA3 | ZONE-1 | 01 | NORTH | SCL-FC |  | SIDEWALKS |  |  |
| 1-0496 |  | POUR SIDEWALK, MAD 1ST TO 2ND NORTH SIDE | 3d | 2022-03-24 A | 2022-03-28 A | 1-0495 | 100% |  | 2022-07-14 | 2022-07-18 |  |  | MBRT BASE [24 h] | 24 | 24 | 24 | COM | ZONE-1 | 01 | NORTH |  |  |  |  |  |
|  | 44 | **MADISON AND 2ND SW CORNER** |  | 2022-10-03 | 2024-04-10 |  |  |  |  |  |  |  |  |  |  |  |  |  |  |  |  |  |  |  |  |
| 1-0668 |  | REM SIDEWALK, MAD & 2ND SW CORNER | 1d | 2022-10-03 A | 2022-10-03 A | 1-0496 | 100% |  | 2022-12-01 | 2022-12-01 |  |  | MBRT BASE [8 h] | 8 | 8 | 8 | EA3 | ZONE-1 | 02 | SOUTH | SCL-FC |  |  |  |  |
| 1-1290 |  | DSC; VAULT LID | 30d | 2022-10-04 A | 2023-11-06 A | 1-0668 | 100% |  | 2022-12-02 | 2023-01-17 |  |  | MBRT DSC [2200 h] | 2,200 | 2,200 | 2200 | ELECRICAL SUB | ZONE-1 | 02 | SOUTH | SCL-FC | ELECTRICAL |  | 1-1290 | 1-1290 |
| 1-0739 |  | DSC 647 UNKNOWN POLE FOUNDATION | 1d | 2023-11-06 A | 2023-11-06 A | MS-0025 | 100% |  | 2023-11-02 | 2023-11-02 |  |  | MBRT DSC [8 h] | 8 | 8 | 8 |  |  |  |  |  |  |  |  |  |
| 1-0759 |  | DELAY AWAITING SCL TO REMOVE WIRE FROM VAULT | 0d | 2023-11-07 A | 2023-12-07 A | 1-0739 | 100% |  | 2023-11-02 | 2023-11-02 |  |  | MBRT NEW |  |  | 152 |  |  |  |  |  |  |  |  |  |
| 1-0794 |  | ADDED CIVIL WORK DUE TO VAULT LID DSC | 16d | 2023-12-11 A | 2024-01-03 A | 1-0759 FS+1d | 100% |  |  |  |  |  | MBRT DSC [128 h] | 128 | 128 | 128 |  |  |  |  |  |  |  |  |  |
| DSC-680 |  | DSC 680 DC WONT WORK AS EXISTING CONDUITS ARE BAD | 50d | 2024-01-04 A | 2024-02-23 A | 1-0794 | 100% |  | 2023-12-11 | 2024-02-22 |  |  | MBRT DSC [400 h] | 400 |  | 400 |  |  |  |  |  |  |  |  |  |
| 1-0669 |  | INST CONDUIT, MAD & 2ND SW CORNER | 15d | 2024-02-26 A | 2024-03-08 A | 1-0668, 1-1290, 1-0794, DSC-680 SS, DSC-680 FF | 100% |  | 2024-02-20 | 2024-03-11 |  |  | MBRT BASE [40 h] | 40 | 120 | 40 | ELECRICAL SUB | ZONE-1 | 02 | SOUTH | SCL-FC | ELECTRICAL |  | 1-0669 | 1-0669 |
| DSC-720 |  | DSC 720 NWC and 2nd Madison Conduit conflict | 5d | 2024-03-01 A | 2024-04-08 | 1-0669 SS |  | 5d | 2024-03-04 | 2024-03-08 | -102d | 0d |  |  |  |  |  |  |  |  |  |  |  |  |  |
| DSC-729 |  | DSC 729 SWC 2nd and madison duct bank conflcit | 5d | 2024-03-01 A | 2024-04-08 | 1-0669 SS |  | 5d | 2024-03-04 | 2024-03-08 | -101d | 1d |  |  |  |  |  |  |  |  |  |  |  |  |  |
| DSC-737 |  | DSC 737 SWC 2nd Cast in Place HH riser | 5d | 2024-03-01 A | 2024-04-08 | 1-0669 SS |  | 5d | 2024-03-04 | 2024-03-08 | -102d | 0d |  |  |  |  |  |  |  |  |  |  |  |  |  |
| DSC-UPO |  | DSC UPO 2nd and Madison delay. SDOT directed no UPO | 5d | 2024-03-01 A | 2024-04-08 | 1-0669 SS |  | 5d | 2024-03-04 | 2024-03-08 | -102d | 0d |  |  |  |  |  |  |  |  |  |  |  |  |  |
| DSC-717 |  | DSC 717 SWC 2nd unknown steel line | 5d | 2024-03-04 A | 2024-04-08 | 1-0669 SS |  | 5d | 2024-03-04 | 2024-03-08 | -102d | 0d |  |  |  |  |  |  |  |  |  |  |  |  |  |
| 1-0670 |  | POUR CURB RAMP, MAD & 2ND SW CORNER | 1d | 2024-04-09 | 2024-04-09 | 1-0669, DSC-717, DSC-UPO, DSC-737, DSC-729 FF, DSC-720 |  |  |  |  | -102d | 0d | MBRT BASE [8 h] | 8 |  | 8 | COM | ZONE-1 | 02 | SOUTH | SCL-FC |  |  | 1-0670 | 1-0670 |
| 1-0671 |  | POUR SIDEWALK, MAD & 2ND SW CORNER | 1d | 2024-04-10 | 2024-04-10 | 1-0670, 1-0490, 1-0666 |  |  |  |  | -102d | 0d | MBRT BASE [8 h] | 8 |  | 8 | COM | ZONE-1 | 02 | SOUTH | SCL-FC |  |  | 1-0671 | 1-0671 |
|  | 12 | **MADISON AND 2ND TO 3RD NORTH SIDE** |  | 2022-03-28 | 2023-05-31 |  |  |  |  |  |  |  |  |  |  |  |  |  |  |  |  |  |  |  |  |
| 1-0498 |  | REM SIDEWALK, MAD & 2ND TO 3RD NORTH SIDE | 1d | 2022-03-28 A | 2022-03-28 A | 1-0495 | 100% |  | 2022-07-14 | 2022-07-14 |  |  | MBRT BASE [8 h] | 8 | 8 | 8 | EA3 | ZONE-1 | 02 | NORTH | SCL-FC |  |  |  |  |
| 1-0499 |  | TRENCH CONDUIT, MAD & 2ND TO 3RD NORTH SIDE | 2d | 2022-03-29 A | 2022-03-30 A | 1-0498 | 100% |  | 2022-07-15 | 2022-07-18 |  |  | MBRT BASE [16 h] | 16 | 16 | 16 | EA3 | ZONE-1 | 02 | NORTH | SCL-FC |  |  |  |  |
| 1-0500 |  | INTALL CONDUIT, MAD & 2ND TO 3RD NORTH SIDE | 2d | 2022-03-29 A | 2022-03-30 A | 1-0499 SS | 100% |  | 2022-07-15 | 2022-07-18 |  |  | MBRT BASE [16 h] | 16 | 16 | 16 | ELECRICAL SUB | ZONE-1 | 02 | NORTH | SCL-FC |  |  |  |  |
| 1-0501 |  | FORM FOUNDATIONS, MAD & 2ND TO 3RD NORTH SIDE | 1d | 2022-03-31 A | 2022-04-05 A | 1-0500 | 100% |  | 2022-07-19 | 2022-07-19 |  |  | MBRT BASE [32 h] | 32 | 32 | 32 | COM | ZONE-1 | 02 | NORTH | SCL-FC |  |  |  |  |
| 1-0502 |  | POUR FOUNDATIONS, MAD & 2ND TO 3RD NORTH SIDE | 2d | 2022-04-06 A | 2022-04-07 A | 1-0501 | 100% |  | 2022-07-20 | 2022-07-21 |  |  | MBRT BASE [16 h] | 16 | 16 | 16 | COM | ZONE-1 | 02 | NORTH | SCL-FC |  |  |  |  |
| 1-0503 |  | GRADE SIDEWALK, MAD & 2ND TO 3RD NORTH SIDE | 1d | 2022-04-22 A | 2022-04-22 A | 1-0502 | 100% |  | 2022-07-22 | 2022-07-22 |  |  | MBRT BASE [8 h] | 8 | 8 | 8 | COM | ZONE-1 | 02 | NORTH | SCL-FC |  | SIDEWALKS |  |  |
| 1-0504 |  | POUR SIDEWALK, MAD & 2ND TO 3RD NORTH SIDE | 5d | 2022-04-25 A | 2022-06-01 A | 1-0503, 1-0496 | 100% |  | 2022-07-25 | 2022-07-29 |  |  | MBRT BASE [216 h] | 216 | 216 | 216 | COM | ZONE-1 | 02 | NORTH | SCL-FC |  |  |  |  |
| 1-0505 |  | POUR STATION STEM WALL, MAD & 2ND TO 3RD NORTH SIDE | 1d | 2022-04-28 A | 2022-04-28 A | 1-0504 | 100% |  | 2022-07-05 | 2022-07-05 |  |  | MBRT BASE [8 h] | 8 | 8 | 8 | COM | ZONE-1 | 02 | NORTH | SCL-FC |  |  |  |  |
| 1-0506 |  | INSTALL WHEEL GUIDES | 1d | 2023-05-31 A | 2023-05-31 A | 1-0504, 1-0505 | 100% |  |  |  |  |  | MBRT NEW [8 h] | 8 | 8 | 8 |  |  |  |  |  |  |  | 1-0506 | 1-0506 |

| ID | WBS | Activity | Duration | Start | Finish | Predecessors | Complete | Planned start | Planned finish | Resources | Cost | Actual cost | user_text2 | user_number6 | MBRT-ZONE | MBRT-LOCATION | MBRT-SIDE | MBRT-DELAY | MBRT-TYPE | MBRT-SCOPE | user_text10 | user_text8 |
| --- | --- | --- | --- | --- | --- | --- | --- | --- | --- | --- | --- | --- | --- | --- | --- | --- | --- | --- | --- | --- | --- | --- |
|  | 45 | **MADISON 2ND TO 3RD SOUTH SIDE** |  | 2022-06-09 | 2022-08-09 |  |  |  |  |  |  |  |  |  |  |  |  |  |  |  |  |  |
| 1-0673 |  | REM SIDEWALK, MAD 2ND TO 3RD SOUTH SIDE | 2d | 2022-06-09 A | 2022-06-10 A | 1-0215 | 100% | 2023-04-12 | 2023-04-13 | MBRT BASE [16 h] | 16 | 16 | EA3 | 16 | ZONE-1 | 02 | SOUTH | SCL-FC |  |  |  |  |
| 1-0674 |  | TRENCH CONDUIT, MAD 2ND TO 3RD SOUTH SIDE | 2d | 2022-06-13 A | 2022-06-14 A | 1-0673 | 100% | 2023-04-12 | 2023-04-13 | MBRT BASE [16 h] | 16 | 16 | EA3 | 16 | ZONE-1 | 02 | SOUTH | SCL-FC |  |  |  |  |
| 1-0675 |  | INST CONDUIT, MAD 2ND TO 3RD SOUTH SIDE | 2d | 2022-06-13 A | 2022-06-15 A | 1-0674 SS | 100% | 2023-04-12 | 2023-04-13 | MBRT BASE [24 h] | 24 | 24 | ELECRICAL SUB | 24 | ZONE-1 | 02 | SOUTH | SCL-FC | ELECTRICAL |  |  |  |
| PCO276.01 |  | DSC 202-ITS Conduit SW Corner 3rd and Madison | 5d | 2022-06-14 A | 2022-06-23 A | MS-0025 | 100% | 2023-02-27 | 2023-03-03 | MBRT DSC [56 h] | 56 | 56 |  | 56 |  |  |  |  |  |  |  |  |
| 1-1200 |  | MULTIPLE CONDUIT CONFLICT DSC'S MAD 2ND TO 3RD SOUTH SIDE | 2d | 2022-06-16 A | 2022-06-24 A | 1-0675 | 100% | 2023-04-12 | 2023-04-13 | MBRT DSC [56 h] | 56 | 56 | ELECRICAL SUB | 56 | ZONE-1 | 02 | SOUTH | SCL-FC | ELECTRICAL |  |  |  |
| PCO283.01 |  | DSC 208-Prime - Conduit Depths SW 3rd & Madison | 5d | 2022-06-20 A | 2022-06-26 A | MS-0025 | 100% | 2023-02-27 | 2023-03-03 | MBRT DSC [40 h] | 40 | 40 |  | 40 |  |  |  |  |  |  |  |  |
| 1-0676 |  | GRADE SIDEWALK, MAD 2ND TO 3RD SOUTH SIDE | 1d | 2022-06-28 A | 2022-06-28 A | 1-0675, 1-1200 | 100% | 2023-04-14 | 2023-04-14 | MBRT BASE [8 h] | 8 | 8 | EA3 | 8 | ZONE-1 | 02 | SOUTH | SCL-FC |  | SIDEWALKS |  |  |
| 1-0677 |  | POUR SIDEWALK, MAD 2ND TO 3RD SOUTH SIDE | 5d | 2022-07-01 A | 2022-07-05 A | 1-0676 | 100% | 2022-07-01 | 2022-07-08 | MBRT BASE [16 h] | 16 | 16 | COM | 16 | ZONE-1 | 02 | SOUTH | SCL-FC |  |  |  |  |
| PCO316.01 |  | DSC 233-Duct Bank conflict SE Corner 2nd and Madison | 5d | 2022-07-12 A | 2022-08-09 A | MS-0025 | 100% | 2023-02-27 | 2023-03-03 | MBRT DSC [160 h] | 160 | 160 |  | 160 |  |  |  |  |  |  |  |  |
|  | 13 | **MADISON 3RD TO 4TH NORTH SIDE** |  | 2023-11-14 | 2023-12-15 |  |  |  |  |  |  |  |  |  |  |  |  |  |  |  |  |  |
| 1-0507 |  | REM SIDEWALK, MAD 3RD TO 4TH NORTH SIDE | 2d | 2023-11-14 A | 2023-11-17 A | 1-0129, 1-0503, 1-1420 | 100% | 2023-11-17 | 2023-11-20 | MBRT BASE [32 h] | 32 | 32 | EA3 | 32 | ZONE-1 | 03 | NORTH | SCL-VT |  |  | 1-0507 | 1-0507 |
| 1-0518 |  | DSC 649 EXTRA THICK SIDEWALK | 1d | 2023-11-15 A | 2023-11-15 A | 1-0507 SS+1d | 100% | 2023-11-02 | 2023-11-02 | MBRT DSC [8 h] | 8 | 8 |  | 8 |  |  |  |  |  |  |  |  |
| 1-0533 |  | DSC 650 UNKNOWN UNLOCATED CONDUIT | 2d | 2023-11-15 A | 2023-11-16 A | 1-0518 SS | 100% | 2023-11-02 | 2023-11-03 | MBRT DSC [16 h] | 16 | 16 |  | 16 |  |  |  |  |  |  |  |  |
| 1-0553 |  | DSC 651 NEC 3RD FILLED WITH CDF | 2d | 2023-11-15 A | 2023-11-16 A | 1-0533 SS | 100% | 2023-11-02 | 2023-11-03 | MBRT DSC [16 h] | 16 | 16 |  | 16 |  |  |  |  |  |  |  |  |
| 1-0573 |  | INSTALL ELECTRICAL | 5d | 2023-11-28 A | 2023-12-04 A | 1-0553 | 100% | 2023-11-15 | 2023-11-21 | MBRT NEW [40 h] | 40 | 40 |  | 40 |  |  |  |  |  |  |  |  |
| 1-0508 |  | GRADE SIDEWALK, MAD 3RD TO 4TH NORTH SIDE | 1d | 2023-12-11 A | 2023-12-11 A | 1-0507, 1-0573 | 100% |  |  | MBRT BASE [8 h] | 8 | 8 | EA3 | 8 | ZONE-1 | 03 | NORTH | SCL-VT |  | SIDEWALKS | 1-0508 | 1-0508 |
| 1-0509 |  | POUR SIDEWALK, MAD 3RD TO 4TH NORTH SIDE | 3d | 2023-12-12 A | 2023-12-15 A | 1-0508, 1-0505 | 100% | 2023-12-12 | 2023-12-14 | MBRT BASE [32 h] | 32 | 32 | COM | 32 | ZONE-1 | 03 | NORTH | SCL-FC |  |  | 1-0509 | 1-0509 |
|  | 14 | **MADISON AND 3RD TO 4TH DRIVEWAY** |  | 2023-12-08 | 2023-12-10 |  |  |  |  |  |  |  |  |  |  |  |  |  |  |  |  |  |
| 1-0511 |  | REM SIDEWALK, MAD & 3RD TO 4TH DRIVEWAY | 1d | 2023-12-08 A | 2023-12-08 A | 1-0504 SS | 100% | 2023-11-27 | 2023-11-27 | MBRT BASE [8 h] | 8 | 8 | WEA3 | 8 | ZONE-1 | 03 |  |  |  |  | 1-0511 | 1-0511 |
| 1-0512 |  | POUR CURB RAMP, MAD & 3RD TO 4TH DRIVEWAY | 1d | 2023-12-09 A | 2023-12-10 A | 1-0511 SS | 100% | 2023-11-27 | 2023-11-27 | MBRT BASE |  | 8 | WCOM | 0 | ZONE-1 | 03 |  |  |  |  | 1-0512 | 1-0512 |
| 1-0513 |  | POUR SIDEWALK, MAD & 3RD TO 4TH DRIVEWAY | 1d | 2023-12-09 A | 2023-12-10 A | 1-0512 | 100% | 2023-11-28 | 2023-11-28 | MBRT BASE |  | 8 | WCOM | 0 | ZONE-1 | 03 |  |  |  |  | 1-0513 | 1-0513 |
|  | 46 | **MADISON 3RD TO 4TH SOUTH SIDE** |  | 2023-10-11 | 2023-10-31 |  |  |  |  |  |  |  |  |  |  |  |  |  |  |  |  |  |
| 1-0679 |  | REM SIDEWALK, MAD 3RD TO 4TH SOUTH SIDE | 1d | 2023-10-11 A | 2023-10-17 A | 1-0677, 1-0222 | 100% | 2023-10-11 | 2023-10-11 | MBRT BASE [40 h] | 40 | 40 | EA3 | 40 | ZONE-1 | 03 | SOUTH | SCL-FC |  |  | 1-0679 | 1-0679 |
| 1-0680 |  | TRENCH CONDUIT, MAD 3RD TO 4TH SOUTH SIDE | 2d | 2023-10-12 A | 2023-10-17 A | 1-0679 | 100% | 2023-10-25 | 2023-10-26 | MBRT BASE [32 h] | 32 | 32 | EA3 | 32 | ZONE-1 | 03 | SOUTH | SCL-FC |  |  | 1-0680 | 1-0680 |
| 1-0681 |  | INST CONDUIT, MAD 3RD TO 4TH SOUTH SIDE | 2d | 2023-10-12 A | 2023-10-20 A | 1-0680 SS | 100% | 2023-10-25 | 2023-10-26 | MBRT BASE [56 h] | 56 | 56 | ELECRICAL SUB | 56 | ZONE-1 | 03 | SOUTH | SCL-FC | ELECTRICAL |  | 1-0681 | 1-0681 |
| 1-0709 |  | DSC 583 UNKNOWN UTILITIES | 2d | 2023-10-13 A | 2023-10-16 A | 1-0680 SS | 100% | 2023-10-02 | 2023-10-03 | MBRT DSC [16 h] | 16 | 16 |  | 16 |  |  |  |  |  |  |  |  |
| 1-0682 |  | POUR SIDEWALK, MAD 3RD TO 4TH SOUTH SIDE | 4d | 2023-10-20 A | 2023-10-31 A | 1-0681, 1-0709 | 100% | 2023-10-27 | 2023-11-01 | MBRT BASE [64 h] | 64 | 64 | COM | 64 | ZONE-1 | 03 | SOUTH | SCL-FC |  |  | 1-0682 | 1-0682 |

| ID | WBS | Activity | Duration | Start | Finish | Predecessors | Complete | Planned start | Planned finish | Resources | Cost | Actual cost | user_text2 | user_number6 | user_text10 | user_text8 | MBRT-ZONE | MBRT-LOCATION | MBRT-SIDE | MBRT-DELAY | MBRT-TYPE | MBRT-SCOPE |
| --- | --- | --- | --- | --- | --- | --- | --- | --- | --- | --- | --- | --- | --- | --- | --- | --- | --- | --- | --- | --- | --- | --- |
|  | 47 | **MADISON AND 4TH SE CORNER** |  | 2023-10-27 | 2023-11-09 |  |  |  |  |  |  |  |  |  |  |  |  |  |  |  |  |  |
| 1-0684 |  | REM SIDEWALK, MAD & 4TH SE CORNER | 2d | 2023-10-27 A | 2023-10-27 A | 1-0682 SS | 100% | 2023-11-02 | 2023-11-03 | MBRT BASE [8 h] | 8 | 8 | EA3 | 8 | 1-0684 | 1-0684 | ZONE-1 | 04 | SOUTH | SCL-FC |  |  |
| 1-0685 |  | INST CONDUIT, MAD & 4TH SE CORNER | 2d | 2023-10-30 A | 2023-10-30 A | 1-0684 | 100% | 2023-11-06 | 2023-11-07 | MBRT BASE [8 h] | 8 | 8 | ELECRICAL SUB | 8 | 1-0685 | 1-0685 | ZONE-1 | 04 | SOUTH | SCL-FC | ELECTRICAL |  |
| 1-0686 |  | POUR CURB RAMP, MAD & 4TH SE CORNER | 2d | 2023-10-31 A | 2023-10-31 A | 1-0685 | 100% | 2023-11-08 | 2023-11-09 | MBRT BASE [8 h] | 8 | 8 | COM | 8 | 1-0686 | 1-0686 | ZONE-1 | 04 | SOUTH | SCL-FC |  |  |
| 1-0687 |  | POUR SIDEWALK, MAD & 4TH SE CORNER | 1d | 2023-11-07 A | 2023-11-09 A | 1-0686, 1-0247 | 100% | 2023-11-02 | 2023-11-02 | MBRT BASE [24 h] | 24 | 24 | COM | 24 | 1-0687 | 1-0687 | ZONE-1 | 04 | SOUTH | SCL-FC |  |  |
|  | 15 | **MADISON AND 5TH NW CORNER** |  | 2023-01-21 | 2023-02-07 |  |  |  |  |  |  |  |  |  |  |  |  |  |  |  |  |  |
| PCO530.01 |  | DSC 376-NE Madison and 5th Streetlight pole | 5d | 2023-01-21 A | 2023-01-24 A | MS-0025 | 100% | 2023-02-27 | 2023-03-03 | MBRT DSC [8 h] | 8 | 8 |  | 8 |  |  |  |  |  |  |  |  |
| 1-0515 |  | REM SIDEWALK, MAD & 5TH NW CORNER | 1d | 2023-01-25 A | 2023-01-25 A | 1-0501 | 100% | 2023-02-01 | 2023-02-01 | MBRT BASE [8 h] | 8 | 8 | EA3 | 8 |  |  | ZONE-1 | 05 | NORTH | SCL-FC |  |  |
| PCO542.01 |  | DSC 382-Drainpipe Conflict at NW Corner 5th and Mad | 5d | 2023-01-26 A | 2023-01-27 A | MS-0025 | 100% | 2023-02-27 | 2023-03-03 | MBRT DSC [8 h] | 8 | 8 |  | 8 |  |  |  |  |  |  |  |  |
| 1-0516 |  | GRADE SIDEWALK, MAD & 5TH NW CORNER | 1d | 2023-01-26 A | 2023-01-26 A | 1-0515 | 100% | 2023-02-02 | 2023-02-02 | MBRT BASE [8 h] | 8 | 8 | EA3 | 8 |  |  | ZONE-1 | 05 | NORTH | SCL-FC |  | SIDEWALKS |
| 1-1345 |  | SCL VAULT LID ADJUTMENT EXTRA WORK, MAD & 5TH NW CORNER | 1d | 2023-01-27 A | 2023-02-03 A | 1-0516 | 100% | 2023-02-02 | 2023-02-02 | MBRT NEW [8 h] | 8 | 48 | EA3 | 48 |  |  | ZONE-1 | 05 | NORTH | SCL-FC |  | SIDEWALKS |
| 1-0517 |  | POUR SIDEWALK, MAD AND 5TH NW CORNER | 3d | 2023-02-06 A | 2023-02-07 A | 1-0516, 1-1345 | 100% | 2023-02-01 | 2023-02-03 | MBRT BASE [16 h] | 16 | 16 | COM | 16 |  |  | ZONE-1 | 05 | NORTH |  |  |  |
|  | 64 | **MADISON AND 5TH NE CORNER** |  | 2022-08-02 | 2023-11-14 |  |  |  |  |  |  |  |  |  |  |  |  |  |  |  |  |  |
| PCO530.1 |  | MULTIPLE DSC'S | 5d | 2022-08-02 A | 2023-06-30 A | 1-0519 | 100% | 2023-02-27 | 2023-03-03 | MBRT DSC [1840 h] | 1,840 | 1,840 |  | 1840 | PCO530.1 | PCO530.1 |  |  |  |  |  |  |
| 1-3025 |  | INSTALL FOUNDATION DESIGN CHANGE | 20d | 2023-07-03 A | 2023-08-14 A | PCO530.1 | 100% | 2023-07-03 | 2023-07-31 | MBRT NEW [160 h] | 160 | 240 | EA3 | 240 | 1-3025 | 1-3025 | ZONE-1 | 05 | NORTH | SCL-FC |  |  |
| 1-3030 |  | TRENCH CONDUIT, MAD & 5TH NE CORNER | 1d | 2023-10-19 A | 2023-10-24 A | 1-3025, 1-0222 | 100% | 2023-10-02 | 2023-10-02 | MBRT NEW [8 h] | 8 | 32 | EA3 | 32 | 1-3030 | 1-3030 | ZONE-1 | 05 | NORTH | SCL-FC |  |  |
| 1-3035 |  | INSTALL CONDUIT, MAD & 5TH NE CORNER | 1d | 2023-10-25 A | 2023-10-30 A | 1-3030 | 100% | 2023-10-03 | 2023-10-03 | MBRT NEW [8 h] | 8 | 32 | EA3 | 32 | 1-3035 | 1-3035 | ZONE-1 | 05 | NORTH | SCL-FC |  |  |
| 1-3010 |  | GRADE SIDEWALK, MAD & 5TH NE CORNER | 1d | 2023-11-08 A | 2023-11-08 A | 1-3035 | 100% | 2023-11-02 | 2023-11-02 | MBRT NEW [8 h] | 8 | 8 | EA3 | 8 | 1-3010 | 1-3010 | ZONE-1 | 05 | NORTH | SCL-FC |  | SIDEWALKS |
| 1-3040 |  | POUR CURB RAMPS, MAD AND 5TH NE CORNER | 3d | 2023-11-09 A | 2023-11-09 A | 1-3010 | 100% | 2023-11-03 | 2023-11-07 | MBRT NEW [24 h] | 24 | 8 | COM | 8 | 1-3040 | 1-3040 | ZONE-1 | 05 | NORTH |  |  |  |
| 1-3015 |  | POUR SIDEWALK, MAD AND 5TH NE CORNER | 1d | 2023-11-10 A | 2023-11-14 A | 1-3010, 1-3040, 1-0687 | 100% | 2023-11-08 | 2023-11-08 | MBRT NEW [8 h] | 8 | 16 | COM | 16 | 1-3015 | 1-3015 | ZONE-1 | 05 | NORTH |  |  |  |
|  | 48 | **MADISON AND 5TH SW CORNER** |  | 2023-02-13 | 2023-02-21 |  |  |  |  |  |  |  |  |  |  |  |  |  |  |  |  |  |
| 1-0689 |  | REM SIDEWALK, MAD & 5TH SW CORNER | 1d | 2023-02-13 A | 2023-02-13 A | 1-0378 | 100% | 2023-03-21 | 2023-03-21 | MBRT BASE [8 h] | 8 | 8 | EA3 | 8 |  |  | ZONE-1 | 05 | SOUTH | SCL-FC |  |  |
| 1-0690 |  | INST CONDUIT, MAD & 5TH SW CORNER | 1d | 2023-02-14 A | 2023-02-14 A | 1-0689 | 100% | 2023-03-22 | 2023-03-22 | MBRT BASE [8 h] | 8 | 8 | ELECRICAL SUB | 8 |  |  | ZONE-1 | 05 | SOUTH | SCL-FC | ELECTRICAL |  |
| 1-0691 |  | POUR CURB RAMP, MAD & 5TH SW CORNER | 1d | 2023-02-20 A | 2023-02-20 A | 1-0690 | 100% | 2023-03-23 | 2023-03-23 | MBRT BASE |  | 8 | COM | 0 |  |  | ZONE-1 | 05 | SOUTH | SCL-FC |  |  |
| 1-0692 |  | POUR SIDEWALK, MAD & 5TH SW CORNER | 1d | 2023-02-21 A | 2023-02-21 A | 1-0691 | 100% | 2023-03-24 | 2023-03-24 | MBRT BASE [8 h] | 8 | 8 | COM | 8 |  |  | ZONE-1 | 05 | SOUTH | SCL-FC |  |  |

| ID | WBS | Activity | Duration | Start | Finish | Predecessors | Complete | Planned start | Planned finish | Resources | Cost | Actual cost | user_text2 | user_number6 | user_text10 | user_text8 | MBRT-ZONE | MBRT-LOCATION | MBRT-SIDE | MBRT-DELAY | MBRT-TYPE | MBRT-SCOPE |
| --- | --- | --- | --- | --- | --- | --- | --- | --- | --- | --- | --- | --- | --- | --- | --- | --- | --- | --- | --- | --- | --- | --- |
|  | 49 | **MADISON AND 5TH SE CORNER** |  | 2023-10-24 | 2023-11-16 |  |  |  |  |  |  |  |  |  |  |  |  |  |  |  |  |  |
| 1-0694 |  | REMOVE SIDEWALK, MAD AND 5 SE CORNER | 1d | 2023-10-24 A | 2023-10-26 A | 1-0692, 1-0222 | 100% | 2023-10-11 | 2023-10-11 | MBRT BASE [24 h] | 24 | 24 | EA3 | 24 | 1-0694 | 1-0694 | ZONE-1 | 05 | SOUTH | SCL-FC |  |  |
| 1-0695 |  | INST CONDUIT, MAD AND 5 SE CORNER | 1d | 2023-10-27 A | 2023-11-13 A | 1-0694 | 100% | 2023-10-12 | 2023-10-12 | MBRT BASE [88 h] | 88 | 88 | ELECRICAL SUB | 88 | 1-0695 | 1-0695 | ZONE-1 | 05 | SOUTH | SCL-FC | ELECTRICAL |  |
| 1-0696 |  | POUR CURB RAMP, MAD AND 5 SE CORNER | 1d | 2023-11-14 A | 2023-11-15 A | 1-0695 | 100% | 2023-11-03 | 2023-11-03 | MBRT BASE [16 h] | 16 | 16 | COM | 16 | 1-0696 | 1-0696 | ZONE-1 | 05 | SOUTH | SCL-FC |  |  |
| 1-0697 |  | POUR SIDEWALKS, MAD AND 5 SE CORNER | 1d | 2023-11-16 A | 2023-11-16 A | 1-0696 | 100% | 2023-11-06 | 2023-11-06 | MBRT BASE [8 h] | 8 | 8 | COM | 8 | 1-0697 | 1-0697 | ZONE-1 | 05 | SOUTH | SCL-FC |  |  |
|  | 16 | **MADISON 5TH TO 6TH NORTH SIDE - BETWEEN CORNERS** |  | 2022-06-28 | 2023-06-08 |  |  |  |  |  |  |  |  |  |  |  |  |  |  |  |  |  |
| 1-0519 |  | REM SIDEWALK, MAD 5TH TO 6TH NORTH SIDE | 1d | 2022-06-28 A | 2022-06-28 A | 1-0129 | 100% | 2022-09-07 | 2022-09-07 | MBRT BASE [8 h] | 8 | 8 | EA3 | 8 |  |  | ZONE-1 | 05 | NORTH | SCL-FC |  |  |
| 1-0520 |  | TRENCH CONDUIT, MAD 5TH TO 6TH NORTH SIDE | 2d | 2022-06-29 A | 2022-06-30 A | 1-0519 | 100% | 2022-09-07 | 2022-09-08 | MBRT BASE [16 h] | 16 | 16 | EA3 | 16 |  |  | ZONE-1 | 05 | NORTH | SCL-FC |  |  |
| 1-0521 |  | INTALL CONDUIT, MAD 5TH TO 6TH NORTH SIDE | 2d | 2022-07-01 A | 2022-07-05 A | 1-0520 | 100% |  |  | MBRT BASE [16 h] | 16 | 16 | ELECRICAL SUB | 16 |  |  | ZONE-1 | 05 | NORTH | SCL-FC |  |  |
| PCO301.01 |  | DSC 222-CDF and unknown conduit Madison 5th to 6th | 5d | 2022-07-05 A | 2022-07-07 A | MS-0025 | 100% | 2023-02-27 | 2023-03-03 | MBRT DSC [16 h] | 16 | 16 |  | 16 |  |  |  |  |  |  |  |  |
| 1-0522 |  | FORM FOUNDATIONS, MAD 5TH TO 6TH NORTH SIDE | 1d | 2022-07-05 A | 2022-07-06 A | 1-0521 | 100% | 2022-07-06 | 2022-07-06 | MBRT BASE [16 h] | 16 | 16 | COM | 16 |  |  | ZONE-1 | 05 | NORTH | SCL-FC |  |  |
| 1-0523 |  | POUR FOUNDATIONS, MAD 5TH TO 6TH NORTH SIDE | 2d | 2022-07-12 A | 2022-07-13 A | 1-0522 | 100% | 2022-07-07 | 2022-07-08 | MBRT BASE [16 h] | 16 | 16 | COM | 16 |  |  | ZONE-1 | 05 | NORTH | SCL-FC |  |  |
| 1-0524 |  | GRADE SIDEWALK, MAD 5TH TO 6TH NORTH SIDE | 1d | 2022-07-19 A | 2022-07-25 A | 1-0523 | 100% | 2022-07-06 | 2022-07-06 | MBRT BASE [40 h] | 40 | 40 | COM | 40 |  |  | ZONE-1 | 05 | NORTH | SCL-FC |  | SIDEWALKS |
| PCO328.01 |  | DSC 242-5th type 5 HH Prime | 5d | 2022-07-22 A | 2022-08-24 A | MS-0025 | 100% | 2023-02-27 | 2023-03-03 | MBRT DSC [184 h] | 184 | 184 |  | 184 |  |  |  |  |  |  |  |  |
| 1-0525 |  | POUR SIDEWALK, MAD 5TH TO 6TH NORTH SIDE | 5d | 2022-07-28 A | 2022-08-26 A | 1-0524 | 100% | 2022-08-26 | 2022-09-01 | MBRT BASE [176 h] | 176 | 176 | COM | 176 |  |  | ZONE-1 | 05 | NORTH |  |  |  |
| 1-0526 |  | POUR STATION STEM WALL, MAD 5TH TO 6TH NORTH SIDE | 1d | 2022-08-15 A | 2022-08-15 A | 1-0524 | 100% | 2022-08-01 | 2022-08-01 | MBRT BASE [8 h] | 8 | 8 | COM | 8 |  |  | ZONE-1 | 05 | NORTH |  |  |  |
| PCO540.01 |  | DSC 380-NW Corner 6th and Mad Existing Type 5 Conduit Conflict | 5d | 2023-01-25 A | 2023-01-28 A | MS-0025 | 100% | 2023-02-27 | 2023-03-03 | MBRT DSC [24 h] | 24 | 24 |  | 24 |  |  |  |  |  |  |  |  |
| PCO558.01 |  | DSC 394-SCL Sevice Conflicts NW 6th and Madison | 5d | 2023-02-10 A | 2023-06-06 A | MS-0025 | 100% | 2023-02-27 | 2023-03-03 | MBRT DSC [648 h] | 648 | 648 |  | 648 | PCO558.01 | PCO558.01 |  |  |  |  |  |  |
| 1-2935 |  | COMPLETE SIDEWALK AFTER DSC 394 | 1d | 2023-06-07 A | 2023-06-07 A | PCO558.01 | 100% |  |  | MBRT DSC [8 h] | 8 | 8 |  | 8 | 1-2935 | 1-2935 |  |  |  |  |  |  |
| 1-0565 |  | INSTALL WHEEL GUIDES | 1d | 2023-06-08 A | 2023-06-08 A | 1-0526, 1-0525, 1-2935 | 100% |  |  | MBRT NEW [8 h] | 8 | 8 |  | 8 | 1-0565 | 1-0565 |  |  |  |  |  |  |
|  | 50 | **MADISON AND 6TH SW CORNER** |  | 2023-12-07 | 2024-02-01 |  |  |  |  |  |  |  |  |  |  |  |  |  |  |  |  |  |
| 1-0699 |  | REM SIDEWALK, MAD & 6TH SW CORNER | 1d | 2023-12-07 A | 2023-12-08 A | 1-0697, 1-0378, 1-0382 | 100% | 2023-11-07 | 2023-11-07 | MBRT BASE [16 h] | 16 | 16 |  | 16 | 1-0699 | 1-0699 | ZONE-1 | 06 | SOUTH | SCL-FC |  |  |
| 1-0834 |  | DSC 665 CDF OBSTRUCTION | 2d | 2023-12-12 A | 2023-12-13 A | 1-0699 | 100% | 2023-12-11 | 2023-12-12 | MBRT DSC [16 h] | 16 | 16 |  | 16 |  |  |  |  |  |  |  |  |
| 1-0700 |  | INST CONDUIT, MAD & 6TH SW CORNER | 1d | 2023-12-14 A | 2023-12-22 A | 1-0699, 1-0834, 1-0844 FF | 100% | 2023-12-12 | 2023-12-12 | MBRT BASE [56 h] | 56 | 56 |  | 56 | 1-0700 | 1-0700 | ZONE-1 | 06 | SOUTH | SCL-FC | ELECTRICAL |  |
| 1-0844 |  | DSC 671 UNKNOWN CONDUIT | 4d | 2023-12-19 A | 2023-12-22 A | 1-0834 | 100% | 2023-12-11 | 2023-12-14 | MBRT DSC [32 h] | 32 | 32 |  | 32 |  |  |  |  |  |  |  |  |
| 1-0701 |  | POUR CURB RAMP, MAD & 6TH SW CORNER | 1d | 2023-12-26 A | 2023-12-26 A | 1-0700 | 100% | 2023-12-13 | 2023-12-13 | MBRT BASE [8 h] | 8 | 8 |  | 8 | 1-0701 | 1-0701 | ZONE-1 | 06 | SOUTH |  |  |  |
| 1-1004 |  | DELAY AWAITING CITY DECISION TO MATCH EXISTING SIDEWALK | 0d | 2023-12-27 A | 2024-01-31 A | 1-0701 | 100% | 2023-12-11 | 2023-12-11 | MBRT NEW |  |  |  | 192 |  |  |  |  |  |  |  |  |
| 1-0702 |  | POUR SIDEWALK, MAD & 6TH SW CORNER | 1d | 2024-02-01 A | 2024-02-01 A | 1-0701, 1-3015, 1-0509, 1-1004 | 100% | 2023-12-15 | 2023-12-15 | MBRT BASE [8 h] | 8 | 8 |  | 8 | 1-0702 | 1-0702 | ZONE-1 | 06 | SOUTH |  |  |  |

| ID | WBS | Activity | Duration | Start | Finish | Predecessors | Complete | Planned start | Planned finish | Resources | Cost | Actual cost | user_number6 | user_text10 | user_text8 | MBRT-ZONE | MBRT-LOCATION | MBRT-SIDE | MBRT-DELAY | MBRT-TYPE | user_text2 | MBRT-SCOPE |
| --- | --- | --- | --- | --- | --- | --- | --- | --- | --- | --- | --- | --- | --- | --- | --- | --- | --- | --- | --- | --- | --- | --- |
|  | 65 | **MADISON AND 6TH NW CORNER** |  | 2022-08-02 | 2023-06-30 |  |  |  |  |  |  |  |  |  |  |  |  |  |  |  |  |  |
| 1-3045 |  | MULTIPLE DSC'S, MAD & 6TH SW CORNER | 1d | 2022-08-02 A | 2023-05-01 A | 1-0519 | 100% | 2023-06-12 | 2023-06-12 | MBRT DSC [1496 h] | 1,496 | 1,496 | 1496 | 1-3045 | 1-3045 | ZONE-1 | 06 | SOUTH | SCL-FC |  |  |  |
| 1-3065 |  | TRENCH CONDUIT, MAD & 6TH SW CORNER | 1d | 2023-05-02 A | 2023-05-02 A | 1-3045 | 100% | 2023-06-13 | 2023-06-13 | MBRT NEW [8 h] | 8 | 8 | 8 | 1-3065 | 1-3065 | ZONE-1 | 06 | SOUTH | SCL-FC | ELECTRICAL |  |  |
| 1-3050 |  | INST CONDUIT, MAD & 6TH SW CORNER | 1d | 2023-05-03 A | 2023-05-04 A | 1-3065 | 100% | 2023-06-13 | 2023-06-13 | MBRT NEW [8 h] | 8 | 16 | 16 | 1-3050 | 1-3050 | ZONE-1 | 06 | SOUTH | SCL-FC | ELECTRICAL |  |  |
| 1-3070 |  | GRADE SIDEWALK, MAD & 6TH SW CORNER | 1d | 2023-05-05 A | 2023-05-08 A | 1-3050 | 100% | 2023-06-15 | 2023-06-15 | MBRT NEW [8 h] | 8 | 16 | 16 | 1-3070 | 1-3070 | ZONE-1 | 06 | SOUTH |  |  |  |  |
| PCO672.01 |  | DSC 475-SCL VAULT LID TOO HIGH | 10d | 2023-05-09 A | 2023-06-20 A | 1-3070 | 100% | 2023-06-12 | 2023-06-23 | MBRT DSC [240 h] | 240 | 240 | 240 | PCO672.01 | PCO672.01 | ZONE-1 | 06 | SOUTH | SCL-FC |  |  |  |
| 1-3075 |  | Regrade After Vault Lid | 1d | 2023-06-21 A | 2023-06-21 A | PCO672.01 | 100% |  |  | MBRT NEW [8 h] | 8 | 8 | 8 | 1-3075 | 1-3075 |  |  |  |  |  |  |  |
| 1-3110 |  | Delay - Judge Hearings | 2d | 2023-06-22 A | 2023-06-23 A | 1-3075 | 100% |  |  | MBRT NEW [16 h] | 16 | 16 | 16 | 1-3110 | 1-3110 |  |  |  |  |  |  |  |
| 1-3055 |  | POUR CURB RAMP, MAD & 6TH SW CORNER | 1d | 2023-06-26 A | 2023-06-26 A | 1-3070, PCO672.01, 1-3110 | 100% |  |  | MBRT NEW [8 h] | 8 | 8 | 8 | 1-3055 | 1-3055 | ZONE-1 | 06 | SOUTH |  |  |  |  |
| 1-3060 |  | POUR SIDEWALK, MAD & 6TH SW CORNER | 1d | 2023-06-30 A | 2023-06-30 A | 1-3055 FS+3d | 100% |  |  | MBRT NEW [8 h] | 8 | 8 | 8 | 1-3060 | 1-3060 | ZONE-1 | 06 | SOUTH |  |  |  |  |
|  | 60 | **MADISON AND 7TH NE CORNER** |  | 2023-04-12 | 2023-04-19 |  |  |  |  |  |  |  |  |  |  |  |  |  |  |  |  |  |
| 1-2785 |  | REM SIDEWALK, MADISON AND 7TH NE CORNER | 1d | 2023-04-12 A | 2023-04-13 A | 1-0532 | 100% | 2023-05-08 | 2023-05-08 | MBRT NEW [8 h] | 8 | 16 | 16 | 1-2785 | 1-2785 | ZONE-1 | 06 | SOUTH | SCL-FC |  |  |  |
| PCO634.1 |  | DSC 445-BURIED STEEL POLE | 5d | 2023-04-13 A | 2023-04-13 A | 1-2785 SS | 100% | 2023-02-27 | 2023-03-03 | MBRT DSC [8 h] | 8 | 8 | 8 | PCO634.1 | PCO634.1 |  |  |  |  |  |  |  |
| 1-2805 |  | REM POLE | 1d | 2023-04-14 A | 2023-04-14 A | PCO634.1, 1-2785 | 100% | 2023-05-08 | 2023-05-08 | MBRT NEW [8 h] | 8 | 8 | 8 | 1-2805 | 1-2805 | ZONE-1 | 06 | SOUTH | SCL-FC |  |  |  |
| 1-2810 |  | REM POLE FOUNDATION | 1d | 2023-04-14 A | 2023-04-14 A | 1-2805 | 100% | 2023-05-08 | 2023-05-08 | MBRT NEW [8 h] | 8 | 8 | 8 | 1-2810 | 1-2810 | ZONE-1 | 06 | SOUTH | SCL-FC |  |  |  |
| 1-2815 |  | GRADE SIDEWALK, MADISON AND 7TH NE CORNER | 1d | 2023-04-14 A | 2023-04-14 A | 1-2810 | 100% | 2023-05-08 | 2023-05-08 | MBRT NEW [8 h] | 8 | 8 | 8 | 1-2815 | 1-2815 | ZONE-1 | 06 | SOUTH | SCL-FC |  |  |  |
| 1-2795 |  | POUR CURB RAMP, MADISON AND 7TH NE CORNER | 1d | 2023-04-17 A | 2023-04-18 A | 1-2815 | 100% | 2023-05-10 | 2023-05-10 | MBRT NEW [8 h] | 8 | 16 | 16 | 1-2795 | 1-2795 | ZONE-1 | 06 | SOUTH |  |  |  |  |
| 1-2800 |  | POUR SIDEWALK, MADISON AND 7TH NE CORNER | 1d | 2023-04-19 A | 2023-04-19 A | 1-2795 | 100% | 2023-05-11 | 2023-05-11 | MBRT NEW [8 h] | 8 | 8 | 8 | 1-2800 | 1-2800 | ZONE-1 | 06 | SOUTH |  |  |  |  |
|  | 17 | **MADISON 7TH TO 8TH NORTH SIDE** |  | 2023-01-10 | 2023-02-14 |  |  |  |  |  |  |  |  |  |  |  |  |  |  |  |  |  |
| 1-0528 |  | REM SIDEWALK, MAD 7TH TO 8TH NORTH SIDE | 2d | 2023-01-10 A | 2023-01-11 A | 1-0136, 1-0524 | 100% | 2023-02-01 | 2023-02-02 | MBRT BASE [16 h] | 16 | 16 | 16 |  |  | ZONE-1 | 07 | NORTH | SCL-FC |  | EA3 |  |
| PCO508.01 |  | DSC 363-7th & Madison unloacted fiber conflict | 5d | 2023-01-11 A | 2023-01-14 A | MS-0025 | 100% | 2023-02-27 | 2023-03-03 | MBRT DSC [24 h] | 24 | 24 | 24 |  |  |  |  |  |  |  |  |  |
| 1-0529 |  | TRENCH CONDUIT, MAD 7TH TO 8TH NORTH SIDE | 2d | 2023-01-12 A | 2023-01-13 A | 1-0528 | 100% | 2023-02-03 | 2023-02-06 | MBRT BASE [16 h] | 16 | 16 | 16 |  |  | ZONE-1 | 07 | NORTH | SCL-FC |  | EA3 |  |
| 1-0530 |  | INST CONDUIT, MAD 7TH TO 8TH NORTH SIDE | 2d | 2023-01-12 A | 2023-01-30 A | 1-0529 SS | 100% | 2023-02-03 | 2023-02-06 | MBRT BASE [96 h] | 96 | 96 | 96 |  |  | ZONE-1 | 07 | NORTH | SCL-FC | ELECTRICAL | ELECRICAL SUB |  |
| 1-0531 |  | GRADE SIDEWALK, MAD 7TH TO 8TH NORTH SIDE | 1d | 2023-01-31 A | 2023-02-03 A | 1-0530 | 100% | 2023-01-31 | 2023-01-31 | MBRT BASE [32 h] | 32 | 32 | 32 |  |  | ZONE-1 | 07 | NORTH | SCL-FC |  | EA3 | SIDEWALKS |
| 1-0532 |  | POUR SIDEWALK, MAD 7TH TO 8TH NORTH SIDE | 4d | 2023-02-08 A | 2023-02-14 A | 1-0531, 1-0526 | 100% | 2023-02-01 | 2023-02-06 | MBRT BASE [40 h] | 40 | 40 | 40 |  |  | ZONE-1 | 07 | NORTH |  |  | COM |  |

| ID | WBS | Activity | Duration | Start | Finish | Predecessors | Complete | Planned start | Planned finish | Resources | Cost | Actual cost | user_text2 | user_number6 | MBRT-ZONE | MBRT-LOCATION | MBRT-SIDE | MBRT-DELAY | MBRT-TYPE | MBRT-SCOPE | user_text10 | user_text8 |
| --- | --- | --- | --- | --- | --- | --- | --- | --- | --- | --- | --- | --- | --- | --- | --- | --- | --- | --- | --- | --- | --- | --- |
|  | 51 | **MADISON 7TH TO 8TH SOUTH SIDE** |  | 2023-02-27 | 2023-04-06 |  |  |  |  |  |  |  |  |  |  |  |  |  |  |  |  |  |
| 1-0704 |  | REM SIDEWALK, MAD 7TH TO 8TH SOUTH SIDE | 2d | 2023-02-27 A | 2023-03-02 A | 1-0386 | 100% | 2023-04-24 | 2023-04-25 | MBRT BASE [32 h] | 32 | 32 | EA3 | 32 | ZONE-1 | 07 | SOUTH | SCL-FC |  |  |  |  |
| 1-0705 |  | TRENCH CONDUIT, MAD 7TH TO 8TH SOUTH SIDE | 2d | 2023-03-01 A | 2023-03-03 A | 1-0704 | 100% | 2023-04-26 | 2023-04-27 | MBRT BASE [16 h] | 16 | 16 | EA3 | 16 | ZONE-1 | 07 | SOUTH | SCL-FC |  |  |  |  |
| 1-0706 |  | INST CONDUIT, MAD 7TH TO 8TH SOUTH SIDE | 2d | 2023-03-01 A | 2023-03-24 A | 1-0705 SS | 100% | 2023-04-26 | 2023-04-27 | MBRT BASE [136 h] | 136 | 136 | ELECRICAL SUB | 136 | ZONE-1 | 07 | SOUTH | SCL-FC | ELECTRICAL |  |  |  |
| 1-0707 |  | GRADE SIDEWALK, MAD 7TH TO 8TH SOUTH SIDE | 2d | 2023-03-27 A | 2023-03-29 A | 1-0706 | 100% | 2023-05-12 | 2023-05-15 | MBRT BASE [24 h] | 24 | 24 | EA3 | 24 | ZONE-1 | 07 | SOUTH | SCL-FC |  | SIDEWALKS |  |  |
| 1-0708 |  | POUR SIDEWALK, MAD 7TH TO 8TH SOUTH SIDE | 6d | 2023-03-30 A | 2023-04-06 A | 1-0707 | 100% | 2023-05-16 | 2023-05-23 | MBRT BASE [48 h] | 48 | 48 | COM | 48 | ZONE-1 | 07 | SOUTH |  |  |  | 1-0708 | 1-0708 |
|  | 18 | **MADISON 8TH TO 9TH NORTH SIDE** |  | 2023-01-17 | 2023-02-16 |  |  |  |  |  |  |  |  |  |  |  |  |  |  |  |  |  |
| 1-0534 |  | REM SIDEWALK, MAD 8TH TO 9TH NORTH SIDE | 2d | 2023-01-17 A | 2023-01-18 A | 1-0529 | 100% | 2023-02-08 | 2023-02-09 | MBRT BASE [16 h] | 16 | 16 | EA3 | 16 | ZONE-1 | 08 | NORTH | SCL-FC |  |  |  |  |
| PCO520.01 |  | DSC 372-Conduit change 8th to 9th Mad to accomidate comcast | 5d | 2023-01-19 A | 2023-02-08 A | MS-0025 | 100% | 2023-02-27 | 2023-03-03 | MBRT DSC [112 h] | 112 | 112 |  | 112 |  |  |  |  |  |  |  |  |
| 1-0535 |  | TRENCH CONDUIT, MAD 8TH TO 9TH NORTH SIDE | 2d | 2023-01-19 A | 2023-01-20 A | 1-0534 | 100% | 2023-02-10 | 2023-02-13 | MBRT BASE [16 h] | 16 | 16 | EA3 | 16 | ZONE-1 | 08 | NORTH | SCL-FC |  |  |  |  |
| 1-0536 |  | INST CONDUIT, MAD 8TH TO 9TH NORTH SIDE | 2d | 2023-01-19 A | 2023-01-25 A | 1-0535 SS | 100% | 2023-02-10 | 2023-02-13 | MBRT BASE [40 h] | 40 | 40 | ELECRICAL SUB | 40 | ZONE-1 | 08 | NORTH | SCL-FC | ELECTRICAL |  |  |  |
| PCO532.01 |  | DSC 377-Madison and 8th Handholes in ped path | 5d | 2023-01-23 A | 2023-01-25 A | MS-0025 | 100% | 2023-02-27 | 2023-03-03 | MBRT DSC [16 h] | 16 | 16 |  | 16 |  |  |  |  |  |  |  |  |
| 1-0537 |  | GRADE SIDEWALK, MAD 8TH TO 9TH NORTH SIDE | 1d | 2023-01-26 A | 2023-01-30 A | 1-0536 | 100% | 2023-02-14 | 2023-02-14 | MBRT BASE [24 h] | 24 | 24 | EA3 | 24 | ZONE-1 | 08 | NORTH | SCL-FC |  | SIDEWALKS |  |  |
| 1-0538 |  | POUR SIDEWALK, MAD 8TH TO 9TH NORTH SIDE | 4d | 2023-02-08 A | 2023-02-16 A | 1-0532, 1-0537 | 100% | 2023-02-07 | 2023-02-10 | MBRT BASE [56 h] | 56 | 56 | COM | 56 | ZONE-1 | 08 | NORTH |  |  |  |  |  |
| PCO564.01 |  | DSC 398-NW 9th and Madison Curb Ramp Field Fit HH Conflict | 5d | 2023-02-14 A | 2023-02-15 A | MS-0025 | 100% | 2023-02-27 | 2023-03-03 | MBRT DSC [8 h] | 8 | 8 |  | 8 |  |  |  |  |  |  |  |  |
|  | 52 | **MADISON 8TH TO 9TH SOUTH SIDE** |  | 2023-02-27 | 2023-04-10 |  |  |  |  |  |  |  |  |  |  |  |  |  |  |  |  |  |
| 1-0710 |  | REM SIDEWALK, MAD 8TH TO 9TH SOUTH SIDE | 2d | 2023-02-27 A | 2023-03-24 A | 1-0229 | 100% | 2023-05-02 | 2023-05-03 | MBRT BASE [160 h] | 160 | 160 | EA3 | 160 | ZONE-1 | 08 | SOUTH | SCL-FC |  |  |  |  |
| 1-0711 |  | TRENCH CONDUIT, MAD 8TH TO 9TH SOUTH SIDE | 2d | 2023-03-01 A | 2023-03-29 A | 1-0710 | 100% | 2023-05-04 | 2023-05-05 | MBRT BASE [168 h] | 168 | 168 | EA3 | 168 | ZONE-1 | 08 | SOUTH | SCL-FC |  |  |  |  |
| 1-0712 |  | INST CONDUIT, MAD 8TH TO 9TH SOUTH SIDE | 2d | 2023-03-01 A | 2023-03-24 A | 1-0711 SS | 100% | 2023-05-04 | 2023-05-05 | MBRT BASE [144 h] | 144 | 144 | ELECRICAL SUB | 144 | ZONE-1 | 08 | SOUTH | SCL-FC | ELECTRICAL |  |  |  |
| 1-2010 |  | CITY CAUSED DELAY LIGHT POLE FOUNDATION CONFLICT | 2d | 2023-03-01 A | 2023-03-14 A | 1-0712 | 100% | 2023-05-04 | 2023-05-05 | MBRT NEW [16 h] | 16 | 80 | ELECRICAL SUB | 80 | ZONE-1 | 08 | SOUTH | SCL-FC | ELECTRICAL |  |  |  |
| 1-0713 |  | GRADE SIDEWALK, MAD 8TH TO 9TH SOUTH SIDE | 2d | 2023-03-27 A | 2023-03-28 A | 1-0712, 1-2010 | 100% | 2023-05-04 | 2023-05-05 | MBRT BASE [16 h] | 16 | 16 | EA3 | 16 | ZONE-1 | 08 | SOUTH | SCL-FC |  | SIDEWALKS |  |  |
| PCO626.01 |  | DSC-BRICKS FALLING OFF BURNT BUILDING | 2d | 2023-03-29 A | 2023-03-30 A | MS-0025 | 100% | 2023-05-04 | 2023-05-05 | MBRT DSC [16 h] | 16 | 16 | EA3 | 16 | ZONE-1 | 08 | SOUTH | SCL-FC |  | SIDEWALKS |  |  |
| 1-0714 |  | POUR SIDEWALK, MAD 8TH TO 9TH SOUTH SIDE | 5d | 2023-03-30 A | 2023-04-10 A | 1-0713, 1-0708 | 100% | 2023-05-08 | 2023-05-12 | MBRT BASE [64 h] | 64 | 64 | COM | 64 | ZONE-1 | 08 | SOUTH |  |  |  | 1-0714 | 1-0714 |
|  | 70 | **TERRY TO BOREN MID-BLOCK SW SIDE** |  | 2023-05-17 | 2023-06-14 |  |  |  |  |  |  |  |  |  |  |  |  |  |  |  |  |  |
| 1-3225 |  | REM SIDEWALK | 2d | 2023-05-17 A | 2023-05-18 A | 1-2930 SS | 100% | 2023-05-02 | 2023-05-03 | MBRT NEW [16 h] | 16 | 16 | EA3 | 16 | ZONE-1 | 08 | SOUTH | SCL-FC |  |  | 1-3225 | 1-3225 |
| 1-3230 |  | TRENCH CONDUIT | 2d | 2023-05-19 A | 2023-06-01 A | 1-3225 | 100% | 2023-05-04 | 2023-05-05 | MBRT NEW [16 h] | 16 | 72 | EA3 | 72 | ZONE-1 | 08 | SOUTH | SCL-FC |  |  | 1-3230 | 1-3230 |
| PCO698.01 |  | DSC 500-COMCAST HH NOT TO GRADE | 2d | 2023-05-23 A | 2023-05-25 A | MS-0025 | 100% | 2023-05-04 | 2023-05-05 | MBRT DSC [24 h] | 24 | 24 | EA3 | 24 | ZONE-1 | 08 | SOUTH | SCL-FC |  | SIDEWALKS | PCO698.01 | PCO698.01 |
| 1-3235 |  | INST CONDUIT | 2d | 2023-05-24 A | 2023-06-01 A | 1-3230 SS | 100% | 2023-05-04 | 2023-05-05 | MBRT NEW [16 h] | 16 | 48 | ELECRICAL SUB | 48 | ZONE-1 | 08 | SOUTH | SCL-FC | ELECTRICAL |  | 1-3235 | 1-3235 |
| 1-3250 |  | FM 545 HH REMOVAL | 4d | 2023-05-24 A | 2023-06-06 A | PCO698.01 SS | 100% | 2023-05-08 | 2023-05-11 | MBRT NEW [32 h] | 32 | 72 | COM | 72 | ZONE-1 | 08 | SOUTH |  |  |  | 1-3250 | 1-3250 |
| 1-3240 |  | GRADE SIDEWALK | 2d | 2023-06-07 A | 2023-06-08 A | 1-3235, 1-3250 | 100% |  |  | MBRT NEW [16 h] | 16 | 16 | EA3 | 16 | ZONE-1 | 08 | SOUTH | SCL-FC |  | SIDEWALKS | 1-3240 | 1-3240 |
| 1-3245 |  | POUR SIDEWALK | 4d | 2023-06-09 A | 2023-06-14 A | 1-3240 | 100% |  |  | MBRT NEW [32 h] | 32 | 32 | COM | 32 | ZONE-1 | 08 | SOUTH |  |  |  | 1-3245 | 1-3245 |

| ID | WBS | Activity | Duration | Start | Finish | Predecessors | Complete | Planned start | Planned finish | Resources | Cost | Actual cost | user_text2 | user_number6 | user_text10 | user_text8 | MBRT-ZONE | MBRT-LOCATION | MBRT-SIDE | MBRT-DELAY | MBRT-TYPE | MBRT-SCOPE |
| --- | --- | --- | --- | --- | --- | --- | --- | --- | --- | --- | --- | --- | --- | --- | --- | --- | --- | --- | --- | --- | --- | --- |
|  | 69 | **TERRY TO BOREN MID-BLOCK SE SIDE** |  | 2023-06-13 | 2023-07-03 |  |  |  |  |  |  |  |  |  |  |  |  |  |  |  |  |  |
| 1-3195 |  | REM SIDEWALK | 2d | 2023-06-13 A | 2023-06-14 A | 1-3245 FS-2d | 100% |  |  | MBRT NEW [16 h] | 16 | 16 | EA3 | 16 | 1-3195 | 1-3195 | ZONE-1 | 08 | SOUTH | SCL-FC |  |  |
| 1-3200 |  | TRENCH CONDUIT | 2d | 2023-06-15 A | 2023-06-16 A | 1-3195 | 100% |  |  | MBRT NEW [16 h] | 16 | 16 | EA3 | 16 | 1-3200 | 1-3200 | ZONE-1 | 08 | SOUTH | SCL-FC |  |  |
| 1-3205 |  | INST CONDUIT | 3d | 2023-06-19 A | 2023-06-21 A | 1-3200 | 100% |  |  | MBRT NEW [24 h] | 24 | 24 | ELECRICAL SUB | 24 | 1-3205 | 1-3205 | ZONE-1 | 08 | SOUTH | SCL-FC | ELECTRICAL |  |
| 1-3210 |  | GRADE SIDEWALK | 2d | 2023-06-22 A | 2023-06-23 A | 1-3205 | 100% |  |  | MBRT NEW [16 h] | 16 | 16 | EA3 | 16 | 1-3210 | 1-3210 | ZONE-1 | 08 | SOUTH | SCL-FC |  | SIDEWALKS |
| 1-3215 |  | POUR SIDEWALK | 6d | 2023-06-26 A | 2023-07-03 A | 1-3210, 1-3060 FF | 100% |  |  | MBRT NEW [48 h] | 48 | 48 | COM | 48 | 1-3215 | 1-3215 | ZONE-1 | 08 | SOUTH |  |  |  |
|  | 66 | **MADISON AND 9TH SW CORNER** |  | 2023-04-11 | 2023-04-21 |  |  |  |  |  |  |  |  |  |  |  |  |  |  |  |  |  |
| 1-3080 |  | REM SIDEWALK, MADISON & 9TH SW CORNER | 1d | 2023-04-11 A | 2023-04-11 A | 1-0714 | 100% | 2023-05-24 | 2023-05-24 | MBRT NEW [8 h] | 8 | 8 |  | 8 | 1-3080 | 1-3080 | ZONE-1 | SPRING | NORTH | SCL-FC |  |  |
| 1-3100 |  | TRENCH CONDUIT, MADISON & 9TH SW CORNER | 1d | 2023-04-12 A | 2023-04-12 A | 1-3080 | 100% | 2023-05-25 | 2023-05-25 | MBRT NEW [8 h] | 8 | 8 |  | 8 | 1-3100 | 1-3100 | ZONE-1 | SPRING | NORTH | SCL-FC | ELECTRICAL |  |
| PCO635.01 |  | DSC 446-LIVE CONDUIT | 1d | 2023-04-13 A | 2023-04-13 A | MS-0025 | 100% | 2023-05-26 | 2023-05-26 | MBRT DSC [8 h] | 8 | 8 |  | 8 | PCO635.01 | PCO635.01 | ZONE-1 | SPRING | NORTH |  |  |  |
| 1-3085 |  | INST CONDUIT, MADISON & 9TH SW CORNER | 1d | 2023-04-14 A | 2023-04-17 A | 1-3100 | 100% | 2023-05-25 | 2023-05-25 | MBRT NEW [8 h] | 8 | 16 |  | 16 | 1-3085 | 1-3085 | ZONE-1 | SPRING | NORTH | SCL-FC | ELECTRICAL |  |
| 1-3105 |  | GRADE SIDEWALKS, MADISON AND 9TH SW CORNER | 1d | 2023-04-18 A | 2023-04-18 A | 1-3085 | 100% | 2023-05-26 | 2023-05-26 | MBRT NEW [8 h] | 8 | 8 |  | 8 | 1-3105 | 1-3105 | ZONE-1 | SPRING | NORTH |  |  |  |
| 1-3090 |  | POUR CURB RAMP, MADISON AND 9TH SW CORNER | 1d | 2023-04-19 A | 2023-04-20 A | 1-3105 | 100% | 2023-05-26 | 2023-05-26 | MBRT NEW [8 h] | 8 | 16 |  | 16 | 1-3090 | 1-3090 | ZONE-1 | SPRING | NORTH |  |  |  |
| 1-3095 |  | POUR SIDEWALKS, MADISON AND 9TH SW CORNER | 1d | 2023-04-21 A | 2023-04-21 A | 1-3090 | 100% | 2023-05-30 | 2023-05-30 | MBRT NEW [8 h] | 8 | 8 |  | 8 | 1-3095 | 1-3095 | ZONE-1 | SPRING | NORTH |  |  |  |
|  | 67 | **MADISON AND 9TH SE CORNER** |  | 2023-04-24 | 2023-05-15 |  |  |  |  |  |  |  |  |  |  |  |  |  |  |  |  |  |
| 1-3115 |  | REM SIDEWALK, MADISON & 9TH SE CORNER | 1d | 2023-04-24 A | 2023-04-25 A | 1-3095 | 100% | 2023-05-24 | 2023-05-24 | MBRT NEW [8 h] | 8 | 16 |  | 16 | 1-3115 | 1-3115 | ZONE-1 | SPRING | NORTH | SCL-FC |  |  |
| PCO650.01 |  | DSC 459-LEAKING WATER SERVICE | 1d | 2023-04-26 A | 2023-04-26 A | 1-3115 | 100% | 2023-05-26 | 2023-05-26 | MBRT DSC [8 h] | 8 | 8 |  | 8 | PCO650.01 | PCO650.01 | ZONE-1 | SPRING | NORTH |  |  |  |
| 1-3135 |  | TRENCH CONDUIT, MADISON & 9TH SE CORNER | 1d | 2023-04-27 A | 2023-04-28 A | 1-3115 | 100% | 2023-05-25 | 2023-05-25 | MBRT NEW [8 h] | 8 | 16 |  | 16 | 1-3135 | 1-3135 | ZONE-1 | SPRING | NORTH | SCL-FC | ELECTRICAL |  |
| PCO652.01 |  | DSC 460-OLD STREETLIGHT POLE CONFLICT | 1d | 2023-04-27 A | 2023-04-27 A | 1-3115 | 100% | 2023-05-26 | 2023-05-26 | MBRT DSC [8 h] | 8 | 8 |  | 8 | PCO652.01 | PCO652.01 | ZONE-1 | SPRING | NORTH |  |  |  |
| PCO653.01 |  | DSC 461-SIDE SEWER CONFLICT WITH SIGNAL CABINET | 1d | 2023-04-27 A | 2023-04-28 A | 1-3135 SS | 100% | 2023-05-26 | 2023-05-26 | MBRT DSC [16 h] | 16 | 16 |  | 16 | PCO653.01 | PCO653.01 | ZONE-1 | SPRING | NORTH |  |  |  |
| PCO654.01 |  | DSC 462-STEAMLINE CONFLICT WITH CONDUIT | 1d | 2023-04-28 A | 2023-04-28 A | 1-3135 SS | 100% | 2023-05-26 | 2023-05-26 | MBRT DSC [8 h] | 8 | 8 |  | 8 | PCO654.01 | PCO654.01 | ZONE-1 | SPRING | NORTH |  |  |  |
| 1-3120 |  | INST CONDUIT, MADISON & 9TH SE CORNER | 1d | 2023-05-01 A | 2023-05-05 A | 1-3135 | 100% | 2023-05-25 | 2023-05-25 | MBRT NEW [8 h] | 8 | 40 |  | 40 | 1-3120 | 1-3120 | ZONE-1 | SPRING | NORTH | SCL-FC | ELECTRICAL |  |
| 1-3140 |  | GRADE SIDEWALKS, MADISON & 9TH SE CORNER | 1d | 2023-05-08 A | 2023-05-08 A | 1-3120 | 100% | 2023-05-26 | 2023-05-26 | MBRT NEW [8 h] | 8 | 8 |  | 8 | 1-3140 | 1-3140 | ZONE-1 | SPRING | NORTH |  |  |  |
| 1-3130 |  | POUR SIDEWALKS, MADISON & 9TH SE CORNER | 1d | 2023-05-09 A | 2023-05-15 A | 1-3140 | 100% | 2023-05-30 | 2023-05-30 | MBRT NEW [8 h] | 8 | 40 |  | 40 | 1-3130 | 1-3130 | ZONE-1 | SPRING | NORTH |  |  |  |

| ID | WBS | Activity | Duration | Start | Finish | Predecessors | Complete | Planned start | Planned finish | Total float | Free float | Calendar | Resources | Cost | Actual cost | user_text2 | user_number6 | user_text10 | user_text8 | MBRT-ZONE | MBRT-LOCATION | MBRT-SIDE | MBRT-TYPE | MBRT-DELAY | MBRT-SCOPE |
| --- | --- | --- | --- | --- | --- | --- | --- | --- | --- | --- | --- | --- | --- | --- | --- | --- | --- | --- | --- | --- | --- | --- | --- | --- | --- |
|  | 21 | **DRIVEWAYS 9TH SPRING TO MADISON WEST SIDE** |  | 2024-04-20 | 2024-04-20 |  |  |  |  |  |  |  |  |  |  |  |  |  |  |  |  |  |  |  |  |
| 1-0554 |  | REM SIDEWALK, DRIVEWAYS 9TH SPRING TO MAD WEST SIDE | 1d | 2024-04-20 | 2024-04-20 | 1-0550, 1-0552, 1-3130, 1-0513 |  |  |  | -31d | 0d | WEEKEND ONLY | MBRT BASE [8 h] | 8 |  | WEA3 | 8 | 1-0554 | 1-0554 | ZONE-1 | SPRING | WEST |  |  |  |
| 1-0555 |  | POUR DRIVEWAYS, DRIVEWAYS 9TH SPRING TO MAD WEST SIDE | 1d | 2024-04-20 | 2024-04-20 | 1-0554 SS |  |  |  | -31d | 1d | WEEKEND ONLY | MBRT BASE [8 h] | 8 |  | WCOM | 8 | 1-0555 | 1-0555 | ZONE-1 | SPRING | WEST |  |  |  |
|  | 22 | **SPRING AND 1ST NE CORNER** |  | 2023-06-12 | 2023-08-22 |  |  |  |  |  |  |  |  |  |  |  |  |  |  |  |  |  |  |  |  |
| 1-0557 |  | REM SIDEWALK, SPRING & 1ST NE CORNER | 1d | 2023-06-12 A | 2023-06-12 A | 1-2825 SS+24d | 100% |  |  |  |  |  | MBRT BASE [8 h] | 8 | 8 | EA3 | 8 | 1-0557 | 1-0557 | ZONE-1 | SPRING | NORTH |  |  |  |
| 1-0577 |  | DSC 518 - Unknown Conduit Conflicts | 20d | 2023-06-12 A | 2023-08-04 A | 1-0557 SS | 100% | 2023-06-12 | 2023-07-10 |  |  |  | MBRT DSC [312 h] | 312 | 312 |  | 312 | 1-0577 | 1-0577 |  |  |  |  |  |  |
| 1-0617 |  | DSC 519 - Unmarked Conduits | 20d | 2023-06-12 A | 2023-08-04 A | 1-0557 SS | 100% | 2023-06-12 | 2023-07-10 |  |  |  | MBRT DSC [312 h] | 312 | 312 |  | 312 | 1-0617 | 1-0617 |  |  |  |  |  |  |
| 1-0558 |  | INST CONDUIT, SPRING & 1ST NE CORNER | 1d | 2023-08-07 A | 2023-08-18 A | 1-0557, 1-0617, 1-0577 | 100% | 2023-07-11 | 2023-07-11 |  |  |  | MBRT BASE [80 h] | 80 | 80 | EA3 | 80 | 1-0558 | 1-0558 | ZONE-1 | SPRING | NORTH | ELECTRICAL |  |  |
| 1-0559 |  | POUR SIDEWALK, SPRING AND 1ST NE CORNER | 2d | 2023-08-21 A | 2023-08-22 A | 1-0558 | 100% |  |  |  |  |  | MBRT BASE [16 h] | 16 | 16 | COM | 16 | 1-0559 | 1-0559 | ZONE-1 | SPRING | NORTH |  |  |  |
|  | 34 | **MADISON 9TH TO TERRY NORTH SIDE** |  | 2022-09-01 | 2022-11-04 |  |  |  |  |  |  |  |  |  |  |  |  |  |  |  |  |  |  |  |  |
| PCO367.01 |  | DSC 268-Water Valve Vault Conflict with Confuid 9th to Terry North | 5d | 2022-09-01 A | 2022-09-07 A | MS-0025 | 100% | 2023-02-27 | 2023-03-03 |  |  |  | MBRT DSC [24 h] | 24 | 24 |  | 24 |  |  |  |  |  |  |  |  |
| PCO370.01 |  | DSC 269-Unlocated comm line 9th to Terry North side | 5d | 2022-09-07 A | 2022-09-22 A | MS-0025 | 100% | 2023-02-27 | 2023-03-03 |  |  |  | MBRT DSC [88 h] | 88 | 88 |  | 88 |  |  |  |  |  |  |  |  |
| PCO371.01 |  | DSC 271-Water meter Conflict 9th to Terry North | 5d | 2022-09-07 A | 2022-10-08 A | MS-0025 | 100% | 2023-02-27 | 2023-03-03 |  |  |  | MBRT DSC [184 h] | 184 | 184 |  | 184 |  |  |  |  |  |  |  |  |
| PCO373.01 |  | DSC 270-Unlocated Com Line Terry North side | 5d | 2022-09-07 A | 2022-10-26 A | MS-0025 | 100% | 2023-02-27 | 2023-03-03 |  |  |  | MBRT DSC [280 h] | 280 | 280 |  | 280 |  |  |  |  |  |  |  |  |
| PCO374.01 |  | DSC 272-Electrical Vault Lid NE Terry & Madison | 5d | 2022-09-08 A | 2022-09-23 A | MS-0025 | 100% | 2023-02-27 | 2023-03-03 |  |  |  | MBRT DSC [88 h] | 88 | 88 |  | 88 |  |  |  |  |  |  |  |  |
| PCO375.01 |  | DSC 273-Unlocated, Cut Conduit on NE Terry & Madison | 5d | 2022-09-08 A | 2022-09-21 A | MS-0025 | 100% | 2023-02-27 | 2023-03-03 |  |  |  | MBRT DSC [72 h] | 72 | 72 |  | 72 |  |  |  |  |  |  |  |  |
| PCO382.01 |  | DSC 278-Multiple conduit conflicts Terry and Madison | 5d | 2022-09-09 A | 2022-09-10 A | MS-0025 | 100% | 2023-02-27 | 2023-03-03 |  |  |  | MBRT DSC [8 h] | 8 | 8 |  | 8 |  |  |  |  |  |  |  |  |
| PCO384.01 |  | DSC 280-Unlocated Conduit Terry & Madison | 5d | 2022-09-09 A | 2022-10-25 A | MS-0025 | 100% | 2023-02-27 | 2023-03-03 |  |  |  | MBRT DSC [256 h] | 256 | 256 |  | 256 |  |  |  |  |  |  |  |  |
| PCO385.01 |  | DSC 281-Unlocated Gas Lines Terry & Madison | 5d | 2022-09-09 A | 2022-09-10 A | MS-0025 | 100% | 2023-02-27 | 2023-03-03 |  |  |  | MBRT DSC [8 h] | 8 | 8 |  | 8 |  |  |  |  |  |  |  |  |
| 1-0612 |  | REMOVE SIDEWALK, 9TH TO TERRY NORTH SIDE | 2d | 2022-09-12 A | 2022-09-13 A | 1-0179 | 100% | 2023-01-10 | 2023-01-11 |  |  |  | MBRT BASE [16 h] | 16 | 16 | EA3 | 16 |  |  | ZONE-1 | 09 | NORTH |  | SCL-FC |  |
| 1-0613 |  | TRENCH CONDUIT, 9TH TO TERRY NORTH SIDE | 3d | 2022-09-14 A | 2022-09-16 A | 1-0612 | 100% | 2023-01-12 | 2023-01-17 |  |  |  | MBRT BASE [24 h] | 24 | 24 | EA3 | 24 |  |  | ZONE-1 | 09 | NORTH |  | SCL-FC |  |
| 1-0614 |  | INST CONDUIT, 9TH TO TERRY NORTH SIDE | 3d | 2022-09-14 A | 2022-09-16 A | 1-0613 SS | 100% | 2022-10-03 | 2022-10-05 |  |  |  | MBRT BASE [24 h] | 24 | 24 | ELECRICAL SUB | 24 |  |  | ZONE-1 | 09 | NORTH | ELECTRICAL | SCL-FC |  |
| PCO397.01 |  | DSC 289-Zao Conduit Conflict with Pavement Terry and Madison | 5d | 2022-09-15 A | 2022-09-21 A | MS-0025 | 100% | 2023-02-27 | 2023-03-03 |  |  |  | MBRT DSC [32 h] | 32 | 32 |  | 32 |  |  |  |  |  |  |  |  |
| 1-1270 |  | MULTIPLE DSC'S | 2d | 2022-09-19 A | 2022-10-10 A | 1-0614 | 100% | 2022-10-03 | 2022-10-04 |  |  |  | MBRT DSC [128 h] | 128 | 128 | EA3 | 128 |  |  | ZONE-1 | 09 | NORTH |  | SCL-FC | SIDEWALKS |
| 1-0615 |  | GRADE SIDEWALK, 9TH TO TERRY NORTH SIDE | 2d | 2022-10-10 A | 2022-10-11 A | 1-0614, 1-1270 | 100% | 2022-10-31 | 2022-11-01 |  |  |  | MBRT BASE [16 h] | 16 | 16 | EA3 | 16 |  |  | ZONE-1 | 09 | NORTH |  | SCL-FC | SIDEWALKS |
| 1-0616 |  | POUR SIDEWALK, 9TH TO TERRY NORTH SIDE | 6d | 2022-10-20 A | 2022-11-04 A | 1-0179 | 100% | 2022-10-07 | 2022-10-14 |  |  |  | MBRT BASE [96 h] | 96 | 96 | COM | 96 |  |  | ZONE-1 | 09 | NORTH |  |  |  |

| ID | WBS | Activity | Duration | Start | Finish | Predecessors | Complete | Planned start | Planned finish | Resources | Cost | Actual cost | user_text2 | user_number6 | user_text10 | user_text8 | MBRT-ZONE | MBRT-LOCATION | MBRT-SIDE | MBRT-DELAY | MBRT-TYPE | MBRT-SCOPE |
| --- | --- | --- | --- | --- | --- | --- | --- | --- | --- | --- | --- | --- | --- | --- | --- | --- | --- | --- | --- | --- | --- | --- |
|  | 53 | **MADISON 9TH TO TERRY SOUTH SIDE** |  | 2023-05-09 | 2023-05-23 |  |  |  |  |  |  |  |  |  |  |  |  |  |  |  |  |  |
| 1-0716 |  | REM SIDEWALK, MAD 9TH TO TERRY SOUTH SIDE | 2d | 2023-05-09 A | 2023-05-10 A | 1-0713, 1-0234 | 100% | 2024-03-18 | 2024-03-19 | MBRT BASE [16 h] | 16 | 16 | EA3 | 16 | 1-0716 | 1-0716 | ZONE-1 | 09 | SOUTH | SCL-FC |  |  |
| 1-0717 |  | TRENCH CONDUIT, MAD 9TH TO TERRY SOUTH SIDE | 2d | 2023-05-11 A | 2023-05-12 A | 1-0716 | 100% | 2024-03-20 | 2024-03-21 | MBRT BASE [16 h] | 16 | 16 | EA3 | 16 | 1-0717 | 1-0717 | ZONE-1 | 09 | SOUTH | SCL-FC |  |  |
| 1-0718 |  | INST CONDUIT, MAD 9TH TO TERRY SOUTH SIDE | 2d | 2023-05-11 A | 2023-05-12 A | 1-0717 SS | 100% | 2024-03-20 | 2024-03-21 | MBRT BASE [16 h] | 16 | 16 | ELECRICAL SUB | 16 | 1-0718 | 1-0718 | ZONE-1 | 09 | SOUTH | SCL-FC | ELECTRICAL |  |
| 1-0719 |  | GRADE SIDEWALK, MAD 9TH TO TERRY SOUTH SIDE | 2d | 2023-05-15 A | 2023-05-16 A | 1-0718 | 100% | 2024-03-22 | 2024-03-25 | MBRT BASE [16 h] | 16 | 16 | EA3 | 16 | 1-0719 | 1-0719 | ZONE-1 | 09 | SOUTH | SCL-FC |  | SIDEWALKS |
| 1-0720 |  | POUR SIDEWALK, MAD 9TH TO TERRY SOUTH SIDE | 5d | 2023-05-17 A | 2023-05-23 A | 1-0719, 1-0714 | 100% | 2024-03-26 | 2024-04-01 | MBRT BASE [40 h] | 40 | 40 | COM | 40 | 1-0720 | 1-0720 | ZONE-1 | 09 | SOUTH |  |  |  |
|  | 35 | **TERRY TO BOREN NORTH SIDE** |  | 2022-10-05 | 2023-05-18 |  |  |  |  |  |  |  |  |  |  |  |  |  |  |  |  |  |
| PCO405.01 |  | DSC 296-Old Foundation NW Terry | 5d | 2022-10-05 A | 2022-10-26 A | MS-0025 | 100% | 2023-02-27 | 2023-03-03 | MBRT DSC [120 h] | 120 | 120 |  | 120 |  |  |  |  |  |  |  |  |
| PCO409.01 |  | DSC 299-Design Bust NW Terry | 5d | 2022-10-07 A | 2022-10-07 A | MS-0025 | 100% | 2023-02-27 | 2023-03-03 | MBRT DSC [8 h] | 8 | 8 |  | 8 |  |  |  |  |  |  |  |  |
| 1-0618 |  | REM SIDEWALK, TERRY TO BOREN NORTH SIDE | 3d | 2023-01-30 A | 2023-02-10 A | 1-0186 | 100% | 2022-10-07 | 2022-10-11 | MBRT BASE [72 h] | 72 | 72 | EA3 | 72 |  |  | ZONE-1 | TERRY | NORTH | SCL-FC |  |  |
| 1-0619 |  | TRENCH CONDUIT, TERRY TO BOREN NORTH SIDE | 2d | 2023-01-30 A | 2023-02-10 A | 1-0618, 1-1275 | 100% | 2022-10-12 | 2022-10-13 | MBRT BASE [80 h] | 80 | 80 | EA3 | 80 |  |  | ZONE-1 | TERRY | NORTH | SCL-FC |  |  |
| 1-0620 |  | INST CONDUIT, TERRY TO BOREN NORTH SIDE | 2d | 2023-01-30 A | 2023-02-10 A | 1-0619 SS | 100% | 2022-10-12 | 2022-10-13 | MBRT BASE [80 h] | 80 | 80 | ELECRICAL SUB | 80 |  |  | ZONE-1 | TERRY | NORTH | SCL-FC | ELECTRICAL |  |
| PCO550.01 |  | DSC 387-Delapitated water service Terry to Boren | 5d | 2023-02-03 A | 2023-02-04 A | MS-0025 | 100% | 2023-02-27 | 2023-03-03 | MBRT DSC [8 h] | 8 | 8 |  | 8 |  |  |  |  |  |  |  |  |
| PCO551.01 |  | DSC 388-Delapitated side sewer alley Terry to Boren | 5d | 2023-02-03 A | 2023-02-03 A | MS-0025 | 100% | 2023-02-27 | 2023-03-03 | MBRT DSC [8 h] | 8 | 8 |  | 8 |  |  |  |  |  |  |  |  |
| 1-0621 |  | GRADE SIDEWALK, TERRY TO BOREN NORTH SIDE | 2d | 2023-02-06 A | 2023-02-10 A | 1-0620 | 100% | 2023-01-31 | 2023-02-01 | MBRT BASE [40 h] | 40 | 40 | EA3 | 40 |  |  | ZONE-1 | TERRY | NORTH | SCL-FC |  | SIDEWALKS |
| 1-0622 |  | POUR SIDEWALK, TERRY TO BOREN NORTH SIDE | 6d | 2023-02-06 A | 2023-02-17 A | 1-0621, 1-0616 | 100% | 2023-03-21 | 2023-03-28 | MBRT BASE [80 h] | 80 | 80 | COM | 80 |  |  | ZONE-1 | TERRY | NORTH | SCL-FC |  |  |
| 1-1380 |  | CITY CAUSED DELAY - NE TERRY DESIGN ISSUES | 2d | 2023-02-13 A | 2023-03-03 A | 1-0619 | 100% | 2022-10-12 | 2022-10-13 | MBRT NEW [16 h] | 16 | 112 | EA3 | 112 |  |  | ZONE-1 | TERRY | NORTH | SCL-FC |  |  |
| 1-1385 |  | FINISH ELECTRICAL AFTER DELAY | 6d | 2023-03-13 A | 2023-03-31 A | 1-1380 | 100% | 2023-03-03 | 2023-03-10 | MBRT NEW [48 h] | 48 | 120 | COM | 120 |  |  | ZONE-1 | TERRY | NORTH | SCL-FC |  |  |
| 1-2710 |  | CITY CAUSED DELAY - AWAITING COMCAST AND SDOT TO COMPLETE ELECTRICAL | 2d | 2023-04-03 A | 2023-04-12 A | 1-1385 | 100% | 2023-03-31 | 2023-04-03 | MBRT NEW |  |  | EA3 | 64 | 1-2710 | 1-2710 | ZONE-1 | TERRY | NORTH | SCL-FC |  |  |
| 1-2715 |  | COMPLETE ELECTRICAL AFTER COMCAST DELAY | 2d | 2023-04-13 A | 2023-04-17 A | 1-2710 | 100% | 2023-04-13 | 2023-04-14 | MBRT NEW [16 h] | 16 | 24 | EA3 | 24 | 1-2715 | 1-2715 | ZONE-1 | TERRY | NORTH | SCL-FC |  |  |
| 1-2840 |  | DELAY HH ADJUSTMENT AWAITING SCL | 10d | 2023-04-18 A | 2023-05-08 A | 1-2715 SS | 100% | 2023-04-13 | 2023-04-26 | MBRT NEW |  |  | EA3 | 120 | 1-2840 | 1-2840 | ZONE-1 | TERRY | NORTH | SCL-FC |  |  |
| 1-2845 |  | ADJUST HH | 2d | 2023-05-09 A | 2023-05-09 A | 1-2840 | 100% | 2023-05-15 | 2023-05-16 | MBRT NEW [16 h] | 16 | 8 | EA3 | 8 | 1-2845 | 1-2845 | ZONE-1 | TERRY | NORTH | SCL-FC |  |  |
| 1-1390 |  | GRADE REMAINING SIDEWALKS AFTER DELAY | 2d | 2023-05-10 A | 2023-05-10 A | 1-1385, 1-2715, 1-2845 | 100% | 2023-05-17 | 2023-05-18 | MBRT NEW [16 h] | 16 | 8 | COM | 8 | 1-1390 | 1-1390 | ZONE-1 | TERRY | NORTH | SCL-FC |  |  |
| PCO676.01 |  | DSC 479-COMCAST HH TOO LOW | 2d | 2023-05-11 A | 2023-05-12 A | 1-2845 | 100% | 2023-04-13 | 2023-04-14 | MBRT DSC [16 h] | 16 | 16 | EA3 | 16 | PCO676.01 | PCO676.01 | ZONE-1 | TERRY | NORTH | SCL-FC |  |  |
| 1-3150 |  | RAISE COMCAST HH | 2d | 2023-05-15 A | 2023-05-15 A | PCO676.01 | 100% | 2023-05-15 | 2023-05-16 | MBRT NEW [16 h] | 16 | 8 | EA3 | 8 | 1-3150 | 1-3150 | ZONE-1 | TERRY | NORTH | SCL-FC |  |  |
| 1-1395 |  | POUR REMAINING SIDEWALKS AND RAMPS AFTER DELAY | 3d | 2023-05-16 A | 2023-05-18 A | 1-1390, 1-3150 | 100% | 2023-05-19 | 2023-05-23 | MBRT NEW [24 h] | 24 | 24 | COM | 24 | 1-1395 | 1-1395 | ZONE-1 | TERRY | NORTH | SCL-FC |  |  |

| ID | WBS | Activity | Duration | Start | Finish | Predecessors | Complete | Planned start | Planned finish | Calendar | Resources | Cost | Actual cost | user_text2 | user_number6 | user_text10 | user_text8 | MBRT-ZONE | MBRT-LOCATION | MBRT-SIDE | MBRT-DELAY | MBRT-TYPE | MBRT-SCOPE |
| --- | --- | --- | --- | --- | --- | --- | --- | --- | --- | --- | --- | --- | --- | --- | --- | --- | --- | --- | --- | --- | --- | --- | --- |
|  | 36 | **DRIVEWAYS TERRY TO BOREN NORTH SIDE** |  | 2023-06-03 | 2023-06-04 |  |  |  |  |  |  |  |  |  |  |  |  |  |  |  |  |  |  |
| 1-0624 |  | REM SIDEWALK, DRIVEWAYS TERRY TO BOREN NORTH SIDE | 1d | 2023-06-03 A | 2023-06-03 A | 1-0620, 1-0622, 1-1395 | 100% |  |  | WEEKEND ONLY | MBRT BASE [8 h] | 8 | 8 | WEA3 | 8 | 1-0624 | 1-0624 | ZONE-1 | TERRY | NORTH |  |  |  |
| 1-0625 |  | POUR DRIVEWAY, DRIVEWAYS TERRY TO BOREN NORTH SIDE | 1d | 2023-06-04 A | 2023-06-04 A | 1-0624 | 100% |  |  | WEEKEND ONLY | MBRT BASE [8 h] | 8 | 8 | WCOM | 8 | 1-0625 | 1-0625 | ZONE-1 | TERRY | NORTH |  |  |  |
|  | 37 | **BOREN TO MINOR NORTH SIDE** |  | 2022-09-15 | 2022-10-26 |  |  |  |  |  |  |  |  |  |  |  |  |  |  |  |  |  |  |
| PCO398.01 |  | DSC 290-Pole Foundation under Sidewalk NW Minor | 5d | 2022-09-15 A | 2022-09-21 A | MS-0025 | 100% | 2023-02-27 | 2023-03-03 |  | MBRT DSC [32 h] | 32 | 32 |  | 32 |  |  |  |  |  |  |  |  |
| 1-0627 |  | REM SIDEWALK, BOREN TO MINOR NORTH SIDE | 2d | 2022-09-19 A | 2022-09-21 A | 1-0191 | 100% | 2023-02-06 | 2023-02-07 |  | MBRT BASE [24 h] | 24 | 24 | EA3 | 24 |  |  | ZONE-1 | BOREN | NORTH | SCL-FC |  |  |
| 1-1275 |  | TREE ROOT OBSTRUCTIONS | 3d | 2022-09-22 A | 2022-09-27 A | 1-0627 | 100% | 2022-10-07 | 2022-10-11 |  | MBRT NEW [24 h] | 24 | 32 | EA3 | 32 |  |  | ZONE-1 | TERRY | NORTH | SCL-FC |  |  |
| 1-0628 |  | TRENCH CONDUIT, BOREN TO MINOR NORTH SIDE | 2d | 2022-09-28 A | 2022-09-30 A | 1-0627, 1-1275 | 100% | 2023-02-08 | 2023-02-09 |  | MBRT BASE [24 h] | 24 | 24 | EA3 | 24 |  |  | ZONE-1 | BOREN | NORTH | SCL-FC |  |  |
| 1-0629 |  | INST CONDUIT, BOREN TO MINOR NORTH SIDE | 2d | 2022-09-28 A | 2022-09-30 A | 1-0628 SS | 100% | 2023-02-08 | 2023-02-09 |  | MBRT BASE [24 h] | 24 | 24 | ELECRICAL SUB | 24 |  |  | ZONE-1 | BOREN | NORTH | SCL-FC | ELECTRICAL |  |
| 1-0630 |  | GRADE SIDEWALK, BOREN TO MINOR NORTH SIDE | 1d | 2022-10-03 A | 2022-10-04 A | 1-0629 | 100% | 2022-10-03 | 2022-10-03 |  | MBRT BASE [16 h] | 16 | 16 | EA3 | 16 |  |  | ZONE-1 | BOREN | NORTH | SCL-FC |  | SIDEWALKS |
| 1-0631 |  | POUR SIDEWALK, BOREN TO MINOR NORTH SIDE | 6d | 2022-10-19 A | 2022-10-26 A | 1-0630 | 100% | 2022-10-04 | 2022-10-11 |  | MBRT BASE [48 h] | 48 | 48 | COM | 48 |  |  | ZONE-1 | BOREN | NORTH |  |  |  |
|  | 38 | **BOREN MADISON TO SPRING WEST SIDE** |  | 2023-10-02 | 2023-11-15 |  |  |  |  |  |  |  |  |  |  |  |  |  |  |  |  |  |  |
| 1-0633 |  | REM SIDEWALK, BOREN MAD TO SPRING WEST SIDE | 2d | 2023-10-02 A | 2023-10-02 A | 1-0630, 1-0615, 1-0625, 1-2985, 1-3215 | 100% | 2023-10-02 | 2023-10-03 |  | MBRT BASE [8 h] | 8 | 8 | EA3 | 8 | 1-0633 | 1-0633 | ZONE-1 | BOREN | WEST | SCL-FC |  |  |
| 1-0634 |  | TRENCH CONDUIT, BOREN MAD TO SPRING WEST SIDE | 2d | 2023-10-03 A | 2023-10-17 A | 1-0633 | 100% | 2023-10-04 | 2023-10-05 |  | MBRT BASE [88 h] | 88 | 88 | EA3 | 88 | 1-0634 | 1-0634 | ZONE-1 | BOREN | WEST | SCL-FC |  |  |
| 1-0635 |  | INST CONDUIT, BOREN MAD TO SPRING WEST SIDE | 2d | 2023-10-12 A | 2023-11-03 A | 1-0634 SS | 100% | 2023-10-04 | 2023-10-05 |  | MBRT BASE [136 h] | 136 | 136 | ELECRICAL SUB | 136 | 1-0635 | 1-0635 | ZONE-1 | BOREN | WEST | SCL-FC | ELECTRICAL |  |
| 1-0656 |  | FM 650 Sidewalk Change | 5d | 2023-10-28 A | 2023-11-03 A | 1-0633 | 100% | 2023-10-02 | 2023-10-06 |  | MBRT NEW [40 h] | 40 | 40 |  | 40 |  |  |  |  |  |  |  |  |
| 1-0636 |  | GRADE SIDEWALK, BOREN MAD TO SPRING WEST SIDE | 1d | 2023-11-10 A | 2023-11-14 A | 1-0635, 1-0656 | 100% | 2023-11-06 | 2023-11-06 |  | MBRT BASE [16 h] | 16 | 16 | EA3 | 16 | 1-0636 | 1-0636 | ZONE-1 | BOREN | WEST | SCL-FC |  | SIDEWALKS |
| 1-0637 |  | POUR SIDEWALK, BOREN MAD TO SPRING WEST SIDE | 6d | 2023-11-13 A | 2023-11-15 A | 1-0636 | 100% | 2023-11-07 | 2023-11-15 |  | MBRT BASE [16 h] | 16 | 16 | COM | 16 | 1-0637 | 1-0637 | ZONE-1 | BOREN | WEST | SCL-FC |  |  |
|  | 39 | **BOREN MADISON TO SPRING EAST SIDE** |  | 2023-11-30 | 2024-01-05 |  |  |  |  |  |  |  |  |  |  |  |  |  |  |  |  |  |  |
| 1-0639 |  | REM SIDEWALK, BOREN MAD TO SPRING EAST SIDE | 2d | 2023-11-30 A | 2023-12-01 A | 1-0637 | 100% | 2023-11-16 | 2023-11-17 |  | MBRT BASE [16 h] | 16 | 16 | EA3 | 16 | 1-0639 | 1-0639 | ZONE-1 | BOREN | EAST | SCL-FC |  |  |
| 1-0640 |  | TRENCH CONDUIT, BOREN MAD TO SPRING EAST SIDE | 2d | 2023-12-04 A | 2023-12-05 A | 1-0639 | 100% | 2023-11-20 | 2023-11-21 |  | MBRT BASE [16 h] | 16 | 16 | EA3 | 16 | 1-0640 | 1-0640 | ZONE-1 | BOREN | EAST | SCL-FC |  |  |
| 1-0641 |  | INST CONDUIT, BOREN MAD TO SPRING EAST SIDE | 2d | 2023-12-06 A | 2023-12-14 A | 1-0640 SS | 100% | 2023-11-20 | 2023-11-21 |  | MBRT BASE [56 h] | 56 | 56 | ELECRICAL SUB | 56 | 1-0641 | 1-0641 | ZONE-1 | BOREN | EAST | SCL-FC | ELECTRICAL |  |
| 1-0642 |  | GRADE SIDEWALK, BOREN MAD TO SPRING EAST SIDE | 1d | 2023-12-15 A | 2023-12-19 A | 1-0641 | 100% | 2023-12-14 | 2023-12-14 |  | MBRT BASE [24 h] | 24 | 24 | EA3 | 24 | 1-0642 | 1-0642 | ZONE-1 | BOREN | EAST | SCL-FC |  | SIDEWALKS |
| 1-0643 |  | POUR SIDEWALK, BOREN MAD TO SPRING EAST SIDE | 5d | 2023-12-20 A | 2024-01-05 A | 1-0642 | 100% | 2023-12-15 | 2023-12-21 |  | MBRT BASE [88 h] | 88 | 88 | COM | 88 | 1-0643 | 1-0643 | ZONE-1 | BOREN | EAST |  |  |  |

| ID | WBS | Activity | Duration | Start | Finish | Predecessors | Complete | Planned start | Planned finish | Resources | Cost | Actual cost | user_text2 | user_number6 | MBRT-ZONE | MBRT-LOCATION | MBRT-SIDE | MBRT-DELAY | user_text10 | user_text8 | MBRT-TYPE | MBRT-SCOPE |
| --- | --- | --- | --- | --- | --- | --- | --- | --- | --- | --- | --- | --- | --- | --- | --- | --- | --- | --- | --- | --- | --- | --- |
|  | 40 | **MINOR TO SUMMIT NORTH SIDE** |  | 2023-02-08 | 2023-04-07 |  |  |  |  |  |  |  |  |  |  |  |  |  |  |  |  |  |
| 1-0645 |  | REM SIDEWALK, MINOR TO SUMMIT NORTH SIDE | 2d | 2023-02-08 A | 2023-03-10 A | 1-0198, 1-2870 | 100% | 2023-02-23 | 2023-02-24 | MBRT BASE [176 h] | 176 | 176 | EA3 | 176 | ZONE-1 | MINOR | NORTH | SCL-FC |  |  |  |  |
| 1-0646 |  | TRENCH CONDUIT, MINOR TO SUMMIT NORTH SIDE | 2d | 2023-02-10 A | 2023-03-10 A | 1-0645 SS | 100% | 2023-02-27 | 2023-02-28 | MBRT BASE [160 h] | 160 | 160 | EA3 | 160 | ZONE-1 | MINOR | NORTH | SCL-FC |  |  |  |  |
| 1-0647 |  | INST CONDUIT, MINOR TO SUMMIT NORTH SIDE | 2d | 2023-02-10 A | 2023-04-07 A | 1-0646 SS | 100% | 2023-02-27 | 2023-02-28 | MBRT BASE [320 h] | 320 | 320 | ELECRICAL SUB | 320 | ZONE-1 | MINOR | NORTH | SCL-FC | 1-0647 | 1-0647 | ELECTRICAL |  |
| 1-0648 |  | GRADE SIDEWALK, MINOR TO SUMMIT NORTH SIDE | 1d | 2023-02-24 A | 2023-02-24 A | 1-0647 SS | 100% | 2023-03-01 | 2023-03-01 | MBRT BASE [8 h] | 8 | 8 | EA3 | 8 | ZONE-1 | MINOR | NORTH | SCL-FC |  |  |  | SIDEWALKS |
| 1-0649 |  | POUR SIDEWALK, MINOR TO SUMMIT NORTH SIDE | 5d | 2023-03-01 A | 2023-03-03 A | 1-0648, 1-0631 | 100% | 2023-03-30 | 2023-04-05 | MBRT BASE [24 h] | 24 | 24 | COM | 24 | ZONE-1 | MINOR | NORTH |  |  |  |  |  |
|  | 41 | **SUMMIT TO BOYLSON NORTH SIDE** |  | 2023-06-07 | 2023-06-12 |  |  |  |  |  |  |  |  |  |  |  |  |  |  |  |  |  |
| 1-0651 |  | REM SIDEWALK, SUMMIT TO BOYLSON NORTH SIDE | 1d | 2023-06-07 A | 2023-06-07 A | 1-0203, 1-0648 | 100% |  |  | MBRT BASE [8 h] | 8 | 8 | EA3 | 8 | ZONE-1 | SUMMIT | NORTH | SCL-FC | 1-0651 | 1-0651 |  |  |
| 1-0652 |  | TRENCH CONDUIT, SUMMIT TO BOYLSON NORTH SIDE | 1d | 2023-06-08 A | 2023-06-08 A | 1-0651 | 100% |  |  | MBRT BASE [8 h] | 8 | 8 | EA3 | 8 | ZONE-1 | SUMMIT | NORTH | SCL-FC | 1-0652 | 1-0652 |  |  |
| 1-0653 |  | INST CONDUIT, SUMMIT TO BOYLSON NORTH SIDE | 1d | 2023-06-08 A | 2023-06-08 A | 1-0652 SS | 100% |  |  | MBRT BASE [8 h] | 8 | 8 | ELECRICAL SUB | 8 | ZONE-1 | SUMMIT | NORTH | SCL-FC | 1-0653 | 1-0653 | ELECTRICAL |  |
| 1-0654 |  | GRADE SIDEWALK, SUMMIT TO BOYLSON NORTH SIDE | 1d | 2023-06-09 A | 2023-06-09 A | 1-0653 | 100% |  |  | MBRT BASE [8 h] | 8 | 8 | EA3 | 8 | ZONE-1 | SUMMIT | NORTH | SCL-FC | 1-0654 | 1-0654 |  | SIDEWALKS |
| 1-0655 |  | POUR SIDEWALK, SUMMIT TO BOYLSON NORTH SIDE | 1d | 2023-06-12 A | 2023-06-12 A | 1-0654, 1-0649 | 100% |  |  | MBRT BASE [8 h] | 8 | 8 | COM | 8 | ZONE-1 | SUMMIT | NORTH |  | 1-0655 | 1-0655 |  |  |
|  | 54 | **TERRY TO BOREN SOUTH SIDE** |  | 2023-05-17 | 2023-06-14 |  |  |  |  |  |  |  |  |  |  |  |  |  |  |  |  |  |
| 1-0722 |  | REM SIDEWALK, TERRY TO BOREN SOUTH SIDE | 2d | 2023-05-17 A | 2023-05-18 A | 1-0241 | 100% | 2023-06-27 | 2023-06-28 | MBRT BASE [16 h] | 16 | 16 | EA3 | 16 | ZONE-1 | TERRY | SOUTH | SCL-FC | 1-0722 | 1-0722 |  |  |
| 1-0723 |  | TRENCH CONDUIT, TERRY TO BOREN SOUTH SIDE | 3d | 2023-05-19 A | 2023-06-02 A | 1-0722 | 100% | 2023-06-29 | 2023-07-03 | MBRT BASE [80 h] | 80 | 80 | EA3 | 80 | ZONE-1 | TERRY | SOUTH | SCL-FC | 1-0723 | 1-0723 |  |  |
| 1-0724 |  | INST CONDUIT, TERRY TO BOREN SOUTH SIDE | 3d | 2023-05-31 A | 2023-06-02 A | 1-0723 SS | 100% |  |  | MBRT BASE [24 h] | 24 | 24 | ELECRICAL SUB | 24 | ZONE-1 | TERRY | SOUTH | SCL-FC | 1-0724 | 1-0724 | ELECTRICAL |  |
| 1-0725 |  | GRADE SIDEWALK, TERRY TO BOREN SOUTH SIDE | 2d | 2023-06-05 A | 2023-06-06 A | 1-0724 | 100% |  |  | MBRT BASE [16 h] | 16 | 16 | EA3 | 16 | ZONE-1 | TERRY | SOUTH | SCL-FC | 1-0725 | 1-0725 |  | SIDEWALKS |
| 1-0726 |  | POUR SIDEWALK, TERRY TO BOREN SOUTH SIDE | 6d | 2023-06-07 A | 2023-06-14 A | 1-0725 | 100% |  |  | MBRT BASE [48 h] | 48 | 48 | COM | 48 | ZONE-1 | TERRY | SOUTH |  | 1-0726 | 1-0726 |  |  |
|  | 55 | **BOREN TO MINOR SOUTH SIDE** |  | 2023-04-24 | 2023-09-20 |  |  |  |  |  |  |  |  |  |  |  |  |  |  |  |  |  |
| PCO644.01 |  | DSC 454-SIDE SEWER CONFLICT WITH POLE 40W-107-7 | 2d | 2023-04-24 A | 2023-06-30 A | MS-0025 | 100% | 2023-06-02 | 2023-06-05 | MBRT DSC [392 h] | 392 | 392 | EA3 | 392 | ZONE-1 | BOREN | SOUTH | SCL-FC | PCO644.01 | PCO644.01 |  |  |
| 1-3155 |  | RE-ROUTE SIDE SEWER | 1d | 2023-06-20 A | 2023-06-20 A | PCO644.01 FS-9d | 100% |  |  | MBRT NEW [8 h] | 8 | 8 | EA3 | 8 | ZONE-1 | BOREN | SOUTH | SCL-FC | 1-3155 | 1-3155 |  |  |
| PCO644.06 |  | INSTALL POLE FOUNDATIONS | 5d | 2023-07-19 A | 2023-07-25 A | 1-3155 | 100% | 2023-08-01 | 2023-08-07 | MBRT NEW [40 h] | 40 | 40 |  | 40 |  |  |  |  | PCO644.06 | PCO644.06 |  |  |
| 1-0728 |  | REM SIDEWALK, BOREN TO MINOR SOUTH SIDE | 2d | 2023-08-14 A | 2023-08-15 A | 1-0725, PCO644.01 SS, 1-3155, 1-3155 FF, PCO644.01, PCO644.06 | 100% |  |  | MBRT BASE [16 h] | 16 | 16 | EA3 | 16 | ZONE-1 | BOREN | SOUTH | SCL-FC | 1-0728 | 1-0728 |  |  |
| 1-0729 |  | TRENCH CONDUIT, BOREN TO MINOR SOUTH SIDE | 3d | 2023-08-16 A | 2023-08-18 A | 1-0728 | 100% |  |  | MBRT BASE [24 h] | 24 | 24 | EA3 | 24 | ZONE-1 | BOREN | SOUTH | SCL-FC | 1-0729 | 1-0729 |  |  |
| 1-0745 |  | DSC 591 SEC Boren Conflict with Pole PL09-21 | 8d | 2023-08-17 A | 2023-08-28 A | 1-0729 | 100% | 2023-08-14 | 2023-08-23 | MBRT DSC [64 h] | 64 | 64 |  | 64 |  |  |  |  |  |  |  |  |
| 1-0730 |  | INST CONDUIT, BOREN TO MINOR SOUTH SIDE | 3d | 2023-08-21 A | 2023-09-01 A | 1-0729 SS, 1-0745 SS, 1-0845 FF | 100% | 2023-08-16 | 2023-08-18 | MBRT BASE [80 h] | 80 | 80 | ELECRICAL SUB | 80 | ZONE-1 | BOREN | SOUTH | SCL-FC | 1-0730 | 1-0730 | ELECTRICAL |  |
| 1-0845 |  | DSC 598 SEC Boren Concrete Wall Obstruction | 1d | 2023-08-24 A | 2023-08-24 A | 1-0729 | 100% | 2023-08-14 | 2023-08-14 | MBRT DSC [8 h] | 8 | 8 |  | 8 |  |  |  |  |  |  |  |  |
| 1-0731 |  | GRADE SIDEWALK, BOREN TO MINOR SOUTH SIDE | 2d | 2023-09-05 A | 2023-09-08 A | 1-0730, 1-0745 | 100% | 2023-08-21 | 2023-08-22 | MBRT BASE [32 h] | 32 | 32 | EA3 | 32 | ZONE-1 | BOREN | SOUTH | SCL-FC | 1-0731 | 1-0731 |  | SIDEWALKS |
| 1-0732 |  | POUR SIDEWALK, BOREN TO MINOR SOUTH SIDE | 6d | 2023-09-11 A | 2023-09-20 A | 1-0731, 1-3245, 1-3215 | 100% | 2023-09-11 | 2023-09-18 | MBRT BASE [64 h] | 64 | 64 | COM | 64 | ZONE-1 | BOREN | SOUTH |  | 1-0732 | 1-0732 |  |  |

| ID | WBS | Activity | Duration | Start | Finish | Predecessors | Complete | Planned start | Planned finish | Resources | Cost | Actual cost | user_text2 | user_number6 | MBRT-ZONE | MBRT-LOCATION | MBRT-SIDE | MBRT-DELAY | MBRT-TYPE | MBRT-SCOPE | user_text10 | user_text8 |
| --- | --- | --- | --- | --- | --- | --- | --- | --- | --- | --- | --- | --- | --- | --- | --- | --- | --- | --- | --- | --- | --- | --- |
|  | 61 | **BOREN NE CORNER** |  | 2022-09-19 | 2022-10-26 |  |  |  |  |  |  |  |  |  |  |  |  |  |  |  |  |  |
| 1-2850 |  | REM SIDEWALK, BOREN NE CORNER | 2d | 2022-09-19 A | 2022-09-21 A | 1-0627 SS | 100% | 2023-06-02 | 2023-06-05 | MBRT NEW [16 h] | 16 | 24 | EA3 | 24 | ZONE-1 | BOREN | SOUTH | SCL-FC |  |  |  |  |
| 1-2855 |  | TRENCH CONDUIT, BOREN NE CORNER | 3d | 2022-09-22 A | 2022-09-27 A | 1-2850 | 100% | 2023-06-06 | 2023-06-08 | MBRT NEW [24 h] | 24 | 32 | EA3 | 32 | ZONE-1 | BOREN | SOUTH | SCL-FC |  |  |  |  |
| 1-2900 |  | TREE ROOT OBSTRUCTIONS | 2d | 2022-09-22 A | 2022-09-27 A | 1-2855 | 100% | 2023-06-02 | 2023-06-05 | MBRT NEW [16 h] | 16 | 32 | EA3 | 32 | ZONE-1 | BOREN | SOUTH | SCL-FC |  |  |  |  |
| 1-2860 |  | INST CONDUIT, BOREN NE CORNER | 3d | 2022-09-28 A | 2022-09-30 A | 1-2855 SS, 1-2900 | 100% | 2023-06-06 | 2023-06-08 | MBRT NEW [24 h] | 24 | 24 | ELECRICAL SUB | 24 | ZONE-1 | BOREN | SOUTH | SCL-FC | ELECTRICAL |  |  |  |
| 1-2865 |  | GRADE SIDEWALK, BOREN NE CORNER | 2d | 2022-10-03 A | 2022-10-04 A | 1-2860 | 100% | 2023-06-09 | 2023-06-12 | MBRT NEW [16 h] | 16 | 16 | EA3 | 16 | ZONE-1 | BOREN | SOUTH | SCL-FC |  | SIDEWALKS |  |  |
| 1-2870 |  | POUR SIDEWALK, BOREN NE CORNER | 6d | 2022-10-19 A | 2022-10-26 A | 1-2865 | 100% | 2023-06-13 | 2023-06-20 | MBRT NEW [48 h] | 48 | 48 | COM | 48 | ZONE-1 | BOREN | SOUTH |  |  |  |  |  |
|  | 63 | **TERRY SW CORNER** |  | 2023-04-27 | 2023-05-18 |  |  |  |  |  |  |  |  |  |  |  |  |  |  |  |  |  |
| 1-2910 |  | REM SIDEWALK, TERRY SW CORNER | 2d | 2023-04-27 A | 2023-04-27 A | 1-0622 | 100% | 2023-06-02 | 2023-06-05 | MBRT NEW [16 h] | 16 | 8 | EA3 | 8 | ZONE-1 | BOREN | SOUTH | SCL-FC |  |  | 1-2910 | 1-2910 |
| 1-2915 |  | TRENCH CONDUIT, TERRY SW CORNER | 3d | 2023-04-28 A | 2023-04-28 A | 1-2910 | 100% | 2023-06-06 | 2023-06-08 | MBRT NEW [24 h] | 24 | 8 | EA3 | 8 | ZONE-1 | BOREN | SOUTH | SCL-FC |  |  | 1-2915 | 1-2915 |
| 1-2920 |  | INST CONDUIT, TERRY SW CORNER | 3d | 2023-05-01 A | 2023-05-05 A | 1-2915 SS | 100% | 2023-05-01 | 2023-05-03 | MBRT NEW [24 h] | 24 | 40 | ELECRICAL SUB | 40 | ZONE-1 | BOREN | SOUTH | SCL-FC | ELECTRICAL |  | 1-2920 | 1-2920 |
| 1-2925 |  | GRADE SIDEWALK, TERRY SW CORNER | 2d | 2023-05-08 A | 2023-05-08 A | 1-2920, PCO668.01 SS | 100% | 2023-05-04 | 2023-05-05 | MBRT NEW [16 h] | 16 | 8 | EA3 | 8 | ZONE-1 | BOREN | SOUTH | SCL-FC |  | SIDEWALKS | 1-2925 | 1-2925 |
| PCO668.01 |  | DSC 471-OLD LIGHT POLE FOUNDATION | 3d | 2023-05-08 A | 2023-05-08 A | 1-2910 | 100% | 2023-05-01 | 2023-05-03 | MBRT DSC [8 h] | 8 | 8 | ELECRICAL SUB | 8 | ZONE-1 | BOREN | SOUTH | SCL-FC | ELECTRICAL |  | PCO668.01 | PCO668.01 |
| 1-2930 |  | POUR SIDEWALK, TERRY SW CORNER | 6d | 2023-05-16 A | 2023-05-18 A | 1-2925 | 100% | 2023-05-08 | 2023-05-15 | MBRT NEW [48 h] | 48 | 24 | COM | 24 | ZONE-1 | BOREN | SOUTH |  |  |  | 1-2930 | 1-2930 |
|  | 62 | **MINOR NW CORNER** |  | 2023-02-13 | 2023-05-04 |  |  |  |  |  |  |  |  |  |  |  |  |  |  |  |  |  |
| 1-2875 |  | REM SIDEWALK, MINOR NW CORNER | 2d | 2023-02-13 A | 2023-02-14 A | 1-0645 SS | 100% | 2023-06-02 | 2023-06-05 | MBRT NEW [16 h] | 16 | 16 | EA3 | 16 | ZONE-1 | BOREN | SOUTH | SCL-FC |  |  |  |  |
| 1-2880 |  | TRENCH CONDUIT, MINOR NW CORNER | 3d | 2023-02-15 A | 2023-02-16 A | 1-2875 | 100% | 2023-06-06 | 2023-06-08 | MBRT NEW [24 h] | 24 | 16 | EA3 | 16 | ZONE-1 | BOREN | SOUTH | SCL-FC |  |  |  |  |
| PCO606.01 |  | DSC 424-MULTIPLE CONFLICTS | 3d | 2023-02-17 A | 2023-04-13 A | 1-2880 | 100% | 2023-06-06 | 2023-06-08 | MBRT DSC [312 h] | 312 | 312 | ELECRICAL SUB | 312 | ZONE-1 | BOREN | SOUTH | SCL-FC | ELECTRICAL |  | PCO606.01 | PCO606.01 |
| 1-2890 |  | GRADE SIDEWALK, MINOR NW CORNER | 2d | 2023-04-14 A | 2023-04-14 A | PCO606.01 | 100% | 2023-06-09 | 2023-06-12 | MBRT NEW [16 h] | 16 | 8 | EA3 | 8 | ZONE-1 | BOREN | SOUTH | SCL-FC |  | SIDEWALKS | 1-2890 | 1-2890 |
| PCO636.01 |  | DSC 447-EXISTING HH CONFLICT WITH CURB RAMP | 3d | 2023-04-17 A | 2023-04-28 A | 1-2890 | 100% | 2023-06-06 | 2023-06-08 | MBRT DSC [80 h] | 80 | 80 | ELECRICAL SUB | 80 | ZONE-1 | BOREN | SOUTH | SCL-FC | ELECTRICAL |  | PCO636.01 | PCO636.01 |
| 1-2905 |  | CURB RAMPS, MINOR NW CORNER | 6d | 2023-05-01 A | 2023-05-02 A | PCO606.01 | 100% | 2023-05-01 | 2023-05-08 | MBRT NEW [48 h] | 48 | 16 | COM | 16 | ZONE-1 | BOREN | SOUTH |  |  |  | 1-2905 | 1-2905 |
| 1-2895 |  | POUR SIDEWALK, MINOR NW CORNER | 6d | 2023-05-03 A | 2023-05-04 A | 1-2905 | 100% | 2023-05-09 | 2023-05-16 | MBRT NEW [48 h] | 48 | 16 | COM | 16 | ZONE-1 | BOREN | SOUTH |  |  |  | 1-2895 | 1-2895 |
|  | 56 | **MINOR TO SUMMIT SOUTH SIDE** |  | 2023-05-11 | 2023-06-28 |  |  |  |  |  |  |  |  |  |  |  |  |  |  |  |  |  |
| 1-0734 |  | REM SIDEWALK, MINOR TO SUMMIT SOUTH SIDE | 2d | 2023-05-11 A | 2023-05-17 A | 1-0253, 1-2895 | 100% | 2023-07-18 | 2023-07-19 | MBRT BASE [40 h] | 40 | 40 | EA3 | 40 | ZONE-1 | MINOR | SOUTH | SCL-FC |  |  | 1-0734 | 1-0734 |
| PCO684.01 |  | DSC 486-DUCT BANK CONFLICT WITH CONDUIT | 2d | 2023-05-13 A | 2023-05-16 A | 1-0734 | 100% | 2023-07-18 | 2023-07-19 | MBRT DSC [16 h] | 16 | 16 | EA3 | 16 | ZONE-1 | MINOR | SOUTH | SCL-FC |  |  | PCO684.01 | PCO684.01 |
| PCO695.01 |  | DSC 497-MINOR POLE PL 10-07 LOCATION CHANGE | 2d | 2023-05-17 A | 2023-05-17 A | 1-0734 | 100% | 2023-07-18 | 2023-07-19 | MBRT DSC [8 h] | 8 | 8 | EA3 | 8 | ZONE-1 | MINOR | SOUTH | SCL-FC |  |  | PCO695.01 | PCO695.01 |
| 1-0735 |  | TRENCH CONDUIT, MINOR TO SUMMIT SOUTH SIDE | 3d | 2023-05-18 A | 2023-05-19 A | 1-0734, PCO696.01, PCO695.01, PCO684.01 | 100% | 2023-07-20 | 2023-07-24 | MBRT BASE [16 h] | 16 | 16 | EA3 | 16 | ZONE-1 | MINOR | SOUTH | SCL-FC |  |  | 1-0735 | 1-0735 |
| PCO696.01 |  | DSC 498-UKNOWN UNLOCATED CONDUIT | 2d | 2023-05-20 A | 2023-05-22 A | 1-0734 | 100% | 2023-07-18 | 2023-07-19 | MBRT DSC [8 h] | 8 | 8 | EA3 | 8 | ZONE-1 | MINOR | SOUTH | SCL-FC |  |  | PCO696.01 | PCO696.01 |
| 1-0736 |  | INST CONDUIT, MINOR TO SUMMIT SOUTH SIDE | 3d | 2023-05-22 A | 2023-06-06 A | 1-0735 SS | 100% | 2023-07-03 | 2023-07-06 | MBRT BASE [88 h] | 88 | 88 | ELECRICAL SUB | 88 | ZONE-1 | MINOR | SOUTH | SCL-FC | ELECTRICAL |  | 1-0736 | 1-0736 |
| 1-0775 |  | DSC 514-NEC Minor Type 3R Conflict wWith Existing Utilities | 1d | 2023-06-05 A | 2023-06-05 A | 1-0736 SS, 1-0736 FS-2d | 100% |  |  | MBRT DSC [8 h] | 8 | 8 |  | 8 |  |  |  |  |  |  | 1-0775 | 1-0775 |
| 1-0737 |  | GRADE SIDEWALK, MINOR TO SUMMIT SOUTH SIDE | 2d | 2023-06-07 A | 2023-06-08 A | 1-0736, 1-0775 | 100% |  |  | MBRT BASE [16 h] | 16 | 16 | EA3 | 16 | ZONE-1 | MINOR | SOUTH | SCL-FC |  | SIDEWALKS | 1-0737 | 1-0737 |
| 1-0758 |  | Additional Spare Conduit Installation | 1d | 2023-06-19 A | 2023-06-19 A | 1-0737 FS+6d, 1-0736 | 100% |  |  | MBRT NEW [8 h] | 8 | 8 |  | 8 |  |  |  |  |  |  | 1-0758 | 1-0758 |
| 1-0738 |  | POUR SIDEWALK, MINOR TO SUMMIT SOUTH SIDE | 5d | 2023-06-22 A | 2023-06-28 A | 1-0737, 1-0758 FS+2d | 100% |  |  | MBRT BASE [40 h] | 40 | 40 | COM | 40 | ZONE-1 | MINOR | SOUTH |  |  |  | 1-0738 | 1-0738 |

| ID | WBS | Activity | Duration | Start | Finish | Predecessors | Complete | Planned start | Planned finish | Resources | Cost | Actual cost | user_text2 | user_number6 | user_text10 | user_text8 | MBRT-ZONE | MBRT-LOCATION | MBRT-SIDE | MBRT-DELAY | MBRT-SCOPE | MBRT-TYPE |
| --- | --- | --- | --- | --- | --- | --- | --- | --- | --- | --- | --- | --- | --- | --- | --- | --- | --- | --- | --- | --- | --- | --- |
|  | 68 | **SUMMIT SW CORNER TO ALLOW PED ACCESS** |  | 2023-06-29 | 2023-08-16 |  |  |  |  |  |  |  |  |  |  |  |  |  |  |  |  |  |
| 1-3160 |  | REM SIDEWALK, SUMMIT SW CORNER | 1d | 2023-06-29 A | 2023-06-29 A | 1-0738 | 100% |  |  | MBRT NEW [8 h] | 8 | 8 | EA3 | 8 | 1-3160 | 1-3160 | ZONE-1 | BOREN | SOUTH | SCL-FC |  |  |
| 1-3165 |  | TRENCH CONDUIT, SUMMIT SW CORNER | 1d | 2023-06-30 A | 2023-06-30 A | 1-3160 | 100% |  |  | MBRT NEW [8 h] | 8 | 8 | EA3 | 8 | 1-3165 | 1-3165 | ZONE-1 | BOREN | SOUTH | SCL-FC |  |  |
| 1-3185 |  | INSTALL CONDUIT, SUMMIT SW CORNER | 4d | 2023-07-03 A | 2023-07-12 A | 1-3165 | 100% | 2023-07-03 | 2023-07-07 | MBRT NEW [32 h] | 32 | 56 | EA3 | 56 | 1-3185 | 1-3185 | ZONE-1 | BOREN | SOUTH | SCL-FC |  |  |
| 1-3170 |  | GRADE SIDEWALK, SUMMIT SW CORNER | 1d | 2023-08-10 A | 2023-08-10 A | 1-3165, 1-3185 | 100% | 2023-07-10 | 2023-07-10 | MBRT NEW [8 h] | 8 | 8 | EA3 | 8 | 1-3170 | 1-3170 | ZONE-1 | BOREN | SOUTH | SCL-FC | SIDEWALKS |  |
| 1-3180 |  | CURB RAMPS, SUMMIT SW CORNER | 2d | 2023-08-14 A | 2023-08-15 A | 1-3170 | 100% |  |  | MBRT NEW [16 h] | 16 | 16 | COM | 16 | 1-3180 | 1-3180 | ZONE-1 | BOREN | SOUTH |  |  |  |
| 1-3175 |  | POUR SIDEWALK, SUMMIT SW CORNER | 1d | 2023-08-16 A | 2023-08-16 A | 1-3180, 1-3170 | 100% |  |  | MBRT NEW [8 h] | 8 | 8 | COM | 8 | 1-3175 | 1-3175 | ZONE-1 | BOREN | SOUTH |  |  |  |
|  | 72 | **SUMMIT SE CORNER TO ALLOW PED ACCESS** |  | 2023-06-29 | 2023-08-16 |  |  |  |  |  |  |  |  |  |  |  |  |  |  |  |  |  |
| 1-3310 |  | REM SIDEWALK, SUMMIT SE CORNER | 1d | 2023-06-29 A | 2023-06-29 A | 1-3160 SS | 100% |  |  | MBRT NEW [8 h] | 8 | 8 | EA3 | 8 | 1-3310 | 1-3310 | ZONE-1 | BOREN | SOUTH | SCL-FC |  |  |
| 1-3315 |  | TRENCH CONDUIT, SUMMIT SE CORNER | 1d | 2023-06-30 A | 2023-06-30 A | 1-3310 | 100% |  |  | MBRT NEW [8 h] | 8 | 8 | EA3 | 8 | 1-3315 | 1-3315 | ZONE-1 | BOREN | SOUTH | SCL-FC |  |  |
| 1-3335 |  | INSTALL CONDUIT, SUMMIT SE CORNER | 4d | 2023-07-03 A | 2023-07-07 A | 1-3315 | 100% |  |  | MBRT NEW [32 h] | 32 | 32 | EA3 | 32 | 1-3335 | 1-3335 | ZONE-1 | BOREN | SOUTH | SCL-FC |  |  |
| DSC-554 |  | DSC 554 POLE 40E-776-7 CONFLICT | 16d | 2023-07-07 A | 2023-07-28 A | 1-3335 | 100% | 2023-07-03 | 2023-07-25 | MBRT DSC [128 h] | 128 | 128 |  | 128 |  |  |  |  |  |  |  |  |
| 1-3320 |  | GRADE SIDEWALK, SUMMIT SE CORNER | 1d | 2023-07-31 A | 2023-07-31 A | 1-3315, 1-3335, DSC-554 | 100% | 2023-07-10 | 2023-07-10 | MBRT NEW [8 h] | 8 | 8 | EA3 | 8 | 1-3320 | 1-3320 | ZONE-1 | BOREN | SOUTH | SCL-FC | SIDEWALKS |  |
| 1-3330 |  | CURB RAMPS, SUMMIT SE CORNER | 2d | 2023-08-14 A | 2023-08-15 A | 1-3320 | 100% |  |  | MBRT NEW [16 h] | 16 | 16 | COM | 16 | 1-3330 | 1-3330 | ZONE-1 | BOREN | SOUTH |  |  |  |
| 1-3325 |  | POUR SIDEWALK, SUMMIT SE CORNER | 1d | 2023-08-16 A | 2023-08-16 A | 1-3330, 1-3320, 1-3175 | 100% | 2023-08-17 | 2023-08-17 | MBRT NEW [8 h] | 8 | 8 | COM | 8 | 1-3325 | 1-3325 | ZONE-1 | BOREN | SOUTH |  |  |  |
|  | 42 | **BOYLSTON TO BROADWAY NORTH SIDE** |  | 2022-11-18 | 2023-02-27 |  |  |  |  |  |  |  |  |  |  |  |  |  |  |  |  |  |
| PCO466.01 |  | DSC 338-Existing Conduit Boyleston alley | 5d | 2022-11-18 A | 2022-11-20 A | MS-0025 | 100% | 2023-02-27 | 2023-03-03 | MBRT DSC [8 h] | 8 | 8 |  | 8 |  |  |  |  |  |  |  |  |
| 1-0657 |  | REM SIDEWALK, BOYLSTON TO BROADWAY NORTH SIDE | 3d | 2023-01-31 A | 2023-02-02 A | 1-0210 | 100% |  |  | MBRT BASE [24 h] | 24 | 24 | EA3 | 24 |  |  | ZONE-1 | BOYLSTON | NORTH | SCL-FC |  |  |
| 1-0658 |  | TRENCH CONDUIT, BOYLSTON TO BROADWAY NORTH SIDE | 3d | 2023-01-31 A | 2023-02-02 A | 1-0657 SS | 100% | 2023-02-03 | 2023-02-07 | MBRT BASE [24 h] | 24 | 24 | EA3 | 24 |  |  | ZONE-1 | BOYLSTON | NORTH |  |  |  |
| 1-0659 |  | INST CONDUIT, BOYLSTON TO BROADWAY NORTH SIDE | 3d | 2023-01-31 A | 2023-02-16 A | 1-0658 SS | 100% | 2023-02-03 | 2023-02-07 | MBRT BASE [104 h] | 104 | 104 | ELECRICAL SUB | 104 |  |  | ZONE-1 | BOYLSTON | NORTH |  |  | ELECTRICAL |
| 1-0660 |  | GRADE SIDEWALK, BOYLSTON TO BROADWAY NORTH SIDE | 1d | 2023-02-17 A | 2023-02-17 A | 1-0659 | 100% | 2023-02-08 | 2023-02-08 | MBRT BASE [8 h] | 8 | 8 | EA3 | 8 |  |  | ZONE-1 | BOYLSTON | NORTH |  | SIDEWALKS |  |
| 1-0661 |  | POUR SIDEWALK, BOYLSTON TO BROADWAY NORTH SIDE | 6d | 2023-02-20 A | 2023-02-27 A | 1-0660 | 100% | 2023-03-22 | 2023-03-29 | MBRT BASE [40 h] | 40 | 40 | COM | 40 |  |  | ZONE-1 | BOYLSTON | NORTH |  |  |  |
|  | 57 | **SUMMIT TO BOYLSTON SOUTH SIDE** |  | 2023-06-07 | 2023-06-12 |  |  |  |  |  |  |  |  |  |  |  |  |  |  |  |  |  |
| 1-0740 |  | REM SIDEWALK, SUMMIT TO BOYLSTON SOUTH SIDE | 1d | 2023-06-07 A | 2023-06-07 A | 1-0258, 1-0737 SS, 1-0418 | 100% |  |  | MBRT BASE [8 h] | 8 | 8 | EA3 | 8 | 1-0740 | 1-0740 | ZONE-1 | SUMMIT | SOUTH | SCL-FC |  |  |
| 1-0741 |  | TRENCH CONDUIT, SUMMIT TO BOYLSTON SOUTH SIDE | 1d | 2023-06-08 A | 2023-06-08 A | 1-0740 | 100% |  |  | MBRT BASE [8 h] | 8 | 8 | EA3 | 8 | 1-0741 | 1-0741 | ZONE-1 | SUMMIT | SOUTH | SCL-FC |  |  |
| 1-0742 |  | INST CONDUIT, SUMMIT TO BOYLSTON SOUTH SIDE | 1d | 2023-06-08 A | 2023-06-08 A | 1-0741 SS | 100% |  |  | MBRT BASE [8 h] | 8 | 8 | ELECRICAL SUB | 8 | 1-0742 | 1-0742 | ZONE-1 | SUMMIT | SOUTH | SCL-FC |  | ELECTRICAL |
| 1-0743 |  | GRADE SIDEWALK, SUMMIT TO BOYLSTON SOUTH SIDE | 1d | 2023-06-09 A | 2023-06-09 A | 1-0742 | 100% |  |  | MBRT BASE [8 h] | 8 | 8 | EA3 | 8 | 1-0743 | 1-0743 | ZONE-1 | SUMMIT | SOUTH | SCL-FC | SIDEWALKS |  |
| 1-0744 |  | POUR SIDEWALK, SUMMIT TO BOYLSTON SOUTH SIDE | 1d | 2023-06-12 A | 2023-06-12 A | 1-0743 | 100% |  |  | MBRT BASE [8 h] | 8 | 8 | COM | 8 | 1-0744 | 1-0744 | ZONE-1 | SUMMIT | SOUTH |  |  |  |

| ID | WBS | Activity | Duration | Start | Finish | Predecessors | Complete | Planned start | Planned finish | Total float | Free float | Resources | Cost | Actual cost | ~SELECT | user_number6 | user_text10 | user_text8 | user_text2 | MBRT-ZONE | MBRT-LOCATION | MBRT-SIDE | MBRT-DELAY | MBRT-TYPE | MBRT-SCOPE |
| --- | --- | --- | --- | --- | --- | --- | --- | --- | --- | --- | --- | --- | --- | --- | --- | --- | --- | --- | --- | --- | --- | --- | --- | --- | --- |
|  | 75 | **SW BOYLESTON** |  | 2023-07-03 | 2024-01-05 |  |  |  |  |  |  |  |  |  |  |  |  |  |  |  |  |  |  |  |  |
| 1-9089 |  | REMOVE SIDEWALK | 1d | 2023-07-03 A | 2023-07-03 A | 1-0744 | 100% | 2023-08-14 | 2023-08-14 |  |  | MBRT NEW [8 h] | 8 | 8 | x | 8 | 1-9089 | 1-9089 |  |  |  |  |  |  |  |
| 1-9090 |  | TRENCH ELECTRICAL | 1d | 2023-07-05 A | 2023-07-06 A | 1-9089 | 100% | 2023-08-15 | 2023-08-15 |  |  | MBRT NEW [8 h] | 8 | 16 | x | 16 | 1-9090 | 1-9090 |  |  |  |  |  |  |  |
| DSC-551 |  | DSC 551 CONDUIT CONFLICT WITH FOUNDATION | 36d | 2023-07-05 A | 2023-08-23 A | 1-9090 SS | 100% | 2023-07-03 | 2023-08-22 |  |  | MBRT DSC [288 h] | 288 | 288 |  | 288 |  |  |  |  |  |  |  |  |  |
| 1-9091 |  | INSTALL ELECTRICAL | 3d | 2023-07-07 A | 2023-08-22 A | 1-9090 | 100% | 2023-08-16 | 2023-08-18 |  |  | MBRT NEW [24 h] | 24 | 272 | x | 264 | 1-9091 | 1-9091 |  |  |  |  |  |  |  |
| 1-9096 |  | DSC 597 SWC Boyleston Prime Conflicts | 3d | 2023-08-23 A | 2023-08-25 A | 1-9091, DSC-551 | 100% | 2023-08-14 | 2023-08-16 |  |  | MBRT DSC [24 h] | 24 | 24 |  | 24 |  |  |  |  |  |  |  |  |  |
| 1-9101 |  | DSC 602 Dry Rot Pole | 69d | 2023-08-24 A | 2023-12-04 A | 1-9091, 1-9096 SS | 100% | 2023-08-14 | 2023-11-20 |  |  | MBRT DSC [552 h] | 552 | 552 |  | 552 |  |  |  |  |  |  |  |  |  |
| 1-9106 |  | DSC 618 LIGHITNG CONDUIT CONFLICT | 9d | 2023-09-12 A | 2023-09-22 A | 1-9101 SS, 1-9096 | 100% | 2023-09-11 | 2023-09-21 |  |  | MBRT DSC [72 h] | 72 | 72 |  | 72 |  |  |  |  |  |  |  |  |  |
| 1-9092 |  | GRADE SIDEWALKS | 1d | 2023-12-05 A | 2023-12-05 A | 1-9091, DSC-551, 1-9096, 1-9101 FF, 1-9106, 1-9101 | 100% | 2023-11-07 | 2023-11-07 |  |  | MBRT NEW [8 h] | 8 | 8 | x | 8 | 1-9092 | 1-9092 |  |  |  |  |  |  |  |
| 1-9097 |  | DSC 658 SCL POLE CONFLICT WITH CURB RAMPS | 12d | 2023-12-06 A | 2023-12-21 A | 1-9092 | 100% | 2023-11-02 | 2023-11-20 |  |  | MBRT DSC [96 h] | 96 | 96 |  | 96 |  |  |  |  |  |  |  |  |  |
| 1-9093 |  | CURB RAMPS | 2d | 2023-12-22 A | 2023-12-26 A | 1-9092, 1-9097 | 100% | 2023-12-12 | 2023-12-13 |  |  | MBRT NEW [16 h] | 16 | 16 | x | 16 | 1-9093 | 1-9093 |  |  |  |  |  |  |  |
| 1-9094 |  | SIDEWALKS | 1d | 2023-12-27 A | 2024-01-05 A | 1-9093, 1-3325 | 100% | 2023-12-14 | 2023-12-14 |  |  | MBRT NEW [8 h] | 8 | 56 | x | 56 | 1-9094 | 1-9094 |  |  |  |  |  |  |  |
|  | 58 | **BOYLSTON TO BROADWAY SOUTH SIDE** |  | 2023-07-10 | 2023-07-24 |  |  |  |  |  |  |  |  |  |  |  |  |  |  |  |  |  |  |  |  |
| 1-0746 |  | REM SIDEWALK, BOYLSTON TO BW SOUTH SIDE | 2d | 2023-07-10 A | 2023-07-10 A | 1-0743, 1-0655 | 100% | 2023-08-14 | 2023-08-15 |  |  | MBRT BASE [8 h] | 8 | 8 |  | 8 | 1-0746 | 1-0746 | EA3 | ZONE-1 | BOYLSTON | SOUTH | SCL-FC |  |  |
| DSC-555 |  | DSC 555 SEC BOYLESTON MULTIPLE CONFLICTS | 1d | 2023-07-10 A | 2023-07-10 A | 1-0746 SS | 100% | 2023-07-03 | 2023-07-03 |  |  | MBRT DSC [8 h] | 8 | 8 |  | 8 |  |  |  |  |  |  |  |  |  |
| DSC-557 |  | DSC 557 PS POLE CONFLICT WITH CONDUITS | 1d | 2023-07-10 A | 2023-07-10 A | 1-0746 SS | 100% | 2023-07-03 | 2023-07-03 |  |  | MBRT DSC [8 h] | 8 | 8 |  | 8 |  |  |  |  |  |  |  |  |  |
| 1-0747 |  | TRENCH CONDUIT, BOYLSTON TO BW SOUTH SIDE | 2d | 2023-07-11 A | 2023-07-11 A | 1-0746, DSC-557, DSC-555 | 100% | 2023-08-16 | 2023-08-17 |  |  | MBRT BASE [8 h] | 8 | 8 |  | 8 | 1-0747 | 1-0747 | EA3 | ZONE-1 | BOYLSTON | SOUTH | SCL-FC |  |  |
| 1-0748 |  | INST CONDUIT, BOYLSTON TO BW SOUTH SIDE | 3d | 2023-07-11 A | 2023-07-17 A | 1-0747 SS | 100% | 2023-08-16 | 2023-08-18 |  |  | MBRT BASE [40 h] | 40 | 40 |  | 40 | 1-0748 | 1-0748 | ELECRICAL SUB | ZONE-1 | BOYLSTON | SOUTH | SCL-FC | ELECTRICAL |  |
| 1-0749 |  | GRADE SIDEWALK, BOYLSTON TO BW SOUTH SIDE | 3d | 2023-07-18 A | 2023-07-20 A | 1-0748 | 100% | 2023-08-21 | 2023-08-23 |  |  | MBRT BASE [24 h] | 24 | 24 |  | 24 | 1-0749 | 1-0749 | EA3 | ZONE-1 | BOYLSTON | SOUTH | SCL-FC |  | SIDEWALKS |
| 1-0750 |  | POUR SIDEWALK, BOYLSTON TO BW SOUTH SIDE | 6d | 2023-07-21 A | 2023-07-24 A | 1-0749, 1-0744 | 100% | 2023-08-24 | 2023-08-31 |  |  | MBRT BASE [16 h] | 16 | 16 |  | 16 | 1-0750 | 1-0750 | COM | ZONE-1 | BOYLSTON | SOUTH | SCL-FC |  |  |
|  | 9 | **MILLING AND PAVING** |  | 2023-07-12 | 2024-04-25 |  |  |  |  |  |  |  |  |  |  |  |  |  |  |  |  |  |  |  |  |
| 1-0752 |  | MILL SPRING 1ST TO 6TH, MILLING & PAVING | 3d | 2023-07-12 A | 2023-07-17 A | 1-0616, 1-1315, 1-2945, 1-0286 | 100% | 2023-06-12 | 2023-06-14 |  |  | MBRT BASE [32 h] | 32 | 32 |  | 32 | 1-0752 | 1-0752 | MILLING SUB,EAS | ZONE-1 |  |  |  |  |  |
| 1-0753 |  | MILL SPRING 6TH TO 9TH, MILLING & PAVING | 3d | 2023-07-12 A | 2023-07-17 A | 1-0752 | 100% | 2023-06-15 | 2023-06-19 |  |  | MBRT BASE [32 h] | 32 | 32 |  | 32 | 1-0753 | 1-0753 | MILLING SUB,EAS | ZONE-1 |  |  |  |  |  |
| 1-0754 |  | MILL MAD 1ST TO 6TH, MILLING & PAVING | 1d | 2023-07-12 A | 2023-07-17 A | 1-0753 | 100% | 2023-06-20 | 2023-06-20 |  |  | MBRT BASE [32 h] | 32 | 32 |  | 32 | 1-0754 | 1-0754 | MILLING SUB,EAS | ZONE-1 |  |  |  |  |  |
| DSC-561 |  | DSC 561 SINK HOLE | 11d | 2023-07-14 A | 2023-07-28 A | 1-0753 SS | 100% | 2023-07-03 | 2023-07-18 |  |  | MBRT DSC [88 h] | 88 | 88 |  | 88 |  |  |  |  |  |  |  |  |  |
| 1-0756 |  | PREP FOR PAVING, MILLING AND PAVING | 10d | 2023-07-18 A | 2023-07-28 A | DSC-561 SS, DSC-561 FF | 100% | 2023-08-22 | 2023-09-05 |  |  | MBRT BASE [72 h] | 72 | 72 |  | 72 | 1-0756 | 1-0756 | EAS | ZONE-1 |  |  |  |  |  |
| 1-0757 |  | PAVE SPRING 1ST TO 9TH, MADISON 1ST TO 3RD, 7TH MADISON TO SPRING AND 6TH MADISON TO SPRING | 5d | 2023-07-31 A | 2023-08-03 A | 1-0756, DSC-561 | 100% | 2023-09-06 | 2023-09-12 |  |  | MBRT BASE [32 h] | 32 | 32 |  | 32 | 1-0757 | 1-0757 | ASPHALT SUB,EAS | ZONE-1 |  |  |  |  |  |
| 1-0755 |  | MILL MAD 6TH TO BROADWAY, MILLING & PAVING | 3d | 2024-04-22 | 2024-04-24 | 1-0754 FS+40d, 1-0555 |  |  |  | -77d | 0d | MBRT BASE [24 h] | 24 |  |  | 24 | 1-0755 | 1-0755 | MILLING SUB,EAS | ZONE-1 |  |  |  |  |  |
| 1-0810 |  | PAVE REMAINING ZONE 1 | 0d | 2024-04-25 | 2024-04-25 | 1-0755 |  |  |  | -77d | 0d | MBRT NEW |  |  |  | 0 |  |  |  |  |  |  |  |  |  |

| ID | WBS | Activity | Duration | Start | Finish | Predecessors | Complete | Planned start | Planned finish | Resources | Cost | Actual cost | user_text2 | user_number6 | user_text10 | user_text8 | MBRT-ZONE | MBRT-LOCATION | MBRT-TYPE | MBRT-RESP |
| --- | --- | --- | --- | --- | --- | --- | --- | --- | --- | --- | --- | --- | --- | --- | --- | --- | --- | --- | --- | --- |
|  | 10 | **MEDIAN STATION PLATFORMS** |  | 2024-01-02 | 2024-03-05 |  |  |  |  |  |  |  |  |  |  |  |  |  |  |  |
|  | 1 | **MADISON AND 8TH WB** |  | 2024-02-07 | 2024-03-05 |  |  |  |  |  |  |  |  |  |  |  |  |  |  |  |
| 1-0760 |  | REMOVE TEMP PAVING, MAD AND 8TH WB | 2d | 2024-02-07 A | 2024-02-08 A | 1-0749, 1-0702 | 100% | 2023-12-18 | 2023-12-19 | MBRT BASE [16 h] | 16 | 16 | EA3 | 16 | 1-0760 | 1-0760 | ZONE-1 | 08 |  |  |
| 1-0761 |  | TRENCH CONDUIT, MAD AND 8TH WB | 2d | 2024-02-07 A | 2024-02-08 A | 1-0760 | 100% | 2023-12-20 | 2023-12-21 | MBRT BASE [16 h] | 16 | 16 | EA3 | 16 | 1-0761 | 1-0761 | ZONE-1 | 08 |  |  |
| 1-0762 |  | INST CONDUIT, MAD AND 8TH WB | 2d | 2024-02-09 A | 2024-02-15 A | 1-0761 SS | 100% | 2023-12-20 | 2023-12-21 | MBRT BASE [40 h] | 40 | 40 | ELECRICAL SUB | 40 | 1-0762 | 1-0762 | ZONE-1 | 08 | ELECTRICAL | PRIME |
| 1-0763 |  | STATION FOUNDATIONS, MAD AND 8TH WB | 3d | 2024-02-19 A | 2024-02-20 A | 1-0762 | 100% | 2024-02-20 | 2024-02-22 | MBRT BASE [8 h] | 8 | 8 | COM | 8 | 1-0763 | 1-0763 | ZONE-1 | 08 |  |  |
| 1-0765 |  | GRADE FOR CONCRETE, MAD AND 8TH WB | 2d | 2024-02-28 A | 2024-02-28 A | 1-0763 | 100% | 2024-02-27 | 2024-02-28 | MBRT BASE [8 h] | 8 | 8 | EA3 | 8 | 1-0765 | 1-0765 | ZONE-1 | 08 |  |  |
| 1-0764 |  | STATION NOSING, MAD AND 8TH WB | 1d | 2024-03-04 A | 2024-03-04 A | 1-0763 | 100% |  |  | MBRT BASE [8 h] | 8 |  | COM | 8 | 1-0764 | 1-0764 | ZONE-1 | 08 |  |  |
| 1-0766 |  | STATION SIDEWALKS, MAD AND 8TH WB | 1d | 2024-03-05 A | 2024-03-05 A | 1-0765, 1-0765 FF, 1-0764 | 100% |  |  | MBRT BASE [8 h] | 8 |  | COM | 8 | 1-0766 | 1-0766 | ZONE-1 | 08 |  |  |
|  | 2 | **MADISON AND TERRY** |  | 2024-01-02 | 2024-02-08 |  |  |  |  |  |  |  |  |  |  |  |  |  |  |  |
| 1-0768 |  | REMOVE TEMP PAVING, MAD AND TERRY | 2d | 2024-01-02 A | 2024-01-12 A | 1-0769 SS | 100% | 2024-01-04 | 2024-01-05 | MBRT BASE [72 h] | 72 | 72 | EA3 | 72 | 1-0768 | 1-0768 | ZONE-1 | TERRY |  |  |
| 1-0769 |  | TRENCH CONDUIT, MAD AND TERRY | 2d | 2024-01-02 A | 2024-01-12 A | 1-0641 | 100% | 2024-01-08 | 2024-01-09 | MBRT BASE [72 h] | 72 | 72 | EA3 | 72 | 1-0769 | 1-0769 | ZONE-1 | TERRY |  |  |
| 1-0770 |  | INST CONDUIT, MAD AND TERRY | 2d | 2024-01-16 A | 2024-01-30 A | 1-0769 SS, 1-0768 | 100% | 2024-01-08 | 2024-01-09 | MBRT BASE [88 h] | 88 | 88 | ELECRICAL SUB | 88 | 1-0770 | 1-0770 | ZONE-1 | TERRY | ELECTRICAL | PRIME |
| 1-0771 |  | STATION FOUNDATIONS, MAD AND TERRY | 3d | 2024-01-25 A | 2024-02-01 A | 1-0770 | 100% | 2024-01-10 | 2024-01-12 | MBRT BASE [48 h] | 48 | 48 | COM | 48 | 1-0771 | 1-0771 | ZONE-1 | TERRY |  |  |
| 1-0773 |  | GRADE FOR CONCRETE, MAD AND TERRY | 3d | 2024-01-29 A | 2024-01-30 A | 1-0770 FF, 1-0771 SS | 100% | 2024-01-18 | 2024-01-22 | MBRT BASE [16 h] | 16 | 16 | EA3 | 16 | 1-0773 | 1-0773 | ZONE-1 | TERRY |  |  |
| 1-0772 |  | STATION NOSING, MAD AND TERRY | 2d | 2024-02-05 A | 2024-02-08 A | 1-0771 | 100% | 2024-01-16 | 2024-01-17 | MBRT BASE [32 h] | 32 | 32 | COM | 32 | 1-0772 | 1-0772 | ZONE-1 | TERRY |  |  |
| 1-0774 |  | STATION SIDEWALKS, MAD AND TERRY | 5d | 2024-02-05 A | 2024-02-08 A | 1-0773, 1-0772 FF | 100% | 2024-01-23 | 2024-01-29 | MBRT BASE [32 h] | 32 | 32 | COM | 32 | 1-0774 | 1-0774 | ZONE-1 | TERRY |  |  |
|  | 3 | **MADISON AND BOYLSTON** |  | 2024-01-11 | 2024-03-01 |  |  |  |  |  |  |  |  |  |  |  |  |  |  |  |
| 1-0776 |  | REMOVE TEMP PAVING, MAD AND BOYLSTON | 3d | 2024-01-11 A | 2024-01-12 A | 1-0773, 1-7080 | 100% | 2024-01-23 | 2024-01-25 | MBRT BASE [16 h] | 16 | 16 | EA3 | 16 | 1-0776 | 1-0776 | ZONE-1 | BOYLSTON |  |  |
| 1-0777 |  | TRENCH CONDUIT, MAD AND BOYLSTON | 2d | 2024-01-19 A | 2024-01-26 A | 1-0776 | 100% | 2024-01-26 | 2024-01-29 | MBRT BASE [48 h] | 48 | 48 | EA3 | 48 | 1-0777 | 1-0777 | ZONE-1 | BOYLSTON |  |  |
| 1-0778 |  | INST CONDUIT, MAD AND BOYLSTON | 2d | 2024-01-29 A | 2024-02-09 A | 1-0777 SS | 100% | 2024-01-26 | 2024-01-29 | MBRT BASE [80 h] | 80 | 80 | ELECRICAL SUB | 80 | 1-0778 | 1-0778 | ZONE-1 | BOYLSTON | ELECTRICAL | PRIME |
| 1-0779 |  | STATION FOUNDATIONS, MAD & BOYLSTON | 4d | 2024-01-30 A | 2024-02-16 A | 1-0778 SS | 100% | 2024-01-30 | 2024-02-02 | MBRT BASE [112 h] | 112 | 112 | COM | 112 | 1-0779 | 1-0779 | ZONE-1 | BOYLSTON |  |  |
| 1-0781 |  | GRADE FOR CONCRETE, MAD AND BOYLSTON | 4d | 2024-02-21 A | 2024-02-23 A | 1-0779 | 100% | 2024-02-22 | 2024-02-27 | MBRT BASE [24 h] | 24 | 24 | EA3 | 24 | 1-0781 | 1-0781 | ZONE-1 | BOYLSTON |  |  |
| 1-0782 |  | STATION SIDEWALKS, MAD AND BOYLSTON | 6d | 2024-02-23 A | 2024-03-01 A | 1-0781, 1-2765, 1-0780 FF | 100% | 2024-02-28 | 2024-03-06 | MBRT BASE [48 h] | 48 | 48 | COM | 48 | 1-0782 | 1-0782 | ZONE-1 | BOYLSTON |  |  |
| 1-0780 |  | STATION NOSING, MAD AND BOYLSTON | 2d | 2024-02-27 A | 2024-02-27 A | 1-0779 | 100% | 2024-02-20 | 2024-02-21 | MBRT BASE [8 h] | 8 | 8 | COM | 8 | 1-0780 | 1-0780 | ZONE-1 | BOYLSTON |  |  |

| ID | WBS | Activity | Duration | Start | Finish | Predecessors | Complete | Remaining | Planned start | Planned finish | Total float | Free float | Calendar | Resources | Cost | Actual cost | user_number6 | user_text10 | user_text8 | MBRT-ZONE | user_text2 | ~TEXT | MBRT-LOCATION | MBRT-TYPE | MBRT-RESP | MBRT-ACTIVITY | ~SELECT |
| --- | --- | --- | --- | --- | --- | --- | --- | --- | --- | --- | --- | --- | --- | --- | --- | --- | --- | --- | --- | --- | --- | --- | --- | --- | --- | --- | --- |
|  | 11 | **STRIPING AND SIGNS** |  | 2023-08-04 | 2023-10-20 |  |  |  |  |  |  |  |  |  |  |  |  |  |  |  |  |  |  |  |  |  |  |
| 1-0784 |  | CURE TIME, STRIPING AND SIGNS | 21d | 2023-08-04 A | 2023-08-25 A | 1-0757 | 100% |  | 2023-09-13 | 2023-10-03 |  |  | 7 day per week | MBRT BASE |  |  | 176 | 1-0784 | 1-0784 | ZONE-1 |  |  |  |  |  |  |  |
| 1-0785 |  | CHANNELIZATION, STRIPING AND SIGNS | 15d | 2023-08-28 A | 2023-09-15 A | 1-0784, 1-0506 | 100% |  | 2023-09-05 | 2023-09-25 |  |  |  | MBRT BASE [112 h] | 112 | 112 | 112 | 1-0785 | 1-0785 | ZONE-1 | STRIPING SUB |  |  |  |  |  |  |
| 1-0786 |  | INST SIGNS, STRIPING AND SIGNS | 15d | 2023-09-22 A | 2023-10-20 A | 1-0784 SS | 100% |  | 2023-09-11 | 2023-09-29 |  |  |  | MBRT BASE [168 h] | 168 | 168 | 168 | 1-0786 | 1-0786 | ZONE-1 | ZZZ |  |  |  |  |  |  |
|  | 12 | **I-5 ENHANCEMENTS** |  | 2024-02-20 | 2024-06-10 |  |  |  |  |  |  |  |  |  |  |  |  |  |  |  |  |  |  |  |  |  |  |
| 1-0793 |  | DELAY AWAITING DC | 0d | 2024-02-20 A | 2024-05-28 | 1-0779 |  | 40d | 2024-02-12 | 2024-02-12 | -109d | 0d |  | MBRT NEW |  |  | 72 |  |  |  |  |  |  |  |  |  |  |
| 1-0788 |  | INST PLANTERS, I-5 ENHANCEMENTS | 2d | 2024-05-29 | 2024-05-30 | 1-0781, 1-0785, 1-0786, LS-1480 FF, 1-0793, 1-0782 |  |  |  |  | -109d | 0d |  | MBRT BASE [16 h] | 16 |  | 16 | 1-0788 | 1-0788 | ZONE-1 | EA3 |  |  |  |  |  |  |
| 1-0789 |  | INST DECORATIVE METAL, I-5 ENHANCEMENTS | 4d | 2024-05-31 | 2024-06-05 | 1-0788, LS-1485 FF |  |  |  |  | -109d | 0d |  | MBRT BASE [32 h] | 32 |  | 32 | 1-0789 | 1-0789 | ZONE-1 | ZZZZ |  |  |  |  |  |  |
| 1-0790 |  | PLANT PLANTERS, I-5 ENHANCEMENTS | 3d | 2024-06-06 | 2024-06-10 | 1-0789, LS-1490 FF |  |  |  |  | -109d | 29d |  | MBRT BASE [24 h] | 24 |  | 24 | 1-0790 | 1-0790 | ZONE-1 | LANDSCAPING SUB |  |  |  |  |  |  |
|  | 13 | **LANDSCAPING** |  | 2022-10-12 | 2023-12-15 |  |  |  |  |  |  |  |  |  |  |  |  |  |  |  |  |  |  |  |  |  |  |
| 1-0792 |  | LANDSCAPE, INST FLEXIBLE POUROUS PAVMENT | 15d | 2022-10-12 A | 2023-06-20 A | 1-0546 | 100% |  | 2023-05-12 | 2023-06-02 |  |  |  | MBRT BASE |  |  | 1376 | 1-0792 | 1-0792 | ZONE-1 | COM |  |  |  |  |  |  |
| 1-0822 |  | INSTALL TREES AND SHRUBS | 10d | 2023-11-06 A | 2023-12-15 A | 1-0782 FF, 1-0786 | 100% |  | 2024-01-22 | 2024-02-02 |  |  |  | MBRT BASE [216 h] | 216 | 216 | 216 | 1-0822 | 1-0822 |  |  |  |  |  |  |  |  |
|  | 14 | **SIGNALS** |  | 2022-12-08 | 2024-06-19 |  |  |  |  |  |  |  |  |  |  |  |  |  |  |  |  |  |  |  |  |  |  |
|  | 1 | **1ST AND SPRING** |  | 2023-09-05 | 2024-01-09 |  |  |  |  |  |  |  |  |  |  |  |  |  |  |  |  |  |  |  |  |  |  |
| 1-9867 |  | INST SERVICE CABINET, SPRING AND 9TH | 1d | 2023-09-05 A | 2023-09-05 A | 1-0559 | 100% |  | 2023-09-11 | 2023-09-11 |  |  |  | MBRT NEW [8 h] | 8 | 8 | 8 | 1-9867 | 1-9867 | ZONE-1 | ELECRICAL SUB | POLES1 | SPRING | SIGNALS | PRIME |  |  |
| 1-9882 |  | SDCI INSPECTION | 1d | 2023-09-14 A | 2023-09-14 A | 1-9867 | 100% |  | 2023-09-12 | 2023-09-12 |  |  |  | MBRT NEW |  |  | 8 | 1-9882 | 1-9882 |  |  |  |  |  |  |  |  |
| 1-9927 |  | SDOT INSPECTION | 1d | 2023-09-14 A | 2023-09-14 A | 1-9867 | 100% |  | 2023-09-12 | 2023-09-12 |  |  |  | MBRT NEW |  |  | 8 | 1-9927 | 1-9927 |  |  |  |  |  |  |  |  |
| 1-9873 |  | SCL INSPECTION REQUEST | 1d | 2023-10-24 A | 2023-10-24 A | 1-9882, 1-9927 | 100% |  | 2023-10-02 | 2023-10-02 |  |  |  | MBRT NEW |  |  | 8 | 1-9873 | 1-9873 | ZONE-1 | ELECRICAL SUB |  | SPRING | SIGNALS | PRIME | NOTIFY |  |
| 1-9874 |  | 30 DAY WAIT FOR SCL TO INSPECT | 21d | 2023-10-24 A | 2023-11-15 A | 1-9873 | 100% |  | 2023-10-24 | 2023-11-22 |  |  |  | MBRT NEW |  |  | 128 | 1-9874 | 1-9874 | ZONE-1 | CITY |  | SPRING | SIGNALS | SCL | INSPECT |  |
| 1-9942 |  | SCL INSPECTION | 1d | 2023-11-15 A | 2023-11-15 A | 1-9874 | 100% |  | 2023-11-28 | 2023-11-28 |  |  |  | MBRT NEW |  |  | 8 | 1-9942 | 1-9942 |  |  |  |  |  |  |  |  |
| 1-0797 |  | SCL COMMISION NOTIFICATION, 1ST AND SPRING | 0d | 2023-11-16 A | 2023-11-16 A | 1-9942, 1-9942 FF | 100% |  | 2023-11-29 | 2023-11-29 |  |  |  | MBRT BASE |  |  | 0 | 1-0797 | 1-0797 | ZONE-1 | ELECRICAL SUB |  | SPRING | SIGNALS | PRIME | NOTIFY |  |
| 1-0798 |  | 30 DAY WAIT FOR SCL TO COMMISION | 21d | 2023-11-17 A | 2023-12-12 A | 1-0797 | 100% |  | 2023-11-29 | 2023-12-28 |  |  |  | MBRT BASE |  |  | 128 | 1-0798 | 1-0798 | ZONE-1 | CITY |  | SPRING | SIGNALS | SCL | INSPECT |  |
| 1-0799 |  | SCL COMMISION SERVICE, 1ST AND SPRING | 1d | 2023-12-13 A | 2023-12-13 A | 1-0798 | 100% |  | 2023-12-20 | 2023-12-20 |  |  |  | MBRT BASE [8 h] | 8 | 8 | 8 | 1-0799 | 1-0799 | ZONE-1 | CITY |  | SPRING | SIGNALS | SCL | CX |  |
| 1-0795 |  | INST TRAFFIC SIGNAL CABINET, 1ST & SPRING | 1d | 2023-12-14 A | 2023-12-14 A | 1-0559, 1-0799 | 100% |  | 2023-12-21 | 2023-12-21 |  |  |  | MBRT BASE [8 h] | 8 | 8 | 8 | 1-0795 | 1-0795 | ZONE-1 | ELECRICAL SUB |  | SPRING | SIGNALS | PRIME |  | X |
| 1-0796 |  | INST WIRING, 1ST AND SPRING | 1d | 2023-12-15 A | 2023-12-15 A | 1-0795 | 100% |  | 2023-12-22 | 2023-12-22 |  |  |  | MBRT BASE [8 h] | 8 | 8 | 8 | 1-0796 | 1-0796 | ZONE-1 | ELECRICAL SUB |  | SPRING | SIGNALS | PRIME |  |  |
| 1-0800 |  | NOTIFY SDOT, 1ST AND SPRING | 1d | 2023-12-15 A | 2023-12-15 A | 1-0799, 1-0796 | 100% |  | 2023-12-26 | 2023-12-26 |  |  |  | MBRT BASE [8 h] | 8 | 8 | 8 | 1-0800 | 1-0800 | ZONE-1 | ELECRICAL SUB |  | SPRING | SIGNALS | PRIME | NOTIFY |  |
| 1-0801 |  | SDOT INSPECTION, 1ST AND SPRING | 5d | 2023-12-18 A | 2023-12-22 A | 1-0800, 1-0807 | 100% |  | 2023-12-26 | 2024-01-02 |  |  |  | MBRT BASE [40 h] | 40 | 40 | 40 | 1-0801 | 1-0801 | ZONE-1 | CITY |  | SPRING | SIGNALS | SDOT | INSPECT |  |
| 1-0802 |  | COMM SIGNAL, 1ST AND SPRING | 1d | 2023-12-26 A | 2024-01-09 A | 1-0801 | 100% |  | 2024-01-03 | 2024-01-03 |  |  |  | MBRT BASE [80 h] | 80 | 80 | 80 | 1-0802 | 1-0802 | ZONE-1 | CITY |  | SPRING | SIGNALS | PRIME | CX | X |

| ID | WBS | Activity | Duration | Start | Finish | Predecessors | Complete | Planned start | Planned finish | Total float | Free float | Resources | Cost | Actual cost | user_number6 | user_text10 | user_text8 | user_text2 | MBRT-ZONE | MBRT-LOCATION | MBRT-TYPE | MBRT-RESP | MBRT-ACTIVITY | ~SELECT | ~TEXT |
| --- | --- | --- | --- | --- | --- | --- | --- | --- | --- | --- | --- | --- | --- | --- | --- | --- | --- | --- | --- | --- | --- | --- | --- | --- | --- |
|  | 10 | **MADISON AND 1ST** |  | 2023-07-24 | 2023-11-21 |  |  |  |  |  |  |  |  |  |  |  |  |  |  |  |  |  |  |  |  |
| 1-1887 |  | INST SERVICE CABINET, MAD AND 1ST | 1d | 2023-07-24 A | 2023-07-24 A | 1-0868 | 100% | 2023-07-31 | 2023-07-31 |  |  | MBRT NEW [8 h] | 8 | 8 | 8 | 1-1887 | 1-1887 |  |  |  |  |  |  |  |  |
| 1-1882 |  | SDCI INSPECTION | 1d | 2023-07-25 A | 2023-07-25 A | 1-1887 | 100% | 2023-08-01 | 2023-08-01 |  |  | MBRT NEW |  |  | 8 | 1-1882 | 1-1882 |  |  |  |  |  |  |  |  |
| 1-1873 |  | SCL INSPECTION REQUEST | 1d | 2023-07-26 A | 2023-07-27 A | 1-1882, 1-1927 | 100% | 2023-08-03 | 2023-08-03 |  |  | MBRT NEW |  |  | 8 | 1-1873 | 1-1873 | ELECRICAL SUB | ZONE-1 | SPRING | SIGNALS | PRIME | NOTIFY |  |  |
| 1-1927 |  | SDOT INSPECTION | 1d | 2023-07-26 A | 2023-07-26 A | 1-1882 | 100% | 2023-08-02 | 2023-08-02 |  |  | MBRT NEW |  |  | 8 | 1-1927 | 1-1927 |  |  |  |  |  |  |  |  |
| 1-1874 |  | 30 DAY WAIT FOR SCL TO INSPECT | 21d | 2023-07-28 A | 2023-08-18 A | 1-1873 | 100% | 2023-08-03 | 2023-08-31 |  |  | MBRT NEW |  |  | 128 | 1-1874 | 1-1874 | CITY | ZONE-1 | SPRING | SIGNALS | SCL | INSPECT |  |  |
| 1-1445 |  | INST MAST ARM POLES, MAD AND 1ST | 2d | 2023-08-14 A | 2023-08-15 A | PMP-0016, 1-1440 | 100% |  |  |  |  | MBRT NEW [16 h] | 16 | 16 | 16 | 1-1445 | 1-1445 | ELECRICAL SUB | ZONE-1 | 01 | SIGNALS | PRIME |  |  |  |
| 1-1942 |  | SCL INSPECTION | 1d | 2023-08-21 A | 2023-08-21 A | 1-1874 | 100% |  |  |  |  | MBRT NEW |  |  | 8 | 1-1942 | 1-1942 |  |  |  |  |  |  |  |  |
| 1-0885 |  | SCL COMMISION NOTIFICATION, MAD AND 1ST | 0d | 2023-08-22 A | 2023-08-22 A | 1-1942 | 100% |  |  |  |  | MBRT BASE |  |  | 0 | 1-0885 | 1-0885 | ELECRICAL SUB | ZONE-1 | 01 | SIGNALS | PRIME | NOTIFY |  |  |
| 1-0886 |  | 30 DAY WAIT FOR SCL TO COMMISION | 20d | 2023-08-22 A | 2023-09-19 A | 1-0885 | 100% |  |  |  |  | MBRT BASE |  |  | 160 | 1-0886 | 1-0886 | CITY | ZONE-1 | 01 | SIGNALS | SCL | INSPECT |  |  |
| 1-0887 |  | COMM SERVICE, MAD AND 1ST | 1d | 2023-09-20 A | 2023-09-20 A | 1-0886 | 100% |  |  |  |  | MBRT BASE [8 h] | 8 | 8 | 8 | 1-0887 | 1-0887 | CITY | ZONE-1 | 01 | SIGNALS | PRIME | CX |  |  |
| 1-0880 |  | SIGNAL CABINET, MAD AND 1ST | 1d | 2023-11-13 A | 2023-11-15 A | PMP-0016, 1-0887 | 100% | 2023-11-20 | 2023-11-20 |  |  | MBRT BASE [16 h] | 16 | 16 | 16 | 1-0880 | 1-0880 | ELECRICAL SUB | ZONE-1 | 01 | SIGNALS | PRIME |  | X | POLES1 |
| 1-0881 |  | INST MAST ARM, MAD AND 1ST | 2d | 2023-11-13 A | 2023-11-15 A | 1-0880, 1-1445 | 100% | 2023-11-21 | 2023-11-22 |  |  | MBRT BASE [16 h] | 16 | 16 | 16 | 1-0881 | 1-0881 | ELECRICAL SUB | ZONE-1 | 01 | SIGNALS | PRIME |  |  | POLES1 |
| 1-0883 |  | INST PPB POST, MAD AND 1ST | 1d | 2023-11-13 A | 2023-11-15 A | 1-2005 | 100% | 2023-11-28 | 2023-11-28 |  |  | MBRT BASE [16 h] | 16 | 16 | 16 | 1-0883 | 1-0883 | ELECRICAL SUB | ZONE-1 | 01 | SIGNALS | PRIME |  |  | POLES1 |
| 1-0884 |  | INST WIRING, MAD AND 1ST | 3d | 2023-11-13 A | 2023-11-15 A | 1-0883 | 100% | 2023-11-29 | 2023-12-01 |  |  | MBRT BASE [16 h] | 16 | 16 | 16 | 1-0884 | 1-0884 | ELECRICAL SUB | ZONE-1 | 01 | SIGNALS | PRIME |  |  | POLES1 |
| 1-2005 |  | INSTALL SERVICE CABINET, MAD AND 1ST | 1d | 2023-11-13 A | 2023-11-15 A | 1-0880, 1-0881, 1-1445 | 100% | 2023-11-27 | 2023-11-27 |  |  | MBRT NEW [8 h] | 8 | 16 | 16 | 1-2005 | 1-2005 | ELECRICAL SUB | ZONE-1 | 01 | SIGNALS | PRIME |  | X | POLES1 |
| 1-0888 |  | NOTIFY SDOT, MAD AND 1ST | 0d | 2023-11-15 A | 2023-11-15 A | 1-0887, 1-0884 | 100% | 2023-12-04 | 2023-12-04 |  |  | MBRT BASE |  |  | 0 | 1-0888 | 1-0888 | ELECRICAL SUB | ZONE-1 | 01 | SIGNALS | PRIME | NOTIFY |  |  |
| 1-0889 |  | SDOT INSPECTION, MAD AND 1ST | 5d | 2023-11-16 A | 2023-11-20 A | 1-0888 | 100% | 2023-12-04 | 2023-12-08 |  |  | MBRT BASE [24 h] | 24 | 24 | 24 | 1-0889 | 1-0889 | CITY | ZONE-1 | 01 | SIGNALS | SDOT | INSPECT |  |  |
| 1-0890 |  | COMM SIGNAL, MAD AND 1ST | 1d | 2023-11-21 A | 2023-11-21 A | 1-0889 | 100% | 2023-12-11 | 2023-12-11 |  |  | MBRT BASE [8 h] | 8 | 8 | 8 | 1-0890 | 1-0890 | CITY | ZONE-1 | 01 | SIGNALS | PRIME | CX | X |  |
|  | 11 | **MADISON AND 2ND** |  | 2024-04-11 | 2024-04-22 |  |  |  |  |  |  |  |  |  |  |  |  |  |  |  |  |  |  |  |  |
| 1-0892 |  | INST MAGNETOMETERS & ACCESS POINT, MAD & 2ND | 2d | 2024-04-11 | 2024-04-12 | 1-0677, 1-0671 |  |  |  | -102d | 0d | MBRT BASE [16 h] | 16 |  | 16 | 1-0892 | 1-0892 | ELECRICAL SUB | ZONE-1 | 02 | SIGNALS | PRIME |  |  |  |
| 1-0893 |  | NOTIFY SDOT, MAD AND 2ND | 0d | 2024-04-15 | 2024-04-15 | 1-0892 |  |  |  | -102d | 0d | MBRT BASE |  |  | 0 | 1-0893 | 1-0893 | ELECRICAL SUB | ZONE-1 | 02 | SIGNALS | PRIME | NOTIFY |  |  |
| 1-0894 |  | SDOT INSPECTION, MAD AND 2ND | 5d | 2024-04-15 | 2024-04-19 | 1-0893 |  |  |  | -102d | 0d | MBRT BASE [40 h] | 40 |  | 40 | 1-0894 | 1-0894 | CITY | ZONE-1 | 02 | SIGNALS | SDOT | INSPECT |  |  |
| 1-0895 |  | COMM SIGNAL, MAD AND 2ND | 1d | 2024-04-22 | 2024-04-22 | 1-0894 |  |  |  | -102d | 40d | MBRT BASE [8 h] | 8 |  | 8 | 1-0895 | 1-0895 | CITY | ZONE-1 | 02 | SIGNALS | PRIME | CX | X |  |

| ID | WBS | Activity | Duration | Start | Finish | Predecessors | Complete | Planned start | Planned finish | Calendar | Resources | Cost | Actual cost | user_number6 | user_text10 | user_text8 | ~SELECT | user_text2 | MBRT-ZONE | MBRT-LOCATION | MBRT-TYPE | MBRT-RESP | MBRT-ACTIVITY |
| --- | --- | --- | --- | --- | --- | --- | --- | --- | --- | --- | --- | --- | --- | --- | --- | --- | --- | --- | --- | --- | --- | --- | --- |
|  | 12 | **MADISON AND 3RD** |  | 2023-05-01 | 2023-12-19 |  |  |  |  |  |  |  |  |  |  |  |  |  |  |  |  |  |  |
| 1-0898 |  | INSTALL SERVICE CABINET, MAD AND 3RD | 1d | 2023-05-01 A | 2023-05-01 A | PCO316.01 | 100% |  |  | Standard 5 Day Workweek w/Holidays (STD CPM) | MBRT BASE [8 h] | 8 | 8 | 8 | 1-0898 | 1-0898 |  |  |  |  |  |  |  |
| 1-2165 |  | SDCI INSPECTION, MAD AND 3RD | 1d | 2023-06-02 A | 2023-06-02 A | 1-0898 | 100% |  |  | Standard 5 Day Workweek w/Holidays (STD CPM) | MBRT NEW |  |  | 8 | 1-2165 | 1-2165 | x |  |  |  |  |  |  |
| 1-2166 |  | SDOT INSPECTION, MAD AND 3RD | 1d | 2023-06-14 A | 2023-06-14 A | 1-2165 | 100% |  |  | Standard 5 Day Workweek w/Holidays (STD CPM) | MBRT NEW |  |  | 8 | 1-2166 | 1-2166 | x |  |  |  |  |  |  |
| 1-0902 |  | SCL INSPECTION REQUEST | 0d | 2023-07-03 A | 2023-07-03 A | 1-2166 | 100% |  |  |  | MBRT BASE |  |  | 0 | 1-0902 | 1-0902 |  | ELECRICAL SUB | ZONE-1 | 03 | SIGNALS | PRIME | NOTIFY |
| 1-0903 |  | 30 DAY WAIT FOR SCL TO INSPECT | 21d | 2023-07-03 A | 2023-07-27 A | 1-0902 | 100% | 2023-07-03 | 2023-08-01 | Standard 5 Day Workweek w/Holidays (STD CPM) | MBRT BASE |  |  | 144 | 1-0903 | 1-0903 | x |  |  |  |  |  |  |
| 1-2169 |  | SCL INSPECTION | 1d | 2023-07-28 A | 2023-07-28 A | 1-0903 | 100% | 2023-08-15 | 2023-08-15 | Standard 5 Day Workweek w/Holidays (STD CPM) | MBRT NEW |  |  | 8 | 1-2169 | 1-2169 | x |  |  |  |  |  |  |
| 1-2179 |  | COMMISION NOTIFICATION | 1d | 2023-07-31 A | 2023-07-31 A | 1-2169 | 100% | 2023-08-16 | 2023-08-16 | Standard 5 Day Workweek w/Holidays (STD CPM) | MBRT NEW |  |  | 8 | 1-2179 | 1-2179 | x |  |  |  |  |  |  |
| 1-2171 |  | 30 DAY WAIT FOR SCL TO COMMISION | 21d | 2023-08-01 A | 2023-09-12 A | 1-2179 | 100% | 2023-08-17 | 2023-09-15 | Standard 5 Day Workweek w/Holidays (STD CPM) | MBRT NEW |  |  | 240 | 1-2171 | 1-2171 | x |  |  |  |  |  |  |
| 1-0904 |  | COMM SERVICE, MAD AND 3RD | 1d | 2023-09-13 A | 2023-09-13 A | 1-2171 | 100% |  |  |  | MBRT BASE [8 h] | 8 | 8 | 8 | 1-0904 | 1-0904 |  | ELECRICAL SUB | ZONE-1 | 03 | SIGNALS | PRIME | CX |
| 1-0939 |  | DELAY AWAITING SCL TO ENEGIZE | 0d | 2023-11-14 A | 2023-12-08 A | 1-0904 | 100% | 2023-11-02 | 2023-11-02 |  | MBRT BASE |  |  | 136 |  |  |  |  |  |  |  |  |  |
| 1-0897 |  | INST SIGNAL CABINET, MAD AND 3RD | 1d | 2023-12-11 A | 2023-12-15 A | 1-0682, 1-0904, 1-0939 | 100% | 2023-12-18 | 2023-12-18 |  | MBRT BASE [40 h] | 40 | 40 | 40 | 1-0897 | 1-0897 | X | ELECRICAL SUB | ZONE-1 | 03 | SIGNALS | PRIME |  |
| 1-0899 |  | INST OCS POLE, MAD AND 3RD | 2d | 2023-12-11 A | 2023-12-15 A | PMP-0016, 1-0897 | 100% | 2023-12-19 | 2023-12-20 |  | MBRT BASE [40 h] | 40 | 40 | 40 | 1-0899 | 1-0899 |  | ELECRICAL SUB | ZONE-1 | 03 | SIGNALS | PRIME | OCS |
| 1-0900 |  | INST PPB POST, MAD AND 3RD | 1d | 2023-12-11 A | 2023-12-15 A | 1-0899 | 100% | 2023-12-21 | 2023-12-21 |  | MBRT BASE [40 h] | 40 | 40 | 40 | 1-0900 | 1-0900 |  | ELECRICAL SUB | ZONE-1 | 03 | SIGNALS | PRIME |  |
| 1-0901 |  | INST WIRING & SIGNAL GEAR, MAD & 3RD | 3d | 2023-12-11 A | 2023-12-15 A | 1-0900 | 100% | 2023-12-22 | 2023-12-27 |  | MBRT BASE [40 h] | 40 | 40 | 40 | 1-0901 | 1-0901 | X | ELECRICAL SUB | ZONE-1 | 03 | SIGNALS | PRIME |  |
| 1-0905 |  | NOTIFY SDOT, MAD AND 3RD | 0d | 2023-12-15 A | 2023-12-15 A | 1-0904, 1-0901 | 100% | 2023-12-28 | 2023-12-28 |  | MBRT BASE |  |  | 0 | 1-0905 | 1-0905 |  | ELECRICAL SUB | ZONE-1 | 03 | SIGNALS | PRIME | NOTIFY |
| 1-0906 |  | SDOT INSPECTION, MAD AND 3RD | 5d | 2023-12-18 A | 2023-12-18 A | 1-0905 | 100% | 2023-12-28 | 2024-01-04 |  | MBRT BASE [8 h] | 8 | 8 | 8 | 1-0906 | 1-0906 |  | ELECRICAL SUB | ZONE-1 | 03 | SIGNALS | SDOT | INSPECT |
| 1-0907 |  | COMM SIGNAL, MAD AND 3RD | 1d | 2023-12-19 A | 2023-12-19 A | 1-0906, 1-0914 | 100% | 2024-01-22 | 2024-01-22 |  | MBRT BASE [8 h] | 8 | 8 | 8 | 1-0907 | 1-0907 | X | ELECRICAL SUB | ZONE-1 | 03 | SIGNALS | PRIME | CX |
|  | 13 | **MADISON AND 4TH** |  | 2023-12-05 | 2023-12-14 |  |  |  |  |  |  |  |  |  |  |  |  |  |  |  |  |  |  |
| 1-0909 |  | INST PEDISTAL, MAD AND 4TH | 1d | 2023-12-05 A | 2023-12-05 A | 1-0687 | 100% | 2023-11-03 | 2023-11-03 |  | MBRT BASE [8 h] | 8 | 8 | 8 | 1-0909 | 1-0909 |  | ELECRICAL SUB | ZONE-1 | 04 | SIGNALS | PRIME |  |
| 1-0910 |  | INST MAGNOMETERS & ACCESS POINT, MAD & 4TH | 2d | 2023-12-13 A | 2023-12-14 A | 1-0909 | 100% | 2023-12-11 | 2023-12-12 |  | MBRT BASE [16 h] | 16 | 16 | 16 | 1-0910 | 1-0910 |  | ELECRICAL SUB | ZONE-1 | 04 | SIGNALS | PRIME |  |
| 1-0911 |  | INST SIGNAL GEAR, MAD AND 4TH | 1d | 2023-12-13 A | 2023-12-14 A | 1-0910 | 100% | 2023-12-13 | 2023-12-13 |  | MBRT BASE [16 h] | 16 | 16 | 16 | 1-0911 | 1-0911 | X | ELECRICAL SUB | ZONE-1 | 04 | SIGNALS | PRIME |  |
| 1-0912 |  | NOTIFY SDOT, MAD AND 4TH | 2d | 2023-12-13 A | 2023-12-14 A | 1-0911 | 100% | 2023-12-14 | 2023-12-15 |  | MBRT BASE [16 h] | 16 | 16 | 16 | 1-0912 | 1-0912 |  | ELECRICAL SUB | ZONE-1 | 04 | SIGNALS | PRIME | NOTIFY |
| 1-0913 |  | SDOT INSPECTION, MAD AND 4TH | 5d | 2023-12-13 A | 2023-12-14 A | 1-0912 | 100% | 2023-12-14 | 2023-12-20 |  | MBRT BASE [16 h] | 16 | 16 | 16 | 1-0913 | 1-0913 |  | CITY | ZONE-1 | 04 | SIGNALS | SDOT | INSPECT |
| 1-0914 |  | COMM SIGNAL, MAD AND 4TH | 1d | 2023-12-14 A | 2023-12-14 A | 1-0913 | 100% | 2023-12-21 | 2023-12-21 |  | MBRT BASE [8 h] | 8 | 8 | 8 | 1-0914 | 1-0914 | X | CITY | ZONE-1 | 04 | SIGNALS | PRIME | CX |

| ID | WBS | Activity | Duration | Start | Finish | Predecessors | Complete | Planned start | Planned finish | Resources | Cost | Actual cost | ~SELECT | user_text2 | user_number6 | user_text10 | user_text8 | MBRT-ZONE | MBRT-LOCATION | MBRT-TYPE | MBRT-RESP | MBRT-ACTIVITY | ~TEXT |
| --- | --- | --- | --- | --- | --- | --- | --- | --- | --- | --- | --- | --- | --- | --- | --- | --- | --- | --- | --- | --- | --- | --- | --- |
|  | 14 | **MADISON AND 5TH** |  | 2023-12-04 | 2023-12-06 |  |  |  |  |  |  |  |  |  |  |  |  |  |  |  |  |  |  |
| 1-0916 |  | INST SIGNAL GEAR, MAD AND 5TH | 1d | 2023-12-04 A | 2023-12-05 A | 1-0697 | 100% | 2023-11-07 | 2023-11-07 | MBRT BASE [16 h] | 16 | 16 | X | ELECRICAL SUB | 16 | 1-0916 | 1-0916 | ZONE-1 | 05 | SIGNALS | PRIME |  |  |
| 1-0917 |  | NOTIFY SDOT, MAD AND 5TH | 0d | 2023-12-05 A | 2023-12-05 A | 1-0916 | 100% | 2023-11-08 | 2023-11-08 | MBRT BASE |  |  |  | ELECRICAL SUB | 0 | 1-0917 | 1-0917 | ZONE-1 | 05 | SIGNALS | PRIME | NOTIFY |  |
| 1-0918 |  | SDOT INSPECTION, MAD AND 5TH | 5d | 2023-12-06 A | 2023-12-06 A | 1-0917 | 100% | 2023-11-08 | 2023-11-15 | MBRT BASE [8 h] | 8 | 8 |  | CITY | 8 | 1-0918 | 1-0918 | ZONE-1 | 05 | SIGNALS | SDOT | INSPECT |  |
| 1-0919 |  | COMM SIGNAL, MAD AND 5TH | 1d | 2023-12-06 A | 2023-12-06 A | 1-0918 | 100% | 2023-11-20 | 2023-11-20 | MBRT BASE [8 h] | 8 | 8 | X | CITY | 8 | 1-0919 | 1-0919 | ZONE-1 | 05 | SIGNALS | PRIME | CX |  |
|  | 15 | **MADISON AND 6TH** |  | 2023-05-18 | 2024-02-07 |  |  |  |  |  |  |  |  |  |  |  |  |  |  |  |  |  |  |
| 1-0922 |  | INST SERVICE CABINET, MAD & 6TH | 1d | 2023-05-18 A | 2023-05-18 A | 1-2800 | 100% |  |  | MBRT BASE [8 h] | 8 | 8 |  |  | 8 | 1-0922 | 1-0922 |  |  |  |  |  |  |
| 1-3194 |  | SDCI INSPECTION | 1d | 2023-06-02 A | 2023-06-02 A | 1-0922 | 100% |  |  | MBRT NEW |  |  | x |  | 8 | 1-3194 | 1-3194 |  |  |  |  |  |  |
| 1-3199 |  | SDOT INSPECTION | 1d | 2023-06-14 A | 2023-06-14 A | 1-3194 | 100% |  |  | MBRT NEW |  |  | x |  | 8 | 1-3199 | 1-3199 |  |  |  |  |  |  |
| 1-0924 |  | INTSALL OCS POLE, MAD AND 6TH | 2d | 2023-08-17 A | 2023-08-18 A | PMP-0016, 1-1445 | 100% | 2023-08-16 | 2023-08-17 | MBRT BASE [16 h] | 16 | 16 |  | ELECRICAL SUB | 16 | 1-0924 | 1-0924 | ZONE-1 | 06 | SIGNALS | PRIME | OCS |  |
| 1-1450 |  | INST MAST ARM POLES, MAD AND 6TH | 2d | 2023-08-17 A | 2023-08-18 A | PMP-0016, 1-1445 | 100% | 2023-08-16 | 2023-08-17 | MBRT NEW [16 h] | 16 | 16 |  | ELECRICAL SUB | 16 | 1-1450 | 1-1450 | ZONE-1 | 06 | SIGNALS | PRIME |  |  |
| 1-3196 |  | SCL INSPECTION REQUEST | 1d | 2023-12-11 A | 2023-12-11 A | 1-3199, 1-0917 SS | 100% |  |  | MBRT NEW |  |  | x |  | 8 | 1-3196 | 1-3196 |  |  |  |  |  |  |
| 1-3197 |  | 30 DAY WAIT FOR SCL TO INSPECT | 21d | 2023-12-12 A | 2024-01-11 A | 1-3196 | 100% |  |  | MBRT NEW |  |  | x |  | 168 | 1-3197 | 1-3197 |  |  |  |  |  |  |
| 1-4198 |  | SCL INSPECTION | 1d | 2024-01-12 A | 2024-01-12 A | 1-3197 | 100% |  |  | MBRT NEW |  |  | x |  | 8 | 1-4198 | 1-4198 |  |  |  |  |  |  |
| 1-4199 |  | COMMISION NOTIFICATION | 1d | 2024-01-16 A | 2024-01-16 A | 1-4198 | 100% |  |  | MBRT NEW |  |  | x |  | 8 | 1-4199 | 1-4199 |  |  |  |  |  |  |
| 1-4200 |  | 30 DAY WAIT FOR SCL TO COMMISION | 21d | 2024-01-17 A | 2024-02-01 A | 1-4199 | 100% | 2024-01-17 | 2024-02-14 | MBRT NEW |  |  | x |  | 96 | 1-4200 | 1-4200 |  |  |  |  |  |  |
| 1-0929 |  | COMM SERVICE, MAD AND 6TH | 1d | 2024-02-02 A | 2024-02-02 A | 1-4200 | 100% | 2024-02-15 | 2024-02-15 | MBRT BASE [8 h] | 8 | 8 |  | CITY | 8 | 1-0929 | 1-0929 | ZONE-1 | 06 | SIGNALS | PRIME | CX |  |
| 1-0921 |  | INST SIGNAL CABINET, MAD AND 6TH | 1d | 2024-02-05 A | 2024-02-06 A | 1-0702, 1-0929 | 100% | 2024-02-16 | 2024-02-16 | MBRT BASE [16 h] | 16 | 16 | X | ELECRICAL SUB | 16 | 1-0921 | 1-0921 | ZONE-1 | 06 | SIGNALS | PRIME |  | POLES1 |
| 1-0923 |  | INST MAST ARM, MAD AND 6TH | 2d | 2024-02-05 A | 2024-02-06 A | 1-0921 | 100% | 2024-02-20 | 2024-02-21 | MBRT BASE [16 h] | 16 | 16 |  | ELECRICAL SUB | 16 | 1-0923 | 1-0923 | ZONE-1 | 06 | SIGNALS | PRIME |  | POLES1 |
| 1-0925 |  | INST SIGNAL GEAR, MAD AND 6TH | 1d | 2024-02-05 A | 2024-02-06 A | 1-0924, 1-0921, 1-0923 | 100% | 2024-02-22 | 2024-02-22 | MBRT BASE [16 h] | 16 | 16 | X | ELECRICAL SUB | 16 | 1-0925 | 1-0925 | ZONE-1 | 06 | SIGNALS | PRIME |  |  |
| 1-0926 |  | INST WIRING, MAD AND 6TH | 3d | 2024-02-05 A | 2024-02-06 A | 1-0925, 1-0923 | 100% | 2024-02-23 | 2024-02-27 | MBRT BASE [16 h] | 16 | 16 |  | ELECRICAL SUB | 16 | 1-0926 | 1-0926 | ZONE-1 | 06 | SIGNALS | PRIME |  | POLES1 |
| 1-0930 |  | NOTIFY SDOT, MAD AND 6TH | 2d | 2024-02-05 A | 2024-02-06 A | 1-0929, 1-0926 | 100% | 2024-02-28 | 2024-02-29 | MBRT BASE [16 h] | 16 | 16 |  | ELECRICAL SUB | 16 | 1-0930 | 1-0930 | ZONE-1 | 06 | SIGNALS | PRIME | NOTIFY |  |
| 1-0931 |  | SDOT INSPECTION, MAD AND 6TH | 5d | 2024-02-05 A | 2024-02-06 A | 1-0930 | 100% | 2024-02-28 | 2024-03-05 | MBRT BASE [16 h] | 16 | 16 |  | CITY | 16 | 1-0931 | 1-0931 | ZONE-1 | 06 | SIGNALS | SDOT | INSPECT |  |
| 1-0932 |  | COMM SIGNAL, MAD AND 6TH | 1d | 2024-02-07 A | 2024-02-07 A | 1-0931, 1-0919 | 100% | 2024-03-06 | 2024-03-06 | MBRT BASE [8 h] | 8 | 8 | X | CITY | 8 | 1-0932 | 1-0932 | ZONE-1 | 06 | SIGNALS | PRIME | CX |  |

| ID | WBS | Activity | Duration | Start | Finish | Predecessors | Complete | Planned start | Planned finish | Resources | Cost | Actual cost | user_number6 | user_text10 | user_text8 | user_text2 | MBRT-ZONE | MBRT-LOCATION | MBRT-TYPE | MBRT-RESP | ~SELECT | MBRT-ACTIVITY | ~TEXT | ~SELECT2 |
| --- | --- | --- | --- | --- | --- | --- | --- | --- | --- | --- | --- | --- | --- | --- | --- | --- | --- | --- | --- | --- | --- | --- | --- | --- |
|  | 16 | **MADISON AND 7TH** |  | 2023-04-27 | 2024-03-29 |  |  |  |  |  |  |  |  |  |  |  |  |  |  |  |  |  |  |  |
| 1-0934 |  | INST SERVICE CABINET, MAD & 7TH | 1d | 2023-04-27 A | 2023-04-27 A | 1-2800 | 100% |  |  | MBRT BASE [8 h] | 8 | 8 | 8 | 1-0934 | 1-0934 |  |  |  |  |  |  |  |  |  |
| 1-0935 |  | INST STRAIN POLE, MAD AND 7TH | 2d | 2023-05-31 A | 2023-06-01 A | PMP-41 | 100% |  |  | MBRT BASE [16 h] | 16 | 16 | 16 | 1-0935 | 1-0935 | ELECRICAL SUB | ZONE-1 | 07 | SIGNALS | PRIME |  |  |  |  |
| 1-4211 |  | SDCI INSPECTION | 1d | 2023-06-02 A | 2023-06-02 A | 1-0934 | 100% |  |  | MBRT NEW |  |  | 8 | 1-4211 | 1-4211 |  |  |  |  |  | x |  |  |  |
| 1-4212 |  | SDOT INSPECTION | 1d | 2023-06-14 A | 2023-06-14 A | 1-4211 | 100% |  |  | MBRT NEW |  |  | 8 | 1-4212 | 1-4212 |  |  |  |  |  | x |  |  |  |
| 1-5196 |  | SCL INSPECTION REQUEST | 1d | 2023-08-01 A | 2023-08-01 A | 1-4212 | 100% | 2023-07-03 | 2023-07-03 | MBRT NEW |  |  | 8 | 1-5196 | 1-5196 |  |  |  |  |  | x |  |  |  |
| 1-5197 |  | 30 DAY WAIT FOR SCL TO INSPECT | 21d | 2023-08-02 A | 2023-08-07 A | 1-5196 | 100% | 2023-07-05 | 2023-08-02 | MBRT NEW |  |  | 32 | 1-5197 | 1-5197 |  |  |  |  |  | x |  |  |  |
| 1-4215 |  | SCL INSPECTION | 1d | 2023-08-08 A | 2023-08-08 A | 1-5197 | 100% | 2023-08-16 | 2023-08-16 | MBRT NEW |  |  | 8 | 1-4215 | 1-4215 |  |  |  |  |  | x |  |  |  |
| 1-4216 |  | COMMISION NOTIFICATION | 1d | 2023-08-09 A | 2023-08-09 A | 1-4215, 1-4215 FF | 100% | 2023-08-17 | 2023-08-17 | MBRT NEW |  |  | 8 | 1-4216 | 1-4216 |  |  |  |  |  | x |  |  |  |
| 1-4217 |  | 30 DAY WAIT FOR SCL TO COMMISION | 20d | 2023-08-10 A | 2023-09-07 A | 1-4216 | 100% | 2023-08-18 | 2023-09-15 | MBRT NEW |  |  | 160 | 1-4217 | 1-4217 |  |  |  |  |  | x |  |  |  |
| 1-0936 |  | INST OCS POLE, MAD AND 7TH | 2d | 2023-08-28 A | 2023-08-28 A | 1-0935, PMP-0016, 1-1450 | 100% | 2023-08-18 | 2023-08-21 | MBRT BASE [8 h] | 8 | 8 | 8 | 1-0936 | 1-0936 | ELECRICAL SUB | ZONE-1 | 07 | SIGNALS | PRIME |  | OCS |  |  |
| 1-0943 |  | COMM SERVICE, MAD AND 7TH | 1d | 2023-09-08 A | 2023-09-08 A | 1-4217 | 100% |  |  | MBRT BASE [8 h] | 8 | 8 | 8 | 1-0943 | 1-0943 | CITY | ZONE-1 | 07 | SIGNALS | PRIME |  | CX |  |  |
| 1-0940 |  | INST WIRING, MAD AND 7TH | 3d | 2023-09-18 A | 2023-09-19 A | 1-0943 | 100% | 2023-09-14 | 2023-09-18 | MBRT BASE [16 h] | 16 | 16 | 16 | 1-0940 | 1-0940 | ELECRICAL SUB | ZONE-1 | 07 | SIGNALS | PRIME |  |  | POLES1 |  |
| 1-0984 |  | DSC 622 Existing Signal pole wil not allow new wire | 2d | 2023-09-19 A | 2023-09-20 A | 1-0940 | 100% | 2023-09-11 | 2023-09-12 | MBRT DSC [16 h] | 16 | 16 | 16 |  |  |  |  |  |  |  |  |  |  |  |
| 1-0989 |  | RFI Bridge Mounted PPB | 0d | 2023-09-26 A | 2024-02-08 A | 1-0984 | 100% | 2023-09-11 | 2023-09-11 | MBRT NEW |  |  | 736 |  |  |  |  |  |  |  |  |  |  |  |
| 1-0937 |  | INST SIGNAL CABINET, MAD AND 6TH | 1d | 2023-10-02 A | 2023-10-02 A | 1-0943 | 100% |  |  | MBRT BASE [8 h] | 8 | 8 | 8 | 1-0937 | 1-0937 | ELECRICAL SUB | ZONE-1 | 06 | SIGNALS | PRIME | X |  | POLES1 |  |
| DSC-724 |  | DSC 724 7th & Madison Exist. Conduits / New Wire | 5d | 2024-02-09 A | 2024-03-01 A | 1-0989 | 100% | 2024-03-04 | 2024-03-08 |  |  |  |  |  |  |  |  |  |  |  |  |  |  |  |
| 1-0938 |  | INST PEDISTAL & PPB POST, MAD & 7TH | 1d | 2024-03-04 A | 2024-03-04 A | 1-0937, 1-0989, DSC-724 | 100% |  |  | MBRT BASE [8 h] | 8 |  | 8 | 1-0938 | 1-0938 | ELECRICAL SUB | ZONE-1 | 07 | SIGNALS | PRIME |  |  | POLES1 | PX |
| 1-0944 |  | NOTIFY SDOT, MAD AND 7TH | 0d | 2024-03-05 A | 2024-03-05 A | 1-0943, 1-0940, 1-0938 | 100% |  |  | MBRT BASE |  |  | 0 | 1-0944 | 1-0944 | ELECRICAL SUB | ZONE-1 | 07 | SIGNALS | PRIME |  | NOTIFY |  | PX |
| 1-0945 |  | SDOT INSPECTION, MAD AND 7TH | 16d | 2024-03-05 A | 2024-03-26 A | 1-0944 | 100% |  |  | MBRT BASE [128 h] | 128 |  | 128 | 1-0945 | 1-0945 | CITY | ZONE-1 | 07 | SIGNALS | SDOT |  | INSPECT |  | PX |
| 1-0946 |  | COMM SIGNAL, MAD AND 7TH | 1d | 2024-03-27 A | 2024-03-29 A | 1-0945, 1-0989, 1-0938 | 100% | 2024-03-27 | 2024-03-27 | MBRT BASE [8 h] | 8 |  | 8 | 1-0946 | 1-0946 | CITY | ZONE-1 | 07 | SIGNALS | PRIME | X | CX |  | PX |
|  | 17 | **MADISON AND 8TH** |  | 2023-07-24 | 2023-11-07 |  |  |  |  |  |  |  |  |  |  |  |  |  |  |  |  |  |  |  |
| 1-0949 |  | INST SERVICE CABINET, MAD AND 8TH | 1d | 2023-07-24 A | 2023-07-24 A | 1-0708 | 100% | 2023-07-03 | 2023-07-03 | MBRT BASE [8 h] | 8 | 8 | 8 | 1-0949 | 1-0949 | ELECRICAL SUB | ZONE-1 | 08 | SIGNALS | PRIME |  |  | POLES1 |  |
| 1-4882 |  | SDCI INSPECTION | 1d | 2023-07-25 A | 2023-07-25 A | 1-0949 | 100% | 2023-07-05 | 2023-07-05 | MBRT NEW |  |  | 8 | 1-4882 | 1-4882 |  |  |  |  |  |  |  |  |  |
| 1-0955 |  | SCL INSPECTION REQUEST | 0d | 2023-07-26 A | 2023-07-26 A | 1-4927 | 100% | 2023-07-07 | 2023-07-07 | MBRT BASE |  |  | 0 | 1-0955 | 1-0955 | ELECRICAL SUB | ZONE-1 | 08 | SIGNALS | PRIME |  | NOTIFY |  |  |
| 1-4927 |  | SDOT INSPECTION | 1d | 2023-07-26 A | 2023-07-26 A | 1-4882 | 100% | 2023-07-06 | 2023-07-06 | MBRT NEW |  |  | 8 | 1-4927 | 1-4927 |  |  |  |  |  |  |  |  |  |
| 1-0956 |  | 30 DAY WAIT FOR SCL TO INSPECT | 21d | 2023-07-27 A | 2023-08-22 A | 1-0955 | 100% | 2023-07-07 | 2023-08-04 | MBRT BASE |  |  | 152 | 1-0956 | 1-0956 | CITY | ZONE-1 | 08 | SIGNALS | SCL |  | INSPECT |  |  |
| 1-5215 |  | SCL INSPECTION | 1d | 2023-08-23 A | 2023-08-23 A | 1-0956 | 100% |  |  | MBRT NEW |  |  | 8 | 1-5215 | 1-5215 |  |  |  |  |  | x |  |  |  |
| 1-1455 |  | INST MAST ARM POLES, MAD AND 8TH | 2d | 2023-08-29 A | 2023-08-30 A | 1-0936, PMP-0016 | 100% | 2023-08-22 | 2023-08-23 | MBRT NEW [16 h] | 16 | 16 | 16 | 1-1455 | 1-1455 | ELECRICAL SUB | ZONE-1 | 08 | SIGNALS | PRIME |  |  |  |  |
| 1-5221 |  | Delay Wrong Service Size | 18.5d | 2023-09-19 A | 2023-10-13 A | 1-1455 | 100% | 2023-09-11 | 2023-10-05 | MBRT NEW [148 h] | 148 | 152 | 148 |  |  |  |  |  |  |  |  |  |  |  |
| 1-5216 |  | COMMISION NOTIFICATION | 1d | 2023-09-20 A | 2023-09-21 A | 1-5215 | 100% | 2023-08-24 | 2023-08-24 | MBRT NEW |  |  | 16 | 1-5216 | 1-5216 |  |  |  |  |  | x |  |  |  |
| 1-0954 |  | INST WIRING, MAD AND 8TH | 3d | 2023-09-20 A | 2023-09-21 A | 1-1455 | 100% | 2023-10-13 | 2023-10-18 | MBRT BASE [8 h] | 8 | 8 | 8 | 1-0954 | 1-0954 | ELECRICAL SUB | ZONE-1 | 08 | SIGNALS | PRIME |  |  | POLES1 |  |
| 1-5217 |  | 30 DAY WAIT FOR SCL TO COMMISION | 23d | 2023-09-22 A | 2023-10-13 A | 1-5216 | 100% | 2023-08-25 | 2023-09-27 | MBRT NEW |  |  | 120 | 1-5217 | 1-5217 |  |  |  |  |  | x |  |  |  |
| 1-0953 |  | INST SIGNAL GEAR, MAD AND 8TH | 1d | 2023-09-25 A | 2023-09-29 A | 1-0954 | 100% | 2023-10-12 | 2023-10-13 | MBRT BASE [32 h] | 32 | 32 | 32 | 1-0953 | 1-0953 | ELECRICAL SUB | ZONE-1 | 08 | SIGNALS | PRIME | X |  | POLES1 |  |
| 1-0957 |  | COMM SERVICE, MAD AND 8TH | 1d | 2023-10-16 A | 2023-10-16 A | 1-5217, 1-5221, 1-0953 | 100% | 2023-10-04 | 2023-10-05 | MBRT BASE [8 h] | 8 | 8 | 8 | 1-0957 | 1-0957 | CITY | ZONE-1 | 08 | SIGNALS | PRIME |  | CX |  |  |
| 1-0950 |  | INST MAST ARMS, MAD AND 8TH | 2d | 2023-10-18 A | 2023-10-19 A | 1-0949, 1-1455 | 100% | 2023-10-06 | 2023-10-10 | MBRT BASE [16 h] | 16 | 16 | 16 | 1-0950 | 1-0950 | ELECRICAL SUB | ZONE-1 | 08 | SIGNALS | PRIME |  |  | POLES1 |  |
| 1-0958 |  | NOTIFY SDOT, MAD AND 8TH | 1d | 2023-10-19 A | 2023-10-19 A | 1-0957, 1-0954 | 100% | 2023-10-18 | 2023-10-19 | MBRT BASE [8 h] | 8 | 8 | 8 | 1-0958 | 1-0958 | ELECRICAL SUB | ZONE-1 | 08 | SIGNALS | PRIME |  | NOTIFY |  |  |
| 1-0951 |  | INST PPB POSTS, MAD AND 8TH | 1d | 2023-10-20 A | 2023-10-20 A | 1-0950, 1-1455 | 100% | 2023-10-10 | 2023-10-11 | MBRT BASE [8 h] | 8 | 8 | 8 | 1-0951 | 1-0951 | ELECRICAL SUB | ZONE-1 | 08 | SIGNALS | PRIME |  |  | POLES1 |  |
| 1-0952 |  | INST PEDISTALS, MAD AND 8TH | 1d | 2023-10-23 A | 2023-10-23 A | 1-0951 | 100% | 2023-10-11 | 2023-10-12 | MBRT BASE [8 h] | 8 | 8 | 8 | 1-0952 | 1-0952 | ELECRICAL SUB | ZONE-1 | 08 | SIGNALS | PRIME |  |  | POLES1 |  |
| 1-0948 |  | INST SIGNAL CABINET, MAD AND 8TH | 1d | 2023-10-24 A | 2023-10-24 A | 1-0714, 1-0957, 1-0952 | 100% | 2023-10-05 | 2023-10-06 | MBRT BASE [8 h] | 8 | 8 | 8 | 1-0948 | 1-0948 | ELECRICAL SUB | ZONE-1 | 08 | SIGNALS | PRIME | X |  | POLES1 |  |
| 1-0959 |  | SDOT INSPECTION, MAD AND 8TH | 5d | 2023-10-25 A | 2023-11-06 A | 1-0958, 1-0948 | 100% | 2023-10-18 | 2023-10-25 | MBRT BASE [72 h] | 72 | 72 | 72 | 1-0959 | 1-0959 | CITY | ZONE-1 | 08 | SIGNALS | SDOT |  | INSPECT |  |  |
| 1-0960 |  | COMM SIGNAL, MAD AND 8TH | 1d | 2023-11-07 A | 2023-11-07 A | 1-0959 | 100% | 2023-11-09 | 2023-11-09 | MBRT BASE [8 h] | 8 | 8 | 8 | 1-0960 | 1-0960 | CITY | ZONE-1 | 08 | SIGNALS | PRIME | X | CX |  |  |

| ID | WBS | Activity | Duration | Start | Finish | Predecessors | Complete | Remaining | Planned start | Planned finish | Total float | Free float | Resources | Cost | Actual cost | user_text2 | user_number6 | user_text10 | ~TEXT | user_text8 | MBRT-ZONE | MBRT-LOCATION | MBRT-TYPE | MBRT-RESP | MBRT-ACTIVITY | ~SELECT |
| --- | --- | --- | --- | --- | --- | --- | --- | --- | --- | --- | --- | --- | --- | --- | --- | --- | --- | --- | --- | --- | --- | --- | --- | --- | --- | --- |
|  | 18 | **MADISON AND 9TH** |  | 2023-08-31 | 2024-04-29 |  |  |  |  |  |  |  |  |  |  |  |  |  |  |  |  |  |  |  |  |  |
| 1-0964 |  | INST MAST ARM POLES , MAD & 9TH | 8d | 2023-08-31 A | 2023-09-12 A | PMP-0016, 1-1455 | 100% |  | 2024-01-10 | 2024-01-22 |  |  | MBRT BASE [64 h] | 64 | 64 | ELECRICAL SUB | 64 | 1-0964 | POLES1 | 1-0964 | ZONE-1 | 09 | SIGNALS | PRIME | OCS |  |
| 1-1460 |  | INST MAST ARMS, MAD & 9TH | 8d | 2024-02-01 A | 2024-02-02 A | 1-0964, 1-0962 | 100% |  | 2024-05-07 | 2024-05-16 |  |  | MBRT NEW [64 h] | 64 | 16 | ELECRICAL SUB | 16 | 1-1460 | POLES1 | 1-1460 | ZONE-1 | 09 | SIGNALS | PRIME | OCS |  |
| 1-0963 |  | INST SERVICE CABINET, MAD AND 9TH | 1d | 2024-02-02 A | 2024-02-02 A | 1-0605 SS, 1-0608 | 100% |  | 2024-02-28 | 2024-02-28 |  |  | MBRT BASE [8 h] | 8 | 8 | ELECRICAL SUB | 8 | 1-0963 | POLES1 | 1-0963 | ZONE-1 | 09 | SIGNALS | PRIME |  |  |
| 1-3882 |  | SDCI INSPECTION | 1d | 2024-02-05 A | 2024-02-05 A | 1-0963 | 100% |  | 2024-02-29 | 2024-02-29 |  |  | MBRT NEW |  |  |  | 8 | 1-3882 |  | 1-3882 |  |  |  |  |  |  |
| 1-3927 |  | SDOT INSPECTION | 1d | 2024-02-06 A | 2024-02-06 A | 1-3882 | 100% |  | 2024-03-01 | 2024-03-01 |  |  | MBRT NEW |  |  |  | 8 | 1-3927 |  | 1-3927 |  |  |  |  |  |  |
| 1-9955 |  | SCL INSPECTION REQUEST | 1d | 2024-02-06 A | 2024-02-06 A | 1-3927 | 100% |  | 2024-03-04 | 2024-03-04 |  |  | MBRT NEW |  |  | ELECRICAL SUB | 8 | 1-9955 |  | 1-9955 | ZONE-1 | 08 | SIGNALS | PRIME | NOTIFY |  |
| 1-9956 |  | 30 DAY WAIT FOR SCL TO INSPECT | 21d | 2024-02-07 A | 2024-02-08 A | 1-9955 | 100% |  | 2024-03-04 | 2024-04-01 |  |  | MBRT NEW |  |  | CITY | 16 | 1-9956 |  | 1-9956 | ZONE-1 | 08 | SIGNALS | SCL | INSPECT |  |
| 1-4218 |  | SCL INSPECTION | 1d | 2024-02-09 A | 2024-02-09 A | 1-9956 | 100% |  | 2024-04-02 | 2024-04-02 |  |  | MBRT NEW |  |  |  | 8 | 1-4218 |  | 1-4218 |  |  |  |  |  | x |
| 1-4219 |  | COMMISION NOTIFICATION | 1d | 2024-02-12 A | 2024-02-12 A | 1-4218 | 100% |  | 2024-04-03 | 2024-04-03 |  |  | MBRT NEW |  |  |  | 8 | 1-4219 |  | 1-4219 |  |  |  |  |  | x |
| 1-0971 |  | 30 DAY WAIT FOR SCL TO COMMISION | 21d | 2024-02-13 A | 2024-02-14 A | 1-4219 | 100% |  | 2024-04-04 | 2024-05-02 |  |  | MBRT BASE |  |  | CITY | 16 | 1-0971 |  | 1-0971 | ZONE-1 | 09 | SIGNALS | SCL | INSPECT |  |
| 1-0972 |  | COMM SERVICE, MAD AND 9TH | 1d | 2024-02-15 A | 2024-02-15 A | 1-0971 | 100% |  | 2024-05-03 | 2024-05-03 |  |  | MBRT BASE [8 h] | 8 | 8 | CITY | 8 | 1-0972 |  | 1-0972 | ZONE-1 | 09 | SIGNALS | PRIME | CX |  |
| 1-0962 |  | INST SIGNAL CABINET, MAD AND 9TH | 1d | 2024-02-19 A | 2024-02-23 A | 1-0720, 1-0972 | 100% |  | 2024-05-06 | 2024-05-06 |  |  | MBRT BASE [32 h] | 32 | 32 | ELECRICAL SUB | 32 | 1-0962 | POLES1 | 1-0962 | ZONE-1 | 09 | SIGNALS | PRIME |  | X |
| 1-0965 |  | INST PPB POSTS, MAD AND 9TH | 1d | 2024-02-19 A | 2024-02-23 A | 1-0964, 1-1460 | 100% |  | 2024-05-17 | 2024-05-17 |  |  | MBRT BASE [32 h] | 32 | 32 | ELECRICAL SUB | 32 | 1-0965 | POLES1 | 1-0965 | ZONE-1 | 09 | SIGNALS | PRIME |  |  |
| 1-0966 |  | INST PEDISTALS, MAD AND 9TH | 1d | 2024-02-19 A | 2024-02-23 A | 1-0965 | 100% |  | 2024-05-20 | 2024-05-20 |  |  | MBRT BASE [32 h] | 32 | 32 | ELECRICAL SUB | 32 | 1-0966 | POLES1 | 1-0966 | ZONE-1 | 09 | SIGNALS | PRIME |  |  |
| 1-0967 |  | INST SIGNAL GEAR, MAD AND 9TH | 1d | 2024-02-19 A | 2024-02-23 A | 1-0966 | 100% |  | 2024-05-21 | 2024-05-21 |  |  | MBRT BASE [32 h] | 32 | 32 | ELECRICAL SUB | 32 | 1-0967 | POLES1 | 1-0967 | ZONE-1 | 09 | SIGNALS | PRIME |  | X |
| 1-0969 |  | INST WIRING, MAD AND 9TH | 3d | 2024-02-19 A | 2024-02-23 A | 1-0967 SS | 100% |  | 2024-05-23 | 2024-05-28 |  |  | MBRT BASE [32 h] | 32 | 32 | ELECRICAL SUB | 32 | 1-0969 | POLES1 | 1-0969 | ZONE-1 | 09 | SIGNALS | PRIME |  |  |
| 1-0973 |  | NOTIFY SDOT, MAD AND 9TH | 1d | 2024-02-27 A | 2024-02-27 A | 1-0972, 1-0969 | 100% |  | 2024-05-29 | 2024-05-29 |  |  | MBRT BASE [8 h] | 8 | 8 | ELECRICAL SUB | 8 | 1-0973 |  | 1-0973 | ZONE-1 | 09 | SIGNALS | PRIME | NOTIFY |  |
| 1-0974 |  | SDOT INSPECTION, MAD AND 9TH | 5d | 2024-02-27 A | 2024-02-27 A | 1-0973 | 100% |  | 2024-05-29 | 2024-06-04 |  |  | MBRT BASE [8 h] | 8 | 8 | CITY | 8 | 1-0974 |  | 1-0974 | ZONE-1 | 09 | SIGNALS | SDOT | INSPECT |  |
| 1-0975 |  | COMM SIGNAL, MAD AND 9TH | 1d | 2024-02-27 A | 2024-02-27 A | 1-0974, 1-0960 | 100% |  | 2024-06-05 | 2024-06-05 |  |  | MBRT BASE [8 h] | 8 | 8 | CITY | 8 | 1-0975 |  | 1-0975 | ZONE-1 | 09 | SIGNALS | PRIME | CX | X |
| 1-0968 |  | INST MAGNOMETERS, MAD AND 9TH | 1d | 2024-02-28 A | 2024-03-05 A | 1-0967 | 100% |  | 2024-03-04 | 2024-03-04 |  |  | MBRT BASE [8 h] | 8 |  | ELECRICAL SUB | 8 | 1-0968 | POLES1 | 1-0968 | ZONE-1 | 09 | SIGNALS | PRIME |  |  |
| 1-0983 |  | Remove Temp Poles - 9th (KCM Repeater Issue) | 5d | 2024-03-06 A | 2024-04-29 | 1-2325 |  | 20d | 2024-03-04 | 2024-03-08 | -69d | 0d |  |  |  |  |  |  |  |  |  |  |  |  |  |  |
|  | 19 | **MADISON AND TERRY** |  | 2023-05-18 | 2023-10-12 |  |  |  |  |  |  |  |  |  |  |  |  |  |  |  |  |  |  |  |  |  |
| 1-0978 |  | INST SERVICE CABINET, MAD & TERRY | 1d | 2023-05-18 A | 2023-05-18 A | 1-2930 | 100% |  |  |  |  |  | MBRT BASE [8 h] | 8 | 8 |  | 8 | 1-0978 |  | 1-0978 |  |  |  |  |  |  |
| 1-2262 |  | SDCI INSPECTION | 1d | 2023-06-02 A | 2023-06-02 A | 1-0978 | 100% |  |  |  |  |  | MBRT NEW |  |  |  | 8 | 1-2262 |  | 1-2262 |  |  |  |  |  | x |
| 1-2263 |  | SDOT INSPECTION | 1d | 2023-06-14 A | 2023-06-14 A | 1-2262 | 100% |  |  |  |  |  | MBRT NEW |  |  |  | 8 | 1-2263 |  | 1-2263 |  |  |  |  |  | x |
| 1-0979 |  | INST MAST ARM POLES, MAD & TERRY | 4d | 2023-07-11 A | 2023-07-14 A | PMP-0016 | 100% |  | 2023-08-14 | 2023-08-17 |  |  | MBRT BASE [32 h] | 32 | 32 | ELECRICAL SUB | 32 | 1-0979 |  | 1-0979 | ZONE-1 | TERRY | SIGNALS | PRIME | OCS |  |
| 1-1465 |  | INST MAST ARM, MAD & TERRY | 4d | 2023-07-11 A | 2023-07-14 A | 1-0979 | 100% |  | 2023-09-25 | 2023-09-28 |  |  | MBRT NEW [32 h] | 32 | 32 | ELECRICAL SUB | 32 | 1-1465 | POLES1 | 1-1465 | ZONE-1 | TERRY | SIGNALS | PRIME | OCS |  |
| 1-0980 |  | INST PPB POSTS, MAD AND TERRY | 1d | 2023-07-17 A | 2023-07-17 A | 1-0979, 1-1465 | 100% |  | 2023-09-29 | 2023-09-29 |  |  | MBRT BASE [8 h] | 8 | 8 | ELECRICAL SUB | 8 | 1-0980 | POLES1 | 1-0980 | ZONE-1 | TERRY | SIGNALS | PRIME |  |  |
| 1-2264 |  | SCL INSPECTION REQUEST | 1d | 2023-07-20 A | 2023-07-20 A | 1-0978, 1-2263 | 100% |  | 2023-07-03 | 2023-07-03 |  |  | MBRT NEW |  |  |  | 8 | 1-2264 |  | 1-2264 |  |  |  |  |  | x |
| 1-2269 |  | 30 DAY WAIT FOR SCL TO INSPECT | 21d | 2023-07-21 A | 2023-08-18 A | 1-2264 | 100% |  | 2023-07-05 | 2023-08-02 |  |  | MBRT NEW |  |  |  | 168 | 1-2269 |  | 1-2269 |  |  |  |  |  | x |
| 1-2266 |  | SCL INSPECTION | 1d | 2023-08-21 A | 2023-08-21 A | 1-2269 | 100% |  |  |  |  |  | MBRT NEW |  |  |  | 8 | 1-2266 |  | 1-2266 |  |  |  |  |  | x |
| 1-2267 |  | COMMISION NOTIFICATION | 1d | 2023-08-22 A | 2023-08-22 A | 1-2266 | 100% |  |  |  |  |  | MBRT NEW |  |  |  | 8 | 1-2267 |  | 1-2267 |  |  |  |  |  | x |
| 1-2268 |  | 30 DAY WAIT FOR SCL TO COMMISION | 20d | 2023-08-23 A | 2023-09-20 A | 1-2267 | 100% |  |  |  |  |  | MBRT NEW |  |  |  | 160 | 1-2268 |  | 1-2268 |  |  |  |  |  | x |
| 1-1067 |  | DSC 624 Existing Conduit wont allow wire | 5d | 2023-09-20 A | 2023-09-26 A | 1-2268 | 100% |  | 2023-09-11 | 2023-09-15 |  |  | MBRT DSC [40 h] | 40 | 40 |  | 40 |  |  |  |  |  |  |  |  |  |
| 1-0985 |  | COMM SERVICE, MAD AND TERRY | 1d | 2023-09-21 A | 2023-09-21 A | 1-2268 | 100% |  |  |  |  |  | MBRT BASE [8 h] | 8 | 8 | CITY | 8 | 1-0985 |  | 1-0985 | ZONE-1 | TERRY | SIGNALS | PRIME | CX |  |
| 1-0982 |  | INST WIRING, MAD AND TERRY | 3d | 2023-09-22 A | 2023-09-25 A | 1-0980 | 100% |  | 2023-10-03 | 2023-10-05 |  |  | MBRT BASE [16 h] | 16 | 16 | ELECRICAL SUB | 16 | 1-0982 |  | 1-0982 | ZONE-1 | TERRY | SIGNALS | PRIME |  |  |
| 1-0981 |  | INST SIGNAL GEAR, MAD AND TERRY | 1d | 2023-09-25 A | 2023-09-29 A | 1-0982 | 100% |  | 2023-10-02 | 2023-10-02 |  |  | MBRT BASE [40 h] | 40 | 40 | ELECRICAL SUB | 40 | 1-0981 |  | 1-0981 | ZONE-1 | TERRY | SIGNALS | PRIME |  | X |
| 1-0977 |  | INST SIGNAL CABINET, MAD & TERRY | 1d | 2023-10-02 A | 2023-10-02 A | 1-0726, 1-0985, 1-0981, 1-1067 | 100% |  |  |  |  |  | MBRT BASE [8 h] | 8 | 8 | ELECRICAL SUB | 8 | 1-0977 | POLES1 | 1-0977 | ZONE-1 | TERRY | SIGNALS | PRIME |  | X |
| 1-0986 |  | NOTIFY SDOT, MAD AND TERRY | 1d | 2023-10-02 A | 2023-10-02 A | 1-0985, 1-0982, 1-0977 SS | 100% |  |  |  |  |  | MBRT BASE [8 h] | 8 | 8 | ELECRICAL SUB | 8 | 1-0986 |  | 1-0986 | ZONE-1 | TERRY | SIGNALS | PRIME | NOTIFY |  |
| 1-0987 |  | SDOT INSPECTION, MAD AND TERRY | 5d | 2023-10-03 A | 2023-10-11 A | 1-0986 | 100% |  | 2023-10-02 | 2023-10-06 |  |  | MBRT BASE [56 h] | 56 | 56 | CITY | 56 | 1-0987 |  | 1-0987 | ZONE-1 | TERRY | SIGNALS | SDOT | INSPECT |  |
| 1-0988 |  | COMM SIGNAL, MAD AND TERRY | 1d | 2023-10-12 A | 2023-10-12 A | 1-0987 | 100% |  | 2023-10-09 | 2023-10-09 |  |  | MBRT BASE [8 h] | 8 | 8 | CITY | 8 | 1-0988 |  | 1-0988 | ZONE-1 | TERRY | SIGNALS | PRIME | CX | X |

| ID | WBS | Activity | Duration | Start | Finish | Predecessors | Complete | Planned start | Planned finish | Resources | Cost | Actual cost | ~SELECT | user_text2 | user_number6 | MBRT-ZONE | MBRT-LOCATION | MBRT-TYPE | MBRT-RESP | MBRT-ACTIVITY | user_text10 | user_text8 | ~TEXT | ~SELECT2 |
| --- | --- | --- | --- | --- | --- | --- | --- | --- | --- | --- | --- | --- | --- | --- | --- | --- | --- | --- | --- | --- | --- | --- | --- | --- |
|  | 2 | **2ND AND SPRING** |  | 2023-02-09 | 2023-06-01 |  |  |  |  |  |  |  |  |  |  |  |  |  |  |  |  |  |  |  |
| 1-0804 |  | INST SIGNAL GEAR, 2ND AND SPRING | 1d | 2023-02-09 A | 2023-02-09 A | 1-0442 | 100% | 2023-03-03 | 2023-03-03 | MBRT BASE [8 h] | 8 | 8 | X | ELECRICAL SUB | 8 | ZONE-1 | SPRING | SIGNALS | PRIME |  |  |  |  |  |
| 1-0806 |  | INST WIRING, 2ND AND SPRING | 1d | 2023-02-13 A | 2023-02-13 A | 1-0804 | 100% | 2023-03-07 | 2023-03-07 | MBRT BASE [8 h] | 8 | 8 |  | ELECRICAL SUB | 8 | ZONE-1 | SPRING | SIGNALS | PRIME |  |  |  |  |  |
| 1-0808 |  | SDOT INSPECTION, 2ND AND SPRING | 5d | 2023-02-14 A | 2023-02-21 A | 1-0806 | 100% | 2023-03-08 | 2023-03-14 | MBRT BASE [40 h] | 40 | 40 |  | CITY | 40 | ZONE-1 | SPRING | SIGNALS | SDOT | INSPECT |  |  |  |  |
| 1-1400 |  | DELAY AWAITING SDOT | 5d | 2023-02-22 A | 2023-03-01 A | 1-0808 | 100% | 2023-03-08 | 2023-03-14 | MBRT NEW |  |  |  | CITY | 40 | ZONE-1 | SPRING | SIGNALS | SDOT | INSPECT |  |  |  |  |
| 1-0809 |  | COMM SIGNAL, 2ND AND SPRING | 1d | 2023-03-02 A | 2023-03-02 A | 1-0808, 1-1400 | 100% | 2023-06-12 | 2023-06-12 | MBRT BASE [8 h] | 8 | 8 | X | CITY | 8 | ZONE-1 | SPRING | SIGNALS | PRIME | CX |  |  |  |  |
| 1-0805 |  | INST MAGNOMETERS, 2ND AND SPRING | 1d | 2023-05-31 A | 2023-05-31 A | 1-0806 | 100% |  |  | MBRT BASE [8 h] | 8 | 8 |  | ELECRICAL SUB | 8 | ZONE-1 | SPRING | SIGNALS | PRIME |  | 1-0805 | 1-0805 |  |  |
| 1-0807 |  | NOTIFY SDOT, 2ND AND SPRING | 0d | 2023-06-01 A | 2023-06-01 A | 1-0806, 1-0805 | 100% |  |  | MBRT BASE |  |  |  | ELECRICAL SUB | 0 | ZONE-1 | SPRING | SIGNALS | PRIME | NOTIFY | 1-0807 | 1-0807 |  |  |
|  | 20 | **MADISON AND BOREN** |  | 2023-09-29 | 2024-03-12 |  |  |  |  |  |  |  |  |  |  |  |  |  |  |  |  |  |  |  |
| 1-0991 |  | INST SERVICE CABINET, MAD & BOREN | 1d | 2023-09-29 A | 2023-09-29 A | 1-0732, 1-0643 | 100% | 2023-12-22 | 2023-12-22 | MBRT BASE [8 h] | 8 | 8 |  | ELECRICAL SUB | 8 | ZONE-1 | BOREN | SIGNALS | PRIME |  | 1-0991 | 1-0991 |  |  |
| 1-0992 |  | INST MAST ARM POLES, MAD & BOREN | 8d | 2023-10-02 A | 2023-10-11 A | 1-0981 | 100% |  |  | MBRT BASE [64 h] | 64 | 64 |  | ELECRICAL SUB | 64 | ZONE-1 | BOREN | SIGNALS | PRIME | OCS | 1-0992 | 1-0992 | POLES1 |  |
| 1-8882 |  | SDCI INSPECTION | 1d | 2023-10-02 A | 2023-10-02 A | 1-0991 | 100% | 2023-12-26 | 2023-12-26 | MBRT NEW |  |  |  |  | 8 |  |  |  |  |  | 1-8882 | 1-8882 |  |  |
| 1-8927 |  | SDOT INSPECTION | 1d | 2023-10-03 A | 2023-10-03 A | 1-8882 | 100% | 2023-12-27 | 2023-12-27 | MBRT NEW |  |  |  |  | 8 |  |  |  |  |  | 1-8927 | 1-8927 |  |  |
| 1-0998 |  | SCL INSPECTION REQUEST | 0d | 2023-10-04 A | 2023-10-04 A | 1-8927 | 100% | 2023-12-28 | 2023-12-28 | MBRT BASE |  |  |  | ELECRICAL SUB | 0 | ZONE-1 | BOREN | SIGNALS | PRIME | NOTIFY | 1-0998 | 1-0998 |  |  |
| 1-0999 |  | 30 DAY WAIT FOR SCL TO INSPECT | 21d | 2023-10-04 A | 2023-10-27 A | 1-0998 | 100% | 2023-12-28 | 2024-01-29 | MBRT BASE |  |  |  | CITY | 144 | ZONE-1 | BOREN | SIGNALS | SCL | INSPECT | 1-0999 | 1-0999 |  |  |
| 1-1107 |  | FM 671 NEW HH AT MINOR | 14d | 2023-10-30 A | 2023-11-17 A | 1-0992, 1-0999 | 100% | 2023-12-11 | 2023-12-29 | MBRT NEW [112 h] | 112 | 112 |  |  | 112 |  |  |  |  |  |  |  |  |  |
| 1-1137 |  | DELAY EXISTING GROUNDING SYSTEM IS NOT COMPLETE | 0d | 2023-11-20 A | 2024-02-06 A | 1-1107 | 100% | 2023-12-11 | 2023-12-11 | MBRT NEW |  |  |  |  | 416 |  |  |  |  |  |  |  |  |  |
| 1-1142 |  | VITO'S FIRE DELAY | 0d | 2024-01-02 A | 2024-02-09 A |  | 100% | 2023-12-11 | 2023-12-11 | MBRT NEW |  |  |  |  | 224 |  |  |  |  |  |  |  |  |  |
| 1-1147 |  | REDO SCL INSPECTION REQUEST | 5d | 2024-02-07 A | 2024-02-13 A | 1-1137, 1-1142 FF | 100% | 2023-12-11 | 2023-12-15 | MBRT NEW [40 h] | 40 | 40 |  |  | 40 |  |  |  |  |  |  |  |  |  |
| 1-1152 |  | 2ND 30 DAY WAIT FOR SCL TO INSPECT | 12d | 2024-02-14 A | 2024-03-04 A | 1-1147, 1-1142 | 100% | 2023-12-11 | 2023-12-27 | MBRT NEW [96 h] | 96 | 96 |  |  | 96 |  |  |  |  |  |  |  |  |  |
| 1-1470 |  | INST MAST ARMS, MAD & BOREN | 8d | 2024-02-26 A | 2024-02-26 A | 1-0992, 1-0991 | 100% | 2024-04-16 | 2024-04-25 | MBRT NEW [64 h] | 64 | 8 |  | ELECRICAL SUB | 8 | ZONE-1 | BOREN | SIGNALS | PRIME | OCS | 1-1470 | 1-1470 | POLES1 |  |
| 1-0993 |  | INST PPB POSTS, MAD AND BOREN | 1d | 2024-03-04 A | 2024-03-04 A | 1-1470 | 100% |  |  | MBRT BASE [8 h] | 8 |  |  | ELECRICAL SUB | 8 | ZONE-1 | BOREN | SIGNALS | PRIME |  | 1-0993 | 1-0993 | POLES1 | PX |
| 1-0997 |  | INST WIRING, MAD AND BOREN | 3d | 2024-03-04 A | 2024-03-06 A | 1-1470 | 100% |  |  | MBRT BASE [24 h] | 24 |  |  | ELECRICAL SUB | 24 | ZONE-1 | BOREN | SIGNALS | PRIME |  | 1-0997 | 1-0997 | POLES1 | PX |
| 1-0994 |  | INST PEDISTALS, MAD AND BOREN | 1d | 2024-03-05 A | 2024-03-05 A | 1-0993 | 100% |  |  | MBRT BASE [8 h] | 8 |  |  | ELECRICAL SUB | 8 | ZONE-1 | BOREN | SIGNALS | PRIME |  | 1-0994 | 1-0994 | POLES1 | PX |
| 1-0995 |  | INST SIGNAL GEAR, MAD AND BOREN | 1d | 2024-03-06 A | 2024-03-06 A | 1-0994 | 100% |  |  | MBRT BASE [8 h] | 8 |  | X | ELECRICAL SUB | 8 | ZONE-1 | BOREN | SIGNALS | PRIME |  | 1-0995 | 1-0995 | POLES1 | PX |
| 1-0996 |  | INST MEGNOMETERS, MAD AND BOREN | 1d | 2024-03-07 A | 2024-03-07 A | 1-0995 | 100% |  |  | MBRT BASE [8 h] | 8 |  |  | ELECRICAL SUB | 8 | ZONE-1 | BOREN | SIGNALS | PRIME |  | 1-0996 | 1-0996 | POLES1 | PX |
| 1-1000 |  | COMM SERVICE, MAD AND BOREN | 1d | 2024-03-08 A | 2024-03-08 A | 1-0999, 1-3268 | 100% | 2024-04-10 | 2024-04-10 | MBRT BASE [8 h] | 8 |  |  | CITY | 8 | ZONE-1 | BOREN | SIGNALS | PRIME | CX | 1-1000 | 1-1000 |  | PX |
| 1-1001 |  | NOTIFY SDOT, MAD AND BOREN | 0d | 2024-03-08 A | 2024-03-08 A | 1-1000, 1-0997 | 100% | 2024-04-11 | 2024-04-11 | MBRT BASE |  |  |  | ELECRICAL SUB | 0 | ZONE-1 | BOREN | SIGNALS | PRIME | NOTIFY | 1-1001 | 1-1001 |  | PX |
| 1-3266 |  | SCL INSPECTION | 1d | 2024-03-08 A | 2024-03-08 A | 1-0999, 1-1152, 1-0996, 1-0968 | 100% |  |  | MBRT NEW [8 h] | 8 |  | x |  | 8 |  |  |  |  |  | 1-3266 | 1-3266 |  | PX |
| 1-3267 |  | COMMISION NOTIFICATION | 1d | 2024-03-08 A | 2024-03-08 A | 1-3266 | 100% | 2024-03-11 | 2024-03-11 | MBRT NEW |  |  | x |  | 8 |  |  |  |  |  | 1-3267 | 1-3267 |  | PX |
| 1-3268 |  | 30 DAY WAIT FOR SCL TO COMMISION | 21d | 2024-03-08 A | 2024-03-08 A | 1-3267 | 100% | 2024-03-12 | 2024-04-09 | MBRT NEW |  |  | x |  | 168 |  |  |  |  |  | 1-3268 | 1-3268 |  | PX |
| 1-0990 |  | INST SIGNAL CABINET, MAD & BOREN | 1d | 2024-03-11 A | 2024-03-11 A | 1-0732, 1-1000 | 100% | 2024-04-11 | 2024-04-11 | MBRT BASE [8 h] | 8 |  | X | ELECRICAL SUB | 8 | ZONE-1 | BOREN | SIGNALS | PRIME |  | 1-0990 | 1-0990 |  | PX |
| 1-1002 |  | SDOT INSPECTION, MAD AND BOREN | 5d | 2024-03-11 A | 2024-03-11 A | 1-1001, 1-0990 | 100% | 2024-04-12 | 2024-04-18 | MBRT BASE [40 h] | 40 |  |  | CITY | 40 | ZONE-1 | BOREN | SIGNALS | SDOT | INSPECT | 1-1002 | 1-1002 |  | PX |
| 1-1003 |  | COMM SIGNAL, MAD AND BOREN | 1d | 2024-03-12 A | 2024-03-12 A | 1-1002 | 100% | 2024-04-19 | 2024-04-19 | MBRT BASE [8 h] | 8 |  | X | CITY | 8 | ZONE-1 | BOREN | SIGNALS | PRIME | CX | 1-1003 | 1-1003 |  | PX |

| ID | WBS | Activity | Duration | Start | Finish | Predecessors | Complete | Planned start | Planned finish | Resources | Cost | Actual cost | user_number6 | user_text10 | user_text8 | ~SELECT | MBRT-ZONE | MBRT-LOCATION | MBRT-TYPE | MBRT-RESP | MBRT-ACTIVITY | user_text2 | ~SELECT2 |
| --- | --- | --- | --- | --- | --- | --- | --- | --- | --- | --- | --- | --- | --- | --- | --- | --- | --- | --- | --- | --- | --- | --- | --- |
|  | 21 | **MADISON AND MINOR** |  | 2023-05-16 | 2024-03-18 |  |  |  |  |  |  |  |  |  |  |  |  |  |  |  |  |  |  |
| 1-1006 |  | INST SERVICE CABINET, MAD & MINOR | 1d | 2023-05-16 A | 2023-05-16 A | 1-2895 | 100% |  |  | MBRT BASE [8 h] | 8 | 8 | 8 | 1-1006 | 1-1006 |  |  |  |  |  |  |  |  |
| 1-6297 |  | SDCI INSPECTION | 1d | 2023-06-02 A | 2023-06-02 A | 1-1006 | 100% |  |  | MBRT NEW |  |  | 8 | 1-6297 | 1-6297 | x |  |  |  |  |  |  |  |
| 1-6298 |  | SDOT INSPECTION | 1d | 2023-06-14 A | 2023-06-14 A | 1-6297 | 100% |  |  | MBRT NEW |  |  | 8 | 1-6298 | 1-6298 | x |  |  |  |  |  |  |  |
| 1-1017 |  | INST OCS POLE, MAD AND MINOR | 5d | 2023-06-29 A | 2023-07-06 A | 1-0738 | 100% |  |  | MBRT BASE [40 h] | 40 | 40 | 40 | 1-1017 | 1-1017 |  | ZONE-1 | MINOR | SIGNALS | PRIME | OCS |  |  |
| 1-6299 |  | SCL INSPECTION REQUEST | 1d | 2023-10-03 A | 2023-10-03 A | 1-1006, 1-6298 | 100% | 2023-10-09 | 2023-10-09 | MBRT NEW |  |  | 8 | 1-6299 | 1-6299 | x |  |  |  |  |  |  |  |
| 1-6300 |  | 30 DAY WAIT FOR SCL TO INSPECT | 21d | 2023-10-04 A | 2023-10-27 A | 1-6299 | 100% | 2023-10-10 | 2023-11-07 | MBRT NEW |  |  | 144 | 1-6300 | 1-6300 | x |  |  |  |  |  |  |  |
| 1-6306 |  | FM 671 NEW HH AT MINOR | 14d | 2023-10-30 A | 2023-11-17 A | 1-6300 | 100% | 2023-10-02 | 2023-10-19 | MBRT NEW [112 h] | 112 | 112 | 112 |  |  |  |  |  |  |  |  |  |  |
| 1-6316 |  | DELAY EXISTING GROUNDING SYSTEM IS NOT COMPLETE | 0d | 2023-11-20 A | 2024-02-06 A | 1-6306 | 100% | 2023-11-02 | 2023-11-02 | MBRT NEW |  |  | 416 |  |  |  |  |  |  |  |  |  |  |
| 1-6311 |  | REDO SCL INSPECTION REQUEST | 1d | 2024-02-07 A | 2024-02-07 A | 1-6306, 1-6316 | 100% | 2023-12-18 | 2023-12-18 | MBRT NEW [8 h] | 8 | 8 | 8 |  |  |  |  |  |  |  |  |  |  |
| 1-6321 |  | 2ND 30 DAY WAIT FOR SCL TO INSPECT | 16d | 2024-02-08 A | 2024-03-04 A | 1-6316 | 100% | 2023-12-11 | 2024-01-03 | MBRT NEW [128 h] | 128 | 128 | 128 |  |  |  |  |  |  |  |  |  |  |
| 1-6301 |  | SCL INSPECTION | 1d | 2024-03-04 A | 2024-03-04 A | 1-6300, 1-6311, 1-6321 | 100% |  |  | MBRT NEW [8 h] | 8 |  | 8 | 1-6301 | 1-6301 | x |  |  |  |  |  |  |  |
| 1-6302 |  | COMMISION NOTIFICATION | 1d | 2024-03-05 A | 2024-03-05 A | 1-6301 | 100% |  |  | MBRT NEW |  |  | 8 | 1-6302 | 1-6302 | x |  |  |  |  |  |  |  |
| 1-6303 |  | 30 DAY WAIT FOR SCL TO COMMISION | 1d | 2024-03-06 A | 2024-03-06 A | 1-6302 | 100% |  |  | MBRT NEW |  |  | 8 | 1-6303 | 1-6303 | x |  |  |  |  |  |  |  |
| 1-1013 |  | COMM SERVICE, MAD AND MINOR | 1d | 2024-03-07 A | 2024-03-07 A | 1-6303 | 100% |  |  | MBRT BASE [8 h] | 8 |  | 8 | 1-1013 | 1-1013 |  | ZONE-1 | MINOR | SIGNALS | PRIME | CX | CITY |  |
| 1-1005 |  | INST SIGNAL CABINET, MAD & MINOR | 1d | 2024-03-08 A | 2024-03-08 A | 1-0738, 1-1013 | 100% |  |  | MBRT BASE [8 h] | 8 |  | 8 | 1-1005 | 1-1005 | X | ZONE-1 | MINOR | SIGNALS | PRIME |  | ELECRICAL SUB | PX |
| 1-1007 |  | INST PPB POSTS, MAD AND MINOR | 1d | 2024-03-11 A | 2024-03-11 A | 1-1005 | 100% |  |  | MBRT BASE [8 h] | 8 |  | 8 | 1-1007 | 1-1007 |  | ZONE-1 | MINOR | SIGNALS | PRIME |  | ELECRICAL SUB | PX |
| 1-1008 |  | INST PEDISTALS, MAD AND MINOR | 1d | 2024-03-12 A | 2024-03-12 A | 1-1007 | 100% |  |  | MBRT BASE [8 h] | 8 |  | 8 | 1-1008 | 1-1008 |  | ZONE-1 | MINOR | SIGNALS | PRIME |  | ELECRICAL SUB | PX |
| 1-1009 |  | INST SIGNAL GEAR, MAD AND MINOR | 1d | 2024-03-13 A | 2024-03-13 A | 1-1008 | 100% |  |  | MBRT BASE [8 h] | 8 |  | 8 | 1-1009 | 1-1009 | X | ZONE-1 | MINOR | SIGNALS | PRIME |  | ELECRICAL SUB | PX |
| 1-1010 |  | INST WIRING, MAD AND MINOR | 2d | 2024-03-14 A | 2024-03-15 A | 1-1009 | 100% |  |  | MBRT BASE [16 h] | 16 |  | 16 | 1-1010 | 1-1010 |  | ZONE-1 | MINOR | SIGNALS | PRIME |  | ELECRICAL SUB | PX |
| 1-1014 |  | NOTIFY SDOT, MAD AND MINOR | 0d | 2024-03-18 A | 2024-03-18 A | 1-1013, 1-1010 | 100% |  |  | MBRT BASE |  |  | 0 | 1-1014 | 1-1014 |  | ZONE-1 | MINOR | SIGNALS | PRIME | NOTIFY | ELECRICAL SUB | PX |
| 1-1015 |  | SDOT INSPECTION, MAD AND MINOR | 5d | 2024-03-18 A | 2024-03-18 A | 1-1014 | 100% | 2024-03-18 | 2024-03-22 | MBRT BASE [40 h] | 40 |  | 40 | 1-1015 | 1-1015 |  | ZONE-1 | MINOR | SIGNALS | SDOT | INSPECT | CITY | PX |
| 1-1016 |  | COMM SIGNAL, MAD AND MINOR | 1d | 2024-03-18 A | 2024-03-18 A | 1-1015 | 100% | 2024-03-25 | 2024-03-25 | MBRT BASE [8 h] | 8 |  | 8 | 1-1016 | 1-1016 | X | ZONE-1 | MINOR | SIGNALS | PRIME | CX | CITY | PX |
|  | 22 | **MADISON AND SUMMIT** |  | 2023-06-13 | 2024-03-21 |  |  |  |  |  |  |  |  |  |  |  |  |  |  |  |  |  |  |
| 1-1019 |  | INST SERVICE CABINET, MAD & SUMMIT | 1d | 2023-06-13 A | 2023-06-13 A | 1-0744 | 100% | 2023-08-14 | 2023-08-14 | MBRT BASE [8 h] | 8 | 8 | 8 | 1-1019 | 1-1019 |  | ZONE-1 | SUMMIT | SIGNALS | PRIME |  | ELECRICAL SUB |  |
| 1-7882 |  | SDCI INSPECTION | 1d | 2023-06-14 A | 2023-06-14 A | 1-1019 | 100% | 2023-08-15 | 2023-08-15 | MBRT NEW |  |  | 8 | 1-7882 | 1-7882 |  |  |  |  |  |  |  |  |
| 1-7927 |  | SDOT INSPECTION | 1d | 2023-06-15 A | 2023-06-15 A | 1-7882 | 100% | 2023-08-16 | 2023-08-16 | MBRT NEW |  |  | 8 | 1-7927 | 1-7927 |  |  |  |  |  |  |  |  |
| 1-1025 |  | SCL INSPECTION REQUEST | 0d | 2023-10-03 A | 2023-10-03 A | 1-7927, 1-6299 SS | 100% | 2023-10-09 | 2023-10-09 | MBRT BASE |  |  | 0 | 1-1025 | 1-1025 |  | ZONE-1 | SUMMIT | SIGNALS | PRIME | NOTIFY | ELECRICAL SUB |  |
| 1-1026 |  | 30 DAY WAIT FOR SCL TO INSPECT | 21d | 2023-10-04 A | 2023-10-27 A | 1-1025 | 100% | 2023-10-09 | 2023-11-06 | MBRT BASE |  |  | 144 | 1-1026 | 1-1026 |  | ZONE-1 | SUMMIT | SIGNALS | SCL | INSPECT | CITY |  |
| 1-7306 |  | FM 671 NEW HH AT MINOR | 14d | 2023-10-30 A | 2023-11-17 A | 1-1026 | 100% | 2023-10-02 | 2023-10-19 | MBRT NEW [112 h] | 112 | 112 | 112 |  |  |  |  |  |  |  |  |  |  |
| 1-7316 |  | DELAY EXISTING GROUNDING SYSTEM IS NOT COMPLETE | 0d | 2023-11-20 A | 2024-02-07 A | 1-7306 | 100% | 2023-11-02 | 2023-11-02 | MBRT NEW |  |  | 424 |  |  |  |  |  |  |  |  |  |  |
| 1-7311 |  | REDO SCL INSPECTION REQUEST | 1d | 2024-02-08 A | 2024-02-08 A | 1-7306, 1-7316 | 100% | 2023-12-18 | 2023-12-18 | MBRT NEW [8 h] | 8 | 8 | 8 |  |  |  |  |  |  |  |  |  |  |
| 1-1085 |  | 2ND 30 DAY WAIT FOR SCL TO INSPECT | 15d | 2024-02-09 A | 2024-03-04 A | 1-7311 | 100% | 2023-12-19 | 2024-01-10 | MBRT NEW [120 h] | 120 | 120 | 120 |  |  |  |  |  |  |  |  |  |  |
| 1-7301 |  | SCL INSPECTION | 1d | 2024-03-04 A | 2024-03-04 A | 1-1026, 1-1085 | 100% |  |  | MBRT NEW [8 h] | 8 |  | 8 | 1-7301 | 1-7301 | x |  |  |  |  |  |  |  |
| 1-7302 |  | COMMISION NOTIFICATION | 1d | 2024-03-05 A | 2024-03-05 A | 1-7301 | 100% |  |  | MBRT NEW |  |  | 8 | 1-7302 | 1-7302 | x |  |  |  |  |  |  |  |
| 1-7303 |  | 30 DAY WAIT FOR SCL TO COMMISION | 1d | 2024-03-06 A | 2024-03-06 A | 1-7302 | 100% |  |  | MBRT NEW |  |  | 8 | 1-7303 | 1-7303 | x |  |  |  |  |  |  |  |
| 1-1027 |  | COMM SERVICE, MAD AND SUMMIT | 1d | 2024-03-07 A | 2024-03-07 A | 1-1026, 1-7303 | 100% |  |  | MBRT BASE [8 h] | 8 |  | 8 | 1-1027 | 1-1027 |  | ZONE-1 | SUMMIT | SIGNALS | PRIME | CX | CITY |  |
| 1-1018 |  | INST SIGNAL CABINET, MAD & SUMMIT | 1d | 2024-03-08 A | 2024-03-08 A | 1-0744, 1-1027 | 100% |  |  | MBRT BASE [8 h] | 8 |  | 8 | 1-1018 | 1-1018 | X | ZONE-1 | SUMMIT | SIGNALS | PRIME |  | ELECRICAL SUB | PX |
| 1-1020 |  | INST MAST ARM POLES, MAD & SUMMIT | 2d | 2024-03-11 A | 2024-03-12 A | PMP-0016, 1-1018 | 100% |  |  | MBRT BASE [16 h] | 16 |  | 16 | 1-1020 | 1-1020 |  | ZONE-1 | SUMMIT | SIGNALS | PRIME | OCS | ELECRICAL SUB | PX |
| 1-1475 |  | INST MAST ARMS, MAD & SUMMIT | 2d | 2024-03-11 A | 2024-03-12 A | 1-1019, 1-0456, 1-1018 | 100% |  |  | MBRT NEW [16 h] | 16 |  | 16 | 1-1475 | 1-1475 |  | ZONE-1 | SUMMIT | SIGNALS | PRIME | OCS | ELECRICAL SUB | PX |
| 1-1021 |  | INST PPB POSTS, MAD AND SUMMIT | 1d | 2024-03-13 A | 2024-03-13 A | 1-1475 | 100% |  |  | MBRT BASE [8 h] | 8 |  | 8 | 1-1021 | 1-1021 |  | ZONE-1 | SUMMIT | SIGNALS | PRIME |  | ELECRICAL SUB | PX |
| 1-1022 |  | INST PEDISTALS, MAD AND SUMMIT | 1d | 2024-03-14 A | 2024-03-14 A | 1-1021 | 100% |  |  | MBRT BASE [8 h] | 8 |  | 8 | 1-1022 | 1-1022 |  | ZONE-1 | SUMMIT | SIGNALS | PRIME |  | ELECRICAL SUB | PX |
| 1-1023 |  | INST SIGNAL GEAR, MAD AND SUMMIT | 1d | 2024-03-15 A | 2024-03-15 A | 1-1022 | 100% |  |  | MBRT BASE [8 h] | 8 |  | 8 | 1-1023 | 1-1023 | X | ZONE-1 | SUMMIT | SIGNALS | PRIME |  | ELECRICAL SUB | PX |
| 1-1024 |  | INST WIRING, MAD AND SUMMIT | 2d | 2024-03-18 A | 2024-03-19 A | 1-1023, 1-1020 | 100% |  |  | MBRT BASE [16 h] | 16 |  | 16 | 1-1024 | 1-1024 |  | ZONE-1 | SUMMIT | SIGNALS | PRIME |  | ELECRICAL SUB | PX |
| 1-1028 |  | NOTIFY SDOT, MAD AND SUMMIT | 0d | 2024-03-20 A | 2024-03-20 A | 1-1027, 1-1024 | 100% |  |  | MBRT BASE |  |  | 0 | 1-1028 | 1-1028 |  | ZONE-1 | SUMMIT | SIGNALS | PRIME | NOTIFY | ELECRICAL SUB | PX |
| 1-1029 |  | SDOT INSPECTION, MAD AND SUMMIT | 5d | 2024-03-20 A | 2024-03-20 A | 1-1028 | 100% | 2024-03-20 | 2024-03-26 | MBRT BASE [40 h] | 40 |  | 40 | 1-1029 | 1-1029 |  | ZONE-1 | SUMMIT | SIGNALS | SDOT | INSPECT | CITY | PX |
| 1-1030 |  | COMM SIGNAL, MAD AND SUMMIT | 1d | 2024-03-21 A | 2024-03-21 A | 1-1029, 1-1016 | 100% | 2024-03-27 | 2024-03-27 | MBRT BASE [8 h] | 8 |  | 8 | 1-1030 | 1-1030 | X | ZONE-1 | SUMMIT | SIGNALS | PRIME | CX | CITY | PX |

| ID | WBS | Activity | Duration | Start | Finish | Predecessors | Complete | Planned start | Planned finish | Resources | Cost | Actual cost | user_number6 | user_text10 | user_text8 | MBRT-ZONE | MBRT-LOCATION | MBRT-TYPE | MBRT-RESP | MBRT-ACTIVITY | user_text2 | ~SELECT |
| --- | --- | --- | --- | --- | --- | --- | --- | --- | --- | --- | --- | --- | --- | --- | --- | --- | --- | --- | --- | --- | --- | --- |
|  | 23 | **MADISON AND BOYLSTON** |  | 2023-07-25 | 2024-02-20 |  |  |  |  |  |  |  |  |  |  |  |  |  |  |  |  |  |
| 1-1047 |  | INST OCS POLES, MAD AND BOYLSTON | 5d | 2023-07-25 A | 2023-07-31 A | 1-0750 | 100% | 2023-09-01 | 2023-09-08 | MBRT BASE [40 h] | 40 | 40 | 40 | 1-1047 | 1-1047 | ZONE-1 | BOYLSTON | SIGNALS | PRIME | OCS |  |  |
| 1-1082 |  | DELAY ROTTEN POLE | 0d | 2023-08-15 A | 2023-12-01 A | 1-1047 | 100% | 2023-10-02 | 2023-10-02 | MBRT NEW |  |  | 600 |  |  |  |  |  |  |  |  |  |
| 1-1033 |  | INST SERVICE CABINET, MAD & BOYLSTON | 1d | 2023-12-07 A | 2023-12-07 A | 1-0661, 1-0750, 1-9094, 1-1082 FF | 100% | 2023-12-15 | 2023-12-15 | MBRT BASE [8 h] | 8 | 8 | 8 | 1-1033 | 1-1033 | ZONE-1 | BOYLSTON | SIGNALS | PRIME |  | ELECRICAL SUB |  |
| 1-1050 |  | SDCI INSPECTION | 1d | 2023-12-08 A | 2023-12-08 A | 1-1033 | 100% | 2023-12-18 | 2023-12-18 | MBRT NEW |  |  | 8 | 1-1050 | 1-1050 |  |  |  |  |  |  |  |
| 1-1070 |  | SDOT INSPECTION | 1d | 2023-12-15 A | 2023-12-15 A | 1-1050 | 100% | 2023-12-19 | 2023-12-19 | MBRT NEW |  |  | 8 | 1-1070 | 1-1070 |  |  |  |  |  |  |  |
| 1-1038 |  | SCL INSPECTION REQUEST | 0d | 2023-12-18 A | 2023-12-18 A | 1-1070 | 100% | 2023-12-20 | 2023-12-20 | MBRT BASE |  |  | 0 | 1-1038 | 1-1038 | ZONE-1 | BOYLSTON | SIGNALS | PRIME | NOTIFY | ELECRICAL SUB |  |
| 1-1039 |  | 30 DAY WAIT FOR SCL TO INSPECT | 21d | 2023-12-19 A | 2024-01-12 A | 1-1038 | 100% | 2023-12-20 | 2024-01-22 | MBRT BASE |  |  | 136 | 1-1039 | 1-1039 | ZONE-1 | BOYLSTON | SIGNALS | SCL | INSPECT | CITY |  |
| 1-1079 |  | SCL INSPECTION | 1d | 2024-01-16 A | 2024-01-16 A | 1-1039 | 100% | 2024-01-23 | 2024-01-23 | MBRT NEW |  |  | 8 | 1-1079 | 1-1079 |  |  |  |  |  |  | x |
| 1-1091 |  | COMMISION NOTIFICATION | 1d | 2024-01-17 A | 2024-01-17 A | 1-1079 | 100% | 2024-01-24 | 2024-01-24 | MBRT NEW |  |  | 8 | 1-1091 | 1-1091 |  |  |  |  |  |  | x |
| 1-1099 |  | 30 DAY WAIT FOR SCL TO COMMISION | 21d | 2024-01-17 A | 2024-02-19 A | 1-1091 | 100% | 2024-01-25 | 2024-02-23 | MBRT NEW |  |  | 256 | 1-1099 | 1-1099 |  |  |  |  |  |  | x |
| 1-1032 |  | INST SIGNAL CABINET, MAD & BOYLSTON | 1d | 2024-01-29 A | 2024-02-02 A | 1-0750 FF, 1-0661, 1-1079, 1-1099 SS | 100% | 2024-02-27 | 2024-02-27 | MBRT BASE [40 h] | 40 | 40 | 40 | 1-1032 | 1-1032 | ZONE-1 | BOYLSTON | SIGNALS | PRIME |  | ELECRICAL SUB | X |
| 1-1034 |  | INST PPB POSTS, MAD AND BOYLSTON | 1d | 2024-01-29 A | 2024-02-02 A | 1-1033, 1-1032, 1-1079 | 100% | 2024-02-28 | 2024-02-28 | MBRT BASE [40 h] | 40 | 40 | 40 | 1-1034 | 1-1034 | ZONE-1 | BOYLSTON | SIGNALS | PRIME |  | ELECRICAL SUB |  |
| 1-1035 |  | INST PEDISTALS, MAD AND BOYLSTON | 2d | 2024-01-29 A | 2024-02-02 A | 1-1034, 1-1079 | 100% | 2024-02-29 | 2024-03-01 | MBRT BASE [40 h] | 40 | 40 | 40 | 1-1035 | 1-1035 | ZONE-1 | BOYLSTON | SIGNALS | PRIME |  | ELECRICAL SUB |  |
| 1-1036 |  | INST SIGNAL GEAR, MAD & BOYLSTON | 1d | 2024-01-29 A | 2024-02-02 A | 1-1035, 1-1079 | 100% | 2024-03-04 | 2024-03-04 | MBRT BASE [40 h] | 40 | 40 | 40 | 1-1036 | 1-1036 | ZONE-1 | BOYLSTON | SIGNALS | PRIME |  | ELECRICAL SUB | X |
| 1-1037 |  | INST WIRING, MAD AND BOYLSTON | 3d | 2024-01-29 A | 2024-02-02 A | 1-1036, 1-1079 | 100% | 2024-03-05 | 2024-03-07 | MBRT BASE [40 h] | 40 | 40 | 40 | 1-1037 | 1-1037 | ZONE-1 | BOYLSTON | SIGNALS | PRIME |  | ELECRICAL SUB |  |
| 1-1041 |  | NOTIFY SDOT, MAD AND BOYLSTON | 0d | 2024-02-16 A | 2024-02-16 A | 1-1040, 1-1037 | 100% |  |  | MBRT BASE |  |  | 0 | 1-1041 | 1-1041 | ZONE-1 | BOYLSTON | SIGNALS | PRIME | NOTIFY | ELECRICAL SUB |  |
| 1-1040 |  | COMM SERVICE, MAD AND BOYLSTON | 1d | 2024-02-20 A | 2024-02-20 A | 1-1039, 1-1099 SS | 100% | 2024-02-15 | 2024-02-15 | MBRT BASE [8 h] | 8 | 8 | 8 | 1-1040 | 1-1040 | ZONE-1 | BOYLSTON | SIGNALS | PRIME | CX | CITY |  |
| 1-1042 |  | SDOT INSPECTION, MAD AND BOYLSTON | 5d | 2024-02-20 A | 2024-02-20 A | 1-1041 | 100% | 2024-02-16 | 2024-02-23 | MBRT BASE [8 h] | 8 | 8 | 8 | 1-1042 | 1-1042 | ZONE-1 | BOYLSTON | SIGNALS | SDOT | INSPECT | CITY |  |
| 1-1043 |  | COMM SIGNAL, MAD AND BOYLSTON | 1d | 2024-02-20 A | 2024-02-20 A | 1-1042 | 100% | 2024-05-07 | 2024-05-07 | MBRT BASE [8 h] | 8 | 8 | 8 | 1-1043 | 1-1043 | ZONE-1 | BOYLSTON | SIGNALS | PRIME | CX | CITY | X |
|  | 3 | **3RD AND SPRING** |  | 2022-12-08 | 2023-03-02 |  |  |  |  |  |  |  |  |  |  |  |  |  |  |  |  |  |
| 1-0816 |  | SCL INSPECTION REQUEST | 0d | 2022-12-08 A | 2022-12-08 A | 1-0564 | 100% | 2023-01-10 | 2023-01-10 | MBRT BASE |  |  | 0 |  |  | ZONE-1 | SPRING | SIGNALS | PRIME | NOTIFY | ELECRICAL SUB |  |
| 1-0817 |  | SCL INSPECTION | 10d | 2022-12-23 A | 2023-01-05 A | 1-0816 | 100% | 2023-01-10 | 2023-01-24 | MBRT BASE [64 h] | 64 | 64 | 64 |  |  | ZONE-1 | SPRING | SIGNALS | SCL | INSPECT | CITY |  |
| 1-0811 |  | INST OCS POLE, 3RD AND SPRING | 1d | 2022-12-30 A | 2022-12-30 A | 1-0816 | 100% | 2023-02-06 | 2023-02-06 | MBRT BASE [8 h] | 8 | 8 | 8 |  |  | ZONE-1 | SPRING | SIGNALS | PRIME | OCS | ELECRICAL SUB |  |
| 1-0812 |  | INST PPB POSTS, 3RD AND SPRING | 1d | 2023-01-03 A | 2023-01-03 A | 1-0811 | 100% |  |  | MBRT BASE [8 h] | 8 | 8 | 8 |  |  | ZONE-1 | SPRING | SIGNALS | PRIME |  | ELECRICAL SUB |  |
| 1-0813 |  | INST OWNER FURNISHED CABINET, 3RD & SPRING | 1d | 2023-01-04 A | 2023-01-04 A | 1-0812 | 100% |  |  | MBRT BASE [8 h] | 8 | 8 | 8 |  |  | ZONE-1 | SPRING | SIGNALS | PRIME |  | ELECRICAL SUB |  |
| 1-0814 |  | INST SIGNAL GEAR, 3RD AND SPRING | 1d | 2023-01-05 A | 2023-01-05 A | 1-0813 | 100% |  |  | MBRT BASE [8 h] | 8 | 8 | 8 |  |  | ZONE-1 | SPRING | SIGNALS | PRIME |  | ELECRICAL SUB | X |
| 1-0815 |  | INST WIRING, 3RD AND SPRING | 2d | 2023-01-06 A | 2023-01-06 A | 1-0814 | 100% | 2023-01-06 | 2023-01-09 | MBRT BASE [8 h] | 8 | 8 | 8 |  |  | ZONE-1 | SPRING | SIGNALS | PRIME |  | ELECRICAL SUB |  |
| 1-0818 |  | SCL COMMISION SERVICE, 3RD AND SPRING | 1d | 2023-01-06 A | 2023-01-06 A | 1-0817 | 100% | 2023-01-25 | 2023-01-25 | MBRT BASE [8 h] | 8 | 8 | 8 |  |  | ZONE-1 | SPRING | SIGNALS | SCL | CX | CITY |  |
| 1-0819 |  | NOTIFY SDOT, 3RD AND SPRING | 1d | 2023-01-06 A | 2023-01-09 A | 1-0818 | 100% | 2023-01-26 | 2023-01-26 | MBRT BASE [8 h] | 8 | 8 | 8 |  |  | ZONE-1 | SPRING | SIGNALS | PRIME | NOTIFY | ELECRICAL SUB |  |
| 1-0820 |  | SDOT INSPECTION, 3RD AND SPRING | 5d | 2023-01-31 A | 2023-02-21 A | 1-0819 | 100% | 2023-01-31 | 2023-02-06 | MBRT BASE [120 h] | 120 | 120 | 120 |  |  | ZONE-1 | SPRING | SIGNALS | SDOT | INSPECT | CITY |  |
| PCO552.01 |  | DSC 389-Prime 3rd and Spring traffic wiring existing conditions | 5d | 2023-02-03 A | 2023-02-23 A | MS-0025 | 100% | 2023-02-27 | 2023-03-03 | MBRT DSC [104 h] | 104 | 104 | 104 |  |  |  |  |  |  |  |  |  |
| 1-1405 |  | DELAY - SDOT PROGRAMMED CABINET INCORRECTLY | 5d | 2023-02-22 A | 2023-03-01 A | 1-0820 | 100% | 2023-01-31 | 2023-02-06 | MBRT NEW [40 h] | 40 | 40 | 40 |  |  | ZONE-1 | SPRING | SIGNALS | SDOT | INSPECT | CITY |  |
| 1-0821 |  | COMM SIGNAL, 3RD AND SPRING | 1d | 2023-03-02 A | 2023-03-02 A | 1-0820, 1-0809 SS, 1-1405 | 100% | 2023-07-05 | 2023-07-05 | MBRT BASE [8 h] | 8 | 8 | 8 |  |  | ZONE-1 | SPRING | SIGNALS | PRIME | CX | CITY | X |

| ID | WBS | Activity | Duration | Start | Finish | Predecessors | Complete | Remaining | Planned start | Planned finish | Total float | Free float | Resources | Cost | Actual cost | user_text2 | user_number6 | user_text10 | user_text8 | MBRT-ZONE | MBRT-LOCATION | MBRT-TYPE | MBRT-RESP | MBRT-ACTIVITY | ~SELECT | ~TEXT | ~SELECT2 |
| --- | --- | --- | --- | --- | --- | --- | --- | --- | --- | --- | --- | --- | --- | --- | --- | --- | --- | --- | --- | --- | --- | --- | --- | --- | --- | --- | --- |
|  | 4 | **4TH AND SPRING** |  | 2023-04-05 | 2023-06-01 |  |  |  |  |  |  |  |  |  |  |  |  |  |  |  |  |  |  |  |  |  |  |
| 1-0824 |  | NOTIFY SDOT, 4TH AND SPRING | 0d | 2023-04-05 A | 2023-04-05 A | 1-0815 | 100% |  | 2023-04-04 | 2023-04-04 |  |  | MBRT BASE |  |  | ELECRICAL SUB | 0 | 1-0824 | 1-0824 | ZONE-1 | SPRING | SIGNALS | PRIME | NOTIFY |  |  |  |
| 1-0825 |  | SDOT INSPECTION, 4TH AND SPRING | 5d | 2023-04-06 A | 2023-04-12 A | 1-0824 | 100% |  | 2023-04-04 | 2023-04-10 |  |  | MBRT BASE [40 h] | 40 | 40 | CITY | 40 | 1-0825 | 1-0825 | ZONE-1 | SPRING | SIGNALS | SDOT | INSPECT |  |  |  |
| 1-0826 |  | COMM SIGNAL, 4TH AND SPRING | 1d | 2023-04-13 A | 2023-04-13 A | 1-0825 | 100% |  | 2023-05-03 | 2023-05-03 |  |  | MBRT BASE [8 h] | 8 | 8 | CITY | 8 | 1-0826 | 1-0826 | ZONE-1 | SPRING | SIGNALS | PRIME | CX | X |  |  |
| 1-0823 |  | INST MAGNOMETERS & ACCESS POINT, 4TH & SPRING | 2d | 2023-05-31 A | 2023-06-01 A | 1-0576, 1-0815 | 100% |  |  |  |  |  | MBRT BASE [16 h] | 16 | 16 | ELECRICAL SUB | 16 | 1-0823 | 1-0823 | ZONE-1 | SPRING | SIGNALS | PRIME |  |  |  |  |
|  | 5 | **5TH AND SPRING** |  | 2023-03-31 | 2023-04-13 |  |  |  |  |  |  |  |  |  |  |  |  |  |  |  |  |  |  |  |  |  |  |
| 1-0829 |  | INST SIGNAL GEAR, 5TH AND SPRING | 1d | 2023-03-31 A | 2023-03-31 A | 1-0828 | 100% |  | 2023-04-05 | 2023-04-05 |  |  | MBRT BASE [8 h] | 8 | 8 | ELECRICAL SUB | 8 |  |  | ZONE-1 | SPRING | SIGNALS | PRIME |  | X |  |  |
| 1-0830 |  | SPLICE LOOP LEAN IN, 5TH AND SPRING | 1d | 2023-04-03 A | 2023-04-03 A | 1-0829 | 100% |  | 2023-04-06 | 2023-04-06 |  |  | MBRT BASE [8 h] | 8 | 8 | ELECRICAL SUB | 8 | 1-0830 | 1-0830 | ZONE-1 | SPRING | SIGNALS | PRIME |  |  |  |  |
| 1-0831 |  | NOTIFY SDOT, 5TH AND SPRING | 0d | 2023-04-03 A | 2023-04-03 A | 1-0830 | 100% |  | 2023-04-07 | 2023-04-07 |  |  | MBRT BASE |  |  | ELECRICAL SUB | 0 | 1-0831 | 1-0831 | ZONE-1 | SPRING | SIGNALS | PRIME | NOTIFY |  |  |  |
| 1-0828 |  | INST OWNER FURNISHED CABINET, 5TH & SPRING | 1d | 2023-04-04 A | 2023-04-04 A | 1-0093 | 100% |  |  |  |  |  | MBRT BASE [8 h] | 8 | 8 | ELECRICAL SUB | 8 | 1-0828 | 1-0828 | ZONE-1 | SPRING | SIGNALS | PRIME |  |  |  |  |
| 1-0832 |  | SDOT INSPECTION, 5TH AND SPRING | 5d | 2023-04-04 A | 2023-04-12 A | 1-0831 | 100% |  | 2023-04-07 | 2023-04-13 |  |  | MBRT BASE [56 h] | 56 | 56 | CITY | 56 | 1-0832 | 1-0832 | ZONE-1 | SPRING | SIGNALS | SDOT | INSPECT |  |  |  |
| 1-0833 |  | COMM SIGNAL, 5TH AND SPRING | 1d | 2023-04-13 A | 2023-04-13 A | 1-0832 | 100% |  | 2023-04-14 | 2023-04-14 |  |  | MBRT BASE [8 h] | 8 | 8 | CITY | 8 | 1-0833 | 1-0833 | ZONE-1 | SPRING | SIGNALS | PRIME | CX | X |  |  |
|  | 6 | **SPRING AND 6TH** |  | 2023-04-03 | 2023-04-13 |  |  |  |  |  |  |  |  |  |  |  |  |  |  |  |  |  |  |  |  |  |  |
| 1-0836 |  | NOTIFY SDOT, SPRING AND 6TH | 0d | 2023-04-03 A | 2023-04-03 A | 1-0835 | 100% |  | 2023-04-10 | 2023-04-10 |  |  | MBRT BASE |  |  | ELECRICAL SUB | 0 | 1-0836 | 1-0836 | ZONE-1 | SPRING | SIGNALS | PRIME | NOTIFY |  |  |  |
| 1-0835 |  | INST SIGNAL CAMERA, SPRING AND 6TH | 1d | 2023-04-04 A | 2023-04-04 A | 1-0584, 1-0830 | 100% |  | 2023-04-07 | 2023-04-07 |  |  | MBRT BASE [8 h] | 8 | 8 | ELECRICAL SUB | 8 | 1-0835 | 1-0835 | ZONE-1 | SPRING | SIGNALS | PRIME |  | X |  |  |
| 1-0837 |  | COMM SIGNAL, SPRING AND 6TH | 1d | 2023-04-13 A | 2023-04-13 A | 1-0836 | 100% |  | 2023-04-10 | 2023-04-10 |  |  | MBRT BASE [8 h] | 8 | 8 | CITY | 8 | 1-0837 | 1-0837 | ZONE-1 | SPRING | SIGNALS | PRIME | CX | X |  |  |
|  | 7 | **SPRING AND 7TH** |  | 2023-07-05 | 2024-05-06 |  |  |  |  |  |  |  |  |  |  |  |  |  |  |  |  |  |  |  |  |  |  |
| 1-0840 |  | INST MAST ARM POLE, SPRING AND 7TH | 2d | 2023-07-05 A | 2023-07-06 A | PMP-0016, 1-0823 | 100% |  | 2023-12-14 | 2023-12-15 |  |  | MBRT BASE [16 h] | 16 | 16 | ELECRICAL SUB | 16 | 1-0840 | 1-0840 | ZONE-1 | SPRING | SIGNALS | PRIME |  |  | POLES1 |  |
| 1-0839 |  | INST SERVICE CABINET, SPRING AND 7TH | 1d | 2023-08-08 A | 2023-08-08 A | 1-0588, PMP-0016 | 100% |  | 2023-05-31 | 2023-05-31 |  |  | MBRT BASE [8 h] | 8 | 8 | ELECRICAL SUB | 8 | 1-0839 | 1-0839 | ZONE-1 | SPRING | SIGNALS | PRIME |  |  | POLES1 |  |
| 1-9082 |  | SDCI INSPECTION | 1d | 2023-08-09 A | 2023-08-09 A | 1-0839 | 100% |  | 2023-06-02 | 2023-06-02 |  |  | MBRT NEW |  |  |  | 8 | 1-9082 | 1-9082 |  |  |  |  |  | x |  |  |
| 1-9083 |  | SDOT INSPECTION | 1d | 2023-08-10 A | 2023-08-10 A | 1-9082 | 100% |  | 2023-06-14 | 2023-06-14 |  |  | MBRT NEW |  |  |  | 8 | 1-9083 | 1-9083 |  |  |  |  |  | x |  |  |
| 1-9084 |  | SCL INSPECTION REQUEST | 1d | 2023-08-11 A | 2023-08-17 A | 1-9083 | 100% |  | 2023-09-11 | 2023-09-11 |  |  | MBRT NEW |  |  |  | 40 | 1-9084 | 1-9084 |  |  |  |  |  | x |  |  |
| 1-8095 |  | 30 DAY WAIT FOR SCL TO INSPECT | 21d | 2023-08-18 A | 2023-08-24 A | 1-9084 | 100% |  | 2023-09-12 | 2023-10-10 |  |  | MBRT NEW |  |  |  | 40 | 1-8095 | 1-8095 |  |  |  |  |  | x |  |  |
| 1-8096 |  | SCL INSPECTION | 1d | 2023-08-25 A | 2023-08-25 A | 1-8095 | 100% |  | 2023-10-24 | 2023-10-24 |  |  | MBRT NEW |  |  |  | 8 | 1-8096 | 1-8096 |  |  |  |  |  | x |  |  |
| 1-8097 |  | COMMISION NOTIFICATION | 1d | 2023-08-28 A | 2023-08-28 A | 1-8096 | 100% |  | 2023-10-25 | 2023-10-25 |  |  | MBRT NEW |  |  |  | 8 | 1-8097 | 1-8097 |  |  |  |  |  | x |  |  |
| 1-8098 |  | 30 DAY WAIT FOR SCL TO COMMISION | 21d | 2023-08-29 A | 2023-09-05 A | 1-8097 | 100% |  | 2023-10-26 | 2023-11-28 |  |  | MBRT NEW |  |  |  | 40 | 1-8098 | 1-8098 |  |  |  |  |  | x |  |  |
| 1-0846 |  | COMM SERVICE, SPRING AND 7TH | 1d | 2023-09-06 A | 2023-09-06 A | 1-0839, 1-8098 | 100% |  | 2023-12-12 | 2023-12-12 |  |  | MBRT BASE [8 h] | 8 | 8 | CITY | 8 | 1-0846 | 1-0846 | ZONE-1 | SPRING | SIGNALS | PRIME | CX |  |  |  |
| 1-0864 |  | Install Owner-Furnished Signal Cabinet | 1d | 2023-10-23 A | 2023-10-23 A | 1-0846 | 100% |  | 2023-10-02 | 2023-10-02 |  |  | MBRT NEW [8 h] | 8 | 8 |  | 8 | 1-0864 | 1-0864 |  |  |  |  |  |  |  |  |
| 1-1545 |  | POLE DOES NOT WORK | 87d | 2023-10-24 A | 2024-04-08 | 1-0864 | 94% | 5d | 2023-10-02 | 2024-02-07 | -111d | 0d | MBRT NEW [696 h] | 696 |  |  | 696 |  |  |  |  |  |  |  |  |  |  |
| 1-1430 |  | INST MAST ARMS, SPRING AND 7TH | 2d | 2024-04-09 | 2024-04-10 | 1-0840, 1-0864, 1-1545 |  |  |  |  | -111d | 0d | MBRT NEW [16 h] | 16 |  | ELECRICAL SUB | 16 | 1-1430 | 1-1430 | ZONE-1 | SPRING | SIGNALS | PRIME |  |  | POLES1 |  |
| 1-0841 |  | INST PPB POST, SPRING AND 7TH | 1d | 2024-04-11 | 2024-04-11 | 1-0840, 1-1430, 2-1593 |  |  |  |  | -111d | 0d | MBRT BASE [8 h] | 8 |  | ELECRICAL SUB | 8 | 1-0841 | 1-0841 | ZONE-1 | SPRING | SIGNALS | PRIME |  |  | POLES1 | PX |
| 1-0842 |  | INST PEDISTAL, SPRING AND 7TH | 1d | 2024-04-12 | 2024-04-12 | 1-0841 |  |  |  |  | -111d | 0d | MBRT BASE [8 h] | 8 |  | ELECRICAL SUB | 8 | 1-0842 | 1-0842 | ZONE-1 | SPRING | SIGNALS | PRIME |  |  | POLES1 | PX |
| 1-0843 |  | INST WIRING, SPRING AND 7TH | 3d | 2024-04-24 | 2024-04-26 | 1-0842 FS+7d |  |  |  |  | -111d | 0d | MBRT BASE [24 h] | 24 |  | ELECRICAL SUB | 24 | 1-0843 | 1-0843 | ZONE-1 | SPRING | SIGNALS | PRIME |  |  | POLES1 | PX |
| 1-0847 |  | NOTIFY SDOT, SPRING AND 7TH | 0d | 2024-04-29 | 2024-04-29 | 1-0843 |  |  |  |  | -97d | 0d | MBRT BASE |  |  | ELECRICAL SUB | 0 | 1-0847 | 1-0847 | ZONE-1 | SPRING | SIGNALS | PRIME | NOTIFY |  |  | PX |
| 1-0848 |  | SDOT INSPECTION, SPRING AND 7TH | 5d | 2024-04-29 | 2024-05-03 | 1-0847 |  |  |  |  | -97d | 0d | MBRT BASE [40 h] | 40 |  | CITY | 40 | 1-0848 | 1-0848 | ZONE-1 | SPRING | SIGNALS | SDOT | INSPECT |  |  | PX |
| 1-0849 |  | COMM SIGNAL, SPRING AND 7TH | 1d | 2024-05-06 | 2024-05-06 | 1-0848, 1-0833, 1-0837, 1-0802 |  |  |  |  | -97d | 14d | MBRT BASE [8 h] | 8 |  | CITY | 8 | 1-0849 | 1-0849 | ZONE-1 | SPRING | SIGNALS | PRIME | CX | X |  | PX |

| ID | WBS | Activity | Type | Duration | Start | Finish | Predecessors | Complete | Planned start | Planned finish | Total float | Free float | Resources | Cost | Actual cost | user_text2 | user_number6 | user_text10 | ~TEXT | user_text8 | MBRT-ZONE | MBRT-LOCATION | MBRT-TYPE | MBRT-RESP | ~SELECT | MBRT-ACTIVITY | ~SELECT2 |
| --- | --- | --- | --- | --- | --- | --- | --- | --- | --- | --- | --- | --- | --- | --- | --- | --- | --- | --- | --- | --- | --- | --- | --- | --- | --- | --- | --- |
|  | 8 | **SPRING AND 8TH** |  |  | 2023-04-28 | 2023-11-10 |  |  |  |  |  |  |  |  |  |  |  |  |  |  |  |  |  |  |  |  |  |
| 1-0852 |  | INST SERVICE CABINET, SPRING AND 8TH |  | 1d | 2023-04-28 A | 2023-04-28 A | 1-0599 | 100% | 2023-07-05 | 2023-07-05 |  |  | MBRT BASE [8 h] | 8 | 8 | ELECRICAL SUB | 8 | 1-0852 | POLES1 | 1-0852 | ZONE-1 | SPRING | SIGNALS | PRIME |  |  |  |
| 1-0854 |  | INST STRAIN POLE, SPRING AND 8TH |  | 1d | 2023-05-02 A | 2023-05-02 A | PMP-36 | 100% | 2023-05-01 | 2023-05-01 |  |  | MBRT BASE [8 h] | 8 | 8 | ELECRICAL SUB | 8 | 1-0854 |  | 1-0854 | ZONE-1 | SPRING | SIGNALS | PRIME |  |  |  |
| 1-7110 |  | SDCI INSPECTION |  | 1d | 2023-06-02 A | 2023-06-02 A | 1-0854 | 100% |  |  |  |  | MBRT NEW |  |  |  | 8 | 1-7110 |  | 1-7110 |  |  |  |  | x |  |  |
| 1-7111 |  | SDOT INSPECTION |  | 1d | 2023-06-14 A | 2023-06-14 A | 1-7110 FS+7d | 100% |  |  |  |  | MBRT NEW |  |  |  | 8 | 1-7111 |  | 1-7111 |  |  |  |  | x |  |  |
| 1-1435 |  | INST MAST ARM POLES, SPRING AND 8TH |  | 6d | 2023-07-26 A | 2023-08-02 A | PMP-0016, PMP-36 | 100% | 2023-07-06 | 2023-07-13 |  |  | MBRT NEW [48 h] | 48 | 48 | ELECRICAL SUB | 48 | 1-1435 |  | 1-1435 | ZONE-1 | SPRING | SIGNALS | PRIME |  |  |  |
| 1-0858 |  | SCL INSPECTION REQUEST |  | 1d | 2023-08-02 A | 2023-08-02 A | 1-7111, 1-0852 | 100% | 2023-07-03 | 2023-07-03 |  |  | MBRT BASE |  |  |  | 8 | 1-0858 |  | 1-0858 |  |  |  |  | x |  |  |
| 1-0859 |  | 30 DAY WAIT FOR SCL TO INSPECT |  | 21d | 2023-08-03 A | 2023-08-29 A | 1-0858 | 100% | 2023-07-05 | 2023-08-02 |  |  | MBRT BASE |  |  | CITY | 152 | 1-0859 |  | 1-0859 | ZONE-1 | SPRING | SIGNALS | SCL |  | INSPECT |  |
| 1-6114 |  | SCL INSPECTION |  | 1d | 2023-08-30 A | 2023-08-30 A | 1-0859 | 100% |  |  |  |  | MBRT NEW |  |  |  | 8 | 1-6114 |  | 1-6114 |  |  |  |  | x |  |  |
| 1-6115 |  | SCL COMMISION NOTIFICATION |  | 1d | 2023-08-31 A | 2023-08-31 A | 1-6114 | 100% |  |  |  |  | MBRT NEW |  |  |  | 8 | 1-6115 |  | 1-6115 |  |  |  |  | x |  |  |
| 1-6116 |  | 30 DAY WAIT FOR SCL TO COMMISION |  | 21d | 2023-09-01 A | 2023-09-15 A | 1-6115 | 100% | 2023-09-01 | 2023-10-02 |  |  | MBRT NEW |  |  |  | 80 | 1-6116 |  | 1-6116 |  |  |  |  | x |  |  |
| 1-0860 |  | SCL COMMISION SERVICE, SPRING AND 8TH |  | 1d | 2023-09-18 A | 2023-09-18 A | 1-0859, 1-6116 | 100% | 2023-10-16 | 2023-10-16 |  |  | MBRT BASE [8 h] | 8 | 8 | CITY | 8 | 1-0860 |  | 1-0860 | ZONE-1 | SPRING | SIGNALS | SCL |  | CX |  |
| 1-0853 |  | INST MAST ARMS, SPRING AND 8TH |  | 6d | 2023-10-11 A | 2023-10-12 A | 1-0852, 1-1435 | 100% | 2023-10-03 | 2023-10-10 |  |  | MBRT BASE [16 h] | 16 | 16 | ELECRICAL SUB | 16 | 1-0853 | POLES1 | 1-0853 | ZONE-1 | SPRING | SIGNALS | PRIME |  |  |  |
| 1-0855 |  | INST PPB POST, SPRING AND 8TH |  | 1d | 2023-10-13 A | 2023-10-13 A | 1-0854, 1-0853 | 100% | 2023-10-11 | 2023-10-11 |  |  | MBRT BASE [8 h] | 8 | 8 | ELECRICAL SUB | 8 | 1-0855 | POLES1 | 1-0855 | ZONE-1 | SPRING | SIGNALS | PRIME |  |  |  |
| 1-0856 |  | INST PEDISTALS, SPRING AND 8TH |  | 1d | 2023-10-16 A | 2023-10-16 A | 1-0855 | 100% | 2023-10-12 | 2023-10-12 |  |  | MBRT BASE [8 h] | 8 | 8 | ELECRICAL SUB | 8 | 1-0856 | POLES1 | 1-0856 | ZONE-1 | SPRING | SIGNALS | PRIME |  |  |  |
| 1-0857 |  | INST WIRING, SPRING AND 8TH |  | 3d | 2023-10-17 A | 2023-10-19 A | 1-0856 | 100% | 2023-10-13 | 2023-10-17 |  |  | MBRT BASE [24 h] | 24 | 24 | ELECRICAL SUB | 24 | 1-0857 | POLES1 | 1-0857 | ZONE-1 | SPRING | SIGNALS | PRIME |  |  |  |
| 1-0861 |  | NOTIFY SDOT, SPRING AND 8TH |  | 1d | 2023-10-19 A | 2023-10-19 A | 1-0860, 1-0857 | 100% | 2023-10-18 | 2023-10-18 |  |  | MBRT BASE [8 h] | 8 | 8 | ELECRICAL SUB | 8 | 1-0861 |  | 1-0861 | ZONE-1 | SPRING | SIGNALS | PRIME |  | NOTIFY |  |
| 1-0851 |  | INST OWNER FURNISHED SIGNAL CABINET, SPRING & 8TH |  | 1d | 2023-10-25 A | 2023-10-25 A | 1-0599, 1-0860 | 100% | 2023-10-02 | 2023-10-02 |  |  | MBRT BASE [8 h] | 8 | 8 | ELECRICAL SUB | 8 | 1-0851 | POLES1 | 1-0851 | ZONE-1 | SPRING | SIGNALS | PRIME | X |  |  |
| 1-0862 |  | SDOT INSPECTION, SPRING AND 8TH |  | 5d | 2023-10-26 A | 2023-11-09 A | 1-0861, 1-0851 | 100% | 2023-10-18 | 2023-10-24 |  |  | MBRT BASE [88 h] | 88 | 88 | CITY | 88 | 1-0862 |  | 1-0862 | ZONE-1 | SPRING | SIGNALS | SDOT |  | INSPECT |  |
| 1-0863 |  | SDOT COMM SIGNAL, SPRING AND 8TH |  | 1d | 2023-11-10 A | 2023-11-10 A | 1-0862 | 100% | 2023-11-09 | 2023-11-09 |  |  | MBRT BASE [8 h] | 8 | 8 | CITY | 8 | 1-0863 |  | 1-0863 | ZONE-1 | SPRING | SIGNALS | PRIME | X |  |  |
|  | 9 | **SPRING AND 9TH** |  |  | 2023-05-09 | 2024-06-19 |  |  |  |  |  |  |  |  |  |  |  |  |  |  |  |  |  |  |  |  |  |
| 1-0869 |  | INST OCS POLES, SPRING AND 9TH |  | 2d | 2023-05-09 A | 2023-05-10 A | PMP-36 | 100% | 2023-05-01 | 2023-05-02 |  |  | MBRT BASE [16 h] | 16 | 16 |  | 16 | 1-0869 |  | 1-0869 | ZONE-1 | SPRING | SIGNALS | PRIME |  | OCS |  |
| 1-1440 |  | INST MAST ARM POLES, SPRING AND 9TH |  | 19d | 2023-06-08 A | 2023-07-17 A | PMP-0016 | 100% | 2023-06-08 | 2023-07-05 |  |  | MBRT NEW [152 h] | 152 | 216 | ELECRICAL SUB | 216 | 1-1440 |  | 1-1440 | ZONE-1 | SPRING | SIGNALS | PRIME |  |  |  |
| 1-0868 |  | INST MAST ARMS, SPRING AND 9TH |  | 6d | 2023-07-18 A | 2023-07-25 A | 1-1440 | 100% |  |  |  |  | MBRT BASE [48 h] | 48 | 48 | ELECRICAL SUB | 48 | 1-0868 | POLES1 | 1-0868 | ZONE-1 | SPRING | SIGNALS | PRIME |  |  |  |
| 1-0867 |  | INST SERVICE CABINET, SPRING AND 9TH |  | 1d | 2024-04-24 | 2024-04-24 | 1-0552, 1-0650 |  |  |  | -142d | 0d | MBRT BASE [8 h] | 8 |  | ELECRICAL SUB | 8 | 1-0867 | POLES1 | 1-0867 | ZONE-1 | SPRING | SIGNALS | PRIME |  |  |  |
| 1-0882 |  | SDCI INSPECTION |  | 1d | 2024-04-25 | 2024-04-25 | 1-0867 |  |  |  | -142d | 0d | MBRT BASE [8 h] | 8 |  |  | 8 | 1-0882 |  | 1-0882 |  |  |  |  |  |  |  |
| 1-0927 |  | SDOT INSPECTION |  | 1d | 2024-04-25 | 2024-04-25 | 1-0867 |  |  |  | -142d | 0d | MBRT BASE [8 h] | 8 |  |  | 8 | 1-0927 |  | 1-0927 |  |  |  |  |  |  |  |
| 1-0873 |  | SCL INSPECTION REQUEST |  | 0d | 2024-04-26 | 2024-04-26 | 1-0882, 1-0927 |  |  |  | -142d | 0d | MBRT BASE |  |  | ELECRICAL SUB | 0 | 1-0873 |  | 1-0873 | ZONE-1 | SPRING | SIGNALS | PRIME |  | NOTIFY |  |
| 1-0874 |  | 30 DAY WAIT FOR SCL TO INSPECT |  | 2d | 2024-04-26 | 2024-04-29 | 1-0873 |  |  |  | -142d | 0d | MBRT BASE |  |  | CITY | 16 | 1-0874 |  | 1-0874 | ZONE-1 | SPRING | SIGNALS | SCL |  | INSPECT |  |
| 1-0942 |  | SCL INSPECTION |  | 1d | 2024-04-30 | 2024-04-30 | 1-0874 |  |  |  | -142d | 0d | MBRT BASE [8 h] | 8 |  |  | 8 | 1-0942 |  | 1-0942 |  |  |  |  |  |  |  |
| 1-0947 |  | SCL COMMISION NOTIFICATION |  | 1d | 2024-05-01 | 2024-05-01 | 1-0942 |  |  |  | -142d | 0d | MBRT NEW |  |  |  | 8 | 1-0947 |  | 1-0947 |  |  |  |  |  |  |  |
| 1-1012 |  | 30 DAY WAIT FOR SCL TO COMMISION |  | 21d | 2024-05-02 | 2024-05-31 | 1-0947 |  |  |  | -142d | 0d | MBRT BASE |  |  |  | 168 | 1-1012 |  | 1-1012 |  |  |  |  |  |  |  |
| 1-0875 |  | 3rd Prime Crew - UG Complete | milestone | 0d | 2024-05-22 | 2024-05-22 | 3-2351 |  |  |  | -134d | 8d |  |  |  |  | 0 |  |  |  |  |  |  |  | signals |  | P3 |
| 1-0879 |  | SCL COMMISION SERVICE, SPRING AND 9TH |  | 1d | 2024-06-03 | 2024-06-03 | 1-1012 |  |  |  | -142d | 0d | MBRT NEW [8 h] | 8 |  |  | 8 | 1-0879 |  | 1-0879 |  |  |  |  |  |  |  |
| 1-0865 |  | INST OWNER FURNISHED SIGNAL CABINET, SPRING & 9TH |  | 1d | 2024-06-04 | 2024-06-04 | 1-0857, 1-0605, 1-0326, 1-0879, 1-0604, 1-0605 FF, 1-0875 SS |  |  |  | -142d | 0d | MBRT BASE [8 h] | 8 |  | ELECRICAL SUB | 8 | 1-0865 | POLES1 | 1-0865 | ZONE-1 | SPRING | SIGNALS | PRIME | signals |  | P3 |
| 1-0866 |  | SPLICE LOOP LEED IN, SPRING AND 9TH |  | 1d | 2024-06-05 | 2024-06-05 | 1-0865 |  |  |  | -141d | 1d | MBRT BASE [8 h] | 8 |  | ELECRICAL SUB | 8 | 1-0866 | POLES1 | 1-0866 | ZONE-1 | SPRING | SIGNALS | PRIME | signals |  | P3 |
| 1-0870 |  | INST PPB POST, SPRING AND 9TH |  | 1d | 2024-06-05 | 2024-06-05 | 1-0869, 1-0867, 1-0868, 1-0865 |  |  |  | -142d | 0d | MBRT BASE [8 h] | 8 |  | ELECRICAL SUB | 8 | 1-0870 | POLES1 | 1-0870 | ZONE-1 | SPRING | SIGNALS | PRIME | signals |  | P3 |
| 1-0871 |  | INST PEDESTAL, SPRING AND 9TH |  | 1d | 2024-06-06 | 2024-06-06 | 1-0870 |  |  |  | -142d | 0d | MBRT BASE [8 h] | 8 |  | ELECRICAL SUB | 8 | 1-0871 | POLES1 | 1-0871 | ZONE-1 | SPRING | SIGNALS | PRIME | signals |  | P3 |
| 1-0872 |  | INST WIRING, SPRING AND 9TH |  | 3d | 2024-06-07 | 2024-06-11 | 1-0871, 1-0866 |  |  |  | -142d | 0d | MBRT BASE [24 h] | 24 |  | ELECRICAL SUB | 24 | 1-0872 | POLES1 | 1-0872 | ZONE-1 | SPRING | SIGNALS | PRIME | signals |  | P3 |
| 1-0876 |  | NOTIFY SDOT, SPRING AND 9TH |  | 0d | 2024-06-12 | 2024-06-12 | 1-0872 |  |  |  | -142d | 0d | MBRT BASE |  |  | ELECRICAL SUB | 0 | 1-0876 |  | 1-0876 | ZONE-1 | SPRING | SIGNALS | PRIME | signals | NOTIFY | P3 |
| 1-0877 |  | SDOT INSPECTION, SPRING AND 9TH |  | 5d | 2024-06-12 | 2024-06-18 | 1-0876 |  |  |  | -142d | 0d | MBRT BASE [40 h] | 40 |  | CITY | 40 | 1-0877 |  | 1-0877 | ZONE-1 | SPRING | SIGNALS | SDOT | signals | INSPECT | P3 |
| 1-0878 |  | COMM SIGNAL, SPRING AND 9TH |  | 1d | 2024-06-19 | 2024-06-19 | 1-0877, 1-0863, 1-0895 |  |  |  | -142d | 0d | MBRT BASE [8 h] | 8 |  | CITY | 8 | 1-0878 |  | 1-0878 | ZONE-1 | SPRING | SIGNALS | PRIME | signals |  | P3 |

| ID | WBS | Activity | Duration | Start | Finish | Predecessors | Complete | Remaining | Planned start | Planned finish | Total float | Free float | Resources | Cost | Actual cost | user_text2 | user_number6 | user_text10 | user_text8 | MBRT-ZONE | MBRT-TYPE | MBRT-RESP | MBRT-LOCATION |
| --- | --- | --- | --- | --- | --- | --- | --- | --- | --- | --- | --- | --- | --- | --- | --- | --- | --- | --- | --- | --- | --- | --- | --- |
|  | 15 | **ITS WIRING** |  | 2024-02-05 | 2024-04-02 |  |  |  |  |  |  |  |  |  |  |  |  |  |  |  |  |  |  |
| 1-1045 |  | INST ITS WIRING, ITS WIRING | 20d | 2024-02-05 A | 2024-04-02 | 1-1037 |  | 1d | 2024-02-12 | 2024-03-11 | -61d | 77d | MBRT BASE [152 h] | 152 | 152 | ELECRICAL SUB | 152 | 1-1045 | 1-1045 | ZONE-1 | ITS | PRIME |  |
|  | 16 | **LIGHTING** |  | 2023-05-05 | 2024-07-08 |  |  |  |  |  |  |  |  |  |  |  |  |  |  |  |  |  |  |
|  | 1 | **SPRING AND 3RD (SCHEMATIC 1)** |  | 2023-05-05 | 2024-03-22 |  |  |  |  |  |  |  |  |  |  |  |  |  |  |  |  |  |  |
| 1-1048 |  | INST PED POLE, SPRING AND 3RD | 1d | 2023-05-05 A | 2023-05-05 A | 1-0815 SS | 100% |  | 2023-05-01 | 2023-05-01 |  |  | MBRT BASE [8 h] | 8 | 8 | ELECRICAL SUB | 8 | 1-1048 | 1-1048 | ZONE-1 | LIGHTING | PRIME | SPRING |
| 1-1053 |  | NOTIFY SCL FOR MANDRELLING | 1d | 2023-08-11 A | 2023-08-11 A | 1-1048 | 100% |  | 2023-08-14 | 2023-08-14 |  |  | MBRT NEW [8 h] | 8 | 8 |  | 8 |  |  |  |  |  |  |
| 1-1058 |  | 2 DAY WAIT FOR SCL | 2d | 2023-08-14 A | 2023-08-15 A | 1-1053 | 100% |  |  |  |  |  | MBRT NEW [16 h] | 16 | 16 |  | 16 |  |  |  |  |  |  |
| 1-1073 |  | OWNER CAUSED DELAY AWAITING SCL | 0d | 2023-08-16 A | 2023-11-17 A | 1-1058 | 100% |  | 2023-08-14 | 2023-08-14 |  |  | MBRT NEW |  |  |  | 528 |  |  |  |  |  |  |
| 1-1088 |  | MANDRELLINIG CONDUITS | 1d | 2023-11-20 A | 2023-11-20 A | 1-1073 | 100% |  | 2023-11-09 | 2023-11-09 |  |  | MBRT NEW [8 h] | 8 | 8 |  | 8 |  |  |  |  |  |  |
| 1-1049 |  | INST WIRING, SPRING AND 3RD | 2d | 2023-11-21 A | 2023-11-22 A | 1-1048, 1-0815, 1-1088 | 100% |  | 2023-11-10 | 2023-11-14 |  |  | MBRT BASE [16 h] | 16 | 16 | ELECRICAL SUB | 16 | 1-1049 | 1-1049 | ZONE-1 | LIGHTING | PRIME | SPRING |
| 1-1480 |  | NOTIFY SCL, SPRING AND 3RD | 2d | 2023-11-22 A | 2023-11-22 A | 1-1049 | 100% |  | 2023-11-15 | 2023-11-16 |  |  | MBRT NEW [16 h] | 16 | 8 | ELECRICAL SUB | 8 | 1-1480 | 1-1480 | ZONE-1 | LIGHTING | PRIME | SPRING |
| 1-1485 |  | SCL INSPECTION BEFORE SERVICE, SPRING AND 3RD | 10d | 2023-11-22 A | 2023-11-22 A | 1-1480 | 100% |  | 2023-11-17 | 2023-12-04 |  |  | MBRT NEW [80 h] | 80 |  | ELECRICAL SUB | 8 | 1-1485 | 1-1485 | ZONE-1 | LIGHTING | PRIME | SPRING |
| 1-1490 |  | NOTIFY SCL, SPRING AND 3RD | 2d | 2023-12-13 A | 2023-12-13 A | 1-1485 | 100% |  | 2023-12-11 | 2023-12-12 |  |  | MBRT NEW [16 h] | 16 | 8 | ELECRICAL SUB | 8 | 1-1490 | 1-1490 | ZONE-1 | LIGHTING | PRIME | SPRING |
| 1-1495 |  | SCL FINAL LIGHTING INSPECTION, SPRING AND 3RD | 10d | 2023-12-14 A | 2024-01-11 A | 1-1490 | 100% |  | 2023-12-13 | 2023-12-27 |  |  | MBRT NEW [80 h] | 80 | 152 | ELECRICAL SUB | 152 | 1-1495 | 1-1495 | ZONE-1 | LIGHTING | PRIME | SPRING |
| 1-1555 |  | Awaiting Ped Light | 5d | 2024-01-12 A | 2024-03-20 A | 1-1495 | 100% |  | 2024-03-04 | 2024-03-08 |  |  |  |  |  |  |  |  |  |  |  |  |  |
| 1-1500 |  | COMMISSION LIGHTING, SPRING AND 3RD | 2d | 2024-03-21 A | 2024-03-22 A | 1-1495, 1-1555 | 100% |  | 2024-03-04 | 2024-03-05 |  |  | MBRT NEW [16 h] | 16 |  | ELECRICAL SUB | 16 | 1-1500 | 1-1500 | ZONE-1 | LIGHTING | PRIME | SPRING |
|  | 2 | **SPRING AND 7TH (SCHEMATIC 2)** |  | 2023-05-22 | 2024-05-24 |  |  |  |  |  |  |  |  |  |  |  |  |  |  |  |  |  |  |
| 1-1051 |  | INST POLE, SPRING AND 7TH | 1d | 2023-05-22 A | 2023-05-23 A | PMP-0016 | 100% |  | 2023-05-03 | 2023-05-03 |  |  | MBRT BASE [16 h] | 16 | 16 | ELECRICAL SUB | 16 | 1-1051 | 1-1051 | ZONE-1 | LIGHTING | PRIME | SPRING |
| 1-1227 |  | NOTIFY SCL FOR MANDRELLING | 1d | 2023-08-11 A | 2023-08-11 A | 1-1051 | 100% |  | 2023-08-14 | 2023-08-14 |  |  | MBRT NEW [8 h] | 8 | 8 |  | 8 |  |  |  |  |  |  |
| 1-1248 |  | 2 DAY WAIT FOR SCL | 2d | 2023-08-14 A | 2023-08-15 A | 1-1227 | 100% |  |  |  |  |  | MBRT NEW [16 h] | 16 | 16 |  | 16 |  |  |  |  |  |  |
| 1-1269 |  | OWNER CAUSED DELAY AWAITING SCL | 0d | 2023-08-16 A | 2023-11-16 A | 1-1248 | 100% |  | 2023-08-14 | 2023-08-14 |  |  | MBRT NEW |  |  |  | 520 |  |  |  |  |  |  |
| 1-1229 |  | MANDRELLINIG CONDUITS | 1d | 2023-11-17 A | 2023-11-17 A | 1-1269 | 100% |  | 2023-11-09 | 2023-11-09 |  |  | MBRT NEW [8 h] | 8 | 8 |  | 8 |  |  |  |  |  |  |
| 1-1052 |  | INST WIRING, SPRING AND 7TH | 2d | 2024-04-29 | 2024-04-30 | 1-1051, 1-0843, 1-1229 |  |  |  |  | -111d | 0d | MBRT BASE [16 h] | 16 |  | ELECRICAL SUB | 16 | 1-1052 | 1-1052 | ZONE-1 | LIGHTING | PRIME | SPRING |
| 1-1510 |  | NOTIFY SCL, SPRING AND 7TH | 2d | 2024-05-01 | 2024-05-02 | 1-1052 |  |  |  |  | -111d | 0d | MBRT NEW |  |  | ELECRICAL SUB | 16 | 1-1510 | 1-1510 | ZONE-1 | LIGHTING | PRIME | SPRING |
| 1-1505 |  | SCL Lighting Final Inspection, SPRING AND 7TH | 2d | 2024-05-03 | 2024-05-06 | 1-1510 |  |  |  |  | -111d | 0d | MBRT NEW [16 h] | 16 |  | ELECRICAL SUB | 16 | 1-1505 | 1-1505 | ZONE-1 | LIGHTING | PRIME | SPRING |
| 1-1745 |  | NOTIFY SCL, SPRING AND 7TH | 2d | 2024-05-07 | 2024-05-08 | 1-1505 |  |  |  |  | -111d | 0d | MBRT NEW |  |  | ELECRICAL SUB | 16 | 1-1745 | 1-1745 | ZONE-1 | LIGHTING | PRIME | SPRING |
| 1-1515 |  | SCL Commissioning Inspection, SPRING AND 7TH | 10d | 2024-05-09 | 2024-05-22 | 1-1745 |  |  |  |  | -111d | 0d | MBRT NEW |  |  | ELECRICAL SUB | 80 | 1-1515 | 1-1515 | ZONE-1 | LIGHTING | PRIME | SPRING |
| 1-1520 |  | COMMISSION LIGHTING, SPRING AND 7TH | 2d | 2024-05-23 | 2024-05-24 | 1-1515 |  |  |  |  | -111d | 0d | MBRT NEW [16 h] | 16 |  | ELECRICAL SUB | 16 | 1-1520 | 1-1520 | ZONE-1 | LIGHTING | PRIME | SPRING |

| ID | WBS | Activity | Duration | Start | Finish | Predecessors | Complete | Remaining | Planned start | Planned finish | Total float | Free float | Resources | Cost | Actual cost | user_text2 | user_number6 | user_text10 | user_text8 | MBRT-ZONE | MBRT-LOCATION | MBRT-TYPE | MBRT-RESP |
| --- | --- | --- | --- | --- | --- | --- | --- | --- | --- | --- | --- | --- | --- | --- | --- | --- | --- | --- | --- | --- | --- | --- | --- |
|  | 3 | **SPRING AND 8TH (SCHEMATIC 3)** |  | 2023-06-08 | 2024-04-22 |  |  |  |  |  |  |  |  |  |  |  |  |  |  |  |  |  |  |
| 1-1054 |  | INST POLES, SPRING AND 8TH | 2d | 2023-06-08 A | 2023-06-09 A | 1-1435 | 100% |  |  |  |  |  | MBRT BASE [16 h] | 16 | 16 | ELECRICAL SUB | 16 | 1-1054 | 1-1054 | ZONE-1 | SPRING | LIGHTING | PRIME |
| 1-1353 |  | NOTIFY SCL FOR MANDRELLING | 1d | 2023-08-11 A | 2023-08-11 A | 1-1054 | 100% |  | 2023-08-14 | 2023-08-14 |  |  | MBRT NEW [8 h] | 8 | 8 |  | 8 |  |  |  |  |  |  |
| 1-1358 |  | 2 DAY WAIT FOR SCL | 2d | 2023-08-14 A | 2023-08-15 A | 1-1353 | 100% |  |  |  |  |  | MBRT NEW [16 h] | 16 | 16 |  | 16 |  |  |  |  |  |  |
| 1-1373 |  | OWNER CAUSED DELAY AWAITING SCL | 0d | 2023-08-16 A | 2023-09-06 A | 1-1358 | 100% |  | 2023-08-14 | 2023-08-14 |  |  | MBRT NEW |  |  |  | 120 |  |  |  |  |  |  |
| 1-1388 |  | MANDRELLINIG CONDUITS | 1d | 2023-09-07 A | 2023-09-07 A | 1-1373 | 100% |  | 2023-09-11 | 2023-09-11 |  |  | MBRT NEW [8 h] | 8 | 8 |  | 8 |  |  |  |  |  |  |
| 1-1055 |  | INST WIRING, SPRING AND 8TH | 3d | 2023-11-06 A | 2023-11-10 A | 1-1054, 1-0857, 1-1388 | 100% |  | 2023-11-06 | 2023-11-08 |  |  | MBRT BASE [40 h] | 40 | 40 | ELECRICAL SUB | 40 | 1-1055 | 1-1055 | ZONE-1 | SPRING | LIGHTING | PRIME |
| 1-1095 |  | DELAY AWAITING DEVELOPER TO FINISH ON N. SIDE OF SPRING | 0d | 2023-11-21 A | 2024-04-08 | 1-1525 SS |  | 5d | 2023-12-11 | 2023-12-11 | -85d | 0d | MBRT NEW |  |  |  | 544 |  |  |  |  |  |  |
| 1-1525 |  | SCL INSPECTION BEFORE SERVICE, SPRING AND 8TH | 10d | 2023-11-21 A | 2023-11-21 A | 1-1530 | 100% |  | 2023-11-14 | 2023-11-29 |  |  | MBRT NEW [80 h] | 80 |  | ELECRICAL SUB | 8 | 1-1525 | 1-1525 | ZONE-1 | SPRING | LIGHTING | PRIME |
| 1-1530 |  | NOTIFY SCL, SPRING AND 8TH | 2d | 2023-11-21 A | 2023-11-21 A | 1-1055 | 100% |  | 2023-11-09 | 2023-11-10 |  |  | MBRT NEW [16 h] | 16 | 8 | ELECRICAL SUB | 8 | 1-1530 | 1-1530 | ZONE-1 | SPRING | LIGHTING | PRIME |
| 1-1535 |  | SCL Commissioning Inspection, SPRING AND 8TH | 10d | 2023-11-21 A | 2024-04-08 | 1-1750 |  | 5d | 2023-12-13 | 2023-12-27 | -85d | 0d | MBRT NEW |  | 80 | ELECRICAL SUB | 544 | 1-1535 | 1-1535 | ZONE-1 | SPRING | LIGHTING | PRIME |
| 1-1750 |  | NOTIFY SCL, SPRING AND 8TH | 2d | 2023-11-21 A | 2023-11-21 A | 1-1525 | 100% |  | 2023-12-11 | 2023-12-12 |  |  | MBRT NEW [16 h] | 16 | 8 | ELECRICAL SUB | 8 | 1-1750 | 1-1750 | ZONE-1 | SPRING | LIGHTING | PRIME |
| 1-1540 |  | COMMISSION LIGHTING, SPRING AND 8TH | 10d | 2024-04-09 | 2024-04-22 | 1-1535, 1-1095 |  |  |  |  | -85d | 0d | MBRT NEW [80 h] | 80 |  | ELECRICAL SUB | 80 | 1-1540 | 1-1540 | ZONE-1 | SPRING | LIGHTING | PRIME |
|  | 4 | **SPRING AND 9TH** |  | 2023-07-18 | 2024-07-08 |  |  |  |  |  |  |  |  |  |  |  |  |  |  |  |  |  |  |
| 1-1850 |  | INSTALL POLES, SPRING AND 9TH | 2d | 2023-07-18 A | 2023-07-19 A | 1-1440 | 100% |  |  |  |  |  | MBRT NEW [16 h] | 16 | 16 | ELECRICAL SUB | 16 | 1-1850 | 1-1850 | ZONE-1 | SPRING | LIGHTING | PRIME |
| 1-1057 |  | INST WIRING, SPRING AND 9TH | 1d | 2024-06-12 | 2024-06-12 | 1-0872 SS, 1-1055, 1-1850, 1-0872 |  |  |  |  | -138d | 0d | MBRT BASE [8 h] | 8 |  | ELECRICAL SUB | 8 | 1-1057 | 1-1057 | ZONE-1 | SPRING | LIGHTING | PRIME |
| 1-1830 |  | NOTIFY SCL, SPRING AND 9TH | 2d | 2024-06-13 | 2024-06-14 | 1-1057 |  |  |  |  | -138d | 0d | MBRT NEW |  |  | ELECRICAL SUB | 16 | 1-1830 | 1-1830 | ZONE-1 | SPRING | LIGHTING | PRIME |
| 1-1825 |  | SCL Lighting Final Inspection, SPRING AND 9TH | 2d | 2024-06-17 | 2024-06-18 | 1-1830 |  |  |  |  | -138d | 0d | MBRT NEW [16 h] | 16 |  | ELECRICAL SUB | 16 | 1-1825 | 1-1825 | ZONE-1 | SPRING | LIGHTING | PRIME |
| 1-1845 |  | NOTIFY SCL, SPRING AND 9TH | 2d | 2024-06-19 | 2024-06-20 | 1-1825 |  |  |  |  | -138d | 0d | MBRT NEW |  |  | ELECRICAL SUB | 16 | 1-1845 | 1-1845 | ZONE-1 | SPRING | LIGHTING | PRIME |
| 1-1835 |  | SCL Commissioning Inspection, SPRING AND 9TH | 10d | 2024-06-21 | 2024-07-04 | 1-1845 |  |  |  |  | -138d | 0d | MBRT NEW |  |  | ELECRICAL SUB | 80 | 1-1835 | 1-1835 | ZONE-1 | SPRING | LIGHTING | PRIME |
| 1-1840 |  | COMMISSION LIGHTING, SPRING AND 9TH | 2d | 2024-07-05 | 2024-07-08 | 1-1835, 1-0878 |  |  |  |  | -138d | 0d | MBRT NEW [16 h] | 16 |  | ELECRICAL SUB | 16 | 1-1840 | 1-1840 | ZONE-1 | SPRING | LIGHTING | PRIME |
|  | 5 | **MADISON AND 3RD (SCHEMATIC 4)** |  | 2023-06-05 | 2024-03-08 |  |  |  |  |  |  |  |  |  |  |  |  |  |  |  |  |  |  |
| 1-1059 |  | INST POLES, MAD AND 3RD | 1d | 2023-06-05 A | 2023-06-05 A | PMP-0016 | 100% |  | 2023-05-31 | 2023-05-31 |  |  | MBRT BASE [8 h] | 8 | 8 | ELECRICAL SUB | 8 | 1-1059 | 1-1059 | ZONE-1 | 03 | LIGHTING | PRIME |
| 1-1453 |  | NOTIFY SCL FOR MANDRELLING | 1d | 2023-08-11 A | 2023-08-11 A | 1-1059 | 100% |  | 2023-08-14 | 2023-08-14 |  |  | MBRT NEW [8 h] | 8 | 8 |  | 8 |  |  |  |  |  |  |
| 1-1458 |  | 2 DAY WAIT FOR SCL | 2d | 2023-08-14 A | 2023-08-15 A | 1-1453 | 100% |  |  |  |  |  | MBRT NEW [16 h] | 16 | 16 |  | 16 |  |  |  |  |  |  |
| 1-1473 |  | OWNER CAUSED DELAY AWAITING SCL | 0d | 2023-08-16 A | 2023-11-03 A | 1-1458 | 100% |  | 2023-08-14 | 2023-08-14 |  |  | MBRT NEW |  |  |  | 456 |  |  |  |  |  |  |
| 1-1488 |  | MANDRELLINIG CONDUITS | 1d | 2023-11-06 A | 2023-11-06 A | 1-1473 | 100% |  | 2023-11-09 | 2023-11-09 |  |  | MBRT NEW [8 h] | 8 | 8 |  | 8 |  |  |  |  |  |  |
| 1-1060 |  | INST WIRING, MAD AND 3RD | 2d | 2024-01-09 A | 2024-01-16 A | 1-1059, 1-0901, 1-1488 | 100% |  | 2023-12-28 | 2023-12-29 |  |  | MBRT BASE [40 h] | 40 | 40 | ELECRICAL SUB | 40 | 1-1060 | 1-1060 | ZONE-1 | 03 | LIGHTING | PRIME |
| 1-1755 |  | SCL INSPECTION BEFORE SERVICE, MAD AND 3RD | 10d | 2024-01-15 A | 2024-01-29 A | 1-1760 | 100% |  | 2024-01-04 | 2024-01-18 |  |  | MBRT NEW [80 h] | 80 | 80 | ELECRICAL SUB | 80 | 1-1755 | 1-1755 | ZONE-1 | SPRING | LIGHTING | PRIME |
| 1-1765 |  | SCL FINAL LIGHTING INSPECTION, MAD AND 3RD | 10d | 2024-01-15 A | 2024-01-29 A | 1-1775 | 100% |  | 2024-01-23 | 2024-02-05 |  |  | MBRT NEW [80 h] | 80 | 80 | ELECRICAL SUB | 80 | 1-1765 | 1-1765 | ZONE-1 | SPRING | LIGHTING | PRIME |
| 1-1760 |  | NOTIFY SCL, MAD AND 3RD | 2d | 2024-01-17 A | 2024-01-17 A | 1-1060 | 100% |  | 2024-01-02 | 2024-01-03 |  |  | MBRT NEW [16 h] | 16 | 8 | ELECRICAL SUB | 8 | 1-1760 | 1-1760 | ZONE-1 | SPRING | LIGHTING | PRIME |
| 1-1775 |  | NOTIFY SCL, MAD AND 3RD | 2d | 2024-01-17 A | 2024-01-17 A | 1-1755 | 100% |  | 2024-01-19 | 2024-01-22 |  |  | MBRT NEW [16 h] | 16 | 8 | ELECRICAL SUB | 8 | 1-1775 | 1-1775 | ZONE-1 | SPRING | LIGHTING | PRIME |
| 1-1770 |  | COMMISSION LIGHTING, MAD AND 3RD | 2d | 2024-03-04 A | 2024-03-08 A | 1-1765 | 100% |  | 2024-04-02 | 2024-04-03 |  |  | MBRT NEW [16 h] | 16 |  | ELECRICAL SUB | 16 | 1-1770 | 1-1770 | ZONE-1 | SPRING | LIGHTING | PRIME |

| ID | WBS | Activity | Duration | Start | Finish | Predecessors | Complete | Remaining | Planned start | Planned finish | Total float | Free float | Resources | Cost | Actual cost | user_text2 | user_number6 | user_text10 | user_text8 | MBRT-ZONE | MBRT-LOCATION | MBRT-TYPE | MBRT-RESP | ~TEXT |
| --- | --- | --- | --- | --- | --- | --- | --- | --- | --- | --- | --- | --- | --- | --- | --- | --- | --- | --- | --- | --- | --- | --- | --- | --- |
|  | 6 | **MADISON AND 5TH (SCHEMATIC 5)** |  | 2024-03-11 | 2024-03-25 |  |  |  |  |  |  |  |  |  |  |  |  |  |  |  |  |  |  |  |
| 1-1062 |  | INST POLES, MAD AND 5TH | 1d | 2024-03-11 A | 2024-03-11 A | 1-1060, PMP-0016 | 100% |  | 2024-04-08 | 2024-04-08 |  |  | MBRT BASE [8 h] | 8 |  | ELECRICAL SUB | 8 | 1-1062 | 1-1062 | ZONE-1 | 05 | LIGHTING | PRIME |  |
| 1-1063 |  | INST WIRING, MAD AND 5TH | 2d | 2024-03-12 A | 2024-03-14 A | 1-1062 | 100% |  | 2024-04-09 | 2024-04-10 |  |  | MBRT BASE [16 h] | 16 |  | ELECRICAL SUB | 16 | 1-1063 | 1-1063 | ZONE-1 | 05 | LIGHTING | PRIME |  |
| 1-1785 |  | NOTIFY SCL, MAD AND 5TH | 2d | 2024-03-15 A | 2024-03-18 A | 1-1063 | 100% |  | 2024-04-11 | 2024-04-12 |  |  | MBRT NEW |  |  | ELECRICAL SUB | 16 | 1-1785 | 1-1785 | ZONE-1 | SPRING | LIGHTING | PRIME |  |
| 1-1790 |  | SCL Commissioning Inspection, MAD AND 5TH | 10d | 2024-03-19 A | 2024-03-22 A | 1-1785 | 100% |  | 2024-04-15 | 2024-04-26 |  |  | MBRT NEW |  |  | ELECRICAL SUB | 80 | 1-1790 | 1-1790 | ZONE-1 | SPRING | LIGHTING | PRIME |  |
| 1-1795 |  | COMMISSION LIGHTING, MAD AND 5TH | 2d | 2024-03-25 A | 2024-03-25 A | 1-1790 | 100% |  | 2024-04-29 | 2024-04-30 |  |  | MBRT NEW [16 h] | 16 |  | ELECRICAL SUB | 16 | 1-1795 | 1-1795 | ZONE-1 | SPRING | LIGHTING | PRIME |  |
|  | 7 | **MADISON 7TH TO 8TH (SCHEMATIC 7 & 8)** |  | 2023-08-11 | 2024-04-29 |  |  |  |  |  |  |  |  |  |  |  |  |  |  |  |  |  |  |  |
| 1-1553 |  | NOTIFY SCL FOR MANDRELLING | 1d | 2023-08-11 A | 2023-08-11 A | 1-1453 SS | 100% |  | 2023-08-14 | 2023-08-14 |  |  | MBRT NEW [8 h] | 8 | 8 |  | 8 |  |  |  |  |  |  |  |
| 1-1558 |  | 2 DAY WAIT FOR SCL | 2d | 2023-08-14 A | 2023-08-15 A | 1-1553 | 100% |  |  |  |  |  | MBRT NEW [16 h] | 16 | 16 |  | 16 |  |  |  |  |  |  |  |
| 1-1573 |  | OWNER CAUSED DELAY AWAITING SCL | 0d | 2023-08-16 A | 2023-11-10 A | 1-1558 | 100% |  | 2023-08-14 | 2023-08-14 |  |  | MBRT NEW |  |  |  | 496 |  |  |  |  |  |  |  |
| 1-1588 |  | MANDRELLINIG CONDUITS | 1d | 2023-11-14 A | 2023-11-14 A | 1-1573 | 100% |  | 2023-11-09 | 2023-11-09 |  |  | MBRT NEW [8 h] | 8 | 8 |  | 8 |  |  |  |  |  |  |  |
| 1-1065 |  | INST POLES, MAD 7TH TO 8TH | 2d | 2023-11-20 A | 2023-11-22 A | 1-1455 | 100% |  | 2023-11-30 | 2023-12-01 |  |  | MBRT BASE [24 h] | 24 | 24 | ELECRICAL SUB | 24 | 1-1065 | 1-1065 | ZONE-1 | 07 | LIGHTING | PRIME |  |
| 1-1066 |  | INST WIRING, MAD 7TH TO 8TH | 3d | 2023-11-20 A | 2023-11-22 A | 1-1065, 1-0940, 1-1588 | 100% |  | 2023-12-04 | 2023-12-06 |  |  | MBRT BASE [24 h] | 24 | 24 | ELECRICAL SUB | 24 | 1-1066 | 1-1066 | ZONE-1 | 07 | LIGHTING | PRIME |  |
| 1-1800 |  | SCL INSPECTION BEFORE SERVICE, MAD 7TH TO 8TH | 10d | 2023-11-22 A | 2023-11-22 A | 1-1805 | 100% |  | 2023-12-11 | 2023-12-22 |  |  | MBRT NEW [80 h] | 80 |  | ELECRICAL SUB | 8 | 1-1800 | 1-1800 | ZONE-1 | SPRING | LIGHTING | PRIME |  |
| 1-1805 |  | NOTIFY SCL, MAD 7TH TO 8TH | 2d | 2023-11-22 A | 2023-11-22 A | 1-1066 | 100% |  | 2023-12-07 | 2023-12-08 |  |  | MBRT NEW [16 h] | 16 | 8 | ELECRICAL SUB | 8 | 1-1805 | 1-1805 | ZONE-1 | SPRING | LIGHTING | PRIME |  |
| 1-1820 |  | NOTIFY SCL, MAD 7TH TO 8TH (Schematic 7) | 2d | 2023-12-11 A | 2023-12-11 A | 1-1800 | 100% |  | 2023-12-11 | 2023-12-12 |  |  | MBRT NEW [16 h] | 16 | 8 | ELECRICAL SUB | 8 | 1-1820 | 1-1820 | ZONE-1 | SPRING | LIGHTING | PRIME |  |
| 1-1810 |  | SCL FINAL LIGHTING INSPECTION, MAD 7TH TO 8TH (Schematic 7) | 10d | 2023-12-13 A | 2024-01-19 A | 1-1820 | 100% |  | 2023-12-13 | 2023-12-27 |  |  | MBRT NEW [80 h] | 80 | 200 | ELECRICAL SUB | 200 | 1-1810 | 1-1810 | ZONE-1 | SPRING | LIGHTING | PRIME |  |
| 1-1815 |  | COMMISSION LIGHTING, MAD 7TH TO 8TH (Schematic 7) | 2d | 2024-01-22 A | 2024-01-24 A | 1-1810 | 100% |  | 2023-12-28 | 2023-12-29 |  |  | MBRT NEW [16 h] | 16 | 24 | ELECRICAL SUB | 24 | 1-1815 | 1-1815 | ZONE-1 | SPRING | LIGHTING | PRIME |  |
| 1-2120 |  | SCHEMATIC 8 Inspection & Build-out | 15d | 2024-01-25 A | 2024-04-22 | 1-1815 |  | 15d | 2024-03-04 | 2024-03-22 | -104d | 0d |  |  |  |  |  |  |  |  |  |  |  |  |
| 1-2130 |  | SCHEMATIC 8 Commissioning | 5d | 2024-04-23 | 2024-04-29 | 1-2120 |  |  |  |  | -104d | 6d |  |  |  |  |  |  |  |  |  |  |  |  |
|  | 8 | **MADISON AND 9TH (SCHEMATIC 9)** |  | 2024-02-29 | 2024-04-15 |  |  |  |  |  |  |  |  |  |  |  |  |  |  |  |  |  |  |  |
| 1-1068 |  | INST POLES, MAD AND 9TH | 1d | 2024-02-29 A | 2024-02-29 A | 1-0969 SS, 1-1066, 1-0964 | 100% |  | 2024-05-23 | 2024-05-23 |  |  | MBRT BASE [8 h] | 8 | 8 | ELECRICAL SUB | 8 | 1-1068 | 1-1068 | ZONE-1 | 09 | LIGHTING | PRIME |  |
| 1-1069 |  | INST WIRING, MAD AND 9TH | 2d | 2024-03-01 A | 2024-04-15 | 1-1068 |  | 10d | 2024-05-24 | 2024-05-28 | -110d | 0d | MBRT BASE [8 h] | 8 | 16 | ELECRICAL SUB | 8 | 1-1069 | 1-1069 | ZONE-1 | 09 | LIGHTING | PRIME | POLES1 |
|  | 9 | **MADISON AND TERRY (SCHEMATIC 9)** |  | 2024-01-29 | 2024-04-15 |  |  |  |  |  |  |  |  |  |  |  |  |  |  |  |  |  |  |  |
| 1-1071 |  | INST POLES, MAD AND TERRY | 4d | 2024-01-29 A | 2024-02-01 A | 1-1065 | 100% |  | 2024-03-21 | 2024-03-26 |  |  | MBRT BASE [32 h] | 32 | 32 | ELECRICAL SUB | 32 | 1-1071 | 1-1071 | ZONE-1 | TERRY | LIGHTING | PRIME | POLES1 |
| 1-1072 |  | INST WIRING, MAD AND TERRY | 5d | 2024-01-29 A | 2024-04-15 | 1-1071 |  | 10d | 2024-03-27 | 2024-04-02 | -110d | 0d | MBRT BASE [192 h] | 192 | 40 | ELECRICAL SUB | 192 | 1-1072 | 1-1072 | ZONE-1 | TERRY | LIGHTING | PRIME | POLES1 |

| ID | WBS | Activity | Duration | Start | Finish | Predecessors | Complete | Remaining | Planned start | Planned finish | Total float | Free float | Resources | Cost | Actual cost | user_text2 | user_number6 | user_text10 | user_text8 | MBRT-ZONE | MBRT-LOCATION | MBRT-TYPE | MBRT-RESP | ~TEXT |
| --- | --- | --- | --- | --- | --- | --- | --- | --- | --- | --- | --- | --- | --- | --- | --- | --- | --- | --- | --- | --- | --- | --- | --- | --- |
|  | 10 | **MADISON AND BOREN** |  | 2024-01-29 | 2024-05-09 |  |  |  |  |  |  |  |  |  |  |  |  |  |  |  |  |  |  |  |
| 1-1074 |  | INST POLES, MAD AND BOREN | 2d | 2024-01-29 A | 2024-02-01 A | 1-1054 | 100% |  | 2023-07-14 | 2023-07-17 |  |  | MBRT BASE [32 h] | 32 | 32 | ELECRICAL SUB | 32 | 1-1074 | 1-1074 | ZONE-1 | BOREN | LIGHTING | PRIME |  |
| 1-1075 |  | INST WIRING, MAD AND BOREN | 3d | 2024-01-29 A | 2024-04-15 | 1-1074 SS |  | 10d | 2024-05-07 | 2024-05-09 | -110d | 0d | MBRT BASE [192 h] | 192 | 24 | ELECRICAL SUB | 192 | 1-1075 | 1-1075 | ZONE-1 | BOREN | LIGHTING | PRIME |  |
| 1-1860 |  | NOTIFY SCL, MAD AND BOREN | 2d | 2024-04-16 | 2024-04-17 | 1-1075, 1-1072, 1-1069 |  |  |  |  | -110d | 0d | MBRT NEW |  |  | ELECRICAL SUB | 16 | 1-1860 | 1-1860 | ZONE-1 | SPRING | LIGHTING | PRIME | POLES1 |
| 1-1855 |  | SCL Lighting Final Inspection, MAD AND BOREN | 2d | 2024-04-18 | 2024-04-19 | 1-1860 |  |  |  |  | -110d | 0d | MBRT NEW [16 h] | 16 |  | ELECRICAL SUB | 16 | 1-1855 | 1-1855 | ZONE-1 | SPRING | LIGHTING | PRIME | POLES1 |
| 1-1875 |  | NOTIFY SCL, MAD AND BOREN | 2d | 2024-04-22 | 2024-04-23 | 1-1855 |  |  |  |  | -110d | 0d | MBRT NEW |  |  | ELECRICAL SUB | 16 | 1-1875 | 1-1875 | ZONE-1 | SPRING | LIGHTING | PRIME | POLES1 |
| 1-1865 |  | SCL FINAL LIGHTING MAD AND BOREN | 10d | 2024-04-24 | 2024-05-07 | 1-1875 |  |  |  |  | -110d | 0d | MBRT NEW [80 h] | 80 |  | ELECRICAL SUB | 80 | 1-1865 | 1-1865 | ZONE-1 | SPRING | LIGHTING | PRIME | POLES1 |
| 1-1870 |  | COMMISSION LIGHTING, MAD AND BOREN | 2d | 2024-05-08 | 2024-05-09 | 1-1865, 1-2130 |  |  |  |  | -110d | 0d | MBRT NEW [16 h] | 16 |  | ELECRICAL SUB | 16 | 1-1870 | 1-1870 | ZONE-1 | SPRING | LIGHTING | PRIME | POLES1 |
|  | 11 | **MADISON AND MINOR (SCHEMATIC 10)** |  | 2023-12-26 | 2024-03-15 |  |  |  |  |  |  |  |  |  |  |  |  |  |  |  |  |  |  |  |
| 1-1077 |  | INST POLES, MAD AND MINOR | 2d | 2023-12-26 A | 2023-12-26 A | 1-1065 | 100% |  | 2024-01-31 | 2024-02-01 |  |  | MBRT BASE [8 h] | 8 | 8 | ELECRICAL SUB | 8 | 1-1077 | 1-1077 | ZONE-1 | MINOR | LIGHTING | PRIME |  |
| 1-1078 |  | INST WIRING, MAD AND MINOR | 3d | 2023-12-27 A | 2024-03-01 A | 1-1077 | 100% |  | 2024-02-05 | 2024-02-07 |  |  | MBRT BASE [360 h] | 360 | 360 | ELECRICAL SUB | 360 | 1-1078 | 1-1078 | ZONE-1 | MINOR | LIGHTING | PRIME |  |
| 1-1143 |  | Schematic 10 Inspect & Commsssion | 5d | 2024-03-04 A | 2024-03-15 A | 1-1078 | 100% |  | 2024-03-04 | 2024-03-08 |  |  |  |  |  |  |  |  |  |  |  |  |  |  |
|  | 12 | **MADISON AND SUMMIT** |  | 2023-12-26 | 2024-03-22 |  |  |  |  |  |  |  |  |  |  |  |  |  |  |  |  |  |  |  |
| 1-1080 |  | INST POLES, MAD AND SUMMIT | 2d | 2023-12-26 A | 2023-12-27 A | 1-1077 SS | 100% |  | 2024-04-19 | 2024-04-22 |  |  | MBRT BASE [16 h] | 16 | 16 | ELECRICAL SUB | 16 | 1-1080 | 1-1080 | ZONE-1 | SUMMIT | LIGHTING | PRIME |  |
| 1-1081 |  | INST WIRING, MAD AND SUMMIT | 3d | 2023-12-27 A | 2024-03-01 A | 1-1080 | 100% |  | 2024-04-29 | 2024-05-01 |  |  | MBRT BASE [360 h] | 360 | 24 | ELECRICAL SUB | 360 | 1-1081 | 1-1081 | ZONE-1 | SUMMIT | LIGHTING | PRIME |  |
| 1-1885 |  | NOTIFY SCL, MAD AND SUMMIT | 2d | 2024-03-01 A | 2024-03-01 A | 1-1081, 1-1078 | 100% |  | 2024-05-09 | 2024-05-10 |  |  | MBRT NEW [16 h] | 16 | 8 | ELECRICAL SUB | 8 | 1-1885 | 1-1885 | ZONE-1 | SPRING | LIGHTING | PRIME |  |
| 1-1880 |  | SCL Lighting Final Inspection, MAD AND SUMMIT | 2d | 2024-03-04 A | 2024-03-08 A | 1-1885 | 100% |  | 2024-03-04 | 2024-03-05 |  |  | MBRT NEW [16 h] | 16 |  | ELECRICAL SUB | 16 | 1-1880 | 1-1880 | ZONE-1 | SPRING | LIGHTING | PRIME |  |
| 1-1900 |  | NOTIFY SCL, MAD AND SUMMIT | 2d | 2024-03-11 A | 2024-03-11 A | 1-1880 | 100% |  | 2024-03-06 | 2024-03-07 |  |  | MBRT NEW |  |  | ELECRICAL SUB | 16 | 1-1900 | 1-1900 | ZONE-1 | SPRING | LIGHTING | PRIME |  |
| 1-1890 |  | SCL Commissioning Inspection, MAD AND SUMMIT | 10d | 2024-03-12 A | 2024-03-15 A | 1-1900 | 100% |  | 2024-03-08 | 2024-03-21 |  |  | MBRT NEW |  |  | ELECRICAL SUB | 80 | 1-1890 | 1-1890 | ZONE-1 | SPRING | LIGHTING | PRIME |  |
| 1-1895 |  | COMMISSION LIGHTING, MAD AND SUMMIT | 2d | 2024-03-18 A | 2024-03-22 A | 1-1890, 1-1143 FF | 100% |  | 2024-04-16 | 2024-04-17 |  |  | MBRT NEW [16 h] | 16 |  | ELECRICAL SUB | 16 | 1-1895 | 1-1895 | ZONE-1 | SPRING | LIGHTING | PRIME |  |
|  | 13 | **MADISON AND BOYLSTON (SCHEMATIC 11)** |  | 2023-12-26 | 2024-04-04 |  |  |  |  |  |  |  |  |  |  |  |  |  |  |  |  |  |  |  |
| 1-1083 |  | INST POLES, MAD AND BOYLSTON | 2d | 2023-12-26 A | 2023-12-26 A | 1-1573 SF, 1-1077 SS | 100% |  | 2024-02-02 | 2024-02-05 |  |  | MBRT BASE [8 h] | 8 | 8 | ELECRICAL SUB | 8 | 1-1083 | 1-1083 | ZONE-1 | BOYLSTON | LIGHTING | PRIME |  |
| 1-1295 |  | INST WIRING, MAD AND BOYLSTON (25% OF LUMP SUM) | 1d | 2023-12-26 A | 2024-01-16 A | 1-0206 | 100% |  | 2023-10-02 | 2023-10-02 |  |  | MBRT NEW [8 h] | 8 | 112 | ELECRICAL SUB | 112 |  |  | ZONE-1 | BOYLSTON | LIGHTING | PRIME |  |
| 1-1084 |  | INST WIRING, MAD AND BOYLSTON (75% OF LUMP SUM) | 3d | 2024-01-17 A | 2024-02-28 A | 1-1083, 1-1295 | 100% |  | 2024-02-06 | 2024-02-08 |  |  | MBRT BASE [240 h] | 240 | 240 | ELECRICAL SUB | 240 | 1-1084 | 1-1084 | ZONE-1 | BOYLSTON | LIGHTING | PRIME |  |
| 1-1910 |  | NOTIFY SCL, MAD AND BOYLSTON | 2d | 2024-02-29 A | 2024-02-29 A | 1-1084 | 100% |  | 2024-02-28 | 2024-02-29 |  |  | MBRT NEW [16 h] | 16 | 8 | ELECRICAL SUB | 8 | 1-1910 | 1-1910 | ZONE-1 | SPRING | LIGHTING | PRIME |  |
| 1-1905 |  | SCL Lighting Final Inspection, MAD AND BOYLSTON | 2d | 2024-03-04 A | 2024-03-12 A | 1-1910 | 100% |  | 2024-03-04 | 2024-03-05 |  |  | MBRT NEW [16 h] | 16 |  | ELECRICAL SUB | 16 | 1-1905 | 1-1905 | ZONE-1 | SPRING | LIGHTING | PRIME |  |
| 1-1925 |  | NOTIFY SCL, MAD AND BOYLSTON | 2d | 2024-03-13 A | 2024-03-14 A | 1-1905 | 100% |  | 2024-03-06 | 2024-03-07 |  |  | MBRT NEW |  |  | ELECRICAL SUB | 16 | 1-1925 | 1-1925 | ZONE-1 | SPRING | LIGHTING | PRIME |  |
| 1-1915 |  | SCL Commissioning Inspection, MAD AND BOYLSTON | 10d | 2024-03-15 A | 2024-04-02 | 1-1925 |  | 1d | 2024-03-08 | 2024-03-21 | -69d | 0d | MBRT NEW |  |  | ELECRICAL SUB | 80 | 1-1915 | 1-1915 | ZONE-1 | SPRING | LIGHTING | PRIME |  |
| 1-1920 |  | COMMISSION LIGHTING, MAD AND BOYLSTON | 2d | 2024-04-03 | 2024-04-04 | 1-1915 |  |  |  |  | -69d | 0d | MBRT NEW [16 h] | 16 |  | ELECRICAL SUB | 16 | 1-1920 | 1-1920 | ZONE-1 | SPRING | LIGHTING | PRIME |  |

| ID | WBS | Activity | Duration | Start | Finish | Predecessors | Remaining | Planned start | Planned finish | Total float | Free float | Resources | Cost | user_text2 | user_number6 | user_text10 | user_text8 | MBRT-ZONE | MBRT-LOCATION | MBRT-TYPE | MBRT-RESP |
| --- | --- | --- | --- | --- | --- | --- | --- | --- | --- | --- | --- | --- | --- | --- | --- | --- | --- | --- | --- | --- | --- |
|  | 14 | **MADISON AND 8TH CENTER ISLAND** |  | 2024-04-02 | 2024-04-29 |  |  |  |  |  |  |  |  |  |  |  |  |  |  |  |  |
| 1-1086 |  | INST POLES, MAD & 8TH CENTER ISLAND | 1d | 2024-04-02 | 2024-04-02 | 1-0766, 1-1084 |  |  |  | -80d | 0d | MBRT BASE [8 h] | 8 | ELECRICAL SUB | 8 | 1-1086 | 1-1086 | ZONE-1 | 08 | LIGHTING | PRIME |
| 1-1087 |  | INST WIRING, MAD & 8TH CENTER ISLAND | 1d | 2024-04-03 | 2024-04-03 | 1-1086, 1-0766 |  |  |  | -80d | 0d | MBRT BASE [8 h] | 8 | ELECRICAL SUB | 8 | 1-1087 | 1-1087 | ZONE-1 | 08 | LIGHTING | PRIME |
| 1-1935 |  | NOTIFY SCL, MAD & 8TH CENTER ISLAND | 2d | 2024-04-04 | 2024-04-05 | 1-1087 |  |  |  | -80d | 0d | MBRT NEW |  | ELECRICAL SUB | 16 | 1-1935 | 1-1935 | ZONE-1 | SPRING | LIGHTING | PRIME |
| 1-1930 |  | SCL Lighting Final Inspection, MAD & 8TH CENTER ISLAND | 2d | 2024-04-08 | 2024-04-09 | 1-1935 |  |  |  | -80d | 0d | MBRT NEW [16 h] | 16 | ELECRICAL SUB | 16 | 1-1930 | 1-1930 | ZONE-1 | SPRING | LIGHTING | PRIME |
| 1-1950 |  | NOTIFY SCL, MAD & 8TH CENTER ISLAND | 2d | 2024-04-10 | 2024-04-11 | 1-1930 |  |  |  | -80d | 0d | MBRT NEW |  | ELECRICAL SUB | 16 | 1-1950 | 1-1950 | ZONE-1 | SPRING | LIGHTING | PRIME |
| 1-1940 |  | SCL Commissioning Inspection, MAD & 8TH CENTER ISLAND | 10d | 2024-04-12 | 2024-04-25 | 1-1950 |  |  |  | -80d | 0d | MBRT NEW |  | ELECRICAL SUB | 80 | 1-1940 | 1-1940 | ZONE-1 | SPRING | LIGHTING | PRIME |
| 1-1945 |  | COMMISSION LIGHTING, MAD & 8TH CENTER ISLAND | 2d | 2024-04-26 | 2024-04-29 | 1-1940 |  |  |  | -80d | 67d | MBRT NEW [16 h] | 16 | ELECRICAL SUB | 16 | 1-1945 | 1-1945 | ZONE-1 | SPRING | LIGHTING | PRIME |
|  | 15 | **MADISON AND TERRY CENTER ISLAND** |  | 2024-03-08 | 2024-04-29 |  |  |  |  |  |  |  |  |  |  |  |  |  |  |  |  |
| 1-1089 |  | INST POLES, MAD & TERRY CENTER ISLAND | 1d | 2024-03-08 A | 2024-04-02 | 1-0774 | 1d | 2024-03-08 | 2024-03-08 | -109d | 0d | MBRT BASE [8 h] | 8 | ELECRICAL SUB | 8 | 1-1089 | 1-1089 | ZONE-1 | TERRY | LIGHTING | PRIME |
| 1-1090 |  | INST WIRING, MAD & TERRY CENTER ISLAND | 1d | 2024-04-03 | 2024-04-03 | 1-1089 |  |  |  | -109d | 0d | MBRT BASE [8 h] | 8 | ELECRICAL SUB | 8 | 1-1090 | 1-1090 | ZONE-1 | TERRY | LIGHTING | PRIME |
| 1-1960 |  | NOTIFY SCL, MAD & TERRY CENTER ISLAND | 2d | 2024-04-04 | 2024-04-05 | 1-1090 |  |  |  | -80d | 0d | MBRT NEW |  | ELECRICAL SUB | 16 | 1-1960 | 1-1960 | ZONE-1 | SPRING | LIGHTING | PRIME |
| 1-1955 |  | SCL Lighting Final Inspection, MAD & TERRY CENTER ISLAND | 2d | 2024-04-08 | 2024-04-09 | 1-1960 |  |  |  | -80d | 0d | MBRT NEW [16 h] | 16 | ELECRICAL SUB | 16 | 1-1955 | 1-1955 | ZONE-1 | SPRING | LIGHTING | PRIME |
| 1-1975 |  | NOTIFY SCL, MAD & TERRY CENTER ISLAND | 2d | 2024-04-10 | 2024-04-11 | 1-1955 |  |  |  | -80d | 0d | MBRT NEW |  | ELECRICAL SUB | 16 | 1-1975 | 1-1975 | ZONE-1 | SPRING | LIGHTING | PRIME |
| 1-1965 |  | SCL Commissioning Inspection, MAD & TERRY CENTER ISLAND | 10d | 2024-04-12 | 2024-04-25 | 1-1975 |  |  |  | -80d | 0d | MBRT NEW |  | ELECRICAL SUB | 80 | 1-1965 | 1-1965 | ZONE-1 | SPRING | LIGHTING | PRIME |
| 1-1970 |  | COMMISSION LIGHTING, MAD & TERRY CENTER ISLAND | 2d | 2024-04-26 | 2024-04-29 | 1-1965 |  |  |  | -80d | 67d | MBRT NEW [16 h] | 16 | ELECRICAL SUB | 16 | 1-1970 | 1-1970 | ZONE-1 | SPRING | LIGHTING | PRIME |
|  | 16 | **MADISON AND BOYLSTON CENTER ISLAND** |  | 2024-03-12 | 2024-04-29 |  |  |  |  |  |  |  |  |  |  |  |  |  |  |  |  |
| 1-1092 |  | INST POLES, MAD & BOYLSTON CENTER ISLAND | 1d | 2024-03-12 A | 2024-04-02 | 1-0782 | 1d | 2024-03-12 | 2024-03-12 | -92d | 0d | MBRT BASE [8 h] | 8 | ELECRICAL SUB | 8 | 1-1092 | 1-1092 | ZONE-1 | BOYLSTON | LIGHTING | PRIME |
| 1-1093 |  | INST WIRING, MAD & BOYLSTON CENTER ISLAND | 1d | 2024-04-03 | 2024-04-03 | 1-1092, 1-0782 |  |  |  | -92d | 0d | MBRT BASE [8 h] | 8 | ELECRICAL SUB | 8 | 1-1093 | 1-1093 | ZONE-1 | BOYLSTON | LIGHTING | PRIME |
| 1-1985 |  | NOTIFY SCL, MAD & BOYLSTON CENTER ISLAND | 2d | 2024-04-04 | 2024-04-05 | 1-1093 |  |  |  | -80d | 0d | MBRT NEW |  | ELECRICAL SUB | 16 | 1-1985 | 1-1985 | ZONE-1 | SPRING | LIGHTING | PRIME |
| 1-1980 |  | SCL Lighting Final Inspection, MAD & BOYLSTON CENTER ISLAND | 2d | 2024-04-08 | 2024-04-09 | 1-1985 |  |  |  | -80d | 0d | MBRT NEW [16 h] | 16 | ELECRICAL SUB | 16 | 1-1980 | 1-1980 | ZONE-1 | SPRING | LIGHTING | PRIME |
| 1-2000 |  | NOTIFY SCL, MAD & BOYLSTON CENTER ISLAND | 2d | 2024-04-10 | 2024-04-11 | 1-1980 |  |  |  | -80d | 0d | MBRT NEW |  | ELECRICAL SUB | 16 | 1-2000 | 1-2000 | ZONE-1 | SPRING | LIGHTING | PRIME |
| 1-1990 |  | SCL Commissioning Inspection, MAD & BOYLSTON CENTER ISLAND | 10d | 2024-04-12 | 2024-04-25 | 1-2000 |  |  |  | -80d | 0d | MBRT NEW |  | ELECRICAL SUB | 80 | 1-1990 | 1-1990 | ZONE-1 | SPRING | LIGHTING | PRIME |
| 1-1995 |  | COMMISSION LIGHTING, MAD & BOYLSTON CENTER ISLAND | 2d | 2024-04-26 | 2024-04-29 | 1-1990 |  |  |  | -80d | 67d | MBRT NEW [16 h] | 16 | ELECRICAL SUB | 16 | 1-1995 | 1-1995 | ZONE-1 | SPRING | LIGHTING | PRIME |

| ID | WBS | Activity | Duration | Start | Finish | Predecessors | Complete | Total float | Free float | Resources | Cost | Actual cost | user_text2 | user_number6 | user_text10 | user_text8 | MBRT-ZONE | MBRT-LOCATION | MBRT-TYPE | MBRT-RESP |
| --- | --- | --- | --- | --- | --- | --- | --- | --- | --- | --- | --- | --- | --- | --- | --- | --- | --- | --- | --- | --- |
|  | 21 | **WORK TO COMPLETE AFTER SIGNAL AND LIGHTING IS COMMISSIONED** |  | 2023-10-13 | 2024-07-19 |  |  |  |  |  |  |  |  |  |  |  |  |  |  |  |
|  | 20 | **7TH AND SPRING** |  | 2024-05-28 | 2024-06-04 |  |  |  |  |  |  |  |  |  |  |  |  |  |  |  |
| 1-2015 |  | REMOVE POLES AND CABINETS | 2d | 2024-05-28 | 2024-05-29 | 1-1520, 1-0849 |  | -111d | 0d | MBRT ADDED [16 h] | 16 |  | ELECRICAL SUB | 16 | 1-2015 | 1-2015 | ZONE-1 | SPRING | LIGHTING | PRIME |
| 1-2020 |  | REMOVE POLE FOUNDATIONS | 1d | 2024-05-30 | 2024-05-30 | 1-2015 |  | -111d | 0d | MBRT ADDED [8 h] | 8 |  | ELECRICAL SUB | 8 | 1-2020 | 1-2020 | ZONE-1 | SPRING | LIGHTING | PRIME |
| 1-2025 |  | GRADE SIDEWALK | 1d | 2024-05-31 | 2024-05-31 | 1-2020 |  | -111d | 0d | MBRT ADDED [8 h] | 8 |  | ELECRICAL SUB | 8 | 1-2025 | 1-2025 | ZONE-1 | SPRING | LIGHTING | PRIME |
| 1-2030 |  | POUR REMAINING SIDEWALK | 2d | 2024-06-03 | 2024-06-04 | 1-2025 |  | -111d | 0d | MBRT ADDED [16 h] | 16 |  | ELECRICAL SUB | 16 | 1-2030 | 1-2030 | ZONE-1 | SPRING | LIGHTING | PRIME |
|  | 1 | **8TH AND SPRING** |  | 2024-04-23 | 2024-06-07 |  |  |  |  |  |  |  |  |  |  |  |  |  |  |  |
| 1-2035 |  | REMOVE TEMP LIGHTING | 1d | 2024-04-23 | 2024-04-23 | 1-1540, 1-0863 |  | -85d | 0d | MBRT ADDED [8 h] | 8 |  | ELECRICAL SUB | 8 | 1-2035 | 1-2035 | ZONE-1 | SPRING | LIGHTING | PRIME |
| 1-2040 |  | REMOVE LIGHT POLES | 1d | 2024-04-24 | 2024-04-24 | 1-2035 |  | -85d | 26d | MBRT ADDED [8 h] | 8 |  | ELECRICAL SUB | 8 | 1-2040 | 1-2040 | ZONE-1 | SPRING | LIGHTING | PRIME |
| 1-2045 |  | REMOVE FOUNDATION | 1d | 2024-06-03 | 2024-06-03 | 1-2040, 1-2025 |  | -111d | 1d | MBRT ADDED [8 h] | 8 |  | ELECRICAL SUB | 8 | 1-2045 | 1-2045 | ZONE-1 | SPRING | LIGHTING | PRIME |
| 1-2050 |  | GRADE SIDEWALKS | 1d | 2024-06-05 | 2024-06-05 | 1-2045, 1-2030 |  | -111d | 0d | MBRT ADDED [8 h] | 8 |  | ELECRICAL SUB | 8 | 1-2050 | 1-2050 | ZONE-1 | SPRING | LIGHTING | PRIME |
| 1-2075 |  | POUR SIDEWALKS | 2d | 2024-06-06 | 2024-06-07 | 1-2050 |  | -111d | 27d | MBRT ADDED [16 h] | 16 |  | ELECRICAL SUB | 16 | 1-2075 | 1-2075 | ZONE-1 | SPRING | LIGHTING | PRIME |
|  | 2 | **9TH AND SPRING** |  | 2024-07-09 | 2024-07-12 |  |  |  |  |  |  |  |  |  |  |  |  |  |  |  |
| 1-2055 |  | REMOVE TEMP LIGHTING | 1d | 2024-07-09 | 2024-07-09 | 1-1840 |  | -138d | 0d | MBRT ADDED [8 h] | 8 |  | ELECRICAL SUB | 8 | 1-2055 | 1-2055 | ZONE-1 | SPRING | LIGHTING | PRIME |
| 1-2060 |  | REMOVE LIGHT POLE NE CORNER | 1d | 2024-07-10 | 2024-07-10 | 1-2055 |  | -138d | 0d | MBRT ADDED [8 h] | 8 |  | ELECRICAL SUB | 8 | 1-2060 | 1-2060 | ZONE-1 | SPRING | LIGHTING | PRIME |
| 1-2065 |  | REMOVE FOUNDATION | 1d | 2024-07-11 | 2024-07-11 | 1-2060, 1-2045 |  | -138d | 0d | MBRT ADDED [8 h] | 8 |  | ELECRICAL SUB | 8 | 1-2065 | 1-2065 | ZONE-1 | SPRING | LIGHTING | PRIME |
| 1-2070 |  | COMPLETE LANDSCAPE | 1d | 2024-07-12 | 2024-07-12 | 1-2065 |  | -133d | 14d | MBRT ADDED [8 h] | 8 |  | ELECRICAL SUB | 8 | 1-2070 | 1-2070 | ZONE-1 | SPRING | LIGHTING | PRIME |
|  | 3 | **1ST AND MADISON** |  | 2024-02-12 | 2024-07-19 |  |  |  |  |  |  |  |  |  |  |  |  |  |  |  |
| 1-2080 |  | REMOVE PEDESTAL | 1d | 2024-02-12 A | 2024-02-12 A | 1-0890 | 100% |  |  | MBRT ADDED [8 h] | 8 | 8 | ELECRICAL SUB | 8 | 1-2080 | 1-2080 | ZONE-1 | SPRING | LIGHTING | PRIME |
| 1-2085 |  | REMOVE PEDESTAL FOUNDATION | 1d | 2024-07-12 | 2024-07-12 | 1-2080, 1-2065 |  | -138d | 0d | MBRT ADDED [8 h] | 8 |  | ELECRICAL SUB | 8 | 1-2085 | 1-2085 | ZONE-1 | SPRING | LIGHTING | PRIME |
| 1-2090 |  | REMOVE SIDEWALKS | 1d | 2024-07-15 | 2024-07-15 | 1-2085 |  | -138d | 0d | MBRT ADDED [8 h] | 8 |  | ELECRICAL SUB | 8 | 1-2090 | 1-2090 | ZONE-1 | SPRING | LIGHTING | PRIME |
| 1-2095 |  | GRADE SIDEWALKS | 1d | 2024-07-16 | 2024-07-16 | 1-2090 |  | -138d | 0d | MBRT ADDED [8 h] | 8 |  | ELECRICAL SUB | 8 | 1-2095 | 1-2095 | ZONE-1 | SPRING | LIGHTING | PRIME |
| 1-2100 |  | CURB RAMP | 2d | 2024-07-17 | 2024-07-18 | 1-2095, 1-2075 |  | -138d | 0d | MBRT ADDED [16 h] | 16 |  | ELECRICAL SUB | 16 | 1-2100 | 1-2100 | ZONE-1 | SPRING | LIGHTING | PRIME |
| 1-2105 |  | POUR SIDEWALKS | 1d | 2024-07-19 | 2024-07-19 | 1-2100 |  | -138d | 0d | MBRT ADDED [8 h] | 8 |  | ELECRICAL SUB | 8 | 1-2105 | 1-2105 | ZONE-1 | SPRING | LIGHTING | PRIME |

| ID | WBS | Activity | Duration | Start | Finish | Predecessors | Complete | Planned start | Planned finish | Total float | Free float | Resources | Cost | Actual cost | user_text2 | user_number6 | user_text10 | user_text8 | MBRT-ZONE | MBRT-LOCATION | MBRT-TYPE | MBRT-RESP |
| --- | --- | --- | --- | --- | --- | --- | --- | --- | --- | --- | --- | --- | --- | --- | --- | --- | --- | --- | --- | --- | --- | --- |
|  | 4 | **3RD AND MADISON** |  | 2024-03-04 | 2024-04-04 |  |  |  |  |  |  |  |  |  |  |  |  |  |  |  |  |  |
| 1-2110 |  | REMOVE SIGNAL CABINET | 1d | 2024-03-04 A | 2024-03-04 A | 1-0907 | 100% |  |  |  |  | MBRT ADDED [8 h] | 8 |  | ELECRICAL SUB | 8 | 1-2110 | 1-2110 | ZONE-1 | SPRING | LIGHTING | PRIME |
| 1-2115 |  | REMOVE SIGNAL CABINET FOUNDATION | 1d | 2024-03-05 A | 2024-03-05 A | 1-2110 | 100% |  |  |  |  | MBRT ADDED [8 h] | 8 |  | ELECRICAL SUB | 8 | 1-2115 | 1-2115 | ZONE-1 | SPRING | LIGHTING | PRIME |
| 1-2125 |  | GRADE SIDEWALKS | 1d | 2024-04-02 | 2024-04-02 | 1-2115, 1-2115 FF |  |  |  | -63d | 0d | MBRT ADDED [8 h] | 8 |  | ELECRICAL SUB | 8 | 1-2125 | 1-2125 | ZONE-1 | SPRING | LIGHTING | PRIME |
| 1-2135 |  | POUR SIDEWALKS | 2d | 2024-04-03 | 2024-04-04 | 1-2125 |  |  |  | -63d | 84d | MBRT ADDED [16 h] | 16 |  | ELECRICAL SUB | 16 | 1-2135 | 1-2135 | ZONE-1 | SPRING | LIGHTING | PRIME |
|  | 5 | **5TH AND MADISON** |  | 2024-04-02 | 2024-04-08 |  |  |  |  |  |  |  |  |  |  |  |  |  |  |  |  |  |
| 1-2140 |  | REMOVE TEMP LIGHTING | 2d | 2024-04-02 | 2024-04-03 | 1-1795, 1-0919 |  |  |  | -65d | 0d | MBRT ADDED [16 h] | 16 |  | ELECRICAL SUB | 16 | 1-2140 | 1-2140 | ZONE-1 | SPRING | LIGHTING | PRIME |
| 1-2145 |  | GRADE SIDEWALKS | 1d | 2024-04-04 | 2024-04-04 | 1-2140 |  |  |  | -65d | 0d | MBRT ADDED [8 h] | 8 |  | ELECRICAL SUB | 8 | 1-2145 | 1-2145 | ZONE-1 | SPRING | LIGHTING | PRIME |
| 1-2150 |  | POUR SIDEWALKS | 2d | 2024-04-05 | 2024-04-08 | 1-2145 |  |  |  | -65d | 82d | MBRT ADDED [16 h] | 16 |  | ELECRICAL SUB | 16 | 1-2150 | 1-2150 | ZONE-1 | SPRING | LIGHTING | PRIME |
|  | 6 | **6TH AND MADISON** |  | 2024-02-08 | 2024-03-20 |  |  |  |  |  |  |  |  |  |  |  |  |  |  |  |  |  |
| 1-2170 |  | REMOVE TEMP SIGNAL | 2d | 2024-02-08 A | 2024-02-09 A | 1-0932 | 100% | 2024-03-07 | 2024-03-08 |  |  | MBRT ADDED [16 h] | 16 | 16 | ELECRICAL SUB | 16 | 1-2170 | 1-2170 | ZONE-1 | SPRING | LIGHTING | PRIME |
| 1-2175 |  | REMOVE SIGNAL CABINET | 1d | 2024-02-08 A | 2024-02-09 A | 1-2170 | 100% | 2024-03-11 | 2024-03-11 |  |  | MBRT ADDED [8 h] | 8 | 16 | ELECRICAL SUB | 16 | 1-2175 | 1-2175 | ZONE-1 | SPRING | LIGHTING | PRIME |
| 1-2180 |  | REMOVE SIGNAL CABINET FOUNDATION | 1d | 2024-03-04 A | 2024-03-04 A | 1-2175 | 100% |  |  |  |  | MBRT ADDED [8 h] | 8 |  | ELECRICAL SUB | 8 | 1-2180 | 1-2180 | ZONE-1 | SPRING | LIGHTING | PRIME |
| 1-2185 |  | GRADE SIDEWALKS | 1d | 2024-03-18 A | 2024-03-19 A | 1-2180 | 100% | 2024-04-02 | 2024-04-02 |  |  | MBRT ADDED [8 h] | 8 |  | ELECRICAL SUB | 8 | 1-2185 | 1-2185 | ZONE-1 | SPRING | LIGHTING | PRIME |
| 1-2195 |  | POUR SIDEWALKS | 2d | 2024-03-20 A | 2024-03-20 A | 1-2185 | 100% | 2024-03-06 | 2024-03-07 |  |  | MBRT ADDED [16 h] | 16 |  | ELECRICAL SUB | 16 | 1-2195 | 1-2195 | ZONE-1 | SPRING | LIGHTING | PRIME |
|  | 7 | **7TH AND MADISON** |  | 2024-03-28 | 2024-04-08 |  |  |  |  |  |  |  |  |  |  |  |  |  |  |  |  |  |
| 1-2200 |  | REMOVE OLD SIGNAL SYSTEM | 3d | 2024-03-28 A | 2024-04-01 A | 1-0946 | 100% |  |  |  |  | MBRT ADDED [24 h] | 24 |  | ELECRICAL SUB | 24 | 1-2200 | 1-2200 | ZONE-1 | SPRING | LIGHTING | PRIME |
| 1-2205 |  | REMOVE TEMP LIGHITNG | 2d | 2024-04-02 | 2024-04-03 | 1-2200, 1-1815 |  |  |  | -65d | 0d | MBRT ADDED [16 h] | 16 |  | ELECRICAL SUB | 16 | 1-2205 | 1-2205 | ZONE-1 | SPRING | LIGHTING | PRIME |
| 1-2215 |  | GRADE SIDEWALKS | 1d | 2024-04-04 | 2024-04-04 | 1-2205 |  |  |  | -65d | 0d | MBRT ADDED [8 h] | 8 |  | ELECRICAL SUB | 8 | 1-2215 | 1-2215 | ZONE-1 | SPRING | LIGHTING | PRIME |
| 1-2225 |  | POUR SIDEWALKS | 2d | 2024-04-05 | 2024-04-08 | 1-2215 |  |  |  | -65d | 82d | MBRT ADDED [16 h] | 16 |  | ELECRICAL SUB | 16 | 1-2225 | 1-2225 | ZONE-1 | SPRING | LIGHTING | PRIME |
|  | 8 | **8TH AND MADISON** |  | 2024-03-04 | 2024-04-16 |  |  |  |  |  |  |  |  |  |  |  |  |  |  |  |  |  |
| 1-2230 |  | REMOVE EXISTING SIGNAL SYSTEM | 3d | 2024-03-04 A | 2024-03-06 A | 1-0960, 1-2170 | 100% |  |  |  |  | MBRT ADDED [24 h] | 24 |  | ELECRICAL SUB | 24 | 1-2230 | 1-2230 | ZONE-1 | SPRING | LIGHTING | PRIME |
| 1-2235 |  | REMOVE STRAIN POLES | 2d | 2024-03-07 A | 2024-03-08 A | 1-2230 | 100% |  |  |  |  | MBRT ADDED [16 h] | 16 |  | ELECRICAL SUB | 16 | 1-2235 | 1-2235 | ZONE-1 | SPRING | LIGHTING | PRIME |
| 1-2240 |  | REMOVE TEMP LIGHTING | 2d | 2024-03-11 A | 2024-03-12 A | 1-2235 | 100% |  |  |  |  | MBRT ADDED [16 h] | 16 |  | ELECRICAL SUB | 16 | 1-2240 | 1-2240 | ZONE-1 | SPRING | LIGHTING | PRIME |
| 1-2245 |  | REMOVE FOUNDATION 1ST CORNER | 1d | 2024-03-13 A | 2024-03-15 A | 1-2240 | 100% | 2024-03-13 | 2024-03-13 |  |  | MBRT ADDED [8 h] | 8 |  | ELECRICAL SUB | 8 | 1-2245 | 1-2245 | ZONE-1 | SPRING | LIGHTING | PRIME |
| 1-2250 |  | GRADE SIDEWALKS 1ST CORNER | 1d | 2024-03-18 A | 2024-03-19 A | 1-2245 | 100% | 2024-03-14 | 2024-03-14 |  |  | MBRT ADDED [8 h] | 8 |  | ELECRICAL SUB | 8 | 1-2250 | 1-2250 | ZONE-1 | SPRING | LIGHTING | PRIME |
| 1-2255 |  | CURB RAMP 1ST CORNER | 2d | 2024-03-20 A | 2024-03-21 A | 1-2250 | 100% | 2024-03-15 | 2024-03-18 |  |  | MBRT ADDED [16 h] | 16 |  | ELECRICAL SUB | 16 | 1-2255 | 1-2255 | ZONE-1 | SPRING | LIGHTING | PRIME |
| 1-2260 |  | POUR SIDEWALKS 1ST CORNER | 1d | 2024-03-22 A | 2024-03-22 A | 1-2255 | 100% | 2024-03-19 | 2024-03-19 |  |  | MBRT ADDED [8 h] | 8 |  | ELECRICAL SUB | 8 | 1-2260 | 1-2260 | ZONE-1 | SPRING | LIGHTING | PRIME |
| 1-2265 |  | REMOVE FOUNDATION 2ND CORNER | 1d | 2024-03-25 A | 2024-03-26 A | 1-2260 | 100% | 2024-03-20 | 2024-03-20 |  |  | MBRT ADDED [8 h] | 8 |  | ELECRICAL SUB | 8 | 1-2265 | 1-2265 | ZONE-1 | SPRING | LIGHTING | PRIME |
| 1-2270 |  | GRADE SIDEWALKS 2ND CORNER | 1d | 2024-03-27 A | 2024-03-27 A | 1-2265 | 100% | 2024-03-21 | 2024-03-21 |  |  | MBRT ADDED [8 h] | 8 |  | ELECRICAL SUB | 8 | 1-2270 | 1-2270 | ZONE-1 | SPRING | LIGHTING | PRIME |
| 1-2275 |  | CURB RAMP 2ND CORNER | 2d | 2024-03-28 A | 2024-03-29 A | 1-2270 | 100% | 2024-03-22 | 2024-03-25 |  |  | MBRT ADDED [16 h] | 16 |  | ELECRICAL SUB | 16 | 1-2275 | 1-2275 | ZONE-1 | SPRING | LIGHTING | PRIME |
| 1-2280 |  | POUR SIDEWALKS 2ND CORNER | 1d | 2024-04-02 | 2024-04-02 | 1-2275 |  |  |  | -71d | 0d | MBRT ADDED [8 h] | 8 |  | ELECRICAL SUB | 8 | 1-2280 | 1-2280 | ZONE-1 | SPRING | LIGHTING | PRIME |
| 1-2285 |  | REMOVE FOUNDATION 3RD CORNER | 1d | 2024-04-03 | 2024-04-03 | 1-2280 |  |  |  | -71d | 0d | MBRT ADDED [8 h] | 8 |  | ELECRICAL SUB | 8 | 1-2285 | 1-2285 | ZONE-1 | SPRING | LIGHTING | PRIME |
| 1-2290 |  | GRADE SIDEWALKS 3RD CORNER | 1d | 2024-04-04 | 2024-04-04 | 1-2285 |  |  |  | -71d | 0d | MBRT ADDED [8 h] | 8 |  | ELECRICAL SUB | 8 | 1-2290 | 1-2290 | ZONE-1 | SPRING | LIGHTING | PRIME |
| 1-2295 |  | CURB RAMP 3RD CORNER | 2d | 2024-04-05 | 2024-04-08 | 1-2290 |  |  |  | -71d | 0d | MBRT ADDED [16 h] | 16 |  | ELECRICAL SUB | 16 | 1-2295 | 1-2295 | ZONE-1 | SPRING | LIGHTING | PRIME |
| 1-2300 |  | POUR SIDEWALKS 3RD CORNER | 1d | 2024-04-09 | 2024-04-09 | 1-2295 |  |  |  | -71d | 0d | MBRT ADDED [8 h] | 8 |  | ELECRICAL SUB | 8 | 1-2300 | 1-2300 | ZONE-1 | SPRING | LIGHTING | PRIME |
| 1-2305 |  | REMOVE FOUNDATION 4TH CORNER | 1d | 2024-04-10 | 2024-04-10 | 1-2300 |  |  |  | -71d | 0d | MBRT ADDED [8 h] | 8 |  | ELECRICAL SUB | 8 | 1-2305 | 1-2305 | ZONE-1 | SPRING | LIGHTING | PRIME |
| 1-2310 |  | GRADE SIDEWALKS 4TH CORNER | 1d | 2024-04-11 | 2024-04-11 | 1-2305 |  |  |  | -71d | 0d | MBRT ADDED [8 h] | 8 |  | ELECRICAL SUB | 8 | 1-2310 | 1-2310 | ZONE-1 | SPRING | LIGHTING | PRIME |
| 1-2315 |  | CURB RAMP 4TH CORNER | 2d | 2024-04-12 | 2024-04-15 | 1-2310 |  |  |  | -71d | 0d | MBRT ADDED [16 h] | 16 |  | ELECRICAL SUB | 16 | 1-2315 | 1-2315 | ZONE-1 | SPRING | LIGHTING | PRIME |
| 1-2320 |  | POUR SIDEWALKS 4TH CORNER | 1d | 2024-04-16 | 2024-04-16 | 1-2315 |  |  |  | -71d | 76d | MBRT ADDED [8 h] | 8 |  | ELECRICAL SUB | 8 | 1-2320 | 1-2320 | ZONE-1 | SPRING | LIGHTING | PRIME |

| ID | WBS | Activity | Duration | Start | Finish | Predecessors | Complete | Remaining | Planned start | Planned finish | Total float | Free float | Resources | Cost | Actual cost | user_text2 | user_number6 | user_text10 | user_text8 | MBRT-ZONE | MBRT-LOCATION | MBRT-TYPE | MBRT-RESP |
| --- | --- | --- | --- | --- | --- | --- | --- | --- | --- | --- | --- | --- | --- | --- | --- | --- | --- | --- | --- | --- | --- | --- | --- |
|  | 9 | **9TH AND MADISON** |  | 2024-02-28 | 2024-05-15 |  |  |  |  |  |  |  |  |  |  |  |  |  |  |  |  |  |  |
| 1-2325 |  | REMOVE EXISTING SIGNAL SYSTEM | 3d | 2024-02-28 A | 2024-02-29 A | 1-0975 | 100% |  | 2024-06-06 | 2024-06-10 |  |  | MBRT ADDED [24 h] | 24 | 16 | ELECRICAL SUB | 16 | 1-2325 | 1-2325 | ZONE-1 | SPRING | LIGHTING | PRIME |
| 1-2330 |  | REMOVE STRAIN POLES | 2d | 2024-03-01 A | 2024-04-05 | 1-2325, 1-0983 SS |  | 4d | 2024-06-11 | 2024-06-12 | -69d | 0d | MBRT ADDED [16 h] | 16 | 16 | ELECRICAL SUB | 8 | 1-2330 | 1-2330 | ZONE-1 | SPRING | LIGHTING | PRIME |
| 1-2340 |  | REMOVE FOUNDATION 1ST CORNER | 1d | 2024-03-06 A | 2024-03-06 A | 1-2325 | 100% |  |  |  |  |  | MBRT ADDED [8 h] | 8 |  | ELECRICAL SUB | 8 | 1-2340 | 1-2340 | ZONE-1 | SPRING | LIGHTING | PRIME |
| 1-2345 |  | GRADE SIDEWALKS 1ST CORNER | 1d | 2024-03-07 A | 2024-03-07 A | 1-2340 | 100% |  |  |  |  |  | MBRT ADDED [8 h] | 8 |  | ELECRICAL SUB | 8 | 1-2345 | 1-2345 | ZONE-1 | SPRING | LIGHTING | PRIME |
| DSC-719 |  | DSC 719 9th & Madison direct bury poles to be removed | 5d | 2024-03-07 A | 2024-04-05 | 1-2330 SS | 20% | 4d | 2024-03-04 | 2024-03-08 | -69d | 0d |  |  |  |  |  |  |  |  |  |  |  |
| 1-2350 |  | CURB RAMP 1ST CORNER | 2d | 2024-03-08 A | 2024-03-11 A | 1-2345 | 100% |  |  |  |  |  | MBRT ADDED [16 h] | 16 |  | ELECRICAL SUB | 16 | 1-2350 | 1-2350 | ZONE-1 | SPRING | LIGHTING | PRIME |
| 1-2355 |  | POUR SIDEWALKS 1ST CORNER | 1d | 2024-03-12 A | 2024-03-12 A | 1-2350 | 100% |  |  |  |  |  | MBRT ADDED [8 h] | 8 |  | ELECRICAL SUB | 8 | 1-2355 | 1-2355 | ZONE-1 | SPRING | LIGHTING | PRIME |
| 1-2360 |  | REMOVE FOUNDATION 2ND CORNER | 1d | 2024-03-13 A | 2024-03-13 A | 1-2355 | 100% |  |  |  |  |  | MBRT ADDED [8 h] | 8 |  | ELECRICAL SUB | 8 | 1-2360 | 1-2360 | ZONE-1 | SPRING | LIGHTING | PRIME |
| 1-2365 |  | GRADE SIDEWALKS 2ND CORNER | 1d | 2024-03-14 A | 2024-03-14 A | 1-2360 | 100% |  |  |  |  |  | MBRT ADDED [8 h] | 8 |  | ELECRICAL SUB | 8 | 1-2365 | 1-2365 | ZONE-1 | SPRING | LIGHTING | PRIME |
| 1-2370 |  | CURB RAMP 2ND CORNER | 2d | 2024-03-15 A | 2024-03-18 A | 1-2365 | 100% |  |  |  |  |  | MBRT ADDED [16 h] | 16 |  | ELECRICAL SUB | 16 | 1-2370 | 1-2370 | ZONE-1 | SPRING | LIGHTING | PRIME |
| 1-2375 |  | POUR SIDEWALKS 2ND CORNER | 1d | 2024-03-19 A | 2024-03-19 A | 1-2370 | 100% |  |  |  |  |  | MBRT ADDED [8 h] | 8 |  | ELECRICAL SUB | 8 | 1-2375 | 1-2375 | ZONE-1 | SPRING | LIGHTING | PRIME |
| 1-2380 |  | REMOVE FOUNDATION 3RD CORNER | 1d | 2024-03-20 A | 2024-03-20 A | 1-2375 | 100% |  |  |  |  |  | MBRT ADDED [8 h] | 8 |  | ELECRICAL SUB | 8 | 1-2380 | 1-2380 | ZONE-1 | SPRING | LIGHTING | PRIME |
| 1-2385 |  | GRADE SIDEWALKS 3RD CORNER | 1d | 2024-03-21 A | 2024-03-21 A | 1-2380 | 100% |  |  |  |  |  | MBRT ADDED [8 h] | 8 |  | ELECRICAL SUB | 8 | 1-2385 | 1-2385 | ZONE-1 | SPRING | LIGHTING | PRIME |
| 1-2390 |  | CURB RAMP 3RD CORNER | 2d | 2024-03-22 A | 2024-03-25 A | 1-2385 | 100% |  |  |  |  |  | MBRT ADDED [16 h] | 16 |  | ELECRICAL SUB | 16 | 1-2390 | 1-2390 | ZONE-1 | SPRING | LIGHTING | PRIME |
| 1-2395 |  | POUR SIDEWALKS 3RD CORNER | 1d | 2024-03-26 A | 2024-03-26 A | 1-2390 | 100% |  |  |  |  |  | MBRT ADDED [8 h] | 8 |  | ELECRICAL SUB | 8 | 1-2395 | 1-2395 | ZONE-1 | SPRING | LIGHTING | PRIME |
| 1-2400 |  | REMOVE FOUNDATION 4TH CORNER (SWC) | 1d | 2024-04-08 | 2024-04-08 | 1-2395, DSC-719, 1-2330 |  |  |  |  | -69d | 0d | MBRT ADDED [8 h] | 8 |  | ELECRICAL SUB | 8 | 1-2400 | 1-2400 | ZONE-1 | SPRING | LIGHTING | PRIME |
| 1-2405 |  | GRADE SIDEWALKS 4TH CORNER | 1d | 2024-04-09 | 2024-04-09 | 1-2400 |  |  |  |  | -69d | 0d | MBRT ADDED [8 h] | 8 |  | ELECRICAL SUB | 8 | 1-2405 | 1-2405 | ZONE-1 | SPRING | LIGHTING | PRIME |
| 1-2410 |  | CURB RAMP 4TH CORNER | 2d | 2024-04-10 | 2024-04-11 | 1-2405 |  |  |  |  | -69d | 0d | MBRT ADDED [16 h] | 16 |  | ELECRICAL SUB | 16 | 1-2410 | 1-2410 | ZONE-1 | SPRING | LIGHTING | PRIME |
| 1-2415 |  | POUR SIDEWALKS 4TH CORNER | 1d | 2024-04-12 | 2024-04-12 | 1-2410 |  |  |  |  | -69d | 78d | MBRT ADDED [8 h] | 8 |  | ELECRICAL SUB | 8 | 1-2415 | 1-2415 | ZONE-1 | SPRING | LIGHTING | PRIME |
| 1-2335 |  | REMOVE TEMP LIGHTING | 2d | 2024-05-10 | 2024-05-13 | 1-2330, 1-1870 |  |  |  |  | -92d | 0d | MBRT ADDED [16 h] | 16 |  | ELECRICAL SUB | 16 | 1-2335 | 1-2335 | ZONE-1 | SPRING | LIGHTING | PRIME |
| 1-2420 |  | GRADE SIDEWALK AFTER TEMP LIGHTING IS REMOVED | 1d | 2024-05-14 | 2024-05-14 | 1-2335 |  |  |  |  | -92d | 0d | MBRT ADDED [8 h] | 8 |  | ELECRICAL SUB | 8 | 1-2420 | 1-2420 | ZONE-1 | SPRING | LIGHTING | PRIME |
| 1-2425 |  | POUR REMAINING SIDEWALKS | 1d | 2024-05-15 | 2024-05-15 | 1-2580, 1-2420 |  |  |  |  | -92d | 55d | MBRT ADDED [8 h] | 8 |  | ELECRICAL SUB | 8 | 1-2425 | 1-2425 | ZONE-1 | SPRING | LIGHTING | PRIME |
|  | 11 | **TERRY AND MADISON** |  | 2023-10-13 | 2024-05-16 |  |  |  |  |  |  |  |  |  |  |  |  |  |  |  |  |  |  |
| 1-2590 |  | DELAY AWAITING SCL TO DECOMISION SERVICE | 0d | 2023-10-13 A | 2024-02-05 A | 1-1573 SS | 100% |  | 2023-10-02 | 2023-10-02 |  |  | MBRT ADDED |  |  |  | 608 |  |  |  |  |  |  |
| 1-2525 |  | REMOVE EXISTING SIGNAL SYSTEM | 2d | 2024-02-06 A | 2024-02-07 A | 1-0988, 1-2590 | 100% |  | 2023-12-18 | 2023-12-19 |  |  | MBRT ADDED [16 h] | 16 | 16 | ELECRICAL SUB | 16 | 1-2525 | 1-2525 | ZONE-1 | SPRING | LIGHTING | PRIME |
| 1-2530 |  | REMOVE STRAIN POLES | 1d | 2024-02-08 A | 2024-02-08 A | 1-2525 | 100% |  | 2023-12-20 | 2023-12-20 |  |  | MBRT ADDED [8 h] | 8 | 8 | ELECRICAL SUB | 8 | 1-2530 | 1-2530 | ZONE-1 | SPRING | LIGHTING | PRIME |
| DSC-732 |  | DSC 732 Terry Exist. Fdn. Unknown Utility Conflict w.Rmoval | 5d | 2024-02-09 A | 2024-03-01 A | 1-2530 | 100% |  | 2024-03-04 | 2024-03-08 |  |  |  |  |  |  |  |  |  |  |  |  |  |
| DSC-733 |  | DSC 733 Terry existing delapidated HH | 5d | 2024-02-09 A | 2024-03-01 A | 1-2530 | 100% |  | 2024-03-04 | 2024-03-08 |  |  |  |  |  |  |  |  |  |  |  |  |  |
| 1-2540 |  | REMOVE FOUNDATION 1ST CORNER | 1d | 2024-03-04 A | 2024-03-04 A | 1-2530, DSC-733, DSC-732 | 100% |  |  |  |  |  | MBRT ADDED [8 h] | 8 |  | ELECRICAL SUB | 8 | 1-2540 | 1-2540 | ZONE-1 | SPRING | LIGHTING | PRIME |
| 1-2545 |  | GRADE SIDEWALKS 1ST CORNER | 1d | 2024-03-05 A | 2024-03-05 A | 1-2540 | 100% |  |  |  |  |  | MBRT ADDED [8 h] | 8 |  | ELECRICAL SUB | 8 | 1-2545 | 1-2545 | ZONE-1 | SPRING | LIGHTING | PRIME |
| 1-2550 |  | CURB RAMP 1ST CORNER | 2d | 2024-03-06 A | 2024-03-07 A | 1-2545 | 100% |  |  |  |  |  | MBRT ADDED [16 h] | 16 |  | ELECRICAL SUB | 16 | 1-2550 | 1-2550 | ZONE-1 | SPRING | LIGHTING | PRIME |
| 1-2555 |  | POUR SIDEWALKS 1ST CORNER | 1d | 2024-03-08 A | 2024-03-08 A | 1-2550 | 100% |  |  |  |  |  | MBRT ADDED [8 h] | 8 |  | ELECRICAL SUB | 8 | 1-2555 | 1-2555 | ZONE-1 | SPRING | LIGHTING | PRIME |
| 1-2560 |  | REMOVE FOUNDATION 2ND CORNER | 1d | 2024-03-11 A | 2024-03-11 A | 1-2555 | 100% |  |  |  |  |  | MBRT ADDED [8 h] | 8 |  | ELECRICAL SUB | 8 | 1-2560 | 1-2560 | ZONE-1 | SPRING | LIGHTING | PRIME |
| 1-2565 |  | GRADE SIDEWALKS 2ND CORNER | 1d | 2024-03-12 A | 2024-03-15 A | 1-2560 | 100% |  | 2024-03-12 | 2024-03-12 |  |  | MBRT ADDED [8 h] | 8 |  | ELECRICAL SUB | 8 | 1-2565 | 1-2565 | ZONE-1 | SPRING | LIGHTING | PRIME |
| 1-2570 |  | CURB RAMP 2ND CORNER | 2d | 2024-03-18 A | 2024-03-19 A | 1-2565 | 100% |  | 2024-03-13 | 2024-03-14 |  |  | MBRT ADDED [16 h] | 16 |  | ELECRICAL SUB | 16 | 1-2570 | 1-2570 | ZONE-1 | SPRING | LIGHTING | PRIME |
| 1-2575 |  | POUR SIDEWALKS 2ND CORNER | 10d | 2024-03-20 A | 2024-03-28 A | 1-2570 | 100% |  | 2024-03-15 | 2024-03-28 |  |  | MBRT ADDED [8 h] | 8 |  | ELECRICAL SUB | 8 | 1-2575 | 1-2575 | ZONE-1 | SPRING | LIGHTING | PRIME |
| 1-2535 |  | REMOVE TEMP LIGHTING | 2d | 2024-05-10 | 2024-05-13 | 1-2530, 1-1870 |  |  |  |  | -93d | 0d | MBRT ADDED [16 h] | 16 |  | ELECRICAL SUB | 16 | 1-2535 | 1-2535 | ZONE-1 | SPRING | LIGHTING | PRIME |
| 1-2580 |  | GRADE SIDEWALK AFTER TEMP LIGHITNG IS REMOVED | 1d | 2024-05-14 | 2024-05-14 | 1-2535 |  |  |  |  | -93d | 0d | MBRT ADDED [8 h] | 8 |  | ELECRICAL SUB | 8 | 1-2580 | 1-2580 | ZONE-1 | SPRING | LIGHTING | PRIME |
| 1-2585 |  | POUR REMAINING SIDEWALKS | 2d | 2024-05-15 | 2024-05-16 | 1-2580 |  |  |  |  | -93d | 54d | MBRT ADDED [16 h] | 16 |  | ELECRICAL SUB | 16 | 1-2585 | 1-2585 | ZONE-1 | SPRING | LIGHTING | PRIME |

| ID | WBS | Activity | Duration | Start | Finish | Predecessors | Complete | Remaining | Planned start | Planned finish | Total float | Free float | Resources | Cost | user_text2 | user_number6 | user_text10 | user_text8 | MBRT-ZONE | MBRT-LOCATION | MBRT-TYPE | MBRT-RESP | ~TEXT |
| --- | --- | --- | --- | --- | --- | --- | --- | --- | --- | --- | --- | --- | --- | --- | --- | --- | --- | --- | --- | --- | --- | --- | --- |
|  | 10 | **BOREN AND MADISON** |  | 2024-03-04 | 2024-06-11 |  |  |  |  |  |  |  |  |  |  |  |  |  |  |  |  |  |  |
| DSC-722 |  | DSC 722 Boren & Madison Exist. ITS Conflict w/removal of strain poles | 5d | 2024-03-04 A | 2024-04-08 | 1-2540 SS |  | 5d | 2024-03-04 | 2024-03-08 | -89d | 0d |  |  |  |  |  |  |  |  |  |  |  |
| 1-2430 |  | REMOVE EXISTING SIGNAL SYSTEM | 3d | 2024-04-02 | 2024-04-04 | 1-1003 |  |  |  |  | -87d | 2d | MBRT ADDED [24 h] | 24 | ELECRICAL SUB | 24 | 1-2430 | 1-2430 | ZONE-1 | SPRING | LIGHTING | PRIME |  |
| 1-2435 |  | REMOVE STRAIN POLES | 2d | 2024-04-09 | 2024-04-10 | 1-2430, DSC-722 |  |  |  |  | -89d | 21d | MBRT ADDED [16 h] | 16 | ELECRICAL SUB | 16 | 1-2435 | 1-2435 | ZONE-1 | SPRING | LIGHTING | PRIME |  |
| 1-2440 |  | REMOVE TEMP LIGHTING | 2d | 2024-05-10 | 2024-05-13 | 1-2435, 1-1870 |  |  |  |  | -110d | 0d | MBRT ADDED [16 h] | 16 | ELECRICAL SUB | 16 | 1-2440 | 1-2440 | ZONE-1 | SPRING | LIGHTING | PRIME | POLES1 |
| 1-2445 |  | REMOVE FOUNDATION 1ST CORNER | 1d | 2024-05-14 | 2024-05-14 | 1-2440, 1-2435 |  |  |  |  | -110d | 0d | MBRT ADDED [8 h] | 8 | ELECRICAL SUB | 8 | 1-2445 | 1-2445 | ZONE-1 | SPRING | LIGHTING | PRIME | POLES1 |
| 1-2450 |  | GRADE SIDEWALKS 1ST CORNER | 1d | 2024-05-15 | 2024-05-15 | 1-2445 |  |  |  |  | -110d | 0d | MBRT ADDED [8 h] | 8 | ELECRICAL SUB | 8 | 1-2450 | 1-2450 | ZONE-1 | SPRING | LIGHTING | PRIME | POLES1 |
| 1-2455 |  | CURB RAMP 1ST CORNER | 2d | 2024-05-16 | 2024-05-17 | 1-2450 |  |  |  |  | -110d | 0d | MBRT ADDED [16 h] | 16 | ELECRICAL SUB | 16 | 1-2455 | 1-2455 | ZONE-1 | SPRING | LIGHTING | PRIME | POLES1 |
| 1-2460 |  | POUR SIDEWALKS 1ST CORNER | 1d | 2024-05-20 | 2024-05-20 | 1-2455 |  |  |  |  | -110d | 0d | MBRT ADDED [8 h] | 8 | ELECRICAL SUB | 8 | 1-2460 | 1-2460 | ZONE-1 | SPRING | LIGHTING | PRIME | POLES1 |
| 1-2465 |  | REMOVE FOUNDATION 2ND CORNER | 1d | 2024-05-21 | 2024-05-21 | 1-2460 |  |  |  |  | -110d | 0d | MBRT ADDED [8 h] | 8 | ELECRICAL SUB | 8 | 1-2465 | 1-2465 | ZONE-1 | SPRING | LIGHTING | PRIME | POLES1 |
| 1-2470 |  | GRADE SIDEWALKS 2ND CORNER | 1d | 2024-05-22 | 2024-05-22 | 1-2465 |  |  |  |  | -110d | 0d | MBRT ADDED [8 h] | 8 | ELECRICAL SUB | 8 | 1-2470 | 1-2470 | ZONE-1 | SPRING | LIGHTING | PRIME | POLES1 |
| 1-2475 |  | CURB RAMP 2ND CORNER | 2d | 2024-05-23 | 2024-05-24 | 1-2470 |  |  |  |  | -110d | 0d | MBRT ADDED [16 h] | 16 | ELECRICAL SUB | 16 | 1-2475 | 1-2475 | ZONE-1 | SPRING | LIGHTING | PRIME | POLES1 |
| 1-2480 |  | POUR SIDEWALKS 2ND CORNER | 1d | 2024-05-28 | 2024-05-28 | 1-2475 |  |  |  |  | -110d | 0d | MBRT ADDED [8 h] | 8 | ELECRICAL SUB | 8 | 1-2480 | 1-2480 | ZONE-1 | SPRING | LIGHTING | PRIME | POLES1 |
| 1-2485 |  | REMOVE FOUNDATION 3RD CORNER | 1d | 2024-05-29 | 2024-05-29 | 1-2480 |  |  |  |  | -110d | 0d | MBRT ADDED [8 h] | 8 | ELECRICAL SUB | 8 | 1-2485 | 1-2485 | ZONE-1 | SPRING | LIGHTING | PRIME | POLES1 |
| 1-2490 |  | GRADE SIDEWALKS 3RD CORNER | 1d | 2024-05-30 | 2024-05-30 | 1-2485 |  |  |  |  | -110d | 0d | MBRT ADDED [8 h] | 8 | ELECRICAL SUB | 8 | 1-2490 | 1-2490 | ZONE-1 | SPRING | LIGHTING | PRIME | POLES1 |
| 1-2495 |  | CURB RAMP 3RD CORNER | 2d | 2024-05-31 | 2024-06-03 | 1-2490 |  |  |  |  | -110d | 0d | MBRT ADDED [16 h] | 16 | ELECRICAL SUB | 16 | 1-2495 | 1-2495 | ZONE-1 | SPRING | LIGHTING | PRIME | POLES1 |
| 1-2500 |  | POUR SIDEWALKS 3RD CORNER | 1d | 2024-06-04 | 2024-06-04 | 1-2495 |  |  |  |  | -110d | 0d | MBRT ADDED [8 h] | 8 | ELECRICAL SUB | 8 | 1-2500 | 1-2500 | ZONE-1 | SPRING | LIGHTING | PRIME | POLES1 |
| 1-2505 |  | REMOVE FOUNDATION 4TH CORNER | 1d | 2024-06-05 | 2024-06-05 | 1-2500 |  |  |  |  | -110d | 0d | MBRT ADDED [8 h] | 8 | ELECRICAL SUB | 8 | 1-2505 | 1-2505 | ZONE-1 | SPRING | LIGHTING | PRIME | POLES1 |
| 1-2510 |  | GRADE SIDEWALKS 4TH CORNER | 1d | 2024-06-06 | 2024-06-06 | 1-2505 |  |  |  |  | -110d | 0d | MBRT ADDED [8 h] | 8 | ELECRICAL SUB | 8 | 1-2510 | 1-2510 | ZONE-1 | SPRING | LIGHTING | PRIME | POLES1 |
| 1-2515 |  | CURB RAMP 4TH CORNER | 2d | 2024-06-07 | 2024-06-10 | 1-2510 |  |  |  |  | -110d | 0d | MBRT ADDED [16 h] | 16 | ELECRICAL SUB | 16 | 1-2515 | 1-2515 | ZONE-1 | SPRING | LIGHTING | PRIME | POLES1 |
| 1-2520 |  | POUR SIDEWALKS 4TH CORNER | 1d | 2024-06-11 | 2024-06-11 | 1-2515 |  |  |  |  | -110d | 37d | MBRT ADDED [8 h] | 8 | ELECRICAL SUB | 8 | 1-2520 | 1-2520 | ZONE-1 | SPRING | LIGHTING | PRIME | POLES1 |
|  | 13 | **MINOR AND MADISON** |  | 2024-03-28 | 2024-04-03 |  |  |  |  |  |  |  |  |  |  |  |  |  |  |  |  |  |  |
| 1-2650 |  | REMOVE SIGNAL CABINET | 1d | 2024-03-28 A | 2024-03-28 A | 1-1030 | 100% |  |  |  |  |  | MBRT ADDED [8 h] | 8 | ELECRICAL SUB | 8 | 1-2650 | 1-2650 | ZONE-1 | SPRING | LIGHTING | PRIME |  |
| 1-2655 |  | REMOVE SIGNAL CABINET FOUNDATION | 1d | 2024-03-29 A | 2024-03-29 A | 1-2650 | 100% |  |  |  |  |  | MBRT ADDED [8 h] | 8 | ELECRICAL SUB | 8 | 1-2655 | 1-2655 | ZONE-1 | SPRING | LIGHTING | PRIME |  |
| 1-2660 |  | GRADE SIDEWALKS | 1d | 2024-04-01 A | 2024-04-01 A | 1-2655 | 100% |  |  |  |  |  | MBRT ADDED [8 h] | 8 | ELECRICAL SUB | 8 | 1-2660 | 1-2660 | ZONE-1 | SPRING | LIGHTING | PRIME |  |
| 1-2665 |  | POUR SIDEWALKS | 2d | 2024-04-02 | 2024-04-03 | 1-2660 |  |  |  |  | -62d | 85d | MBRT ADDED [16 h] | 16 | ELECRICAL SUB | 16 | 1-2665 | 1-2665 | ZONE-1 | SPRING | LIGHTING | PRIME |  |

| ID | WBS | Activity | Duration | Start | Finish | Predecessors | Complete | Planned start | Planned finish | Total float | Free float | Resources | Cost | Actual cost | user_text2 | user_number6 | user_text10 | user_text8 | MBRT-ZONE | MBRT-LOCATION | MBRT-TYPE | MBRT-RESP | ~SELECT |
| --- | --- | --- | --- | --- | --- | --- | --- | --- | --- | --- | --- | --- | --- | --- | --- | --- | --- | --- | --- | --- | --- | --- | --- |
|  | 12 | **SUMMIT AND MADISON** |  | 2024-03-26 | 2024-04-09 |  |  |  |  |  |  |  |  |  |  |  |  |  |  |  |  |  |  |
| 1-2630 |  | REMOVE TEMP LIGHITNG | 1d | 2024-03-26 A | 2024-03-26 A | 1-1895 | 100% |  |  |  |  | MBRT ADDED [8 h] | 8 |  | ELECRICAL SUB | 8 | 1-2630 | 1-2630 | ZONE-1 | SPRING | LIGHTING | PRIME |  |
| 1-2620 |  | REMOVE SIGNAL CABINET | 1d | 2024-03-28 A | 2024-03-28 A | 1-1030 | 100% |  |  |  |  | MBRT ADDED [8 h] | 8 |  | ELECRICAL SUB | 8 | 1-2620 | 1-2620 | ZONE-1 | SPRING | LIGHTING | PRIME |  |
| 1-2625 |  | REMOVE POLE | 1d | 2024-03-29 A | 2024-03-29 A | 1-2620 | 100% |  |  |  |  | MBRT ADDED [8 h] | 8 |  | ELECRICAL SUB | 8 | 1-2625 | 1-2625 | ZONE-1 | SPRING | LIGHTING | PRIME |  |
| 1-2635 |  | REMOVE CABINET FOUNDATION | 1d | 2024-04-01 A | 2024-04-01 A | 1-2630, 1-2625 | 100% |  |  |  |  | MBRT ADDED [8 h] | 8 |  | ELECRICAL SUB | 8 | 1-2635 | 1-2635 | ZONE-1 | SPRING | LIGHTING | PRIME |  |
| 1-2640 |  | REMOVE MAST ARM FOUNDATION | 1d | 2024-04-02 | 2024-04-02 | 1-2635 |  |  |  | -66d | 0d | MBRT ADDED [8 h] | 8 |  | ELECRICAL SUB | 8 | 1-2640 | 1-2640 | ZONE-1 | SPRING | LIGHTING | PRIME |  |
| 1-2695 |  | GRADE SIDEWALK | 2d | 2024-04-03 | 2024-04-04 | 1-2640 |  |  |  | -66d | 0d | MBRT ADDED [16 h] | 16 |  | ELECRICAL SUB | 16 | 1-2695 | 1-2695 | ZONE-1 | SPRING | LIGHTING | PRIME |  |
| 1-2700 |  | POUR SIDEWALK | 3d | 2024-04-05 | 2024-04-09 | 1-2695 |  |  |  | -66d | 81d | MBRT ADDED [24 h] | 24 |  | ELECRICAL SUB | 24 | 1-2700 | 1-2700 | ZONE-1 | SPRING | LIGHTING | PRIME |  |
|  | 14 | **BOYLSTON AND MADISON** |  | 2024-02-21 | 2024-04-12 |  |  |  |  |  |  |  |  |  |  |  |  |  |  |  |  |  |  |
| 1-2670 |  | REMOVE CABINET | 1d | 2024-02-21 A | 2024-02-21 A | 1-1043 | 100% | 2024-05-08 | 2024-05-08 |  |  | MBRT ADDED [8 h] | 8 | 8 | ELECRICAL SUB | 8 | 1-2670 | 1-2670 | ZONE-1 | SPRING | LIGHTING | PRIME |  |
| 1-2675 |  | REMOVE PEDESTALS | 1d | 2024-02-22 A | 2024-02-22 A | 1-2670 | 100% | 2024-05-09 | 2024-05-09 |  |  | MBRT ADDED [8 h] | 8 | 8 | ELECRICAL SUB | 8 | 1-2675 | 1-2675 | ZONE-1 | SPRING | LIGHTING | PRIME |  |
| 1-2680 |  | REMOVE TEMP LIGHTING | 2d | 2024-04-05 | 2024-04-08 | 1-2675, 1-1920 |  |  |  | -69d | 0d | MBRT ADDED [16 h] | 16 |  | ELECRICAL SUB | 16 | 1-2680 | 1-2680 | ZONE-1 | SPRING | LIGHTING | PRIME |  |
| 1-2685 |  | REMOVE FOUNDATIONS | 1d | 2024-04-09 | 2024-04-09 | 1-2680 |  |  |  | -69d | 0d | MBRT ADDED [8 h] | 8 |  | ELECRICAL SUB | 8 | 1-2685 | 1-2685 | ZONE-1 | SPRING | LIGHTING | PRIME |  |
| 1-2690 |  | GRADE SIDEWALKS | 1d | 2024-04-10 | 2024-04-10 | 1-2685 |  |  |  | -69d | 0d | MBRT ADDED [8 h] | 8 |  | ELECRICAL SUB | 8 | 1-2690 | 1-2690 | ZONE-1 | SPRING | LIGHTING | PRIME |  |
| 1-2705 |  | POUR SIDEWALKS | 2d | 2024-04-11 | 2024-04-12 | 1-2690 |  |  |  | -69d | 78d | MBRT ADDED [16 h] | 16 |  | ELECRICAL SUB | 16 | 1-2705 | 1-2705 | ZONE-1 | SPRING | LIGHTING | PRIME |  |
|  | 20 | **KCM SERVICE CONECTIONS** |  | 2022-12-14 | 2024-05-20 |  |  |  |  |  |  |  |  |  |  |  |  |  |  |  |  |  |  |
|  | 7 | **8TH AND MADISON** |  | 2024-04-02 | 2024-05-20 |  |  |  |  |  |  |  |  |  |  |  |  |  |  |  |  |  |  |
| 1-9961 |  | SERVICE CABINET | 1d | 2024-04-02 | 2024-04-02 | 1-3130 |  |  |  | -95d | 0d | MBRT KCM [8 h] |  |  |  | 8 | 1-6620 | 1-6620 |  |  |  |  |  |
| 1-9976 |  | SDCI INSPECTION | 1d | 2024-04-03 | 2024-04-03 | 1-9961 |  |  |  | -95d | 0d | MBRT KCM [8 h] |  |  |  | 8 | 1-6623 | 1-6623 |  |  |  |  | x |
| 1-9966 |  | REQUEST KCM INSPECTION | 1d | 2024-04-04 | 2024-04-04 | 1-9961, 1-9976 |  |  |  | -95d | 0d | MBRT KCM [8 h] |  |  |  | 8 | 1-6621 | 1-6621 |  |  |  |  | x |
| 1-9971 |  | WAIT FOR KCM TO INSPECT | 5d | 2024-04-05 | 2024-04-11 | 1-9966 |  |  |  | -95d | 0d | MBRT KCM |  |  |  | 40 | 1-6622 | 1-6622 |  |  |  |  | x |
| 1-9981 |  | NOTIFY SCL FOR INSPECTION | 1d | 2024-04-12 | 2024-04-12 | 1-9976, 1-9971 |  |  |  | -95d | 0d | MBRT KCM |  |  |  | 8 | 1-6624 | 1-6624 |  |  |  |  | x |
| 1-9986 |  | 30 DAY WAIT FOR SCL TO INSPECT | 2d | 2024-04-15 | 2024-04-16 | 1-9981 |  |  |  | -95d | 0d | MBRT KCM |  |  |  | 16 | 1-6625 | 1-6625 |  |  |  |  | x |
| 1-9991 |  | SCL INSPECTION | 1d | 2024-04-17 | 2024-04-17 | 1-9986, 1-9971 |  |  |  | -95d | 0d | MBRT KCM [8 h] |  |  |  | 8 | 1-6626 | 1-6626 |  |  |  |  | x |
| 1-9996 |  | NOTIFY SCL TO COMMISION | 1d | 2024-04-18 | 2024-04-18 | 1-9991 |  |  |  | -95d | 0d | MBRT KCM |  |  |  | 8 | 1-6627 | 1-6627 |  |  |  |  | x |
| 1-10001 |  | 30 DAY WAIT FOR SCL TO COMMISION | 21d | 2024-04-19 | 2024-05-17 | 1-9996 |  |  |  | -95d | 0d | MBRT KCM |  |  |  | 168 | 1-6628 | 1-6628 |  |  |  |  | x |
| 1-10006 |  | COMMISION SERVICE | 1d | 2024-05-20 | 2024-05-20 | 1-10001 |  |  |  | -95d | 52d | MBRT KCM [8 h] |  |  |  | 8 | 1-6629 | 1-6629 |  |  |  |  | x |

| ID | WBS | Activity | Duration | Start | Finish | Predecessors | Complete | Planned start | Planned finish | Resources | ~SELECT | user_number6 | user_text10 | user_text8 |
| --- | --- | --- | --- | --- | --- | --- | --- | --- | --- | --- | --- | --- | --- | --- |
|  | 2 | **3RD AND SPRING** |  | 2022-12-14 | 2023-09-26 |  |  |  |  |  |  |  |  |  |
| 1-6609 |  | SERVICE CABINET | 1d | 2022-12-14 A | 2023-05-31 A | 1-0568 | 100% | 2022-12-14 | 2022-12-14 | MBRT KCM | x | 928 | 1-6609 | 1-6609 |
| 1-6612 |  | SDCI INSPECTION | 1d | 2023-06-02 A | 2023-06-02 A | 1-6609 | 100% |  |  | MBRT KCM [8 h] | x | 8 | 1-6612 | 1-6612 |
| 1-6610 |  | REQUEST KCM INSPECTION | 1d | 2023-06-08 A | 2023-06-08 A | 1-6609 | 100% |  |  | MBRT KCM [8 h] | x | 8 | 1-6610 | 1-6610 |
| 1-6611 |  | WAIT FOR KCM TO INSPECT | 4d | 2023-06-09 A | 2023-06-14 A | 1-6610 | 100% |  |  | MBRT KCM [32 h] | x | 32 | 1-6611 | 1-6611 |
| 1-6613 |  | NOTIFY SCL FOR INSPECTION | 1d | 2023-09-19 A | 2023-09-19 A | 1-6612 | 100% | 2023-09-11 | 2023-09-11 | MBRT KCM [8 h] | x | 8 | 1-6613 | 1-6613 |
| 1-6614 |  | 30 DAY WAIT FOR SCL TO INSPECT | 21d | 2023-09-20 A | 2023-09-20 A | 1-6613 | 100% | 2023-09-12 | 2023-10-10 | MBRT KCM | x | 8 | 1-6614 | 1-6614 |
| 1-6615 |  | SCL INSPECTION | 1d | 2023-09-21 A | 2023-09-21 A | 1-6614, 1-6611 | 100% | 2023-10-24 | 2023-10-24 | MBRT KCM [8 h] | x | 8 | 1-6615 | 1-6615 |
| 1-6616 |  | NOTIFY SCL TO COMMISION | 1d | 2023-09-22 A | 2023-09-22 A | 1-6615 | 100% | 2023-10-25 | 2023-10-25 | MBRT KCM [8 h] | x | 8 | 1-6616 | 1-6616 |
| 1-6617 |  | 30 DAY WAIT FOR SCL TO COMMISION | 21d | 2023-09-25 A | 2023-09-25 A | 1-6616 | 100% | 2023-10-26 | 2023-11-28 | MBRT KCM | x | 8 | 1-6617 | 1-6617 |
| 1-6618 |  | COMMISION SERVICE | 1d | 2023-09-26 A | 2023-09-26 A | 1-6617 | 100% | 2023-12-12 | 2023-12-12 | MBRT KCM [8 h] | x | 8 | 1-6618 | 1-6618 |
|  | 3 | **4TH AND SPRING** |  | 2023-05-01 | 2023-09-07 |  |  |  |  |  |  |  |  |  |
| 1-6620 |  | SERVICE CABINET | 1d | 2023-05-01 A | 2023-05-01 A | 1-0572 | 100% |  |  | MBRT KCM [8 h] |  | 8 | 1-6620 | 1-6620 |
| 1-6623 |  | SDCI INSPECTION | 1d | 2023-06-02 A | 2023-06-02 A | 1-6620 | 100% |  |  | MBRT KCM [8 h] | x | 8 | 1-6623 | 1-6623 |
| 1-6621 |  | REQUEST KCM INSPECTION | 1d | 2023-06-08 A | 2023-06-08 A | 1-6620 | 100% |  |  | MBRT KCM [8 h] | x | 8 | 1-6621 | 1-6621 |
| 1-6622 |  | WAIT FOR KCM TO INSPECT | 4d | 2023-06-09 A | 2023-06-14 A | 1-6621 | 100% |  |  | MBRT KCM [32 h] | x | 32 | 1-6622 | 1-6622 |
| 1-6624 |  | NOTIFY SCL FOR INSPECTION | 1d | 2023-07-03 A | 2023-07-03 A | 1-6623 | 100% |  |  | MBRT KCM [8 h] | x | 8 | 1-6624 | 1-6624 |
| 1-6625 |  | 30 DAY WAIT FOR SCL TO INSPECT | 22d | 2023-07-05 A | 2023-08-03 A | 1-6624 | 100% |  |  | MBRT KCM | x | 176 | 1-6625 | 1-6625 |
| 1-6626 |  | SCL INSPECTION | 1d | 2023-08-04 A | 2023-08-04 A | 1-6625, 1-6622 | 100% | 2023-08-16 | 2023-08-16 | MBRT KCM [8 h] | x | 8 | 1-6626 | 1-6626 |
| 1-6627 |  | NOTIFY SCL TO COMMISION | 1d | 2023-08-09 A | 2023-08-09 A | 1-6626 | 100% | 2023-08-17 | 2023-08-17 | MBRT KCM [8 h] | x | 8 | 1-6627 | 1-6627 |
| 1-6628 |  | 30 DAY WAIT FOR SCL TO COMMISION | 20d | 2023-08-10 A | 2023-09-06 A | 1-6627 | 100% | 2023-08-18 | 2023-09-15 | MBRT KCM | x | 152 | 1-6628 | 1-6628 |
| 1-6629 |  | COMMISION SERVICE | 1d | 2023-09-07 A | 2023-09-07 A | 1-6628 | 100% | 2023-09-22 | 2023-09-22 | MBRT KCM [8 h] | x | 8 | 1-6629 | 1-6629 |
|  | 4 | **8TH AND SPRING** |  | 2023-09-07 | 2024-02-01 |  |  |  |  |  |  |  |  |  |
| 1-6631 |  | SERVICE CABINET | 1d | 2023-09-07 A | 2023-09-07 A | 1-0599 | 100% | 2023-09-11 | 2023-09-11 | MBRT KCM [8 h] | x | 8 | 1-6631 | 1-6631 |
| 1-6632 |  | REQUEST KCM INSPECTION | 1d | 2023-11-21 A | 2023-11-22 A | 1-6631 | 100% | 2023-11-06 | 2023-11-06 | MBRT KCM [8 h] | x | 16 | 1-6632 | 1-6632 |
| 1-6633 |  | WAIT FOR KCM TO INSPECT | 5d | 2023-11-27 A | 2023-11-28 A | 1-6632 | 100% | 2023-11-07 | 2023-11-14 | MBRT KCM [40 h] | x | 16 | 1-6633 | 1-6633 |
| 1-6634 |  | SDCI INSPECTION | 1d | 2023-11-29 A | 2023-11-29 A | 1-6633 | 100% | 2023-11-15 | 2023-11-15 | MBRT KCM [8 h] | x | 8 | 1-6634 | 1-6634 |
| 1-6635 |  | NOTIFY SCL FOR INSPECTION | 1d | 2023-11-30 A | 2023-11-30 A | 1-6634 | 100% | 2023-11-16 | 2023-11-16 | MBRT KCM [8 h] | x | 8 | 1-6635 | 1-6635 |
| 1-6636 |  | 30 DAY WAIT FOR SCL TO INSPECT | 21d | 2023-12-01 A | 2023-12-28 A | 1-6635 | 100% | 2023-11-17 | 2023-12-19 | MBRT KCM | x | 152 | 1-6636 | 1-6636 |
| 1-6637 |  | SCL INSPECTION | 1d | 2023-12-29 A | 2023-12-29 A | 1-6636 | 100% | 2024-01-03 | 2024-01-03 | MBRT KCM [8 h] | x | 8 | 1-6637 | 1-6637 |
| 1-6638 |  | NOTIFY SCL TO COMMISION | 1d | 2024-01-02 A | 2024-01-02 A | 1-6637 | 100% | 2024-01-04 | 2024-01-04 | MBRT KCM [8 h] | x | 8 | 1-6638 | 1-6638 |
| 1-6639 |  | 30 DAY WAIT FOR SCL TO COMMISION | 21d | 2024-01-03 A | 2024-01-31 A | 1-6638 | 100% | 2024-01-05 | 2024-02-05 | MBRT KCM | x | 160 | 1-6639 | 1-6639 |
| 1-6640 |  | COMMISION SERVICE | 1d | 2024-02-01 A | 2024-02-01 A | 1-6639 | 100% | 2024-02-06 | 2024-02-06 | MBRT KCM [8 h] | x | 8 | 1-6640 | 1-6640 |

| ID | WBS | Activity | Duration | Start | Finish | Predecessors | Complete | Planned start | Planned finish | Resources | user_number6 | user_text10 | user_text8 | ~SELECT |
| --- | --- | --- | --- | --- | --- | --- | --- | --- | --- | --- | --- | --- | --- | --- |
|  | 5 | **3RD AND MADISON** |  | 2023-05-01 | 2023-09-07 |  |  |  |  |  |  |  |  |  |
| 1-6642 |  | SERVICE CABINET | 1d | 2023-05-01 A | 2023-05-01 A | 1-0677 | 100% |  |  | MBRT KCM [8 h] | 8 | 1-6642 | 1-6642 |  |
| 1-6645 |  | SDCI INSPECTION | 1d | 2023-06-02 A | 2023-06-02 A | 1-6642 | 100% |  |  | MBRT KCM [8 h] | 8 | 1-6645 | 1-6645 | x |
| 1-6643 |  | REQUEST KCM INSPECTION | 1d | 2023-06-08 A | 2023-06-08 A | 1-6642 | 100% |  |  | MBRT KCM [8 h] | 8 | 1-6643 | 1-6643 | x |
| 1-6644 |  | WAIT FOR KCM TO INSPECT | 4d | 2023-06-09 A | 2023-06-14 A | 1-6643 | 100% |  |  | MBRT KCM [32 h] | 32 | 1-6644 | 1-6644 | x |
| 1-6646 |  | NOTIFY SCL FOR INSPECTION | 1d | 2023-07-03 A | 2023-07-03 A | 1-6645 | 100% |  |  | MBRT KCM [8 h] | 8 | 1-6646 | 1-6646 | x |
| 1-6647 |  | 30 DAY WAIT FOR SCL TO INSPECT | 22d | 2023-07-05 A | 2023-08-03 A | 1-6646 | 100% |  |  | MBRT KCM | 176 | 1-6647 | 1-6647 | x |
| 1-6648 |  | SCL INSPECTION | 1d | 2023-08-04 A | 2023-08-04 A | 1-6647, 1-6644 | 100% | 2023-08-16 | 2023-08-16 | MBRT KCM [8 h] | 8 | 1-6648 | 1-6648 | x |
| 1-6649 |  | NOTIFY SCL TO COMMISION | 1d | 2023-08-09 A | 2023-08-09 A | 1-6648 | 100% | 2023-08-17 | 2023-08-17 | MBRT KCM [8 h] | 8 | 1-6649 | 1-6649 | x |
| 1-6650 |  | 30 DAY WAIT FOR SCL TO COMMISION | 20d | 2023-08-10 A | 2023-09-06 A | 1-6649 | 100% | 2023-08-18 | 2023-09-15 | MBRT KCM | 152 | 1-6650 | 1-6650 | x |
| 1-6651 |  | COMMISION SERVICE | 1d | 2023-09-07 A | 2023-09-07 A | 1-6650 | 100% | 2023-09-22 | 2023-09-22 | MBRT KCM [8 h] | 8 | 1-6651 | 1-6651 | x |
|  | 6 | **5TH AND MADISON** |  | 2023-05-01 | 2023-09-07 |  |  |  |  |  |  |  |  |  |
| 1-6653 |  | SERVICE CABINET | 1d | 2023-05-01 A | 2023-05-31 A | 1-0692 | 100% | 2023-05-01 | 2023-05-01 | MBRT KCM [8 h] | 176 | 1-6653 | 1-6653 | x |
| 1-6656 |  | SDCI INSPECTION | 1d | 2023-06-02 A | 2023-06-02 A | 1-6653 | 100% |  |  | MBRT KCM [8 h] | 8 | 1-6656 | 1-6656 | x |
| 1-6654 |  | REQUEST KCM INSPECTION | 1d | 2023-06-08 A | 2023-06-08 A | 1-6653 | 100% |  |  | MBRT KCM [8 h] | 8 | 1-6654 | 1-6654 | x |
| 1-6655 |  | WAIT FOR KCM TO INSPECT | 4d | 2023-06-09 A | 2023-06-14 A | 1-6654 | 100% |  |  | MBRT KCM [32 h] | 32 | 1-6655 | 1-6655 | x |
| 1-6657 |  | NOTIFY SCL FOR INSPECTION | 1d | 2023-07-03 A | 2023-07-03 A | 1-6656 | 100% |  |  | MBRT KCM [8 h] | 8 | 1-6657 | 1-6657 | x |
| 1-6658 |  | 30 DAY WAIT FOR SCL TO INSPECT | 22d | 2023-07-05 A | 2023-08-03 A | 1-6657 | 100% |  |  | MBRT KCM | 176 | 1-6658 | 1-6658 | x |
| 1-6659 |  | SCL INSPECTION | 1d | 2023-08-04 A | 2023-08-04 A | 1-6658, 1-6655 | 100% | 2023-08-16 | 2023-08-16 | MBRT KCM [8 h] | 8 | 1-6659 | 1-6659 | x |
| 1-6660 |  | NOTIFY SCL TO COMMISION | 1d | 2023-08-09 A | 2023-08-09 A | 1-6659 | 100% | 2023-08-17 | 2023-08-17 | MBRT KCM [8 h] | 8 | 1-6660 | 1-6660 | x |
| 1-6661 |  | 30 DAY WAIT FOR SCL TO COMMISION | 20d | 2023-08-10 A | 2023-09-06 A | 1-6660 | 100% | 2023-08-18 | 2023-09-15 | MBRT KCM | 152 | 1-6661 | 1-6661 | x |
| 1-6662 |  | COMMISION SERVICE | 1d | 2023-09-07 A | 2023-09-07 A | 1-6661 | 100% | 2023-09-22 | 2023-09-22 | MBRT KCM [8 h] | 8 | 1-6662 | 1-6662 | x |
|  | 1 | **1ST AVE** |  | 2023-05-16 | 2023-10-09 |  |  |  |  |  |  |  |  |  |
| 1-6598 |  | SERVICE CABINET | 1d | 2023-05-16 A | 2023-05-16 A | 1-0496 | 100% |  |  | MBRT KCM [8 h] | 8 | 1-6598 | 1-6598 |  |
| 1-6601 |  | SDCI INSPECTION | 1d | 2023-06-02 A | 2023-06-02 A | 1-6598 | 100% |  |  | MBRT KCM [8 h] | 8 | 1-6601 | 1-6601 | x |
| 1-6599 |  | REQUEST KCM INSPECTION | 1d | 2023-06-08 A | 2023-06-08 A | 1-6598 | 100% |  |  | MBRT KCM [8 h] | 8 | 1-6599 | 1-6599 | x |
| 1-6600 |  | WAIT FOR KCM TO INSPECT | 4d | 2023-06-09 A | 2023-06-14 A | 1-6599 | 100% |  |  | MBRT KCM [32 h] | 32 | 1-6600 | 1-6600 | x |
| 1-6602 |  | NOTIFY SCL FOR INSPECTION | 1d | 2023-09-20 A | 2023-09-20 A | 1-6601, 1-6600 | 100% | 2023-07-03 | 2023-07-03 | MBRT KCM [8 h] | 8 | 1-6602 | 1-6602 | x |
| 1-6603 |  | 30 DAY WAIT FOR SCL TO INSPECT | 21d | 2023-09-21 A | 2023-09-29 A | 1-6602 | 100% | 2023-07-05 | 2023-08-02 | MBRT KCM | 56 | 1-6603 | 1-6603 | x |
| 1-6604 |  | SCL INSPECTION | 1d | 2023-10-04 A | 2023-10-04 A | 1-6603 | 100% | 2023-10-19 | 2023-10-19 | MBRT KCM [8 h] | 8 | 1-6604 | 1-6604 | x |
| 1-6605 |  | NOTIFY SCL TO COMMISION | 1d | 2023-10-05 A | 2023-10-05 A | 1-6604 | 100% | 2023-10-20 | 2023-10-20 | MBRT KCM [8 h] | 8 | 1-6605 | 1-6605 | x |
| 1-6606 |  | 30 DAY WAIT FOR SCL TO COMMISION | 20d | 2023-10-06 A | 2023-10-06 A | 1-6605 | 100% | 2023-10-23 | 2023-11-20 | MBRT KCM | 8 | 1-6606 | 1-6606 | x |
| 1-6607 |  | COMMISION SERVICE | 1d | 2023-10-09 A | 2023-10-09 A | 1-6606 | 100% | 2023-11-21 | 2023-11-21 | MBRT KCM [8 h] | 8 | 1-6607 | 1-6607 | x |

| ID | WBS | Activity | Duration | Start | Finish | Predecessors | Complete | Planned start | Planned finish | Total float | Free float | Resources | Cost | Actual cost | user_text2 | user_number6 | user_text10 | user_text8 | MBRT-ZONE | MBRT-LOCATION |
| --- | --- | --- | --- | --- | --- | --- | --- | --- | --- | --- | --- | --- | --- | --- | --- | --- | --- | --- | --- | --- |
|  | 17 | **STATIONS** |  | 2023-11-27 | 2024-06-12 |  |  |  |  |  |  |  |  |  |  |  |  |  |  |  |
|  | 1 | **SPRING AND 3RD EB STATION** |  | 2023-11-27 | 2024-04-04 |  |  |  |  |  |  |  |  |  |  |  |  |  |  |  |
| 1-1096 |  | INST SHELTER, SPRING & 3RD EB STATION | 4d | 2023-11-27 A | 2023-11-27 A | 1-0821, PMP-0022, PMP-51 | 100% | 2023-11-20 | 2023-11-27 |  |  | MBRT BASE [8 h] | 8 | 8 | SHELTER INTALL SUB | 8 | 1-1096 | 1-1096 | ZONE-1 | SPRING |
| 1-1097 |  | INST TEC PYLON, SPRING & 3RD EB STATION | 2d | 2024-04-02 | 2024-04-03 | 1-1096 |  |  |  | -108d | 0d | MBRT BASE [16 h] | 16 |  | ELECRICAL SUB | 16 | 1-1097 | 1-1097 | ZONE-1 | SPRING |
| 1-1098 |  | INST AMENITIES, SPRING & 3RD EB STATION | 1d | 2024-04-04 | 2024-04-04 | 1-1097 |  |  |  | -102d | 1d | MBRT BASE [8 h] | 8 |  | ZZZZ | 8 | 1-1098 | 1-1098 | ZONE-1 | SPRING |
|  | 2 | **SPRING AND 4TH EB** |  | 2023-11-28 | 2024-04-08 |  |  |  |  |  |  |  |  |  |  |  |  |  |  |  |
| 1-1100 |  | INST SHELTER, SPRING AND 4TH EB | 4d | 2023-11-28 A | 2023-11-28 A | 1-0826, 1-1096 | 100% | 2023-11-28 | 2023-12-01 |  |  | MBRT BASE [8 h] | 8 | 8 | SHELTER INTALL SUB | 8 | 1-1100 | 1-1100 | ZONE-1 | SPRING |
| 1-1101 |  | INST TEC PYLON, SPRING AND 4TH EB | 2d | 2024-04-04 | 2024-04-05 | 1-1100, 1-1097 |  |  |  | -108d | 0d | MBRT BASE [16 h] | 16 |  | ELECRICAL SUB | 16 | 1-1101 | 1-1101 | ZONE-1 | SPRING |
| 1-1102 |  | INST AMENITIES, SPRING AND 4TH EB | 1d | 2024-04-08 | 2024-04-08 | 1-1101, 1-1098 |  |  |  | -103d | 3d | MBRT BASE [8 h] | 8 |  | ZZZZ | 8 | 1-1102 | 1-1102 | ZONE-1 | SPRING |
|  | 3 | **SPRING AND 8TH EB** |  | 2023-12-19 | 2024-04-10 |  |  |  |  |  |  |  |  |  |  |  |  |  |  |  |
| 1-1104 |  | INST SHELTER, SPRING AND 8TH EB | 4d | 2023-12-19 A | 2023-12-19 A | 1-0863, 1-1108 | 100% | 2023-12-15 | 2023-12-20 |  |  | MBRT BASE [8 h] | 8 | 8 | SHELTER INTALL SUB | 8 | 1-1104 | 1-1104 | ZONE-1 | SPRING |
| 1-1105 |  | INST TEC PYLON, SPRING AND 8TH EB | 2d | 2024-04-08 | 2024-04-09 | 1-1104, 1-1101 |  |  |  | -108d | 0d | MBRT BASE [16 h] | 16 |  | ELECRICAL SUB | 16 | 1-1105 | 1-1105 | ZONE-1 | SPRING |
| 1-1106 |  | INST AMENITIES, SPRING AND 8TH EB | 1d | 2024-04-10 | 2024-04-10 | 1-1105 |  |  |  | -104d | 3d | MBRT BASE [8 h] | 8 |  | ZZZZ | 8 | 1-1106 | 1-1106 | ZONE-1 | SPRING |
|  | 4 | **1ST AVE** |  | 2024-01-03 | 2024-04-12 |  |  |  |  |  |  |  |  |  |  |  |  |  |  |  |
| 1-1108 |  | INST SHELTER, 1ST AVE | 4d | 2024-01-03 A | 2024-01-03 A | 1-0890, 1-1100 | 100% | 2023-12-11 | 2023-12-14 |  |  | MBRT BASE [8 h] | 8 | 8 | SHELTER INTALL SUB | 8 | 1-1108 | 1-1108 | ZONE-1 | 01 |
| 1-1109 |  | INST TEC PYLON, 1ST AVE | 2d | 2024-04-10 | 2024-04-11 | 1-1108, 1-1101, 1-1105 |  |  |  | -108d | 0d | MBRT BASE [16 h] | 16 |  | ELECRICAL SUB | 16 | 1-1109 | 1-1109 | ZONE-1 | 01 |
| 1-1110 |  | INST AMENITIES, 1ST AVE | 1d | 2024-04-12 | 2024-04-12 | 1-1109, 1-1102 |  |  |  | -106d | 1d | MBRT BASE [8 h] | 8 |  | ZZZZ | 8 | 1-1110 | 1-1110 | ZONE-1 | 01 |
|  | 5 | **MADISON AND 3RD WB** |  | 2024-01-02 | 2024-04-16 |  |  |  |  |  |  |  |  |  |  |  |  |  |  |  |
| 1-1112 |  | INST SHELTER, MAD AND 3RD WB | 4d | 2024-01-02 A | 2024-01-02 A | 1-0907, 1-1104 | 100% | 2024-01-23 | 2024-01-26 |  |  | MBRT BASE [8 h] | 8 | 8 | SHELTER INTALL SUB | 8 | 1-1112 | 1-1112 | ZONE-1 | 03 |
| 1-1113 |  | INST TEC PYLON, MAD AND 3RD WB | 2d | 2024-04-12 | 2024-04-15 | 1-1112, 1-1109 |  |  |  | -108d | 0d | MBRT BASE [16 h] | 16 |  | ELECRICAL SUB | 16 | 1-1113 | 1-1113 | ZONE-1 | 03 |
| 1-1114 |  | INST AMENITIES, MAD AND 3RD WB | 1d | 2024-04-16 | 2024-04-16 | 1-1113, 1-1106, 1-1110 |  |  |  | -107d | 1d | MBRT BASE [8 h] | 8 |  | ZZZZ | 8 | 1-1114 | 1-1114 | ZONE-1 | 03 |
|  | 6 | **MADISON AND 5TH WB** |  | 2023-11-29 | 2024-04-18 |  |  |  |  |  |  |  |  |  |  |  |  |  |  |  |
| 1-1116 |  | INST SHELTER, MAD AND 5TH | 4d | 2023-11-29 A | 2023-11-29 A | 1-0919 | 100% | 2023-11-21 | 2023-11-28 |  |  | MBRT BASE [8 h] | 8 | 8 | SHELTER INTALL SUB | 8 | 1-1116 | 1-1116 | ZONE-1 | 05 |
| 1-1117 |  | INST TEC PYLON, MAD AND 5TH | 2d | 2024-04-16 | 2024-04-17 | 1-1116, 1-1109, 1-1113 |  |  |  | -108d | 0d | MBRT BASE [16 h] | 16 |  | ELECRICAL SUB | 16 | 1-1117 | 1-1117 | ZONE-1 | 05 |
| 1-1118 |  | INST AMENITIES, MAD AND 5TH | 1d | 2024-04-18 | 2024-04-18 | 1-1117, 1-1114 |  |  |  | -108d | 3d | MBRT BASE [8 h] | 8 |  | ZZZZ | 8 | 1-1118 | 1-1118 | ZONE-1 | 05 |

| ID | WBS | Activity | Duration | Start | Finish | Predecessors | Complete | Planned start | Planned finish | Total float | Free float | Resources | Cost | Actual cost | user_text2 | user_number6 | user_text10 | user_text8 | MBRT-ZONE | MBRT-LOCATION | MBRT-SCOPE | MBRT-TYPE | user_text1 |
| --- | --- | --- | --- | --- | --- | --- | --- | --- | --- | --- | --- | --- | --- | --- | --- | --- | --- | --- | --- | --- | --- | --- | --- |
|  | 7 | **MADISON AND 8TH WB** |  | 2024-03-21 | 2024-04-05 |  |  |  |  |  |  |  |  |  |  |  |  |  |  |  |  |  |  |
| 1-1120 |  | INST SHELTER, MAD AND 8TH WB | 4d | 2024-03-21 A | 2024-03-26 A | 1-1108 | 100% |  |  |  |  | MBRT BASE [32 h] | 32 |  | SHELTER INTALL SUB | 32 | 1-1120 | 1-1120 | ZONE-1 | 08 |  |  |  |
| 1-1121 |  | INST TEC PYLON, MAD AND 8TH WB | 2d | 2024-03-27 A | 2024-03-28 A | 1-1120 | 100% |  |  |  |  | MBRT BASE [16 h] | 16 |  | ELECRICAL SUB | 16 | 1-1121 | 1-1121 | ZONE-1 | 08 |  |  |  |
| 1-1122 |  | INST AMENITIES, MAD AND 8TH WB | 1d | 2024-04-02 | 2024-04-02 | 1-1121 |  |  |  | -111d | 0d | MBRT BASE [8 h] | 8 |  | ZZZZ | 8 | 1-1122 | 1-1122 | ZONE-1 | 08 |  |  |  |
| 1-1123 |  | INST HANDRAIL, MAD AND 8TH WB | 3d | 2024-04-03 | 2024-04-05 | 1-1122 |  |  |  | -111d | 0d | MBRT BASE [24 h] | 24 |  | ZZZZ | 24 | 1-1123 | 1-1123 | ZONE-1 | 08 |  |  |  |
|  | 8 | **MADISON AND TERRY** |  | 2024-04-08 | 2024-04-30 |  |  |  |  |  |  |  |  |  |  |  |  |  |  |  |  |  |  |
| 1-1125 |  | INST SHELTER, MAD AND TERRY | 8d | 2024-04-08 | 2024-04-17 | 1-1090, 1-1123 |  |  |  | -111d | 0d | MBRT BASE [64 h] | 64 |  | SHELTER INTALL SUB | 64 | 1-1125 | 1-1125 | ZONE-1 | TERRY |  |  |  |
| 1-1126 |  | INST TEC PYLON, MAD AND TERRY | 4d | 2024-04-18 | 2024-04-23 | 1-1125 |  |  |  | -111d | 0d | MBRT BASE [32 h] | 32 |  | ELECRICAL SUB | 32 | 1-1126 | 1-1126 | ZONE-1 | TERRY |  |  |  |
| 1-1127 |  | INST AMENITIES, MAD AND TERRY | 2d | 2024-04-24 | 2024-04-25 | 1-1126, 1-1118 |  |  |  | -111d | 0d | MBRT BASE [16 h] | 16 |  | ZZZZ | 16 | 1-1127 | 1-1127 | ZONE-1 | TERRY |  |  |  |
| 1-1128 |  | INST HANDRAIL, MAD AND TERRY | 3d | 2024-04-26 | 2024-04-30 | 1-1127 |  |  |  | -111d | 0d | MBRT BASE [24 h] | 24 |  | ZZZZ | 24 | 1-1128 | 1-1128 | ZONE-1 | TERRY |  |  |  |
|  | 9 | **MADISON AND BOYLSTON** |  | 2024-05-01 | 2024-06-12 |  |  |  |  |  |  |  |  |  |  |  |  |  |  |  |  |  |  |
| 1-1130 |  | INST SHELTER, MAD AND BOYLSTON | 16d | 2024-05-01 | 2024-05-22 | 1-1093, 1-1128 |  |  |  | -111d | 0d | MBRT BASE [128 h] | 128 |  | SHELTER INTALL SUB | 128 | 1-1130 | 1-1130 | ZONE-1 | BOYLSTON |  |  |  |
| 1-1131 |  | INST TEC PYLON, MAD AND BOYLSTON | 6d | 2024-05-23 | 2024-05-31 | 1-1130 |  |  |  | -111d | 0d | MBRT BASE [48 h] | 48 |  | ELECRICAL SUB | 48 | 1-1131 | 1-1131 | ZONE-1 | BOYLSTON |  |  |  |
| 1-1132 |  | INST AMENITIES, MAD AND BOYLSTON | 2d | 2024-06-03 | 2024-06-04 | 1-1131 |  |  |  | -111d | 0d | MBRT BASE [16 h] | 16 |  | ZZZZ | 16 | 1-1132 | 1-1132 | ZONE-1 | BOYLSTON |  |  |  |
| 1-1133 |  | INST HANDRAIL, MAD AND BOYLSTON | 6d | 2024-06-05 | 2024-06-12 | 1-1132 |  |  |  | -111d | 27d | MBRT BASE [48 h] | 48 |  | ZZZZ | 48 | 1-1133 | 1-1133 | ZONE-1 | BOYLSTON |  |  |  |
|  | 18 | **OCS POLES** |  | 2023-07-25 | 2023-09-14 |  |  |  |  |  |  |  |  |  |  |  |  |  |  |  |  |  |  |
| 1-1135 |  | INST REMAINING POLES, OCS POLES | 22d | 2023-07-25 A | 2023-09-14 A | 1-0750, OCS-0037, PMP-36, PMP-41 | 100% | 2023-08-14 | 2023-09-13 |  |  | MBRT BASE [296 h] | 296 | 296 | ELECRICAL SUB | 296 | 1-1135 | 1-1135 | ZONE-1 |  |  |  |  |
|  | 5 | **ZONE 2 - BROADWAY TO 15TH** |  | 2021-10-19 | 2024-08-01 |  |  |  |  |  |  |  |  |  |  |  |  |  |  |  |  |  |  |
|  | 1 | **POTHOLING FOUNDATIONS** |  | 2021-11-12 | 2023-06-06 |  |  |  |  |  |  |  |  |  |  |  |  |  |  |  |  |  |  |
| 2-1140 |  | POTHOLE FOUNDATIONS ZONE 2, POTHOLING FOUNDATIONS | 20d | 2021-11-12 A | 2022-01-20 A | MS-0026 | 100% | 2021-10-29 | 2021-11-30 |  |  | MBRT BASE |  |  | ELECRICAL SUB | 352 |  |  | ZONE-2 |  |  |  |  |
| 2-1141 |  | SUBMITAL REVIEW, POTHOLING FOUNDATIONS | 10d | 2022-01-21 A | 2022-02-03 A | 2-1140 | 100% | 2022-03-29 | 2022-04-11 |  |  | MBRT BASE [80 h] | 80 | 80 | CITY | 80 |  |  | ZONE-2 |  |  |  |  |
| 2-1181 |  | FOUNDATION ONGOING CONFLICT RESOLUTION | 5d | 2022-02-04 A | 2023-06-06 A | 2-1141 | 100% | 2022-03-01 | 2022-03-07 |  |  | MBRT NEW |  |  |  | 2688 | 2-1181 | 2-1181 |  |  |  |  |  |
|  | 2 | **STORM WORK** |  | 2021-10-19 | 2023-06-06 |  |  |  |  |  |  |  |  |  |  |  |  |  |  |  |  |  |  |
| 2-1154 |  | MAD AND 15TH, STORM WORK | 1d | 2021-10-19 A | 2021-10-19 A | 3-1844 FF | 100% | 2022-04-14 | 2022-04-14 |  |  | MBRT BASE [8 h] | 8 | 8 | UNS | 8 |  |  | ZONE-2 | 15 | STORM | CIVIL |  |
| PCO010.01 |  | DSC 5-Unlocated 3" conduit under storm @ 15th/Madison | 5d | 2021-10-26 A | 2021-10-28 A | MS-0025 | 100% | 2023-02-27 | 2023-03-03 |  |  | MBRT DSC [16 h] | 16 | 16 |  | 16 |  |  |  |  |  |  | STORM |
| PCO080.01 |  | DSC 49-Existing MH 002 invert coflict | 5d | 2022-01-04 A | 2022-02-01 A | MS-0025 | 100% | 2023-02-27 | 2023-03-03 |  |  | MBRT DSC [152 h] | 152 | 152 |  | 152 |  |  |  |  |  |  | STORM |
| PCO085.01 |  | DSC 53-CB 18 conflicts | 5d | 2022-01-06 A | 2022-01-13 A | MS-0025 | 100% | 2023-02-27 | 2023-03-03 |  |  | MBRT DSC [40 h] | 40 | 40 |  | 40 |  |  |  |  |  |  | STORM |
| PCO096.01 |  | DSC 59-CB 19 conflicts | 5d | 2022-01-13 A | 2022-01-14 A | MS-0025 | 100% | 2023-02-27 | 2023-03-03 |  |  | MBRT DSC [8 h] | 8 | 8 |  | 8 |  |  |  |  |  |  | STORM |
| PCO159.01 |  | DSC 112-Inlet 22 Conflict | 5d | 2022-03-04 A | 2022-03-06 A | MS-0025 | 100% | 2023-02-27 | 2023-03-03 |  |  | MBRT DSC [8 h] | 8 | 8 |  | 8 |  |  |  |  |  |  | STORM |
| 2-1152 |  | MAD AND 13TH, STORM WORK | 4d | 2022-03-18 A | 2022-03-23 A | 2-1154 | 100% | 2022-04-22 | 2022-04-27 |  |  | MBRT BASE [32 h] | 32 | 32 | UNS | 32 |  |  | ZONE-2 | 12 | STORM | CIVIL |  |
| PCO176.01 |  | DSC 124- Inlet 17 conflict | 5d | 2022-03-22 A | 2022-03-24 A | MS-0025 | 100% | 2023-02-27 | 2023-03-03 |  |  | MBRT DSC [16 h] | 16 | 16 |  | 16 |  |  |  |  |  |  | STORM |
| PCO180.01 |  | DSC 126-Power Conflict at Inlet 14 | 5d | 2022-03-23 A | 2022-03-24 A | MS-0025 | 100% | 2023-02-27 | 2023-03-03 |  |  | MBRT DSC [8 h] | 8 | 8 |  | 8 |  |  |  |  |  |  | STORM |
| 2-1150 |  | MAD AND 12TH, STORM WORK | 3d | 2022-03-23 A | 2022-03-25 A | 2-1152 SS | 100% | 2022-04-07 | 2022-04-11 |  |  | MBRT BASE [24 h] | 24 | 24 | UNS | 24 |  |  | ZONE-2 | 12 | STORM | CIVIL |  |
| 2-1153 |  | MAD AND 14TH, STORM WORK | 4d | 2022-03-24 A | 2022-03-25 A | 2-1152, 2-1150 SS | 100% | 2022-04-28 | 2022-05-03 |  |  | MBRT BASE [16 h] | 16 | 16 | UNS | 16 |  |  | ZONE-2 | 14 | STORM | CIVIL |  |
| 2-1148 |  | MAD AND 11TH, STORM WORK | 1d | 2022-04-04 A | 2022-04-04 A | 2-1153 | 100% | 2022-05-03 | 2022-05-03 |  |  | MBRT BASE [8 h] | 8 | 8 | UNS | 8 |  |  | ZONE-2 | 11 | STORM | CIVIL |  |
| PCO201.01 |  | DSC 144-Inlet 12 conflict | 5d | 2022-04-07 A | 2022-04-15 A | MS-0025 | 100% | 2023-02-27 | 2023-03-03 |  |  | MBRT DSC [48 h] | 48 | 48 |  | 48 |  |  |  |  |  |  | STORM |
| 2-1146 |  | MH6 TO MH9, STORM WORK | 15d | 2022-04-13 A | 2022-05-20 A | LS-1460 FF | 100% | 2022-04-08 | 2022-04-28 |  |  | MBRT BASE [224 h] | 224 | 224 | UNM | 224 |  |  | ZONE-2 |  | STORM | CIVIL |  |
| PCO217.01 |  | DSC 155-Ductbank conflict @ MH 6 | 5d | 2022-04-18 A | 2022-04-19 A | MS-0025 | 100% | 2023-02-27 | 2023-03-03 |  |  | MBRT DSC [8 h] | 8 | 8 |  | 8 |  |  |  |  |  |  | STORM |
| PCO220.01 |  | DSC 158-MH7 Conflicts | 5d | 2022-04-18 A | 2022-04-29 A | MS-0025 | 100% | 2023-02-27 | 2023-03-03 |  |  | MBRT DSC [72 h] | 72 | 72 |  | 72 |  |  |  |  |  |  | STORM |
| PCO225.01 |  | DSC 161-CB 007 Conflicts | 5d | 2022-04-22 A | 2022-04-23 A | MS-0025 | 100% | 2023-02-27 | 2023-03-03 |  |  | MBRT DSC [8 h] | 8 | 8 |  | 8 |  |  |  |  |  |  | STORM |
| PCO231.01 |  | DSC 166-CB 7 conflicts | 5d | 2022-04-25 A | 2022-05-18 A | MS-0025 | 100% | 2023-02-27 | 2023-03-03 |  |  | MBRT DSC [136 h] | 136 | 136 |  | 136 |  |  |  |  |  |  | STORM |
| PCO232.01 |  | DSC 167-Unknown unlocated Steel Line MH 6 to MH 7 | 5d | 2022-04-26 A | 2022-04-30 A | MS-0025 | 100% | 2023-02-27 | 2023-03-03 |  |  | MBRT DSC [32 h] | 32 | 32 |  | 32 |  |  |  |  |  |  | STORM |
| PCO234.01 |  | DSC 169-Ductbank conflict MH7 | 5d | 2022-04-27 A | 2022-04-28 A | MS-0025 | 100% | 2023-02-27 | 2023-03-03 |  |  | MBRT DSC [8 h] | 8 | 8 |  | 8 |  |  |  |  |  |  | STORM |
| PCO237.01 |  | DSC 171-Unlocated 2" steel Line 12th-13th | 5d | 2022-04-29 A | 2022-04-30 A | MS-0025 | 100% | 2023-02-27 | 2023-03-03 |  |  | MBRT DSC [8 h] | 8 | 8 |  | 8 |  |  |  |  |  |  |  |
| PCO240.01 |  | DSC 174-Lack of Locates, Madison & 13th | 5d | 2022-05-05 A | 2022-05-20 A | MS-0025 | 100% | 2023-02-27 | 2023-03-03 |  |  | MBRT DSC [88 h] | 88 | 88 |  | 88 |  |  |  |  |  |  |  |
| PCO251.01 |  | DSC 183-Union & 11th, Irrigation conflict @ Inlet 15 | 5d | 2022-05-18 A | 2022-05-19 A | MS-0025 | 100% | 2023-02-27 | 2023-03-03 |  |  | MBRT DSC [8 h] | 8 | 8 |  | 8 |  |  |  |  |  |  | STORM |
| 2-1144 |  | SENECA AND 10TH, STORM WORK | 3d | 2022-05-23 A | 2022-05-25 A | SC-0031 SS | 100% | 2022-05-31 | 2022-06-02 |  |  | MBRT BASE [16 h] | 16 | 16 | UNS | 16 |  |  | ZONE-2 | SENECA | STORM | CIVIL |  |
| PCO257.01 |  | DSC 187-Leaking waterline CB 13 | 5d | 2022-05-24 A | 2022-05-25 A | MS-0025 | 100% | 2023-02-27 | 2023-03-03 |  |  | MBRT DSC [8 h] | 8 | 8 |  | 8 |  |  |  |  |  |  | STORM |
| PCO259.01 |  | DSC 189-Unkown Utility CB 11 Cor Tap location | 5d | 2022-05-25 A | 2022-05-26 A | MS-0025 | 100% | 2023-02-27 | 2023-03-03 |  |  | MBRT DSC [8 h] | 8 | 8 |  | 8 |  |  |  |  |  |  | STORM |
| 2-1149 |  | UNION AND 11TH, STORM WORK | 3d | 2022-05-25 A | 2022-05-27 A | 2-1148 | 100% | 2022-05-02 | 2022-05-04 |  |  | MBRT BASE [24 h] | 24 | 24 | UNS | 24 |  |  | ZONE-2 | UNION | STORM | CIVIL |  |
| 2-1147 |  | MAD AND 10TH, STORM WORK | 2d | 2022-05-31 A | 2022-06-06 A | 2-1145, 2-1146 | 100% | 2022-06-08 | 2022-06-09 |  |  | MBRT BASE [32 h] | 32 | 32 | UNS | 32 |  |  | ZONE-2 | 10 | STORM | CIVIL |  |
| PCO264.01 |  | DSC 190-CB 6 Conflict | 5d | 2022-06-02 A | 2022-06-03 A | MS-0025 | 100% | 2023-02-27 | 2023-03-03 |  |  | MBRT DSC [8 h] | 8 | 8 |  | 8 |  |  |  |  |  |  | STORM |
| PCO269.01 |  | DSC 195-Duct Bank Conflict with CB 6A | 5d | 2022-06-03 A | 2022-06-04 A | MS-0025 | 100% | 2023-02-27 | 2023-03-03 |  |  | MBRT DSC [8 h] | 8 | 8 |  | 8 |  |  |  |  |  |  | STORM |
| PCO273.01 |  | DSC 199-CB 6A Concrete Obstruction | 5d | 2022-06-07 A | 2022-06-08 A | MS-0025 | 100% | 2023-02-27 | 2023-03-03 |  |  | MBRT DSC [8 h] | 8 | 8 |  | 8 |  |  |  |  |  |  | STORM |
| PCO274.01 |  | DSC 200-Unknown signal conduit in conflict Inlet 14 | 5d | 2022-06-09 A | 2022-06-10 A | MS-0025 | 100% | 2023-02-27 | 2023-03-03 |  |  | MBRT DSC [8 h] | 8 | 8 |  | 8 |  |  |  |  |  |  | STORM |
| 2-1145 |  | MH1 TO MH2, STORM WORK | 3d | 2022-06-10 A | 2022-06-21 A | SC-0031 SS, 2-1144, LS-1450 FF | 100% | 2022-06-03 | 2022-06-07 |  |  | MBRT BASE [64 h] | 64 | 64 | UNM | 64 |  |  | ZONE-2 |  | STORM | CIVIL |  |
| 2-1151 |  | MAD & UNION SOUTH, STORM WORK | 8d | 2022-06-16 A | 2022-06-22 A | 2-1149 | 100% | 2022-07-01 | 2022-07-13 |  |  | MBRT BASE [40 h] | 40 | 40 | UNS | 40 |  |  | ZONE-2 | UNION | STORM | CIVIL |  |
| 2-1158 |  | MAD AND UNION, SEWER CONNECTION | 2d | 2022-06-22 A | 2022-06-29 A | 2-1152 SS, 2-1153, 2-1151 | 100% | 2022-07-14 | 2022-07-15 |  |  | MBRT NEW [16 h] | 16 | 48 |  | 48 |  |  |  |  |  |  |  |
| PCO294.01 |  | DSC 216-Inlet 21 conduit conflict | 5d | 2022-06-27 A | 2022-06-28 A | MS-0025 | 100% | 2023-02-27 | 2023-03-03 |  |  | MBRT DSC [8 h] | 8 | 8 |  | 8 |  |  |  |  |  |  | STORM |
| PCO343.01 |  | DSC 252-Unlocated Conduit Under Existing Storm Stg 2 | 5d | 2022-08-08 A | 2022-08-11 A | MS-0025 | 100% | 2023-02-27 | 2023-03-03 |  |  | MBRT DSC [24 h] | 24 | 24 |  | 24 |  |  |  |  |  |  |  |
| 2-1143 |  | MH2 TO MH4 (10TH AVE), STORM WORK | 20d | 2023-05-01 A | 2023-06-06 A | MS-0026, PMP-0020, SC-0037 SS, LS-1455 FF, 2-1146, 2-1147 | 100% | 2023-05-01 | 2023-05-26 |  |  | MBRT BASE [208 h] | 208 | 208 | UNM | 208 | 2-1143 | 2-1143 | ZONE-2 |  | STORM | CIVIL |  |
| PCO697.01 |  | DSC 499-CONTAMINATED SOILS | 5d | 2023-05-22 A | 2023-06-06 A | 2-1143 SS | 100% | 2023-02-27 | 2023-03-03 |  |  | MBRT DSC [88 h] | 88 | 88 |  | 88 | PCO697.01 | PCO697.01 |  |  |  |  |  |

| ID | WBS | Activity | Duration | Start | Finish | Predecessors | Complete | Planned start | Planned finish | Resources | Cost | Actual cost | user_number6 | user_text2 | MBRT-ZONE | MBRT-TYPE | user_text10 | user_text8 |
| --- | --- | --- | --- | --- | --- | --- | --- | --- | --- | --- | --- | --- | --- | --- | --- | --- | --- | --- |
|  | 3 | **DUCT BANK WORK** |  | 2022-06-20 | 2023-09-13 |  |  |  |  |  |  |  |  |  |  |  |  |  |
| PCO285.01 |  | DSC 210-Prime Ductbank Union St. - Timbers | 5d | 2022-06-20 A | 2022-06-22 A | MS-0025 | 100% | 2023-02-27 | 2023-03-03 | MBRT DSC [16 h] | 16 | 16 | 16 |  |  |  |  |  |
| 2-1157 |  | UNION, DUCT BANK WORK | 5d | 2022-06-21 A | 2022-07-11 A | 2-1152 | 100% | 2022-06-21 | 2022-06-27 | MBRT BASE [112 h] | 112 | 112 | 112 | DBC,ELECRICAL SUB | ZONE-2 | ELECTRICAL |  |  |
| 2-1156 |  | MAD AND 11TH, DUCT BANK WORK - PRIOR TO DELAY | 15d | 2022-09-06 A | 2022-09-26 A | SC-0031 SS, 2-1152, 2-1157 | 100% | 2022-08-31 | 2022-09-21 | MBRT BASE [120 h] | 120 | 120 | 120 | DBC,ELECRICAL SUB | ZONE-2 | ELECTRICAL |  |  |
| PCO379.01 |  | DSC 276-power line in conflict with Vault at 11th | 5d | 2022-09-09 A | 2022-09-24 A | MS-0025 | 100% | 2023-02-27 | 2023-03-03 | MBRT DSC [88 h] | 88 | 88 | 88 |  |  |  |  |  |
| PCO383.01 |  | DSC 279-Unkown conduit in conflict with vault at 11th | 5d | 2022-09-09 A | 2022-09-16 A | MS-0025 | 100% | 2023-02-27 | 2023-03-03 | MBRT DSC [40 h] | 40 | 40 | 40 |  |  |  |  |  |
| PCO386.01 |  | DSC 282-Buried Sidewalk 11th Ave Ductbank | 5d | 2022-09-09 A | 2022-09-14 A | MS-0025 | 100% | 2023-02-27 | 2023-03-03 | MBRT DSC [24 h] | 24 | 24 | 24 |  |  |  |  |  |
| PCO388.01 |  | DSC 284-Steel Pipe in conflict with Vault at 11th | 5d | 2022-09-12 A | 2022-09-13 A | MS-0025 | 100% | 2023-02-27 | 2023-03-03 | MBRT DSC [8 h] | 8 | 8 | 8 |  |  |  |  |  |
| PCO395.01 |  | DSC 288-Artifacts at 11th Electrical Vault | 5d | 2022-09-14 A | 2022-09-17 A | MS-0025 | 100% | 2023-02-27 | 2023-03-03 | MBRT DSC [24 h] | 24 | 24 | 24 |  |  |  |  |  |
| PCO399.01 |  | DSC 291-Existing DB Conflict with new, 11th Avenue | 5d | 2022-09-16 A | 2022-10-05 A | MS-0025 | 100% | 2023-02-27 | 2023-03-03 | MBRT DSC [104 h] | 104 | 104 | 104 |  |  |  |  |  |
| PCO404.01 |  | DSC 295-Prime 444 Vault Conflict at 11th | 5d | 2022-09-27 A | 2022-09-30 A | MS-0025 | 100% | 2023-02-27 | 2023-03-03 | MBRT DSC [24 h] | 24 | 24 | 24 |  |  |  |  |  |
| 2-1732 |  | MAD AND 11TH, DUCT BANK WORK - CITY CAUSED DELAY | 15d | 2022-09-27 A | 2022-11-11 A | 2-1156 | 100% | 2022-08-31 | 2022-09-21 | MBRT NEW [120 h] | 120 | 272 | 272 | DBC,ELECRICAL SUB | ZONE-2 | ELECTRICAL |  |  |
| 2-1737 |  | MAD AND 11TH, DUCT BANK WORK - AFTER DELAY | 15d | 2022-11-15 A | 2022-12-29 A | 2-1732 | 100% | 2022-11-22 | 2022-12-14 | MBRT NEW [120 h] | 120 | 240 | 240 | DBC,ELECRICAL SUB | ZONE-2 | ELECTRICAL |  |  |
| PCO467.01 |  | DSC 339-Prime Notice of unsuatable soils DB at 11th | 5d | 2022-11-18 A | 2022-11-29 A | MS-0025 | 100% | 2023-02-27 | 2023-03-03 | MBRT DSC [40 h] | 40 | 40 | 40 |  |  |  |  |  |
| PCO468.01 |  | DSC 340-Prime electic unkown utility DB at 11th | 5d | 2022-11-18 A | 2022-12-17 A | MS-0025 | 100% | 2023-02-27 | 2023-03-03 | MBRT DSC [152 h] | 152 | 152 | 152 |  |  |  |  |  |
| PCO471.01 |  | DSC 343-Prime Electric Unknown Utility DB at 11th #2 | 5d | 2022-11-21 A | 2022-11-24 A | MS-0025 | 100% | 2023-02-27 | 2023-03-03 | MBRT DSC [24 h] | 24 | 24 | 24 |  |  |  |  |  |
| PCO472.01 |  | DSC 344-Steel Structure Conflict DB at 11th | 5d | 2022-11-21 A | 2022-11-22 A | MS-0025 | 100% | 2023-02-27 | 2023-03-03 | MBRT DSC [8 h] | 8 | 8 | 8 |  |  |  |  |  |
| PCO490.01 |  | DSC 351-11th Ave Ductbank Rail conflicts | 5d | 2022-12-09 A | 2022-12-11 A | MS-0025 | 100% | 2023-02-27 | 2023-03-03 | MBRT DSC [8 h] | 8 | 8 | 8 |  |  |  |  |  |
| PCO494.01 |  | DSC 353-Prime DSC Soils caving 11th duct bank | 5d | 2022-12-21 A | 2022-12-30 A | MS-0025 | 100% | 2023-02-27 | 2023-03-03 | MBRT DSC [48 h] | 48 | 48 | 48 |  |  |  |  |  |
| 2-1742 |  | EASEMENT - CITY CAUSED DELAY | 15d | 2022-12-30 A | 2023-08-21 A | 2-1737 | 100% | 2022-08-31 | 2022-09-21 | MBRT NEW |  |  | 1296 | DBC,ELECRICAL SUB | ZONE-2 | ELECTRICAL | 2-1742 | 2-1742 |
| 2-2662 |  | KCM DUCT BANK BEFORE DSC 455 | 15d | 2023-04-25 A | 2023-04-25 A | 2-1737 | 100% | 2023-04-12 | 2023-05-02 | MBRT DSC [8 h] | 8 | 8 | 8 | DBC,ELECRICAL SUB | ZONE-2 | ELECTRICAL | 2-2662 | 2-2662 |
| PCO645.01 |  | DSC 455-KCM DUCT BANK CONFLICT WITH OLD VAULT | 15d | 2023-04-26 A | 2023-04-26 A | 2-2662 | 100% | 2023-03-31 | 2023-04-20 | MBRT DSC [8 h] | 8 | 8 | 8 | DBC,ELECRICAL SUB | ZONE-2 | ELECTRICAL | PCO645.01 | PCO645.01 |
| 2-2667 |  | KCM DUCT BANK AFTER DSC 455 | 15d | 2023-04-27 A | 2023-05-02 A | PCO645.01 | 100% | 2023-04-12 | 2023-05-02 | MBRT DSC [24 h] | 24 | 24 | 24 | DBC,ELECRICAL SUB | ZONE-2 | ELECTRICAL | 2-2667 | 2-2667 |
| 2-1747 |  | MAD AND 11TH, DUCT BANK WORK - AFTER EASEMENT DELAY | 5d | 2023-08-22 A | 2023-09-13 A | 2-1742 | 100% | 2023-08-22 | 2023-08-28 | MBRT NEW [40 h] | 40 | 128 | 128 | DBC,ELECRICAL SUB | ZONE-2 | ELECTRICAL | 2-1747 | 2-1747 |

| ID | WBS | Activity | Duration | Start | Finish | Predecessors | Complete | Planned start | Planned finish | Resources | Cost | Actual cost | user_text2 | user_number6 | MBRT-ZONE | MBRT-LOCATION | MBRT-SCOPE | MBRT-TYPE | MBRT-ACTIVITY | MBRT-NIGHT | user_text1 |
| --- | --- | --- | --- | --- | --- | --- | --- | --- | --- | --- | --- | --- | --- | --- | --- | --- | --- | --- | --- | --- | --- |
|  | 4 | **WATERLINE WORK** |  | 2022-05-23 | 2023-04-21 |  |  |  |  |  |  |  |  |  |  |  |  |  |  |  |  |
|  | 1 | **STAGE 2 (BROADWAY TO 11TH)** |  | 2022-05-23 | 2022-09-08 |  |  |  |  |  |  |  |  |  |  |  |  |  |  |  |  |
| 2-1160 |  | TEMP MAIN, SERVICES & LATERALS, STAGE 2 (BROADWAY TO 11TH) | 4d | 2022-05-23 A | 2022-06-24 A | PMP-0017, SC-0031 SS, 2-1146 | 100% | 2022-05-02 | 2022-05-05 | MBRT BASE [184 h] | 184 | 184 | UNS | 184 | ZONE-2 | BROADWAY | WATERLINE | CIVIL |  |  |  |
| 2-1161 |  | FLUSH, PRESSURE TEST & DISINFECT TEMP MAIN, STAGE 2 (BROADWAY TO 11TH) | 2d | 2022-06-03 A | 2022-06-06 A | 2-1160 | 100% | 2022-06-01 | 2022-06-02 | MBRT BASE [16 h] | 16 | 16 | UNS | 16 | ZONE-2 | BROADWAY | WATERLINE | CIVIL |  |  |  |
| 2-1162 |  | BAC T RESULTS, STAGE 2 (BROADWAY TO 11TH) | 3d | 2022-06-07 A | 2022-06-09 A | 2-1161 | 100% | 2022-06-03 | 2022-06-07 | MBRT BASE [24 h] | 24 | 24 | CITY | 24 | ZONE-2 | BROADWAY | WATERLINE | CIVIL | BACT |  |  |
| 2-1163 |  | SPU CUSTOMER NOTIFICATON, STAGE 2 (BROADWAY TO 11TH) | 5d | 2022-06-10 A | 2022-06-10 A | 2-1162 | 100% | 2022-06-08 | 2022-06-14 | MBRT BASE |  |  | CITY | 0 | ZONE-2 | BROADWAY | WATERLINE | CIVIL | BACT |  |  |
| 2-1164 |  | TAP TEM MAIN 1/CC01, STAGE 2 (BROADWAY TO 11TH) | 1d | 2022-06-11 A | 2022-06-11 A | 2-1163 | 100% | 2022-06-15 | 2022-06-15 | MBRT BASE |  | 8 | CITY ,UNM | 0 | ZONE-2 | BROADWAY | WATERLINE | CIVIL |  |  |  |
| 2-1165 |  | TAP TEMP MAIN 2 & 3 / CC03, STAGE 2 (BROADWAY TO 11TH) | 1d | 2022-06-12 A | 2022-06-12 A | 2-1164 | 100% | 2022-07-06 | 2022-07-06 | MBRT BASE |  | 8 | CITY ,UNM | 0 | ZONE-2 | BROADWAY | WATERLINE | CIVIL |  |  |  |
| 2-1166 |  | TRANSFER SERVICES TO TEMP MAIN, STAGE 2 (BROADWAY TO 11TH) | 2d | 2022-06-13 A | 2022-06-13 A | 2-1165 | 100% | 2022-07-07 | 2022-07-08 | MBRT BASE |  | 8 | CITY ,UNM | 0 | ZONE-2 | BROADWAY | WATERLINE | CIVIL |  |  |  |
| 2-1167 |  | CUT & CAP CCO1, CC02 STAGE 2 (BROADWAY TO 11TH) | 1d | 2022-06-14 A | 2022-06-23 A | 2-1166 | 100% | 2022-06-08 | 2022-06-08 | MBRT BASE [64 h] | 64 | 64 | CITY ,UNM | 64 | ZONE-2 | BROADWAY | WATERLINE | CIVIL |  | NIGHT |  |
| 2-1667 |  | SPU DELAY CC04, STAGE 2 (BROADWAY TO 11TH) | 1d | 2022-06-15 A | 2022-07-22 A | 2-1167 | 100% | 2022-06-08 | 2022-06-08 | MBRT NEW [8 h] | 8 | 216 | CITY ,UNM | 216 | ZONE-2 | BROADWAY | WATERLINE | CIVIL |  | NIGHT |  |
| 2-1168 |  | INST MAIN TO STA 253+78 INCLUDING VALVE CHAMBERS, STAGE 2 (BROADWAY TO 11TH) | 14d | 2022-06-27 A | 2022-07-13 A | 2-1167, PMP-0017, PMP-0023, PMP-0019 | 100% | 2022-06-20 | 2022-07-08 | MBRT BASE [96 h] | 96 | 96 | UNM | 96 | ZONE-2 | BROADWAY | WATERLINE | CIVIL |  |  |  |
| PCO296.01 |  | DSC 218-I-beams in roadway zone 2 waterline | 5d | 2022-06-29 A | 2022-07-01 A | MS-0025 | 100% | 2023-02-27 | 2023-03-03 | MBRT DSC [16 h] | 16 | 16 |  | 16 |  |  |  |  |  |  | WATER |
| 2-1239 |  | NOTIFY SPU, TEST STATIONS | 3d | 2022-07-14 A | 2022-07-18 A | 2-1168 | 100% | 2022-08-31 | 2022-09-02 | MBRT BASE [24 h] | 24 | 24 |  | 24 |  |  |  |  |  |  |  |
| PCO333.01 |  | DSC 243-Re-Excavate Cut & Cap Stage 2 | 5d | 2022-07-25 A | 2022-07-26 A | MS-0025 | 100% | 2023-02-27 | 2023-03-03 | MBRT DSC [8 h] | 8 | 8 |  | 8 |  |  |  |  |  |  |  |
| 2-1662 |  | CUT & CAP CC04, STAGE 2 (BROADWAY TO 11TH) | 1d | 2022-07-25 A | 2022-07-25 A | 2-1667 | 100% | 2022-07-08 | 2022-07-08 | MBRT NEW [8 h] | 8 | 8 | CITY ,UNM | 8 | ZONE-2 | BROADWAY | WATERLINE | CIVIL |  | NIGHT |  |
| 2-1672 |  | INST MAIN TO STA 253+78 INCLUDING ADDED VALVE CHAMBER, STAGE 2 (BROADWAY TO 11TH) AFTER SPU DELAY | 14d | 2022-07-26 A | 2022-08-05 A | 2-1168 | 100% | 2022-07-12 | 2022-07-29 | MBRT NEW [112 h] | 112 | 72 | UNM | 72 | ZONE-2 | BROADWAY | WATERLINE | CIVIL |  |  |  |
| 2-1169 |  | INST MAIN AT BROADWAY, STAGE 2 (BROADWAY TO 11TH) | 1d | 2022-08-08 A | 2022-08-08 A | 2-1168, 2-1672 | 100% | 2022-08-19 | 2022-08-19 | MBRT BASE [8 h] | 8 | 8 | UNM | 8 | ZONE-2 | BROADWAY | WATERLINE | CIVIL |  |  |  |
| PCO345.01 |  | DSC 254-Stage 2 Water Main, CDF obstructions | 5d | 2022-08-09 A | 2022-08-26 A | MS-0025 | 100% | 2023-02-27 | 2023-03-03 | MBRT DSC [104 h] | 104 | 104 |  | 104 |  |  |  |  |  |  |  |
| 2-1170 |  | INST MAIN AT 11TH, STAGE 2 (BROADWAY TO 11TH) | 1d | 2022-08-09 A | 2022-08-09 A | 2-1169, 2-1672 | 100% | 2022-08-22 | 2022-08-22 | MBRT BASE [8 h] | 8 | 8 | UNM | 8 | ZONE-2 | BROADWAY | WATERLINE | CIVIL |  |  |  |
| 2-1171 |  | INST THRUST BLOCKS & THRUST COLLARS, STAGE 2 (BROADWAY TO 11TH) | 2d | 2022-08-10 A | 2022-08-11 A | 2-1170 | 100% | 2022-08-23 | 2022-08-24 | MBRT BASE [16 h] | 16 | 16 | UNM | 16 | ZONE-2 | BROADWAY | WATERLINE | CIVIL |  |  |  |
| 2-1172 |  | INST FIRE HYDRANTS, STAGE 2 (BROADWAY TO 11TH) | 2d | 2022-08-12 A | 2022-08-12 A | 2-1171, 2-1662 | 100% | 2022-08-25 | 2022-08-26 | MBRT BASE [8 h] | 8 | 8 | UNM | 8 | ZONE-2 | BROADWAY | WATERLINE | CIVIL |  |  |  |
| 2-1173 |  | FLUSH, TEST & DISINFECT MAIN, STAGE 2 (BROADWAY TO 11TH) | 2d | 2022-08-15 A | 2022-08-16 A | 2-1172 | 100% | 2022-08-29 | 2022-08-30 | MBRT BASE [16 h] | 16 | 16 | UNM | 16 | ZONE-2 | BROADWAY | WATERLINE | CIVIL |  |  |  |
| 2-1174 |  | BAC T RESULTS, STAGE 2 (BROADWAY TO 11TH) | 3d | 2022-08-17 A | 2022-08-19 A | 2-1173 | 100% | 2022-08-31 | 2022-09-02 | MBRT BASE [24 h] | 24 | 24 | CITY | 24 | ZONE-2 | BROADWAY | WATERLINE | CIVIL | BACT |  |  |
| 2-1175 |  | 5d NOTICE FOR SPU, STAGE 2 (BROADWAY TO 11TH) | 5d | 2022-08-22 A | 2022-08-26 A | 2-1174 | 100% | 2022-09-06 | 2022-09-12 | MBRT BASE |  |  | CITY | 40 | ZONE-2 | BROADWAY | WATERLINE | CIVIL | BACT |  |  |
| 2-1176 |  | CONNECT NEW MAIN AT CC02, STAGE 2 (BROADWAY TO 11TH) | 1d | 2022-08-31 A | 2022-09-01 A | 2-1175 | 100% | 2022-09-08 | 2022-09-08 | MBRT BASE [16 h] | 16 | 16 | CITY ,UNM | 16 | ZONE-2 | BROADWAY | WATERLINE | CIVIL |  | NIGHT |  |
| 2-1177 |  | TRANSFER ALL SERVICES: TEMP MAIN 01,02 & 03 TO NEW MAIN, STAGE 2 (BROADWAY TO 11TH) | 3d | 2022-09-01 A | 2022-09-02 A | 2-1176 | 100% | 2022-09-09 | 2022-09-13 | MBRT BASE [16 h] | 16 | 16 | CITY ,UNM | 16 | ZONE-2 | BROADWAY | WATERLINE | CIVIL |  |  |  |
| 2-1178 |  | CONNECT AT CC01 & CC03, STAGE 2 (BROADWAY TO 11TH) | 1d | 2022-09-01 A | 2022-09-01 A | 2-1177 | 100% |  |  | MBRT BASE [8 h] | 8 | 8 | CITY ,UNM | 8 | ZONE-2 | BROADWAY | WATERLINE | CIVIL |  | NIGHT |  |
| 2-1179 |  | TEST STATIONS, STAGE 2 (BROADWAY TO 11TH) | 2d | 2022-09-02 A | 2022-09-02 A | 2-1178, 2-1239 FF | 100% | 2022-10-04 | 2022-10-05 | MBRT BASE [8 h] | 8 | 8 | UNM | 8 | ZONE-2 | BROADWAY | WATERLINE | CIVIL |  |  |  |
| 2-1180 |  | REM TEMP MAIN, STAGE 2 (BROADWAY TO 11TH) | 3d | 2022-09-06 A | 2022-09-08 A | 2-1179 | 100% | 2022-10-11 | 2022-10-13 | MBRT BASE [24 h] | 24 | 24 | UNM | 24 | ZONE-2 | BROADWAY | WATERLINE | CIVIL |  |  |  |

| ID | WBS | Activity | Duration | Start | Finish | Predecessors | Complete | Planned start | Planned finish | Calendar | Resources | Cost | Actual cost | user_text1 | user_number6 | user_text2 | MBRT-ZONE | MBRT-LOCATION | MBRT-SCOPE | MBRT-TYPE | MBRT-ACTIVITY | MBRT-NIGHT | MBRT-RESP |
| --- | --- | --- | --- | --- | --- | --- | --- | --- | --- | --- | --- | --- | --- | --- | --- | --- | --- | --- | --- | --- | --- | --- | --- |
|  | 2 | **STAGE 3 (11TH TO 12TH)** |  | 2022-06-02 | 2022-12-14 |  |  |  |  |  |  |  |  |  |  |  |  |  |  |  |  |  |  |
| PCO267.01 |  | DSC 193-duct bank conflict with temp main at 11th | 5d | 2022-06-02 A | 2022-06-04 A | MS-0025 | 100% | 2023-02-27 | 2023-03-03 |  | MBRT DSC [16 h] | 16 | 16 | water | 16 |  |  |  |  |  |  |  |  |
| 2-1182 |  | TEMP MAIN, SERVICES & LATERALS, TO3B, T04, & T05, STAGE 3 (11TH TO 12TH) | 4d | 2022-08-22 A | 2022-09-09 A | 2-1173 | 100% | 2022-08-31 | 2022-09-06 |  | MBRT BASE [112 h] | 112 | 112 |  | 112 | UNS | ZONE-2 | 11 | WATERLINE | CIVIL |  |  |  |
| PCO363.01 |  | DSC 264-Seattle U Fire Service Coroded Pipe | 5d | 2022-08-28 A | 2022-09-04 A | MS-0025 | 100% | 2023-02-27 | 2023-03-03 |  | MBRT DSC [40 h] | 40 | 40 |  | 40 |  |  |  |  |  |  |  |  |
| PCO377.01 |  | DSC 275-Stage 3 WM Ductbank Conflict | 5d | 2022-09-08 A | 2022-09-09 A | MS-0025 | 100% | 2023-02-27 | 2023-03-03 |  | MBRT DSC [8 h] | 8 | 8 |  | 8 |  |  |  |  |  |  |  |  |
| 2-1183 |  | FLUSH, TEST, DISINFECT TEMP MAIN, STAGE 3 (11TH TO 12TH) | 2d | 2022-09-12 A | 2022-09-13 A | 2-1182 | 100% | 2022-09-07 | 2022-09-08 |  | MBRT BASE [16 h] | 16 | 16 |  | 16 | UNS | ZONE-2 | 11 | WATERLINE | CIVIL |  |  |  |
| 2-1184 |  | BAC T RESULTS, STAGE 3 (11TH TO 12TH) | 3d | 2022-09-14 A | 2022-09-16 A | 2-1183 | 100% | 2022-09-09 | 2022-09-13 |  | MBRT BASE [24 h] | 24 | 24 |  | 24 | CITY | ZONE-2 | 11 | WATERLINE | CIVIL | BACT |  |  |
| 2-1677 |  | FM300 ISSUED | 1d | 2022-09-15 A | 2022-09-15 A | MS-0025 | 100% | 2022-10-03 | 2022-10-03 |  | MBRT NEW [8 h] | 8 | 8 |  | 8 | CITY ,UNM | ZONE-2 | 11 | WATERLINE | CIVIL |  | NIGHT |  |
| 2-1682 |  | CITY/JANSEN NEGOTIATE FM300 CHANGE ORDER | 1d | 2022-09-16 A | 2022-10-03 A | 2-1677 | 100% | 2022-10-04 | 2022-10-04 |  | MBRT NEW [8 h] | 8 | 96 |  | 96 | CITY ,UNM | ZONE-2 | 11 | WATERLINE | CIVIL |  | NIGHT |  |
| 2-1185 |  | 5d NOTICE FOR SPU, STAGE 3 (11TH TO 12TH) | 5d | 2022-09-19 A | 2022-09-23 A | 2-1184 | 100% | 2022-09-14 | 2022-09-20 |  | MBRT BASE |  |  |  | 40 | CITY | ZONE-2 | 11 | WATERLINE | CIVIL | BACT |  |  |
| 2-1186 |  | TAP MAIN AT CC06/CONNECT TO T04, STAGE 3 (11TH TO 12TH) | 1d | 2022-09-24 A | 2022-09-25 A | 2-1178, 2-1185 | 100% | 2022-10-03 | 2022-10-03 |  | MBRT BASE |  | 8 |  | 0 | CITY ,UNM | ZONE-2 | 11 | WATERLINE | CIVIL |  |  |  |
| 2-1187 |  | TAP MAIN AT CC07/ CONNECTION TO T05, STAGE 3 (11TH TO 12TH) | 1d | 2022-09-24 A | 2022-09-25 A | 2-1186 | 100% | 2022-10-03 | 2022-10-03 |  | MBRT BASE |  | 8 |  | 0 | CITY ,UNM | ZONE-2 | 11 | WATERLINE | CIVIL |  |  |  |
| 2-1188 |  | TAP HYDRANT & MAKE CONNECTION TO T03B, STAGE 3 (11TH TO 12TH) | 1d | 2022-09-24 A | 2022-09-25 A | 2-1187 | 100% | 2022-10-03 | 2022-10-03 |  | MBRT BASE |  | 8 |  | 0 | CITY ,UNM | ZONE-2 | 11 | WATERLINE | CIVIL |  |  |  |
| 2-1687 |  | FM300 UTILITY VERIFICATION | 1d | 2022-09-26 A | 2022-09-26 A | 2-1682 | 100% | 2022-10-05 | 2022-10-05 |  | MBRT NEW [8 h] | 8 | 8 |  | 8 | CITY ,UNM | ZONE-2 | 11 | WATERLINE | CIVIL |  | NIGHT |  |
| 2-1717 |  | 10 DAY DELAY - SPU CREW AVAILABILITY | 10d | 2022-09-26 A | 2022-10-07 A | 2-1188 | 100% | 2022-10-03 | 2022-10-14 |  | MBRT NEW [80 h] | 80 | 80 |  | 80 | CITY ,UNM | ZONE-2 | 11 | WATERLINE | CIVIL |  |  |  |
| 2-1692 |  | INSTALL FM300 TEMP MAIN | 2d | 2022-09-27 A | 2022-09-28 A | 2-1687 SS | 100% | 2022-10-06 | 2022-10-07 |  | MBRT NEW [16 h] | 16 | 16 |  | 16 | CITY ,UNM | ZONE-2 | 11 | WATERLINE | CIVIL |  | NIGHT |  |
| 2-1697 |  | FM300 TESTING/FLUSHING | 2d | 2022-09-28 A | 2022-09-29 A | 2-1692 | 100% | 2022-10-04 | 2022-10-05 |  | MBRT NEW [16 h] | 16 | 16 |  | 16 | CITY ,UNM | ZONE-2 | 11 | WATERLINE | CIVIL |  | NIGHT |  |
| 2-1702 |  | FM300 BAC-T RESULTS | 3d | 2022-09-30 A | 2022-10-04 A | 2-1697 | 100% | 2022-10-04 | 2022-10-06 | 7 day per week | MBRT NEW [24 h] | 24 | 40 |  | 40 | CITY ,UNM | ZONE-2 | 11 | WATERLINE | CIVIL |  | NIGHT |  |
| 2-1707 |  | FM300 5 DAY NOTIFICATION FOR SPU | 2d | 2022-10-05 A | 2022-10-06 A | 2-1702 | 100% |  |  |  | MBRT NEW [16 h] | 16 |  |  | 16 | CITY ,UNM | ZONE-2 | 11 | WATERLINE | CIVIL |  | NIGHT |  |
| PCO407.01 |  | DSC 298-Unknown unlocated Water Service Stage 3 | 5d | 2022-10-06 A | 2022-10-06 A | MS-0025 | 100% | 2023-02-27 | 2023-03-03 |  | MBRT DSC [8 h] | 8 | 8 |  | 8 |  |  |  |  |  |  |  |  |
| 2-1712 |  | FM300 TIE-IN TEMP MAIN | 1d | 2022-10-07 A | 2022-10-07 A | 2-1707 | 100% |  |  |  | MBRT NEW [8 h] | 8 | 8 |  | 8 | CITY ,UNM | ZONE-2 | 11 | WATERLINE | CIVIL |  | NIGHT |  |
| 2-1189 |  | CC05, CC06 & CC07, STAGE 3 (11TH TO 12TH) | 1d | 2022-10-08 A | 2022-10-08 A | 2-1188, 2-1712, 2-1717 | 100% | 2022-10-10 | 2022-10-10 |  | MBRT BASE |  | 8 |  | 0 | CITY ,UNM | ZONE-2 | 11 | WATERLINE | CIVIL |  | NIGHT |  |
| 2-1190 |  | INST NEW MAIN 253+95 TO 257+41, STAGE 3 (11TH TO 12TH) - PRIOR TO DELAY | 5d | 2022-10-10 A | 2022-10-14 A | 2-1189 | 100% | 2022-10-11 | 2022-10-17 |  | MBRT BASE [40 h] | 40 | 40 |  | 40 | UNM | ZONE-2 | 11 | WATERLINE | CIVIL |  |  |  |
| PCO417.01 |  | DSC 307-42" Watermain leaking at 12th | 5d | 2022-10-17 A | 2022-10-24 A | MS-0025 | 100% | 2023-02-27 | 2023-03-03 |  | MBRT DSC [40 h] | 40 | 40 |  | 40 |  |  |  |  |  |  |  |  |
| 2-1727 |  | OWNER DELAY - LEAKING 48' MAIN; COULD NOT COMPLETE ON 1ST WEEKEND | 5d | 2022-10-17 A | 2022-10-21 A | 2-1190 | 100% | 2022-10-11 | 2022-10-17 |  | MBRT NEW [40 h] | 40 | 40 |  | 40 | UNM | ZONE-2 | 11 | WATERLINE | CIVIL |  |  |  |
| 2-1722 |  | INST NEW MAIN 253+95 TO 257+41, STAGE 3 (11TH TO 12TH) - AFTER DELAY | 5d | 2022-10-22 A | 2022-10-22 A | 2-1727 | 100% | 2022-10-11 | 2022-10-17 |  | MBRT NEW [40 h] | 40 | 8 |  | 0 | UNM | ZONE-2 | 11 | WATERLINE | CIVIL |  |  |  |
| 2-1191 |  | INST MAIN 12A 8+05 TO 11+32 INCLUDING VALVE CHAMBERS, STAGE 3 (11TH TO 12TH) | 6d | 2022-10-24 A | 2022-11-15 A | 2-1190, 2-1722 | 100% | 2022-10-18 | 2022-10-25 |  | MBRT BASE [128 h] | 128 | 128 |  | 128 | UNM | ZONE-2 | 11 | WATERLINE | CIVIL |  |  |  |
| PCO437.01 |  | DSC 319-Unknown Unlocated Conduit 12th and Union | 5d | 2022-10-25 A | 2022-10-27 A | MS-0025 | 100% | 2023-02-27 | 2023-03-03 |  | MBRT DSC [16 h] | 16 | 16 |  | 16 |  |  |  |  |  |  |  |  |
| PCO446.01 |  | DSC 326-Unlocated Ductbanks Stage 3 Watermain | 5d | 2022-11-02 A | 2022-11-11 A | MS-0025 | 100% | 2023-02-27 | 2023-03-03 |  | MBRT DSC [56 h] | 56 | 56 |  | 56 |  |  |  |  |  |  |  |  |
| 2-1192 |  | INST THRUST BLOCKS, STAGE 3 (11TH TO 12TH) | 2d | 2022-11-02 A | 2022-11-11 A | 2-1191 | 100% | 2022-11-08 | 2022-11-09 |  | MBRT BASE [64 h] | 64 | 64 |  | 64 | UNM | ZONE-2 | 11 | WATERLINE | CIVIL |  |  |  |
| PCO450.01 |  | DSC 329-unknown unlocated utilitiy in conflict with valve vault on 12th | 5d | 2022-11-07 A | 2022-11-09 A | MS-0025 | 100% | 2023-02-27 | 2023-03-03 |  | MBRT DSC [16 h] | 16 | 16 |  | 16 |  |  |  |  |  |  |  |  |
| 2-1251 |  | NOTIFY SPU, TEST STATIONS 72HOURS | 3d | 2022-11-08 A | 2022-11-10 A | 2-1191 | 100% |  |  |  | MBRT BASE [24 h] | 24 | 24 |  | 24 |  |  |  |  |  |  |  |  |
| PCO458.01 |  | DSC 335-8" Service conflict with 48" transition main | 5d | 2022-11-14 A | 2022-11-25 A | MS-0025 | 100% | 2023-02-27 | 2023-03-03 |  | MBRT DSC [56 h] | 56 | 56 |  | 56 |  |  |  |  |  |  |  |  |
| PCO461.01 |  | DSC 336-Unknown Ductbanks Stage 3 | 5d | 2022-11-15 A | 2022-11-17 A | MS-0025 | 100% | 2023-02-27 | 2023-03-03 |  | MBRT DSC [16 h] | 16 | 16 |  | 16 |  |  |  |  |  |  |  |  |
| 2-1193 |  | INST FIRE HYDRANTS, STAGE 3 (11TH TO 12TH) | 1d | 2022-11-15 A | 2022-11-15 A | 2-1192 | 100% | 2022-11-10 | 2022-11-10 |  | MBRT BASE [8 h] | 8 | 8 |  | 8 | UNM | ZONE-2 | 11 | WATERLINE | CIVIL |  |  |  |
| 2-1194 |  | FLUSH, TEST & DISINFECT MAIN, STAGE 3 (11TH TO 12TH) | 2d | 2022-11-16 A | 2022-11-17 A | 2-1193 | 100% | 2022-11-11 | 2022-11-15 |  | MBRT BASE [16 h] | 16 | 16 |  | 16 | UNM | ZONE-2 | 11 | WATERLINE | CIVIL |  |  |  |
| 2-1195 |  | BAC T RESULTS, STAGE 3 (11TH TO 12TH) | 3d | 2022-11-18 A | 2022-11-20 A | 2-1194 | 100% | 2022-11-16 | 2022-11-18 |  | MBRT BASE [8 h] | 8 | 8 |  | 8 | CITY | ZONE-2 | 11 | WATERLINE | CIVIL |  |  |  |
| 2-1196 |  | 5d NOTICE FOR SPU, STAGE 3 (11TH TO 12TH) | 5d | 2022-11-21 A | 2022-11-29 A | 2-1195 | 100% |  |  |  | MBRT BASE |  |  |  | 40 | CITY | ZONE-2 | 11 | WATERLINE | CIVIL | BACT |  |  |
| 2-1197 |  | SPU CONNECT MAIN AT 253+95, STAGE 3 (11TH TO 12TH) | 1d | 2022-11-29 A | 2022-11-29 A | 2-1196 | 100% | 2023-01-03 | 2023-01-03 |  | MBRT BASE [8 h] | 8 | 8 |  | 8 | CITY ,UNM | ZONE-2 | 11 | WATERLINE | CIVIL |  |  | SPU |
| 2-1198 |  | SPU TRANSFER SERVICES FROM T04 TO MAIN, STAGE 3 (11TH TO 12TH) | 2d | 2022-11-29 A | 2022-11-29 A | 2-1197 | 100% | 2023-01-04 | 2023-01-05 |  | MBRT BASE [8 h] | 8 | 8 |  | 8 | CITY ,UNM | ZONE-2 | 11 | WATERLINE | CIVIL |  |  | SPU |
| 2-1907 |  | OWNER DELAY - WAIT FOR SPU TO COMPLETE WORK, STAGE 3 (11TH TO 12TH) | 2d | 2022-11-30 A | 2022-12-09 A | 2-1198 | 100% | 2023-01-04 | 2023-01-05 |  | MBRT NEW [16 h] | 16 | 64 |  | 64 | CITY ,UNM | ZONE-2 | 11 | WATERLINE | CIVIL |  |  | SPU |
| 2-1199 |  | SPU CONECT AT CC06 & CC07, STAGE 3 (11TH TO 12TH) | 1d | 2022-12-12 A | 2022-12-12 A | 2-1198, 2-1907 | 100% | 2023-01-06 | 2023-01-06 |  | MBRT BASE [8 h] | 8 | 8 |  | 8 | CITY ,UNM | ZONE-2 | 11 | WATERLINE | CIVIL |  | NIGHT | SPU |
| 2-1200 |  | SPU TRANFER SERVICES FROM T06 TO MAIN, STAGE 3 (11TH TO 12TH) | 2d | 2022-12-13 A | 2022-12-13 A | 2-1199 | 100% | 2023-01-09 | 2023-01-10 |  | MBRT BASE [8 h] | 8 | 8 |  | 8 | CITY ,UNM | ZONE-2 | 11 | WATERLINE | CIVIL |  |  | SPU |
| 2-1201 |  | TEST STATIONS, STAGE 3 (11TH TO 12TH) | 1d | 2022-12-13 A | 2022-12-13 A | 2-1200, 2-1251 | 100% | 2023-01-11 | 2023-01-11 |  | MBRT BASE [8 h] | 8 | 8 |  | 8 | UNM | ZONE-2 | 11 | WATERLINE | CIVIL |  |  |  |
| 2-1202 |  | REMOVE TEMP MAIN, STAGE 3 (11TH TO 12TH) | 3d | 2022-12-14 A | 2022-12-14 A | 2-1201 | 100% | 2023-01-12 | 2023-01-17 |  | MBRT BASE [8 h] | 8 | 8 |  | 8 | UNM | ZONE-2 | 11 | WATERLINE | CIVIL |  |  |  |

| ID | WBS | Activity | Duration | Start | Finish | Predecessors | Complete | Planned start | Planned finish | Resources | Cost | Actual cost | user_text2 | user_number6 | MBRT-ZONE | MBRT-LOCATION | MBRT-SCOPE | MBRT-TYPE | MBRT-ACTIVITY | MBRT-RESP | MBRT-NIGHT |
| --- | --- | --- | --- | --- | --- | --- | --- | --- | --- | --- | --- | --- | --- | --- | --- | --- | --- | --- | --- | --- | --- |
|  | 3 | **STAGE 4 (12TH TO 13TH)** |  | 2022-12-05 | 2023-02-20 |  |  |  |  |  |  |  |  |  |  |  |  |  |  |  |  |
| 2-1204 |  | TEMP MAIN, SERVICES & LATERALS, T10 & T07, STAGE 4 (12TH TO 13) | 4d | 2022-12-05 A | 2022-12-05 A | 2-1193, 2-1154, 2-1194, 3-1749 | 100% | 2023-01-03 | 2023-01-06 | MBRT BASE [8 h] | 8 | 8 | UNS | 8 | ZONE-2 | 12 | WATERLINE | CIVIL |  |  |  |
| 2-1205 |  | FLUSH, TEST & DISINFECT TEMP MAIN, STAGE 4 (12TH TO 13) | 2d | 2022-12-06 A | 2022-12-07 A | 2-1204 | 100% | 2023-01-03 | 2023-01-04 | MBRT BASE [16 h] | 16 | 16 | UNS | 16 | ZONE-2 | 12 | WATERLINE | CIVIL |  |  |  |
| 2-1206 |  | BAC T RESULTS, STAGE 4 (12TH TO 13) | 3d | 2022-12-08 A | 2022-12-12 A | 2-1205 | 100% | 2023-01-05 | 2023-01-09 | MBRT BASE [24 h] | 24 | 24 | CITY | 24 | ZONE-2 | 12 | WATERLINE | CIVIL | BACT |  |  |
| 2-1207 |  | 5d NOTICE FOR SPU, STAGE 4 (12TH TO 13) | 5d | 2022-12-13 A | 2022-12-19 A | 2-1206 | 100% | 2023-01-10 | 2023-01-17 | MBRT BASE |  |  | CITY | 40 | ZONE-2 | 12 | WATERLINE | CIVIL | BACT |  |  |
| 2-1208 |  | SPU TAP HYDRANT CONECT TO T16, STAGE 4 (12TH TO 13) | 1d | 2022-12-13 A | 2022-12-13 A | 2-1207 | 100% | 2023-01-18 | 2023-01-18 | MBRT BASE [8 h] | 8 | 8 | CITY ,UNM | 8 | ZONE-2 | 12 | WATERLINE | CIVIL |  | SPU |  |
| 2-1211 |  | SPU TRANSFER SERVICES TO TEMP MAIN, STAGE 4 (12TH TO 13) | 3d | 2022-12-13 A | 2022-12-13 A | 2-1208 | 100% | 2023-01-19 | 2023-01-23 | MBRT BASE [8 h] | 8 | 8 | CITY ,UNM | 8 | ZONE-2 | 12 | WATERLINE | CIVIL |  | SPU |  |
| 2-1897 |  | FIRST DELAY WAITING FOR SPU TRANSFER SERVICES TO TEMP MAIN, STAGE 4 (12TH TO 13) | 3d | 2022-12-20 A | 2022-12-23 A | 2-1211 | 100% | 2023-01-24 | 2023-01-26 | MBRT NEW [24 h] | 24 | 32 | CITY ,UNM | 32 | ZONE-2 | 12 | WATERLINE | CIVIL |  | SPU |  |
| 2-1902 |  | SECOND DELAY WAITING FOR SPU TO PERFORM CUT AND CAPS, STAGE 4 (12TH TO 13) | 3d | 2022-12-27 A | 2023-01-06 A | 2-1897 | 100% | 2023-01-27 | 2023-01-31 | MBRT NEW [24 h] | 24 | 64 | CITY ,UNM | 64 | ZONE-2 | 12 | WATERLINE | CIVIL |  | SPU |  |
| 2-1212 |  | SPU CUT & CAPS, STAGE 4 (12TH TO 13) | 1d | 2023-01-07 A | 2023-01-07 A | 2-1211, 2-1902 | 100% | 2023-02-01 | 2023-02-01 | MBRT BASE |  | 8 | CITY ,UNM | 0 | ZONE-2 | 12 | WATERLINE | CIVIL |  | SPU | NIGHT |
| 2-1214 |  | INST MAIN FROM STA 257+55 TO 269+00, STAGE 4 & 5 (12TH TO 13) | 14d | 2023-01-09 A | 2023-01-13 A | 2-1212 | 100% | 2023-02-02 | 2023-02-22 | MBRT BASE [40 h] | 40 | 40 | UNM | 40 | ZONE-2 | 12 | WATERLINE | CIVIL |  |  |  |
| 2-1220 |  | INST THRUST BLOCKS, STAGE 4 (12TH TO 13) | 2d | 2023-01-12 A | 2023-01-13 A | 2-1214 | 100% | 2023-01-03 | 2023-01-04 | MBRT BASE [16 h] | 16 | 16 | UNM | 16 | ZONE-2 | 12 | WATERLINE | CIVIL |  |  |  |
| 2-1221 |  | INST THRUST COLLARS, STAGE 4 (12TH TO 13) | 3d | 2023-01-12 A | 2023-01-13 A | 2-1220 | 100% | 2023-01-05 | 2023-01-09 | MBRT BASE [16 h] | 16 | 16 | UNM | 16 | ZONE-2 | 12 | WATERLINE | CIVIL |  |  |  |
| 2-1222 |  | FLUSH, TEST & DISINFECT MAIN, STAGE 4 (12TH TO 13) | 2d | 2023-01-14 A | 2023-01-15 A | 2-1221 | 100% | 2023-01-10 | 2023-01-11 | MBRT BASE |  | 8 | UNM | 0 | ZONE-2 | 12 | WATERLINE | CIVIL |  |  |  |
| 2-1223 |  | BAC T RESULTS, STAGE 4 (12TH TO 13) | 3d | 2023-01-17 A | 2023-01-19 A | 2-1222 | 100% | 2023-01-12 | 2023-01-17 | MBRT BASE [24 h] | 24 | 24 | CITY | 24 | ZONE-2 | 12 | WATERLINE | CIVIL | BACT |  |  |
| 2-1224 |  | 5d NOTICE FOR SPU, STAGE 4 (12TH TO 13) | 5d | 2023-01-20 A | 2023-01-26 A | 2-1223 | 100% | 2023-01-18 | 2023-01-24 | MBRT BASE |  |  | CITY | 40 | ZONE-2 | 12 | WATERLINE | CIVIL | BACT |  |  |
| 2-1225 |  | PRIOR TO DELAY - SPU CONECT AT MAIN, STAGE 4 (12TH TO 13) | 1d | 2023-01-27 A | 2023-01-27 A | 2-1224 | 100% | 2023-01-25 | 2023-01-25 | MBRT BASE [8 h] | 8 | 8 | CITY ,UNM | 8 | ZONE-2 | 12 | WATERLINE | CIVIL |  | SPU | NIGHT |
| PCO544.01 |  | DSC 384-Stage 4 crossing at Union conflict with duct bank | 5d | 2023-01-28 A | 2023-02-08 A | MS-0025 | 100% | 2023-02-27 | 2023-03-03 | MBRT DSC [56 h] | 56 | 56 |  | 56 |  |  |  |  |  |  |  |
| 2-1227 |  | SPU TRANSFER SERVICES, STAGE 4 (12TH TO 13) | 2d | 2023-01-28 A | 2023-01-28 A | 2-1225, 2-1922 | 100% | 2023-02-03 | 2023-02-06 | MBRT BASE |  | 8 | CITY ,UNM | 0 | ZONE-2 | 12 | WATERLINE | CIVIL |  | SPU |  |
| 2-1228 |  | SPU CONNECT AT 13TH (12TH TO 13) | 1d | 2023-01-28 A | 2023-01-28 A | 2-1227 | 100% | 2023-02-07 | 2023-02-07 | MBRT BASE |  | 8 | CITY ,UNM | 0 | ZONE-2 | 12 | WATERLINE | CIVIL |  | SPU | NIGHT |
| 2-1230 |  | TEST STATIONS, STAGE 4 (12TH TO 13) | 3d | 2023-01-30 A | 2023-01-30 A | 2-1228 | 100% | 2023-02-08 | 2023-02-10 | MBRT BASE [8 h] | 8 | 8 | UNM | 8 | ZONE-2 | 12 | WATERLINE | CIVIL |  |  |  |
| 2-1912 |  | OWNER CAUSED DELAY - SPU CONECT AT MAIN, STAGE 4 (12TH TO 13) | 1d | 2023-01-30 A | 2023-02-18 A | 2-1225 | 100% | 2023-01-25 | 2023-01-25 | MBRT NEW [8 h] | 8 | 120 | CITY ,UNM | 120 | ZONE-2 | 12 | WATERLINE | CIVIL |  | SPU | NIGHT |
| 2-1917 |  | OWNER DIRECTION TO PERFORM INVESTIGATIVE EXCAVATION, STAGE 4 (12TH TO 13) | 1d | 2023-02-06 A | 2023-02-07 A | 2-1912 | 100% | 2023-02-01 | 2023-02-01 | MBRT NEW [8 h] | 8 | 16 | CITY ,UNM | 16 | ZONE-2 | 12 | WATERLINE | CIVIL |  | SPU | NIGHT |
| 2-1922 |  | AFTER DELAY - SPU CONNECT AT UNION , STAGE 4 (12TH TO 13) | 1d | 2023-02-19 A | 2023-02-19 A | 2-1917 | 100% | 2023-02-02 | 2023-02-02 | MBRT NEW [8 h] | 8 | 8 | CITY ,UNM | 0 | ZONE-2 | 12 | WATERLINE | CIVIL |  | SPU | NIGHT |
| 2-1231 |  | REM TEMP WATER MAINS, STAGE 4 (12TH TO 13) | 4d | 2023-02-20 A | 2023-02-20 A | 2-1230 | 100% | 2023-02-13 | 2023-02-16 | MBRT BASE |  | 8 | UNM | 0 | ZONE-2 | 12 | WATERLINE | CIVIL |  |  |  |

| ID | WBS | Activity | Duration | Start | Finish | Predecessors | Complete | Planned start | Planned finish | Resources | Cost | Actual cost | user_text2 | user_number6 | MBRT-ZONE | MBRT-LOCATION | MBRT-SCOPE | MBRT-TYPE | MBRT-RESP | MBRT-NIGHT | MBRT-ACTIVITY | user_text10 | user_text8 | ~SELECT |
| --- | --- | --- | --- | --- | --- | --- | --- | --- | --- | --- | --- | --- | --- | --- | --- | --- | --- | --- | --- | --- | --- | --- | --- | --- |
|  | 5 | **STAGE 4B (13TH TO 14TH)** |  | 2023-02-15 | 2023-03-28 |  |  |  |  |  |  |  |  |  |  |  |  |  |  |  |  |  |  |  |
| 2-1927 |  | INSTALL MAIN LINE, STAGE 4B (13TH TO 14TH) | 1d | 2023-02-15 A | 2023-03-14 A | 2-1802 | 100% | 2023-03-01 | 2023-03-01 | MBRT NEW [8 h] | 8 | 152 | CITY ,UNM | 152 | ZONE-2 | 12 | WATERLINE | CIVIL | SPU | NIGHT |  |  |  |  |
| 2-1932 |  | TESTING AND FLUSHING, STAGE 4B (13TH TO 14TH) | 2d | 2023-03-15 A | 2023-03-17 A | 2-1927, 2-1231 | 100% | 2023-03-02 | 2023-03-03 | MBRT NEW [16 h] | 16 | 24 | CITY ,UNM | 24 | ZONE-2 | 12 | WATERLINE | CIVIL | SPU |  |  |  |  |  |
| 2-1937 |  | 5 DAY WAIT FOR SPU, STAGE 4B (13TH TO 14TH) | 1d | 2023-03-20 A | 2023-03-24 A | 2-1932 | 100% | 2023-03-06 | 2023-03-06 | MBRT NEW [8 h] | 8 | 40 | CITY ,UNM | 40 | ZONE-2 | 12 | WATERLINE | CIVIL | SPU | NIGHT |  |  |  |  |
| 2-1942 |  | COMMISSION STAGE 4B, STAGE 4B (13TH TO 14TH) | 4d | 2023-03-27 A | 2023-03-28 A | 2-1937 | 100% | 2023-03-07 | 2023-03-10 | MBRT NEW [32 h] | 32 | 16 | UNM | 16 | ZONE-2 | 12 | WATERLINE | CIVIL |  |  |  |  |  |  |
|  | 4 | **STAGE 5 (13TH TO 15TH)** |  | 2022-12-27 | 2023-04-21 |  |  |  |  |  |  |  |  |  |  |  |  |  |  |  |  |  |  |  |
| 2-1752 |  | TEMP MAIN, SERVICES & LATERALS, T16, T17, T06 & T11 STAGE 5 (12TH TO 15) | 4d | 2022-12-27 A | 2023-01-05 A | 2-1897 | 100% | 2023-01-03 | 2023-01-06 | MBRT NEW [32 h] | 32 | 56 | UNS | 56 | ZONE-2 | 12 | WATERLINE | CIVIL |  |  |  |  |  |  |
| 2-1757 |  | FLUSH, TEST & DISINFECT TEMP MAIN, STAGE 5 (12TH TO 15) | 2d | 2023-01-06 A | 2023-01-10 A | 2-1752 | 100% | 2023-01-09 | 2023-01-10 | MBRT NEW [16 h] | 16 | 24 | UNS | 24 | ZONE-2 | 12 | WATERLINE | CIVIL |  |  |  |  |  |  |
| 2-1762 |  | BAC T RESULTS, STAGE 5 (12TH TO 15) | 3d | 2023-01-11 A | 2023-01-13 A | 2-1757 | 100% |  |  | MBRT NEW [24 h] | 24 | 24 | CITY | 24 | ZONE-2 | 12 | WATERLINE | CIVIL |  |  | BACT |  |  |  |
| 2-1767 |  | 5d NOTICE FOR SPU, STAGE 5 (12TH TO 15) | 5d | 2023-01-17 A | 2023-01-23 A | 2-1762 | 100% |  |  | MBRT NEW [40 h] | 40 |  | CITY | 40 | ZONE-2 | 12 | WATERLINE | CIVIL |  |  | BACT |  |  |  |
| PCO519.01 |  | DSC 371-Stage 5 Temp Connection at 15th | 5d | 2023-01-19 A | 2023-01-26 A | MS-0025 | 100% | 2023-02-27 | 2023-03-03 | MBRT DSC [40 h] | 40 | 40 |  | 40 |  |  |  |  |  |  |  |  |  |  |
| PCO521.01 |  | DSC 373-Stage 5 Cut and Cap Concrete Obstruction | 5d | 2023-01-19 A | 2023-01-20 A | MS-0025 | 100% | 2023-02-27 | 2023-03-03 | MBRT DSC [8 h] | 8 | 8 |  | 8 |  |  |  |  |  |  |  |  |  |  |
| 2-1772 |  | SPU TAP HYDRANT CONECT TO T16, T17, T06 & T16 STAGE 5 (12TH TO 15) | 1d | 2023-01-25 A | 2023-01-25 A | 2-1767 | 100% | 2023-01-24 | 2023-01-24 | MBRT NEW [8 h] | 8 | 8 | CITY ,UNM | 8 | ZONE-2 | 12 | WATERLINE | CIVIL | SPU |  |  |  |  |  |
| 2-1782 |  | SPU TRANSFER SERVICES TO TEMP MAIN, STAGE 5 (12TH TO 15) | 3d | 2023-01-26 A | 2023-01-26 A | 2-1772 | 100% | 2023-01-25 | 2023-01-27 | MBRT NEW [24 h] | 24 | 8 | CITY ,UNM | 8 | ZONE-2 | 12 | WATERLINE | CIVIL | SPU |  |  |  |  |  |
| 2-1802 |  | SPU CUT & CAP AT STAGE 5 (12TH TO 15) | 1d | 2023-01-30 A | 2023-01-31 A | 2-1782 | 100% | 2023-01-30 | 2023-01-30 | MBRT NEW [8 h] | 8 | 8 | CITY ,UNM | 8 | ZONE-2 | 12 | WATERLINE | CIVIL | SPU | NIGHT |  |  |  |  |
| 2-1792 |  | INST MAIN, STAGE 5 (12TH TO 15) | 14d | 2023-02-15 A | 2023-04-04 A | 2-1802 | 100% | 2023-01-31 | 2023-02-17 | MBRT NEW [112 h] | 112 | 272 | UNM | 272 | ZONE-2 | 12 | WATERLINE | CIVIL |  |  |  | 2-1792 | 2-1792 |  |
| 2-1837 |  | INST THRUST COLLARS, STAGE 5 (12TH TO 15) | 3d | 2023-02-22 A | 2023-04-04 A | 2-1792 SS | 100% | 2023-02-23 | 2023-02-27 | MBRT NEW [24 h] | 24 | 240 | UNM | 240 | ZONE-2 | 12 | WATERLINE | CIVIL |  |  |  | 2-1837 | 2-1837 |  |
| PCO627.01 |  | DSC 439-WATERMAIN CONFLICT WITH MAIN AT 15TH | 14d | 2023-04-03 A | 2023-04-04 A | 2-1792, 2-1837 | 100% | 2023-01-31 | 2023-02-17 | MBRT DSC [16 h] | 16 | 16 | UNM | 16 | ZONE-2 | 12 | WATERLINE | CIVIL |  |  |  | PCO627.01 | PCO627.01 |  |
| 2-1832 |  | INST THRUST BLOCKS, STAGE 5 (12TH TO 15) | 2d | 2023-04-05 A | 2023-04-05 A | 2-1792 | 100% | 2023-04-20 | 2023-04-21 | MBRT NEW [16 h] | 16 | 8 | UNM | 8 | ZONE-2 | 12 | WATERLINE | CIVIL |  |  |  | 2-1832 | 2-1832 |  |
| 2-1842 |  | FLUSH, TEST & DISINFECT MAIN, STAGE 5 (12TH TO 15) | 2d | 2023-04-06 A | 2023-04-07 A | 2-1837, 2-1832 | 100% | 2023-04-27 | 2023-04-28 | MBRT NEW [16 h] | 16 | 16 | UNM | 16 | ZONE-2 | 12 | WATERLINE | CIVIL |  |  |  | 2-1842 | 2-1842 |  |
| 2-1847 |  | BAC T RESULTS, STAGE 5 (12TH TO 15) | 3d | 2023-04-07 A | 2023-04-09 A | 2-1842 | 100% | 2023-05-01 | 2023-05-03 | MBRT NEW [24 h] | 24 | 8 | CITY | 8 | ZONE-2 | 12 | WATERLINE | CIVIL |  |  | BACT | 2-1847 | 2-1847 |  |
| 2-1852 |  | 5d NOTICE FOR SPU, STAGE 5 (12TH TO 15) | 5d | 2023-04-10 A | 2023-04-14 A | 2-1847 | 100% | 2023-05-04 | 2023-05-10 | MBRT NEW [40 h] | 40 |  | CITY | 40 | ZONE-2 | 12 | WATERLINE | CIVIL |  |  | BACT | 2-1852 | 2-1852 |  |
| 2-1857 |  | SPU CONECT AT 13TH NEW MAIN, STAGE 5 (12TH TO 15) | 1d | 2023-04-15 A | 2023-04-19 A | 2-1852 | 100% | 2023-05-11 | 2023-05-11 | MBRT NEW [8 h] | 8 | 24 | CITY ,UNM | 24 | ZONE-2 | 12 | WATERLINE | CIVIL | SPU | NIGHT |  | 2-1857 | 2-1857 |  |
| 2-1867 |  | SPU TRANSFER SERVICES, STAGE 5 (12TH TO 15) | 2d | 2023-04-15 A | 2023-04-19 A | 2-1857 | 100% | 2023-05-12 | 2023-05-15 | MBRT NEW [16 h] | 16 | 24 | CITY ,UNM | 24 | ZONE-2 | 12 | WATERLINE | CIVIL | SPU |  |  | 2-1867 | 2-1867 |  |
| 2-1872 |  | SPU CONNECT AT CC08 & CC09, STAGE 5 (12TH TO 15) | 1d | 2023-04-15 A | 2023-04-19 A | 2-1867 | 100% | 2023-05-16 | 2023-05-16 | MBRT NEW [8 h] | 8 | 24 | CITY ,UNM | 24 | ZONE-2 | 12 | WATERLINE | CIVIL | SPU | NIGHT |  | 2-1872 | 2-1872 |  |
| 2-1882 |  | REM TEMP WATER MAIN, STAGE 5 (12TH TO 15) | 4d | 2023-04-20 A | 2023-04-21 A | 2-1872 | 100% | 2023-05-17 | 2023-05-22 | MBRT NEW [32 h] | 32 | 16 | UNM | 16 | ZONE-2 | 12 | WATERLINE | CIVIL |  |  |  | 2-1882 | 2-1882 | X |

| ID | WBS | Activity | Duration | Start | Finish | Predecessors | Complete | Planned start | Planned finish | Calendar | Resources | Cost | Actual cost | ~SELECT | user_text2 | user_number6 | MBRT-ZONE | MBRT-LOCATION | user_text10 | user_text8 | MBRT-SCOPE | MBRT-TYPE | MBRT-ROADWAY | MBRT-SIDE | MBRT-DELAY | MBRT-RESP | ~TEXT |
| --- | --- | --- | --- | --- | --- | --- | --- | --- | --- | --- | --- | --- | --- | --- | --- | --- | --- | --- | --- | --- | --- | --- | --- | --- | --- | --- | --- |
|  | 5 | **TEMP SIGNALS** |  | 2022-03-22 | 2022-09-24 |  |  |  |  |  |  |  |  |  |  |  |  |  |  |  |  |  |  |  |  |  |  |
| 2-1233 |  | 11TH AVE TEMP SIGNALS, TEMP SIGNALS | 3d | 2022-03-22 A | 2022-03-24 A | SC-0031 SS | 100% | 2022-05-02 | 2022-05-04 |  | MBRT BASE [24 h] | 24 | 24 | X | ELECRICAL SUB | 24 | ZONE-2 | 11 |  |  |  |  |  |  |  |  |  |
| 2-1234 |  | 12TH AVE TEMP SIGNALS, TEMP SIGNALS | 3d | 2022-03-25 A | 2022-03-29 A | 2-1233 | 100% |  |  |  | MBRT BASE [24 h] | 24 | 24 | X | ELECRICAL SUB | 24 | ZONE-2 | 12 |  |  |  |  |  |  |  |  |  |
| 2-1235 |  | 13TH AVE TEMP SIGNALS, TEMP SIGNALS | 3d | 2022-03-30 A | 2022-04-01 A | 2-1234 | 100% |  |  |  | MBRT BASE [24 h] | 24 | 24 | X | ELECRICAL SUB | 24 | ZONE-2 | 13 |  |  |  |  |  |  |  |  |  |
| 2-1236 |  | 14TH AVE TEMP SIGNALS, TEMP SIGNALS | 3d | 2022-04-04 A | 2022-04-06 A | 2-1235 | 100% |  |  |  | MBRT BASE [24 h] | 24 | 24 | X | ELECRICAL SUB | 24 | ZONE-2 | 14 |  |  |  |  |  |  |  |  |  |
| 2-1237 |  | 15TH AVE TEMP SIGNALS, TEMP SIGNALS | 3d | 2022-04-07 A | 2022-04-11 A | 2-1236 | 100% |  |  |  | MBRT BASE [24 h] | 24 | 24 | X | ELECRICAL SUB | 24 | ZONE-2 | 15 |  |  |  |  |  |  |  |  |  |
| PCO355.01 |  | DSC 260-Temp Signals 14th tied to Pike ST | 5d | 2022-08-23 A | 2022-09-24 A | MS-0025 | 100% | 2023-02-27 | 2023-03-03 |  | MBRT DSC [184 h] | 184 | 184 |  |  | 184 |  |  |  |  |  |  |  |  |  |  |  |
|  | 6 | **ROADWAY WORK** |  | 2022-07-07 | 2024-03-23 |  |  |  |  |  |  |  |  |  |  |  |  |  |  |  |  |  |  |  |  |  |  |
|  | 1 | **ROADWAY BETWEEN INTERSECTIONS** |  | 2022-07-07 | 2023-10-27 |  |  |  |  |  |  |  |  |  |  |  |  |  |  |  |  |  |  |  |  |  |  |
|  | 1 | **10TH AVE** |  | 2023-02-14 | 2023-06-22 |  |  |  |  |  |  |  |  |  |  |  |  |  |  |  |  |  |  |  |  |  |  |
| PCO565.01 |  | DSC 399-Unknown unlocated conduit roadway 10th to 11th south | 5d | 2023-02-14 A | 2023-02-24 A | MS-0025 | 100% | 2023-02-27 | 2023-03-03 |  | MBRT DSC [56 h] | 56 | 56 |  |  | 56 |  |  |  |  |  |  |  |  |  |  |  |
| PCO566.01 |  | DSC 400-Comm Vault intertwined with cable car 10th ave | 5d | 2023-02-14 A | 2023-02-24 A | MS-0025 | 100% | 2023-02-27 | 2023-03-03 |  | MBRT DSC [56 h] | 56 | 56 |  |  | 56 |  |  |  |  |  |  |  |  |  |  |  |
| 2-1241 |  | DEMO ROAD - COMMON EX - TYPE 2, 10TH AVE | 6d | 2023-06-07 A | 2023-06-14 A | 2-1145, 2-1143, 2-1144 | 100% |  |  |  | MBRT BASE [48 h] | 48 | 48 |  | GRM | 48 | ZONE-2 | 10 | 2-1241 | 2-1241 | DEMOPREP | ROADWAY | RDWY |  |  |  |  |
| 2-1242 |  | F/P CURB AND GUTTER, 10TH AVE | 4d | 2023-06-15 A | 2023-06-20 A | 2-1241 | 100% |  |  |  | MBRT BASE [32 h] | 32 | 32 |  | COM | 32 | ZONE-2 | 10 | 2-1242 | 2-1242 | CURB | ROADWAY | RDWY |  |  |  |  |
| 2-1243 |  | ASPHALT PAVING, 10TH AVE | 2d | 2023-06-21 A | 2023-06-22 A | 2-1242 | 100% |  |  |  | MBRT BASE [16 h] | 16 | 16 |  | ASPHALT SUB | 16 | ZONE-2 | 10 | 2-1243 | 2-1243 |  | ROADWAY | RDWY |  |  |  |  |
|  | 4 | **BROADWAY TO 11TH NORTH SIDE** |  | 2022-09-26 | 2022-11-23 |  |  |  |  |  |  |  |  |  |  |  |  |  |  |  |  |  |  |  |  |  |  |
| 2-1259 |  | DEMO ROAD - COMMON EX - TYPE 2, BROADWAY TO 11TH NORTH SIDE | 10d | 2022-09-26 A | 2022-10-07 A | 2-1180, 2-1237 | 100% | 2022-10-06 | 2022-10-19 |  | MBRT BASE [80 h] | 80 | 80 |  | GRM | 80 | ZONE-2 | BROADWAY |  |  | DEMOPREP | ROADWAY | RDWY | NORTH | OCS |  |  |
| 2-1260 |  | CONDUIT RD CROSSING, BROADWAY TO 11TH NORTH SIDE | 10d | 2022-09-26 A | 2022-10-07 A | 2-1259 SS | 100% | 2022-10-06 | 2022-10-19 |  | MBRT BASE [80 h] | 80 | 80 |  | ELECRICAL SUB | 80 | ZONE-2 | BROADWAY |  |  |  | ROADWAY | RDWY | NORTH | OCS | PRIME |  |
| PCO413.01 |  | DSC 303-counduit directly under concretre NW 10th | 5d | 2022-10-10 A | 2022-10-11 A | MS-0025 | 100% | 2023-02-27 | 2023-03-03 |  | MBRT DSC [8 h] | 8 | 8 |  |  | 8 |  |  |  |  |  |  |  |  |  |  |  |
| 2-1261 |  | ROADWAY PAVING - 6 POURS, BROADWAY TO 11TH NORTH SIDE | 12d | 2022-10-28 A | 2022-11-11 A | 2-1260 | 100% | 2022-10-17 | 2022-11-01 |  | MBRT BASE [88 h] | 88 | 88 |  | COL | 88 | ZONE-2 | BROADWAY |  |  | PAVE-R | ROADWAY | RDWY | NORTH | OCS |  |  |
| 2-1262 |  | CONCRETE CURE, BROADWAY TO 11TH NORTH SIDE | 3d | 2022-11-11 A | 2022-11-14 A | 2-1261 | 100% | 2022-11-17 | 2022-11-19 | 7 day per week | MBRT BASE |  |  |  |  | 32 | ZONE-2 | BROADWAY |  |  |  | ROADWAY | RDWY | NORTH | OCS |  |  |
| 2-1263 |  | F/P CURB BROADWAY TO 11TH NORTH SIDE, BROADWAY TO 11TH NORTH SIDE | 3d | 2022-11-15 A | 2022-11-22 A | 2-1262 | 100% | 2022-11-21 | 2022-11-23 |  | MBRT BASE [48 h] | 48 | 48 |  | COM | 48 | ZONE-2 | BROADWAY |  |  | CURB | ROADWAY | RDWY | NORTH | OCS |  |  |
| 2-1264 |  | TEMP PATCH BROADWAY TO 11TH NORTH SIDE, BROADWAY TO 11TH NORTH SIDE | 1d | 2022-11-23 A | 2022-11-23 A | 2-1263 | 100% | 2022-11-28 | 2022-11-28 |  | MBRT BASE [8 h] | 8 | 8 |  | EA3 | 8 | ZONE-2 | BROADWAY |  |  |  | ROADWAY | RDWY | NORTH | OCS |  |  |
|  | 6 | **BROADWAY TO 11TH SOUTH SIDE** |  | 2023-01-31 | 2023-08-10 |  |  |  |  |  |  |  |  |  |  |  |  |  |  |  |  |  |  |  |  |  |  |
| 2-1947 |  | OWNER DELAY - RESEQUENCE PAVING NEEDED FOR KCM TO ALLOW WORK | 10d | 2023-01-31 A | 2023-02-03 A | 2-1245 | 100% | 2023-03-01 | 2023-03-14 |  | MBRT NEW [80 h] | 80 | 32 |  | GRM | 32 | ZONE-2 | BROADWAY |  |  | DEMOPREP | ROADWAY | RDWY | SOUTH | OCS |  |  |
| 2-1273 |  | DEMO ROAD - COMMON EX - TYPE 2, BROADWAY TO 11TH SOUTH SIDE | 10d | 2023-02-06 A | 2023-02-28 A | 2-1270, 2-1947 | 100% | 2023-03-01 | 2023-03-14 |  | MBRT BASE [128 h] | 128 | 128 |  | GRM | 128 | ZONE-2 | BROADWAY |  |  | DEMOPREP | ROADWAY | RDWY | SOUTH | OCS |  |  |
| 2-1274 |  | CONDUIT RD CROSSING, BROADWAY TO 11TH SOUTH SIDE | 10d | 2023-02-06 A | 2023-02-22 A | 2-1273 SS | 100% | 2023-03-01 | 2023-03-14 |  | MBRT BASE [96 h] | 96 | 96 |  | ELECRICAL SUB | 96 | ZONE-2 | BROADWAY |  |  |  | ROADWAY | RDWY | SOUTH | OCS | PRIME |  |
| 2-1952 |  | DELAY AWAITING SCL TO INSPECT CONDUIT | 10d | 2023-02-23 A | 2023-03-01 A | 2-1274 | 100% | 2023-03-01 | 2023-03-14 |  | MBRT NEW |  |  |  | GRM | 40 | ZONE-2 | BROADWAY |  |  | DEMOPREP | ROADWAY | RDWY | SOUTH | OCS |  |  |
| 2-1957 |  | DELAY EAST OF BROADWAY TO ALLOW COMCAST TO BORE | 8d | 2023-03-01 A | 2023-07-10 A | 2-1273 | 100% | 2023-03-01 | 2023-03-10 |  | MBRT NEW |  |  |  | GRM | 736 | ZONE-2 | BROADWAY | 2-1957 | 2-1957 | DEMOPREP | ROADWAY | RDWY | SOUTH | OCS |  |  |
| 2-1275 |  | ROADWAY PAVING - OTHER THAN DELAYED PORTION | 8d | 2023-03-02 A | 2023-04-07 A | 2-1274, 2-1271, 2-1952 | 100% | 2023-03-01 | 2023-03-10 |  | MBRT BASE [216 h] | 216 | 216 |  | COL | 216 | ZONE-2 | BROADWAY | 2-1275 | 2-1275 | PAVE-R | ROADWAY | RDWY | SOUTH | OCS |  | POLES2 |
| 2-1277 |  | F/P CURB, BROADWAY TO 11TH SOUTH SIDE | 3d | 2023-04-03 A | 2023-04-03 A | 2-1275 | 100% | 2023-04-21 | 2023-04-25 |  | MBRT BASE [8 h] | 8 | 8 |  | COM | 8 | ZONE-2 | BROADWAY | 2-1277 | 2-1277 | CURB | ROADWAY | RDWY | SOUTH | OCS |  |  |
| 2-1278 |  | TEMP PATCH, BROADWAY TO 11TH SOUTH SIDE | 1d | 2023-04-04 A | 2023-04-04 A | 2-1277, 2-1257 | 100% | 2023-04-26 | 2023-04-26 |  | MBRT BASE [8 h] | 8 | 8 |  | EA3 | 8 | ZONE-2 | BROADWAY | 2-1278 | 2-1278 |  | ROADWAY | RDWY | SOUTH | OCS |  |  |
| 2-1276 |  | CONCRETE CURE, BROADWAY TO 11TH SOUTH SIDE | 3d | 2023-04-08 A | 2023-04-10 A | 2-1275 | 100% | 2023-04-18 | 2023-04-20 | 7 day per week | MBRT BASE |  |  |  |  | 24 | ZONE-2 | BROADWAY | 2-1276 | 2-1276 |  | ROADWAY | RDWY | SOUTH | OCS |  |  |
| 2-2262 |  | REMOVE ROADWAY TYPE 2 DELAYED PORTION | 4d | 2023-07-11 A | 2023-07-14 A | 2-1957 | 100% | 2023-07-03 | 2023-07-07 |  | MBRT NEW [32 h] | 32 | 32 |  |  | 32 |  |  |  |  |  |  |  |  |  |  |  |
| DSC-558 |  | DSC 558 INLET PIPE PRE EXISITNG BROKEN | 2d | 2023-07-12 A | 2023-07-14 A | 2-2262 SS | 100% | 2023-07-03 | 2023-07-05 |  | MBRT DSC [16 h] | 16 | 16 |  |  | 16 |  |  |  |  |  |  |  |  |  |  |  |
| DSC-559 |  | DSC 559 UNKNOWN UNLOCATED CONDUIT | 2d | 2023-07-12 A | 2023-07-14 A | 2-2262 SS | 100% | 2023-07-03 | 2023-07-05 |  | MBRT DSC [16 h] | 16 | 16 |  |  | 16 |  |  |  |  |  |  |  |  |  |  |  |
| 2-1962 |  | ROADWAY PAVING - DELAYED PORTION | 4d | 2023-08-09 A | 2023-08-10 A | 2-1957, DSC-559, DSC-558, 2-2262 | 100% | 2023-07-31 | 2023-08-03 |  | MBRT NEW [32 h] | 32 | 16 |  | COL | 16 | ZONE-2 | BROADWAY | 2-1962 | 2-1962 | PAVE-R | ROADWAY | RDWY | SOUTH | OCS |  |  |

| ID | WBS | Activity | Duration | Start | Finish | Predecessors | Complete | Planned start | Planned finish | Calendar | Resources | Cost | Actual cost | user_text2 | user_number6 | MBRT-ZONE | MBRT-LOCATION | MBRT-SCOPE | MBRT-TYPE | MBRT-ROADWAY | MBRT-SIDE | MBRT-RESP | MBRT-DELAY |
| --- | --- | --- | --- | --- | --- | --- | --- | --- | --- | --- | --- | --- | --- | --- | --- | --- | --- | --- | --- | --- | --- | --- | --- |
|  | 2 | **UNION ST NORTH** |  | 2023-01-17 | 2023-02-20 |  |  |  |  |  |  |  |  |  |  |  |  |  |  |  |  |  |  |
| 2-1245 |  | DEMO ROAD - COMMON EX - TYPE 2, UNION ST NORTH | 10d | 2023-01-17 A | 2023-01-30 A | 2-1157, 2-1149, 2-1158, 2-1737 | 100% | 2023-01-31 | 2023-02-13 |  | MBRT BASE [80 h] | 80 | 80 | GRM | 80 | ZONE-2 | UNION | DEMOPREP | ROADWAY | RDWY | NORTH |  |  |
| 2-1246 |  | CONDUIT ROAD CROSSINGS, UNION ST NORTH | 10d | 2023-01-17 A | 2023-01-25 A | 2-1245 SS | 100% | 2023-01-31 | 2023-02-13 |  | MBRT BASE [56 h] | 56 | 56 | ELECRICAL SUB | 56 | ZONE-2 | UNION |  | ROADWAY | RDWY | NORTH | PRIME |  |
| 2-1247 |  | ROADWAY PAVING - 4 POURS, UNION ST NORTH | 8d | 2023-02-06 A | 2023-02-15 A | 2-1246 | 100% | 2023-02-14 | 2023-02-24 |  | MBRT BASE [64 h] | 64 | 64 | COL | 64 | ZONE-2 | UNION | PAVE-R | ROADWAY | RDWY | NORTH |  |  |
| 2-1249 |  | F/P CURB UNION ST NORTH, UNION ST NORTH | 3d | 2023-02-15 A | 2023-02-17 A | 2-1248 | 100% | 2023-02-28 | 2023-03-02 |  | MBRT BASE [24 h] | 24 | 24 | COM | 24 | ZONE-2 | UNION | CURB | ROADWAY | RDWY | NORTH |  |  |
| 2-1248 |  | CONCRETE CURE, UNION ST NORTH | 3d | 2023-02-16 A | 2023-02-18 A | 2-1247 | 100% | 2023-02-25 | 2023-02-27 | 7 day per week | MBRT BASE |  |  |  | 24 | ZONE-2 | UNION |  | ROADWAY | RDWY | NORTH |  |  |
| 2-1250 |  | TEMP PATCH UNION ST NORTH, UNION ST NORTH | 1d | 2023-02-20 A | 2023-02-20 A | 2-1249 | 100% | 2023-03-03 | 2023-03-03 |  | MBRT BASE |  | 8 | EA3 | 0 | ZONE-2 | UNION |  | ROADWAY | RDWY | NORTH |  |  |
|  | 3 | **UNION ST SOUTH** |  | 2022-07-07 | 2022-08-23 |  |  |  |  |  |  |  |  |  |  |  |  |  |  |  |  |  |  |
| 2-1252 |  | DEMO ROAD - COMMON EX - TYPE 2, UNION ST SOUTH | 12d | 2022-07-07 A | 2022-07-29 A | 2-1151 | 100% | 2022-07-07 | 2022-07-22 |  | MBRT BASE [136 h] | 136 | 136 | GRM | 136 | ZONE-2 | UNION | DEMOPREP | ROADWAY | RDWY | SOUTH |  |  |
| 2-1253 |  | CONDUIT ROAD CROSSINGS, UNION ST SOUTH | 12d | 2022-07-07 A | 2022-07-29 A | 2-1252 SS | 100% | 2022-07-01 | 2022-07-19 |  | MBRT BASE [136 h] | 136 | 136 | ELECRICAL SUB | 136 | ZONE-2 | UNION |  | ROADWAY | RDWY | SOUTH | PRIME |  |
| 2-1254 |  | ROADWAY PAVING - 8 POURS, UNION ST SOUTH | 16d | 2022-08-01 A | 2022-08-16 A | 2-1253 | 100% | 2022-08-01 | 2022-08-22 |  | MBRT BASE [96 h] | 96 | 96 | COL | 96 | ZONE-2 | UNION | PAVE-R | ROADWAY | RDWY | SOUTH |  |  |
| 2-1255 |  | CONCRETE CURE, UNION ST SOUTH | 3d | 2022-08-17 A | 2022-08-19 A | 2-1254 | 100% | 2022-08-23 | 2022-08-25 | 7 day per week | MBRT BASE |  |  |  | 24 | ZONE-2 | UNION |  | ROADWAY | RDWY | SOUTH |  |  |
| 2-1256 |  | F/P CURB, UNION ST SOUTH | 6d | 2022-08-18 A | 2022-08-19 A | 2-1255 | 100% | 2022-08-26 | 2022-09-02 |  | MBRT BASE [16 h] | 16 | 16 | COM | 16 | ZONE-2 | UNION | CURB | ROADWAY | RDWY | SOUTH |  |  |
| 2-1257 |  | TEMP PATCH, UNION ST SOUTH | 1d | 2022-08-22 A | 2022-08-23 A | 2-1256 | 100% | 2022-09-06 | 2022-09-06 |  | MBRT BASE [16 h] | 16 | 16 | EA3 | 16 | ZONE-2 | UNION |  | ROADWAY | RDWY | SOUTH |  |  |
|  | 5 | **11TH TO 12TH NORTH SIDE** |  | 2022-12-27 | 2023-02-06 |  |  |  |  |  |  |  |  |  |  |  |  |  |  |  |  |  |  |
| 2-1266 |  | DEMO ROAD - COMMON EX - TYPE 2, 11TH TO 12TH NORTH SIDE | 6d | 2022-12-27 A | 2023-01-13 A | 2-1264, 2-1233, 2-1234, 2-1253, 2-1202 | 100% | 2023-01-03 | 2023-01-10 |  | MBRT BASE [104 h] | 104 | 104 | GRM | 104 | ZONE-2 | 11 | DEMOPREP | ROADWAY | RDWY | NORTH |  | OCS |
| 2-1267 |  | CONDUIT RD CROSSING, 11TH TO 12TH NORTH SIDE | 6d | 2022-12-27 A | 2023-01-13 A | 2-1266 SS | 100% | 2023-01-03 | 2023-01-10 |  | MBRT BASE [104 h] | 104 | 104 | ELECRICAL SUB | 104 | ZONE-2 | 11 |  | ROADWAY | RDWY | NORTH | PRIME | OCS |
| PCO516.01 |  | DSC 368-Unknown unlocated conduit Union North side | 5d | 2023-01-17 A | 2023-01-19 A | MS-0025 | 100% | 2023-02-27 | 2023-03-03 |  | MBRT DSC [16 h] | 16 | 16 |  | 16 |  |  |  |  |  |  |  |  |
| PCO517.01 |  | DSC 369-CDF Obstruction Union north side | 5d | 2023-01-17 A | 2023-01-18 A | MS-0025 | 100% | 2023-02-27 | 2023-03-03 |  | MBRT DSC [8 h] | 8 | 8 |  | 8 |  |  |  |  |  |  |  |  |
| PCO536.01 |  | DSC 378-unknown abandoned Catch Basin 12th north side | 5d | 2023-01-24 A | 2023-01-25 A | MS-0025 | 100% | 2023-02-27 | 2023-03-03 |  | MBRT DSC [8 h] | 8 | 8 |  | 8 |  |  |  |  |  |  |  |  |
| 2-1268 |  | ROADWAY PAVING - 4 POURS, 11TH TO 12TH NORTH SIDE | 8d | 2023-01-24 A | 2023-02-03 A | 2-1267 | 100% | 2023-01-11 | 2023-01-23 |  | MBRT BASE [72 h] | 72 | 72 | COL | 72 | ZONE-2 | 11 | PAVE-R | ROADWAY | RDWY | NORTH |  | OCS |
| 2-1269 |  | CONCRETE CURE, 11TH TO 12TH NORTH SIDE | 3d | 2023-02-03 A | 2023-02-05 A | 2-1268 | 100% | 2023-02-10 | 2023-02-12 | 7 day per week | MBRT BASE |  |  |  | 24 | ZONE-2 | 11 |  | ROADWAY | RDWY | NORTH |  | OCS |
| 2-1270 |  | F/P CURB, 11TH TO 12TH NORTH SIDE | 2d | 2023-02-03 A | 2023-02-03 A | 2-1269 | 100% | 2023-02-13 | 2023-02-14 |  | MBRT BASE [8 h] | 8 | 8 | COM | 8 | ZONE-2 | 11 | CURB | ROADWAY | RDWY | NORTH |  | OCS |
| 2-1271 |  | TEMP PATCH, 11TH TO 12TH NORTH SIDE | 1d | 2023-02-06 A | 2023-02-06 A | 2-1270 | 100% | 2023-02-15 | 2023-02-15 |  | MBRT BASE [8 h] | 8 | 8 | EA3 | 8 | ZONE-2 | 11 |  | ROADWAY | RDWY | NORTH |  | OCS |

| ID | WBS | Activity | Duration | Start | Finish | Predecessors | Complete | Planned start | Planned finish | Calendar | Resources | Cost | Actual cost | user_text2 | user_number6 | MBRT-ZONE | MBRT-LOCATION | MBRT-SCOPE | MBRT-TYPE | MBRT-ROADWAY | MBRT-SIDE | MBRT-DELAY | MBRT-RESP | user_text10 | user_text8 | ~SELECT |
| --- | --- | --- | --- | --- | --- | --- | --- | --- | --- | --- | --- | --- | --- | --- | --- | --- | --- | --- | --- | --- | --- | --- | --- | --- | --- | --- |
|  | 7 | **11TH TO 12TH SOUTH SIDE** |  | 2023-03-01 | 2023-04-21 |  |  |  |  |  |  |  |  |  |  |  |  |  |  |  |  |  |  |  |  |  |
| 2-1280 |  | DEMO ROAD - COMMON EX - TYPE 2, 11TH TO 12TH SOUTH SIDE | 5d | 2023-03-01 A | 2023-03-09 A | 2-1274 | 100% | 2023-03-01 | 2023-03-07 |  | MBRT BASE [56 h] | 56 | 56 | GRM | 56 | ZONE-2 | 11 | DEMOPREP | ROADWAY | RDWY | SOUTH | OCS |  |  |  |  |
| 2-1281 |  | CONDUIT RD CROSSING, 11TH TO 12TH SOUTH SIDE | 6d | 2023-03-06 A | 2023-03-08 A | 2-1280 SS+1d | 100% | 2023-03-02 | 2023-03-09 |  | MBRT BASE [24 h] | 24 | 24 | ELECRICAL SUB | 24 | ZONE-2 | 11 |  | ROADWAY | RDWY | SOUTH | OCS | PRIME |  |  |  |
| 2-1282 |  | ROADWAY PAVING - 4 POURS, 11TH TO 12TH SOUTH SIDE | 8d | 2023-03-10 A | 2023-04-18 A | 2-1281 | 100% | 2023-03-10 | 2023-03-21 |  | MBRT BASE [224 h] | 224 | 224 | COL | 224 | ZONE-2 | 11 | PAVE-R | ROADWAY | RDWY | SOUTH | OCS |  | 2-1282 | 2-1282 |  |
| 2-1284 |  | F/P CURB, 11TH TO 12TH SOUTH SIDE | 2d | 2023-04-05 A | 2023-04-06 A | 2-1282 SS | 100% | 2023-04-17 | 2023-04-18 |  | MBRT BASE [16 h] | 16 | 16 | COM | 16 | ZONE-2 | 11 | CURB | ROADWAY | RDWY | SOUTH |  |  | 2-1284 | 2-1284 |  |
| 2-1285 |  | TEMP PATCH, 11TH TO 12TH SOUTH SIDE | 1d | 2023-04-07 A | 2023-04-07 A | 2-1284 | 100% | 2023-04-19 | 2023-04-19 |  | MBRT BASE [8 h] | 8 | 8 | EA3 | 8 | ZONE-2 | 11 |  | ROADWAY | RDWY | SOUTH |  |  | 2-1285 | 2-1285 |  |
| 2-1283 |  | CONCRETE CURE, 11TH TO 12TH SOUTH SIDE | 3d | 2023-04-18 A | 2023-04-21 A | 2-1282 | 100% | 2023-04-12 | 2023-04-14 | 7 day per week | MBRT BASE |  |  |  | 32 | ZONE-2 | 11 |  | ROADWAY | RDWY | SOUTH |  |  | 2-1283 | 2-1283 |  |
|  | 11 | **12TH TO 13TH NORTH SIDE** |  | 2023-04-24 | 2023-05-17 |  |  |  |  |  |  |  |  |  |  |  |  |  |  |  |  |  |  |  |  |  |
| 2-1308 |  | DEMO ROAD - COMMON EX - TYPE 2, 12TH TO 13TH NORTH SIDE | 5d | 2023-04-24 A | 2023-05-08 A | 2-1245, 2-1922, 2-1283, 2-1276, 2-1882 | 100% | 2023-05-04 | 2023-05-10 |  | MBRT BASE [88 h] | 88 | 88 | GRM | 88 | ZONE-2 | 12 | DEMOPREP | ROADWAY | RDWY | NORTH | OCS |  | 2-1308 | 2-1308 | X |
| 2-1309 |  | CONDUIT RD CROSSING, 12TH TO 13TH NORTH SIDE | 5d | 2023-04-24 A | 2023-05-03 A | 2-1308 SS | 100% | 2023-05-01 | 2023-05-05 |  | MBRT BASE [64 h] | 64 | 64 | ELECRICAL SUB | 64 | ZONE-2 | 12 |  | ROADWAY | RDWY | NORTH | OCS | PRIME | 2-1309 | 2-1309 |  |
| 2-1310 |  | ROADWAY PAVING - 4 POURS, 12TH TO 13TH NORTH SIDE | 7d | 2023-05-09 A | 2023-05-12 A | 2-1309, 2-1249 | 100% | 2023-05-08 | 2023-05-16 |  | MBRT BASE [32 h] | 32 | 32 | COL | 32 | ZONE-2 | 12 | PAVE-R | ROADWAY | RDWY | NORTH | OCS |  | 2-1310 | 2-1310 |  |
| 2-2722 |  | OWNER DIRECTED CHANGE TO JOINTS | 5d | 2023-05-11 A | 2023-05-11 A | 2-1308 | 100% | 2023-05-01 | 2023-05-05 |  | MBRT NEW [40 h] | 40 | 8 | ELECRICAL SUB | 8 | ZONE-2 | 12 |  | ROADWAY | RDWY | NORTH | OCS | PRIME | 2-2722 | 2-2722 |  |
| 2-1311 |  | CONCRETE CURE, 12TH TO 13TH NORTH SIDE | 3d | 2023-05-13 A | 2023-05-15 A | 2-1310, PCO682.01 | 100% | 2023-05-17 | 2023-05-19 | 7 day per week | MBRT BASE |  |  |  | 24 | ZONE-2 | 12 |  | ROADWAY | RDWY | NORTH |  |  | 2-1311 | 2-1311 |  |
| PCO682.01 |  | DSC 484-EXISTING CONCRETE DB CONFLICT WITH ROADWAY | 5d | 2023-05-13 A | 2023-05-15 A | 2-2722 | 100% | 2023-05-01 | 2023-05-05 |  | MBRT DSC [8 h] | 8 | 8 | ELECRICAL SUB | 8 | ZONE-2 | 12 |  | ROADWAY | RDWY | NORTH | OCS | PRIME | PCO682.01 | PCO682.01 |  |
| 2-1312 |  | F/P CURB, 12TH TO 13TH NORTH SIDE | 2d | 2023-05-15 A | 2023-05-16 A | 2-1311 | 100% | 2023-05-22 | 2023-05-23 |  | MBRT BASE [16 h] | 16 | 16 | COM | 16 | ZONE-2 | 12 | CURB | ROADWAY | RDWY | NORTH |  |  | 2-1312 | 2-1312 |  |
| 2-1313 |  | TEMP PATCH, 12TH TO 13TH NORTH SIDE | 1d | 2023-05-17 A | 2023-05-17 A | 2-1312 | 100% | 2023-05-24 | 2023-05-24 |  | MBRT BASE [8 h] | 8 | 8 | EA3 | 8 | ZONE-2 | 12 |  | ROADWAY | RDWY | NORTH |  |  | 2-1313 | 2-1313 |  |
|  | 8 | **12TH TO 13TH SOUTH SIDE** |  | 2023-03-10 | 2023-07-11 |  |  |  |  |  |  |  |  |  |  |  |  |  |  |  |  |  |  |  |  |  |
| 2-1967 |  | DELAY AWAITING COMCAST TO FINISH | 6d | 2023-03-10 A | 2023-04-21 A | 2-1280, 2-1283 | 100% | 2023-03-01 | 2023-03-08 |  | MBRT NEW |  |  | GRM | 248 | ZONE-2 | 12 | DEMOPREP | ROADWAY | RDWY | SOUTH |  |  | 2-1967 | 2-1967 |  |
| 2-1287 |  | DEMO ROAD - COMMON EX - TYPE 2, 12TH TO 13TH SOUTH SIDE | 6d | 2023-05-22 A | 2023-06-14 A | 2-1280, 2-1281, 2-1967 | 100% | 2023-05-01 | 2023-05-08 |  | MBRT BASE [136 h] | 136 | 136 | GRM | 136 | ZONE-2 | 12 | DEMOPREP | ROADWAY | RDWY | SOUTH |  |  | 2-1287 | 2-1287 |  |
| 2-1288 |  | CONDUIT RD CROSSING, 12TH TO 13TH SOUTH SIDE | 6d | 2023-05-22 A | 2023-06-06 A | 2-1287 SS | 100% | 2023-05-01 | 2023-05-08 |  | MBRT BASE [88 h] | 88 | 88 | ELECRICAL SUB | 88 | ZONE-2 | 12 |  | ROADWAY | RDWY | SOUTH |  | PRIME | 2-1288 | 2-1288 |  |
| PCO699.01 |  | DSC 501-CONDUIT ENCASED IN ROADWAY | 6d | 2023-05-23 A | 2023-05-24 A | 2-1287 SS | 100% | 2023-05-01 | 2023-05-08 |  | MBRT DSC [16 h] | 16 | 16 | GRM | 16 | ZONE-2 | 12 | DEMOPREP | ROADWAY | RDWY | SOUTH |  |  | PCO699.01 | PCO699.01 |  |
| PCO703.01 |  | DSC 504-DUCTBANK CONFLICT WITH ROADWAY | 6d | 2023-05-24 A | 2023-05-31 A | 2-1287 SS | 100% | 2023-05-01 | 2023-05-08 |  | MBRT DSC [40 h] | 40 | 40 | GRM | 40 | ZONE-2 | 12 | DEMOPREP | ROADWAY | RDWY | SOUTH |  |  | PCO703.01 | PCO703.01 |  |
| 2-2289 |  | MH 13 LID CONFLICT WITH ADA RAMP-ROTATE BARREL SECTION | 1d | 2023-06-14 A | 2023-06-14 A | 2-1287 | 100% |  |  |  | MBRT NEW [8 h] | 8 | 8 |  | 8 |  |  |  |  |  |  |  |  | 2-2289 | 2-2289 | x |
| 2-1289 |  | ROADWAY PAVING - 4 POURS, 12TH TO 13TH SOUTH SIDE | 16d | 2023-06-15 A | 2023-07-07 A | 2-1288, 2-1282, PCO699.01, PCO703.01, 2-1287, 2-2289 | 100% |  |  |  | MBRT BASE [128 h] | 128 | 128 | COL | 128 | ZONE-2 | 12 | PAVE-R | ROADWAY | RDWY | SOUTH | OCS |  | 2-1289 | 2-1289 |  |
| 2-1290 |  | CONCRETE CURE, 12TH TO 13TH SOUTH SIDE | 3d | 2023-07-07 A | 2023-07-07 A | 2-1289 | 100% | 2023-07-08 | 2023-07-10 | 7 day per week | MBRT BASE |  |  |  | 8 | ZONE-2 | 12 |  | ROADWAY | RDWY | SOUTH |  |  | 2-1290 | 2-1290 |  |
| 2-1291 |  | F/P CURB, 12TH TO 13TH SOUTH SIDE | 2d | 2023-07-10 A | 2023-07-10 A | 2-1290 | 100% | 2023-07-11 | 2023-07-12 |  | MBRT BASE [8 h] | 8 | 8 | COM | 8 | ZONE-2 | 12 | CURB | ROADWAY | RDWY | SOUTH |  |  | 2-1291 | 2-1291 |  |
| 2-1292 |  | TEMP PATCH, 12TH TO 13TH SOUTH SIDE | 1d | 2023-07-11 A | 2023-07-11 A | 2-1291 | 100% | 2023-07-13 | 2023-07-13 |  | MBRT BASE [8 h] | 8 | 8 | EA3 | 8 | ZONE-2 | 12 |  | ROADWAY | RDWY | SOUTH |  |  | 2-1292 | 2-1292 |  |

| ID | WBS | Activity | Duration | Start | Finish | Predecessors | Complete | Planned start | Planned finish | Calendar | Resources | Cost | Actual cost | user_text2 | user_number6 | user_text10 | user_text8 | MBRT-ZONE | MBRT-LOCATION | MBRT-SCOPE | MBRT-TYPE | MBRT-ROADWAY | MBRT-SIDE | MBRT-RESP | MBRT-DELAY | ~SELECT |
| --- | --- | --- | --- | --- | --- | --- | --- | --- | --- | --- | --- | --- | --- | --- | --- | --- | --- | --- | --- | --- | --- | --- | --- | --- | --- | --- |
|  | 12 | **13TH TO 14TH NORTH SIDE** |  | 2023-08-23 | 2023-10-27 |  |  |  |  |  |  |  |  |  |  |  |  |  |  |  |  |  |  |  |  |  |
| 2-1315 |  | DEMO ROAD - COMMON EX - TYPE 2, 13TH TO 14TH NORTH SIDE | 6d | 2023-08-23 A | 2023-09-15 A | 2-1308, 2-1292, 2-1962 SS+1d | 100% | 2023-08-14 | 2023-08-21 |  | MBRT BASE [136 h] | 136 | 136 | GRM | 136 | 2-1315 | 2-1315 | ZONE-2 | 13 | DEMOPREP | ROADWAY | RDWY | NORTH |  |  |  |
| 2-1316 |  | CONDUIT RD CROSSING, 13TH TO 14TH NORTH SIDE | 6d | 2023-09-01 A | 2023-09-08 A | 2-1315 SS | 100% | 2023-08-14 | 2023-08-21 |  | MBRT BASE [40 h] | 40 | 40 | ELECRICAL SUB | 40 | 2-1316 | 2-1316 | ZONE-2 | 13 |  | ROADWAY | RDWY | NORTH | PRIME |  |  |
| 2-1317 |  | ROADWAY PAVING - 2 POURS, 13TH TO 14TH NORTH SIDE | 8d | 2023-09-18 A | 2023-10-24 A | 2-1316, 2-1310 | 100% | 2023-09-11 | 2023-09-20 |  | MBRT BASE [216 h] | 216 | 216 | COL | 216 | 2-1317 | 2-1317 | ZONE-2 | 13 | PAVE-R | ROADWAY | RDWY | NORTH |  | OCS |  |
| 2-1319 |  | F/P CURB, 13TH TO 14TH NORTH SIDE | 1d | 2023-10-18 A | 2023-10-18 A | 2-1317 SS | 100% | 2023-10-16 | 2023-10-16 |  | MBRT BASE [8 h] | 8 | 8 | COM | 8 | 2-1319 | 2-1319 | ZONE-2 | 13 | CURB | ROADWAY | RDWY | NORTH |  | OCS |  |
| 2-1318 |  | CONCRETE CURE, 13TH TO 14TH NORTH SIDE | 3d | 2023-10-25 A | 2023-10-27 A | 2-1317 | 100% | 2023-10-11 | 2023-10-13 | 7 day per week | MBRT BASE |  |  |  | 24 | 2-1318 | 2-1318 | ZONE-2 | 13 |  | ROADWAY | RDWY | NORTH |  | OCS |  |
| 2-1320 |  | TEMP PATCH, 13TH TO 14TH NORTH SIDE | 1d | 2023-10-27 A | 2023-10-27 A | 2-1319, 2-1306, 2-1318 | 100% | 2023-10-17 | 2023-10-17 |  | MBRT BASE [8 h] | 8 | 8 | EA3 | 8 | 2-1320 | 2-1320 | ZONE-2 | 13 |  | ROADWAY | RDWY | NORTH |  | OCS |  |
|  | 9 | **13TH TO 14TH SOUTH SIDE** |  | 2023-05-25 | 2023-07-12 |  |  |  |  |  |  |  |  |  |  |  |  |  |  |  |  |  |  |  |  |  |
| 2-1294 |  | DEMO ROAD - COMMON EX - TYPE 2, 13TH TO 14TH SOUTH SIDE | 6d | 2023-05-25 A | 2023-06-14 A | 2-1942, 2-1288 SS | 100% | 2023-05-09 | 2023-05-16 |  | MBRT BASE [112 h] | 112 | 112 | GRM | 112 | 2-1294 | 2-1294 | ZONE-2 | 13 | DEMOPREP | ROADWAY | RDWY | SOUTH |  |  |  |
| 2-1295 |  | CONDUIT RD CROSSING, 13TH TO 14TH SOUTH SIDE | 6d | 2023-05-25 A | 2023-06-07 A | 2-1294 SS, PCO707.01 FF | 100% | 2023-05-09 | 2023-05-16 |  | MBRT BASE [72 h] | 72 | 72 | ELECRICAL SUB | 72 | 2-1295 | 2-1295 | ZONE-2 | 13 |  | ROADWAY | RDWY | SOUTH | PRIME |  |  |
| PCO707.01 |  | DSC 507-LEAKING WATER SERVICE | 6d | 2023-05-25 A | 2023-05-30 A | 2-1294 SS | 100% | 2023-05-09 | 2023-05-16 |  | MBRT DSC [24 h] | 24 | 24 | GRM | 24 | PCO707.01 | PCO707.01 | ZONE-2 | 13 | DEMOPREP | ROADWAY | RDWY | SOUTH |  |  |  |
| 2-2290 |  | DSC 508 Duct Bank Cast in Yoke To Be Removed | 2d | 2023-05-30 A | 2023-05-31 A | 2-1294 SS | 100% |  |  |  | MBRT DSC [16 h] | 16 | 16 |  | 16 | 2-2290 | 2-2290 |  |  |  |  |  |  |  |  | x |
| 2-1296 |  | ROADWAY PAVING - 4 POURS, 13TH TO 14TH SOUTH SIDE | 8d | 2023-06-20 A | 2023-07-07 A | 2-1295, 2-1289 SS, 2-2290 | 100% | 2023-07-03 | 2023-07-13 |  | MBRT BASE [104 h] | 104 | 104 | COL | 104 | 2-1296 | 2-1296 | ZONE-2 | 13 | PAVE-R | ROADWAY | RDWY | SOUTH |  | OCS |  |
| 2-1297 |  | CONCRETE CURE, 13TH TO 14TH SOUTH SIDE | 3d | 2023-07-07 A | 2023-07-07 A | 2-1296 | 100% | 2023-07-08 | 2023-07-10 | 7 day per week | MBRT BASE |  |  |  | 8 | 2-1297 | 2-1297 | ZONE-2 | 13 |  | ROADWAY | RDWY | SOUTH |  | OCS |  |
| 2-1298 |  | F/P CURB, 13TH TO 14TH SOUTH SIDE | 2d | 2023-07-10 A | 2023-07-10 A | 2-1297 | 100% | 2023-07-11 | 2023-07-12 |  | MBRT BASE [8 h] | 8 | 8 | COM | 8 | 2-1298 | 2-1298 | ZONE-2 | 13 | CURB | ROADWAY | RDWY | SOUTH |  | OCS |  |
| 2-1299 |  | TEMP PATCH, 13TH TO 14TH SOUTH SIDE | 1d | 2023-07-12 A | 2023-07-12 A | 2-1298 | 100% | 2023-07-13 | 2023-07-13 |  | MBRT BASE [8 h] | 8 | 8 | EA3 | 8 | 2-1299 | 2-1299 | ZONE-2 | 13 |  | ROADWAY | RDWY | SOUTH |  | OCS |  |
|  | 13 | **14TH TO 15TH NORTH SIDE** |  | 2023-08-23 | 2023-10-13 |  |  |  |  |  |  |  |  |  |  |  |  |  |  |  |  |  |  |  |  |  |
| 2-1322 |  | DEMO ROAD - COMMON EX - TYPE 2, 14TH TO 15TH NORTH SIDE | 6d | 2023-08-23 A | 2023-09-15 A | 2-1315 SS, 2-1237 | 100% | 2023-08-22 | 2023-08-29 |  | MBRT BASE [136 h] | 136 | 136 | GRM | 136 | 2-1322 | 2-1322 | ZONE-2 | 14 | DEMOPREP | ROADWAY | RDWY | NORTH |  |  |  |
| 2-1328 |  | DSC 608 15TH AND MADISON UNKNOWN UNMARKED STEEL PIPE | 4d | 2023-08-30 A | 2023-09-05 A | 2-1322 SS | 100% | 2023-08-14 | 2023-08-17 |  | MBRT DSC [32 h] | 32 | 32 |  | 32 |  |  |  |  |  |  |  |  |  |  |  |
| 2-1348 |  | DSC 609 15TH AND MADISON UNMARKED COMMLINE | 4d | 2023-08-30 A | 2023-09-05 A | 2-1322 SS | 100% | 2023-08-14 | 2023-08-17 |  | MBRT DSC [32 h] | 32 | 32 |  | 32 |  |  |  |  |  |  |  |  |  |  |  |
| 2-1323 |  | CONDUIT RD CROSSING, 14TH TO 15TH NORTH SIDE | 6d | 2023-08-31 A | 2023-09-08 A | 2-1322 SS, 2-1368 FF, 2-1348 FF, 2-1328 FF | 100% | 2023-08-22 | 2023-08-29 |  | MBRT BASE [48 h] | 48 | 48 | ELECRICAL SUB | 48 | 2-1323 | 2-1323 | ZONE-2 | 14 |  | ROADWAY | RDWY | NORTH | PRIME |  |  |
| 2-1368 |  | DSC 610 COM DUCT CONFLICT WITH CONDUIT | 6d | 2023-08-31 A | 2023-09-08 A | 2-1322 SS | 100% | 2023-08-14 | 2023-08-21 |  | MBRT DSC [48 h] | 48 | 48 |  | 48 |  |  |  |  |  |  |  |  |  |  |  |
| 2-1324 |  | ROADWAY PAVING - 2 POURS, 14TH TO 15TH NORTH SIDE | 8d | 2023-09-18 A | 2023-10-10 A | 2-1323, 2-1317 | 100% | 2023-09-21 | 2023-10-02 |  | MBRT BASE [128 h] | 128 | 128 | COL | 128 | 2-1324 | 2-1324 | ZONE-2 | 14 | PAVE-R | ROADWAY | RDWY | NORTH |  |  |  |
| 2-1325 |  | CONCRETE CURE, 14TH TO 15TH NORTH SIDE | 3d | 2023-10-09 A | 2023-10-10 A | 2-1324 | 100% | 2023-10-11 | 2023-10-13 | 7 day per week | MBRT BASE |  |  |  | 16 | 2-1325 | 2-1325 | ZONE-2 | 14 |  | ROADWAY | RDWY | NORTH |  |  |  |
| 2-1326 |  | F/P CURB, 14TH TO 15TH NORTH SIDE | 2d | 2023-10-11 A | 2023-10-12 A | 2-1325, 2-1313 | 100% | 2023-10-16 | 2023-10-17 |  | MBRT BASE [16 h] | 16 | 16 | COM | 16 | 2-1326 | 2-1326 | ZONE-2 | 14 | CURB | ROADWAY | RDWY | NORTH |  |  |  |
| 2-1327 |  | TEMP PATCH, 14TH TO 15TH NORTH SIDE | 1d | 2023-10-13 A | 2023-10-13 A | 2-1326 | 100% | 2023-10-18 | 2023-10-18 |  | MBRT BASE [8 h] | 8 | 8 | EA3 | 8 | 2-1327 | 2-1327 | ZONE-2 | 14 |  | ROADWAY | RDWY | NORTH |  |  |  |

| ID | WBS | Activity | Duration | Start | Finish | Predecessors | Complete | Planned start | Planned finish | Calendar | Resources | Cost | Actual cost | user_text2 | user_number6 | user_text10 | user_text8 | MBRT-ZONE | MBRT-LOCATION | MBRT-SCOPE | MBRT-TYPE | MBRT-ROADWAY | MBRT-SIDE | MBRT-RESP | ~SELECT | MBRT-NIGHT |
| --- | --- | --- | --- | --- | --- | --- | --- | --- | --- | --- | --- | --- | --- | --- | --- | --- | --- | --- | --- | --- | --- | --- | --- | --- | --- | --- |
|  | 10 | **14TH TO 15TH SOUTH SIDE** |  | 2023-06-15 | 2023-08-22 |  |  |  |  |  |  |  |  |  |  |  |  |  |  |  |  |  |  |  |  |  |
| 2-1301 |  | DEMO ROAD - COMMON EX - TYPE 2, 14TH TO 15TH SOUTH SIDE | 6d | 2023-06-15 A | 2023-06-22 A | 2-1295, 2-1288, 2-1294 | 100% |  |  |  | MBRT BASE [48 h] | 48 | 48 | GRM | 48 | 2-1301 | 2-1301 | ZONE-2 | 14 | DEMOPREP | ROADWAY | RDWY | SOUTH |  |  |  |
| 2-1302 |  | CONDUIT RD CROSSING, 14TH TO 15TH SOUTH SIDE | 6d | 2023-06-15 A | 2023-06-22 A | 2-1301 SS | 100% |  |  |  | MBRT BASE [48 h] | 48 | 48 | ELECRICAL SUB | 48 | 2-1302 | 2-1302 | ZONE-2 | 14 |  | ROADWAY | RDWY | SOUTH | PRIME |  |  |
| 2-2915 |  | DSC 529 UNKNOWN UNLOCATED CONDUITS | 11d | 2023-06-19 A | 2023-07-10 A | 2-1302 SS | 100% | 2023-06-19 | 2023-07-03 |  | MBRT DSC [120 h] | 120 | 120 |  | 120 | 2-2915 | 2-2915 |  |  |  |  |  |  |  | x |  |
| 2-2916 |  | DSC 531 DUCT BANK CONFLICT WITH MH 9 | 10d | 2023-06-20 A | 2023-08-07 A | 2-2915 SS+1d | 100% | 2023-06-20 | 2023-07-03 |  | MBRT DSC [264 h] | 264 | 264 |  | 264 | 2-2916 | 2-2916 |  |  |  |  |  |  |  | x |  |
| 2-2917 |  | DSC 533 WATERLINE CAST INTO CONCRETE | 1d | 2023-06-20 A | 2023-06-20 A | 2-2921 SS | 100% |  |  |  | MBRT DSC [8 h] | 8 | 8 |  | 8 | 2-2917 | 2-2917 |  |  |  |  |  |  |  | x |  |
| 2-2918 |  | DSC 534 Shallow Conduit 8" below surface damaged by breaker | 10d | 2023-06-20 A | 2023-08-07 A | 2-2916 SS | 100% | 2023-06-20 | 2023-07-03 |  | MBRT DSC [272 h] | 272 | 272 |  | 272 | 2-2918 | 2-2918 |  |  |  |  |  |  |  | x |  |
| 2-2921 |  | DSC 540 14th East Side Crossing Conflict with Ductbank | 10d | 2023-06-20 A | 2023-08-07 A | 2-2916 SS | 100% | 2023-06-20 | 2023-07-03 |  | MBRT DSC [272 h] | 272 | 272 |  | 272 | 2-2921 | 2-2921 |  |  |  |  |  |  |  | x |  |
| 2-1303 |  | ROADWAY PAVING - 4 POURS, 14TH TO 15TH SOUTH SIDE | 8d | 2023-08-08 A | 2023-08-17 A | 2-1302, 2-2921, 2-2918, 2-2916, 2-2915, 2-2917 | 100% | 2023-07-05 | 2023-07-14 |  | MBRT BASE [64 h] | 64 | 64 | COL | 64 | 2-1303 | 2-1303 | ZONE-2 | 14 | PAVE-R | ROADWAY | RDWY | SOUTH |  |  |  |
| 2-1304 |  | CONCRETE CURE, 14TH TO 15TH SOUTH SIDE | 3d | 2023-08-18 A | 2023-08-22 A | 2-1303 | 100% | 2023-08-18 | 2023-08-20 | 7 day per week | MBRT BASE |  |  |  | 40 | 2-1304 | 2-1304 | ZONE-2 | 14 |  | ROADWAY | RDWY | SOUTH |  |  |  |
| 2-1305 |  | F/P CURB, 14TH TO 15TH SOUTH SIDE | 2d | 2023-08-18 A | 2023-08-18 A | 2-1304 | 100% | 2023-08-21 | 2023-08-22 |  | MBRT BASE [8 h] | 8 | 8 | COM | 8 | 2-1305 | 2-1305 | ZONE-2 | 14 | CURB | ROADWAY | RDWY | SOUTH |  |  |  |
| 2-1306 |  | TEMP PATCH, 14TH TO 15TH SOUTH SIDE | 1d | 2023-08-22 A | 2023-08-22 A | 2-1305 | 100% | 2023-08-23 | 2023-08-23 |  | MBRT BASE [8 h] | 8 | 8 | EA3 | 8 | 2-1306 | 2-1306 | ZONE-2 | 14 |  | ROADWAY | RDWY | SOUTH |  |  |  |
|  | 14 | **14TH AND EAST PIKE** |  | 2023-09-18 | 2023-10-10 |  |  |  |  |  |  |  |  |  |  |  |  |  |  |  |  |  |  |  |  |  |
| 2-1329 |  | DEMO ROAD - COMMON EX - TYPE 2, 14TH & EAST PIKE | 6d | 2023-09-18 A | 2023-09-25 A | 2-1323, 2-1322 | 100% | 2023-09-13 | 2023-09-20 |  | MBRT BASE [48 h] | 48 | 48 | GRM | 48 | 2-1329 | 2-1329 | ZONE-2 | 14 | DEMOPREP | ROADWAY | RDWY |  |  |  |  |
| 2-1330 |  | CONDUIT RD CROSSING, 14TH & EAST PIKE | 6d | 2023-09-18 A | 2023-09-25 A | 2-1329 SS, 2-1747 | 100% | 2023-09-14 | 2023-09-21 |  | MBRT BASE [48 h] | 48 | 48 | ELECRICAL SUB | 48 | 2-1330 | 2-1330 | ZONE-2 | 14 |  | ROADWAY | RDWY |  | PRIME |  |  |
| 2-1331 |  | ROADWAY PAVING - 2 POURS, 14TH & EAST PIKE | 6d | 2023-10-02 A | 2023-10-05 A | 2-1330, 2-1324 | 100% | 2023-10-11 | 2023-10-18 |  | MBRT BASE [32 h] | 32 | 32 | COL | 32 | 2-1331 | 2-1331 | ZONE-2 | 14 | PAVE-R | ROADWAY | RDWY |  |  |  |  |
| 2-1332 |  | CONCRETE CURE, 14TH AND EAST PIKE | 3d | 2023-10-06 A | 2023-10-10 A | 2-1331 | 100% | 2023-10-19 | 2023-10-21 | 7 day per week | MBRT BASE |  |  |  | 40 | 2-1332 | 2-1332 | ZONE-2 | 14 |  | ROADWAY | RDWY |  |  |  |  |
| 2-1333 |  | F/P CURB, 14TH AND EAST PIKE | 4d | 2023-10-09 A | 2023-10-09 A | 2-1332 | 100% | 2023-10-23 | 2023-10-26 |  | MBRT BASE [8 h] | 8 | 8 | COM | 8 | 2-1333 | 2-1333 | ZONE-2 | 14 | CURB | ROADWAY | RDWY |  |  |  |  |
| 2-1334 |  | TEMP PATCH, 14TH AND EAST PIKE | 1d | 2023-10-10 A | 2023-10-10 A | 2-1333 | 100% | 2023-10-27 | 2023-10-27 |  | MBRT BASE [8 h] | 8 | 8 | EA3 | 8 | 2-1334 | 2-1334 | ZONE-2 | 14 |  | ROADWAY | RDWY |  |  |  |  |
|  | 2 | **INTERSECTION** |  | 2022-10-01 | 2024-03-23 |  |  |  |  |  |  |  |  |  |  |  |  |  |  |  |  |  |  |  |  |  |
|  | 1 | **11TH NORTH SIDE** |  | 2022-10-01 | 2022-10-02 |  |  |  |  |  |  |  |  |  |  |  |  |  |  |  |  |  |  |  |  |  |
| 2-1337 |  | DEMO ROAD - COMMON EX - TYPE 2, 11TH NORTH SIDE | 1d | 2022-10-01 A | 2022-10-01 A | 2-1259 SS | 100% | 2023-04-01 | 2023-04-01 | WEEKEND ONLY | MBRT BASE [8 h] | 8 | 8 | WGRM | 8 |  |  | ZONE-2 | 11 |  | ROADWAY | IXN | NORTH |  |  | NT_WE |
| 2-1338 |  | TRENCH CONDUIT, 11TH NORTH SIDE | 1d | 2022-10-01 A | 2022-10-01 A | 2-1337 SS | 100% | 2023-04-01 | 2023-04-01 | WEEKEND ONLY | MBRT BASE [8 h] | 8 | 8 | ELECRICAL SUB | 8 |  |  | ZONE-2 | 11 |  | ROADWAY | IXN | NORTH |  |  | NT_WE |
| 2-1339 |  | ROADWAY PAVING, 11TH NORTH SIDE | 1d | 2022-10-02 A | 2022-10-02 A | 2-1338 | 100% | 2023-04-02 | 2023-04-02 | WEEKEND ONLY | MBRT BASE [8 h] | 8 | 8 | WCOL | 8 |  |  | ZONE-2 | 11 | PAVE-R | ROADWAY | IXN | NORTH |  |  | NT_WE |

| ID | WBS | Activity | Duration | Start | Finish | Predecessors | Complete | Planned start | Planned finish | Calendar | Resources | Cost | Actual cost | user_number6 | user_text2 | user_text10 | user_text8 | MBRT-ZONE | MBRT-LOCATION | MBRT-TYPE | MBRT-NIGHT | MBRT-ROADWAY | MBRT-SIDE | MBRT-SCOPE |
| --- | --- | --- | --- | --- | --- | --- | --- | --- | --- | --- | --- | --- | --- | --- | --- | --- | --- | --- | --- | --- | --- | --- | --- | --- |
|  | 10 | **14TH NORTH SIDE** |  | 2023-10-17 | 2023-11-29 |  |  |  |  |  |  |  |  |  |  |  |  |  |  |  |  |  |  |  |
| 2-1383 |  | DSC 633 CABLE CAR BEAMS IN ROADWAY | 1d | 2023-10-17 A | 2023-10-17 A | 2-1334 | 100% | 2023-11-02 | 2023-11-02 |  | MBRT DSC [8 h] | 8 | 8 | 8 |  |  |  |  |  |  |  |  |  |  |
| 2-1373 |  | DEMO ROAD - COMMON EX - TYPE 2, 14TH NORTH SIDE | 1d | 2023-10-31 A | 2023-11-15 A | 2-1322 SS, 2-1371, 2-1383 | 100% | 2023-11-06 | 2023-11-06 |  | MBRT BASE [88 h] | 88 | 88 | 88 | WGRM | 2-1373 | 2-1373 | ZONE-2 | 14 | ROADWAY | NT_WE | IXN | NORTH |  |
| 2-1408 |  | DSC 642 14TH NORTH SIDE UNLOCATED CONDUITS | 2d | 2023-11-02 A | 2023-11-06 A | 2-1373 SS | 100% | 2023-11-02 | 2023-11-03 |  | MBRT DSC [16 h] | 16 | 16 | 16 |  |  |  |  |  |  |  |  |  |  |
| 2-1413 |  | DSC 644 UNKNOWN UNLOCATED CONDUIT | 2d | 2023-11-02 A | 2023-11-06 A | 2-1408 SS | 100% | 2023-11-02 | 2023-11-03 |  | MBRT DSC [16 h] | 16 | 16 | 16 |  |  |  |  |  |  |  |  |  |  |
| 2-1374 |  | TRENCH CONDUIT, 14TH NORTH SIDE | 3d | 2023-11-15 A | 2023-11-17 A | 2-1373 SS, 2-1658 FF, 2-1538 FF, 2-1513 FF, 2-1423 FF | 100% | 2023-11-02 | 2023-11-06 |  | MBRT BASE [24 h] | 24 | 24 | 24 | ELECRICAL SUB | 2-1374 | 2-1374 | ZONE-2 | 14 | ROADWAY | NT_WE | IXN | NORTH |  |
| 2-1423 |  | DSC 648 Shallow Storm Pipe | 1d | 2023-11-15 A | 2023-11-16 A | 2-1413, 2-1408 | 100% | 2023-11-02 | 2023-11-02 |  | MBRT DSC [8 h] | 8 | 8 | 8 |  |  |  |  |  |  |  |  |  |  |
| 2-1513 |  | DSC 652 UNKNOWN WATER SERVICE | 1d | 2023-11-15 A | 2023-11-16 A | 2-1423 SS | 100% | 2023-11-02 | 2023-11-02 |  | MBRT DSC [8 h] | 8 | 8 | 8 |  |  |  |  |  |  |  |  |  |  |
| 2-1538 |  | DSC 653 UNKNOWN UNLOCATED STEEL CONDUIT | 1d | 2023-11-15 A | 2023-11-16 A | 2-1513 SS | 100% | 2023-11-02 | 2023-11-02 |  | MBRT DSC [8 h] | 8 | 8 | 8 |  |  |  |  |  |  |  |  |  |  |
| 2-1658 |  | DSC 654 CDF CONLFICT | 1d | 2023-11-15 A | 2023-11-16 A | 2-1538 SS | 100% | 2023-11-02 | 2023-11-02 |  | MBRT DSC [8 h] | 8 | 8 | 8 |  |  |  |  |  |  |  |  |  |  |
| 2-1375 |  | ROADWAY PAVING, 14TH NORTH SIDE | 3d | 2023-11-22 A | 2023-11-29 A | 2-1374 | 100% | 2023-11-07 | 2023-11-09 |  | MBRT BASE [32 h] | 32 | 32 | 32 | WCOL | 2-1375 | 2-1375 | ZONE-2 | 14 | ROADWAY | NT_WE | IXN | NORTH | PAVE-R |
|  | 11 | **15TH NORTH SIDE** |  | 2023-10-17 | 2023-11-10 |  |  |  |  |  |  |  |  |  |  |  |  |  |  |  |  |  |  |  |
| 2-1382 |  | DSC 633 CABLE CAR BEAMS IN ROADWAY | 1d | 2023-10-17 A | 2023-10-17 A | 2-1334 | 100% | 2023-10-02 | 2023-10-02 |  | MBRT DSC [8 h] | 8 | 8 | 8 |  |  |  |  |  |  |  |  |  |  |
| 2-1377 |  | DEMO ROAD - COMMON EX - TYPE 2, 15TH NORTH SIDE | 1d | 2023-10-31 A | 2023-11-01 A | 2-1382 | 100% | 2023-10-16 | 2023-10-16 |  | MBRT BASE [16 h] | 16 | 16 | 16 | WGRM | 2-1377 | 2-1377 | ZONE-2 | 15 | ROADWAY | NT_WE | IXN | NORTH |  |
| 2-1378 |  | TRENCH CONDUIT, 15TH NORTH SIDE | 1d | 2023-11-07 A | 2023-11-07 A | 2-1377 SS, 2-1374 | 100% |  |  |  | MBRT BASE [8 h] | 8 | 8 | 8 | ELECRICAL SUB | 2-1378 | 2-1378 | ZONE-2 | 15 | ROADWAY | NT_WE | IXN | NORTH |  |
| 2-1379 |  | ROADWAY PAVING, 15TH NORTH SIDE | 1d | 2023-11-10 A | 2023-11-10 A | 2-1378 | 100% |  |  |  | MBRT BASE [8 h] | 8 | 8 | 8 | WCOL | 2-1379 | 2-1379 | ZONE-2 | 15 | ROADWAY | NT_WE | IXN | NORTH | PAVE-R |
|  | 2 | **12TH NORTH SIDE PHASE 1** |  | 2023-05-13 | 2023-05-13 |  |  |  |  |  |  |  |  |  |  |  |  |  |  |  |  |  |  |  |
| 2-1341 |  | DEMO ROAD - COMMON EX - TYPE 2, 12TH NORTH SIDE PHASE 1 | 1d | 2023-05-13 A | 2023-05-13 A | 2-1339 | 100% | 2023-05-06 | 2023-05-06 | WEEKEND ONLY | MBRT BASE [8 h] | 8 | 8 | 8 | WGRM | 2-1341 | 2-1341 | ZONE-2 | 12 | ROADWAY | NT_WE | IXN | NORTH |  |
| 2-1342 |  | TRENCH CONDUIT, 12TH NORTH SIDE PHASE 1 | 1d | 2023-05-13 A | 2023-05-13 A | 2-1341 SS | 100% | 2023-05-06 | 2023-05-06 | WEEKEND ONLY | MBRT BASE [8 h] | 8 | 8 | 8 | ELECRICAL SUB | 2-1342 | 2-1342 | ZONE-2 | 12 | ROADWAY | NT_WE | IXN | NORTH |  |
| 2-1343 |  | ROADWAY PAVING, 12TH NORTH SIDE PHASE 1 | 1d | 2023-05-13 A | 2023-05-13 A | 2-1342 | 100% | 2023-05-07 | 2023-05-07 | WEEKEND ONLY | MBRT BASE [8 h] | 8 | 8 | 8 | WCOL | 2-1343 | 2-1343 | ZONE-2 | 12 | ROADWAY | NT_WE | IXN | NORTH | PAVE-R |
|  | 3 | **12TH NORTH SIDE PHASE 2** |  | 2023-06-03 | 2023-06-04 |  |  |  |  |  |  |  |  |  |  |  |  |  |  |  |  |  |  |  |
| 2-1345 |  | DEMO ROAD - COMMON EX - TYPE 2, 12TH NORTH SIDE PHASE 2 | 1d | 2023-06-03 A | 2023-06-03 A | 2-1343, 2-1266 SS | 100% |  |  | WEEKEND ONLY | MBRT BASE [8 h] | 8 | 8 | 8 | WGRM | 2-1345 | 2-1345 | ZONE-2 | 12 | ROADWAY | NT_WE | IXN | NORTH |  |
| 2-1346 |  | TRENCH CONDUIT, 12TH NORTH SIDE PHASE 2 | 1d | 2023-06-03 A | 2023-06-03 A | 2-1345 SS | 100% |  |  | WEEKEND ONLY | MBRT BASE [8 h] | 8 | 8 | 8 | ELECRICAL SUB | 2-1346 | 2-1346 | ZONE-2 | 12 | ROADWAY | NT_WE | IXN | NORTH |  |
| 2-1347 |  | ROADWAY PAVING, 12TH NORTH SIDE PHASE 2 | 1d | 2023-06-04 A | 2023-06-04 A | 2-1346 | 100% |  |  | WEEKEND ONLY | MBRT BASE [8 h] | 8 | 8 | 8 | WCOL | 2-1347 | 2-1347 | ZONE-2 | 12 | ROADWAY | NT_WE | IXN | NORTH | PAVE-R |

| ID | WBS | Activity | Duration | Start | Finish | Predecessors | Complete | Planned start | Planned finish | Calendar | Resources | Cost | Actual cost | user_text2 | user_number6 | user_text10 | user_text8 | MBRT-ZONE | MBRT-LOCATION | MBRT-TYPE | MBRT-NIGHT | MBRT-ROADWAY | MBRT-SIDE | MBRT-SCOPE | ~SELECT |
| --- | --- | --- | --- | --- | --- | --- | --- | --- | --- | --- | --- | --- | --- | --- | --- | --- | --- | --- | --- | --- | --- | --- | --- | --- | --- |
|  | 4 | **11TH SOUTH SIDE** |  | 2023-06-10 | 2023-06-11 |  |  |  |  |  |  |  |  |  |  |  |  |  |  |  |  |  |  |  |  |
| 2-1349 |  | DEMO ROAD - COMMON EX - TYPE 2, 11TH SOUTH SIDE | 1d | 2023-06-10 A | 2023-06-10 A | 2-1273 SS, 2-1347 | 100% |  |  | WEEKEND ONLY | MBRT BASE [8 h] | 8 | 8 | WGRM | 8 | 2-1349 | 2-1349 | ZONE-2 | 11 | ROADWAY | NT_WE | IXN | SOUTH |  |  |
| 2-1350 |  | TRENCH CONDUIT, 11TH SOUTH SIDE | 1d | 2023-06-10 A | 2023-06-10 A | 2-1349 SS | 100% |  |  | WEEKEND ONLY | MBRT BASE [8 h] | 8 | 8 | ELECRICAL SUB | 8 | 2-1350 | 2-1350 | ZONE-2 | 11 | ROADWAY | NT_WE | IXN | SOUTH |  |  |
| 2-1351 |  | ROADWAY PAVING, 11TH SOUTH SIDE | 1d | 2023-06-11 A | 2023-06-11 A | 2-1350 | 100% |  |  | WEEKEND ONLY | MBRT BASE [8 h] | 8 | 8 | WCOL | 8 | 2-1351 | 2-1351 | ZONE-2 | 11 | ROADWAY | NT_WE | IXN | SOUTH | PAVE-R |  |
|  | 5 | **12TH SOUTH SIDE** |  | 2023-04-01 | 2023-04-30 |  |  |  |  |  |  |  |  |  |  |  |  |  |  |  |  |  |  |  |  |
| 2-1354 |  | TRENCH CONDUIT, 12TH SOUTH SIDE | 1d | 2023-04-01 A | 2023-04-01 A | 2-1353 SS | 100% |  |  | WEEKEND ONLY | MBRT BASE [8 h] | 8 | 8 | ELECRICAL SUB | 8 |  |  | ZONE-2 | 12 | ROADWAY | NT_WE | IXN | SOUTH |  |  |
| 2-1353 |  | DEMO ROAD - COMMON EX - TYPE 2, 12TH SOUTH SIDE | 1d | 2023-04-08 A | 2023-04-30 A | 2-1280 SS | 100% | 2023-04-01 | 2023-04-01 | WEEKEND ONLY | MBRT BASE [64 h] | 64 | 64 | WGRM | 64 | 2-1353 | 2-1353 | ZONE-2 | 12 | ROADWAY | NT_WE | IXN | SOUTH |  |  |
| 2-1355 |  | ROADWAY PAVING, 12TH SOUTH SIDE | 1d | 2023-04-08 A | 2023-04-30 A | 2-1354 | 100% | 2023-04-02 | 2023-04-02 | WEEKEND ONLY | MBRT BASE [64 h] | 64 | 64 | WCOL | 64 | 2-1355 | 2-1355 | ZONE-2 | 12 | ROADWAY | NT_WE | IXN | SOUTH | PAVE-R |  |
| PCO625.01 |  | DSC 437-WATERLINE IN CONFLICT WITH CONDUIT CROSSING | 1d | 2023-04-08 A | 2023-04-30 A | 2-1353 SS | 100% | 2023-04-01 | 2023-04-01 | WEEKEND ONLY | MBRT DSC [64 h] | 64 | 64 | WGRM | 64 | PCO625.01 | PCO625.01 | ZONE-2 | 12 | ROADWAY | NT_WE | IXN | SOUTH |  |  |
|  | 6 | **13TH SOUTH SIDE** |  | 2023-06-17 | 2023-06-18 |  |  |  |  |  |  |  |  |  |  |  |  |  |  |  |  |  |  |  |  |
| 2-1357 |  | DEMO ROAD - COMMON EX - TYPE 2, 13TH SOUTH SIDE | 1d | 2023-06-17 A | 2023-06-17 A | 2-1287 | 100% |  |  | WEEKEND ONLY | MBRT BASE [8 h] | 8 | 8 | WGRM | 8 | 2-1357 | 2-1357 | ZONE-2 | 13 | ROADWAY | NT_WE | IXN | SOUTH |  |  |
| 2-1358 |  | TRENCH CONDUIT, 13TH SOUTH SIDE | 1d | 2023-06-17 A | 2023-06-17 A | 2-1357 SS | 100% |  |  | WEEKEND ONLY | MBRT BASE [8 h] | 8 | 8 | ELECRICAL SUB | 8 | 2-1358 | 2-1358 | ZONE-2 | 13 | ROADWAY | NT_WE | IXN | SOUTH |  |  |
| 2-1359 |  | ROADWAY PAVING, 13TH SOUTH SIDE | 1d | 2023-06-18 A | 2023-06-18 A | 2-1358 | 100% |  |  | WEEKEND ONLY | MBRT BASE [8 h] | 8 | 8 | WCOL | 8 | 2-1359 | 2-1359 | ZONE-2 | 13 | ROADWAY | NT_WE | IXN | SOUTH | PAVE-R |  |
|  | 7 | **14TH SOUTH SIDE** |  | 2024-01-03 | 2024-03-23 |  |  |  |  |  |  |  |  |  |  |  |  |  |  |  |  |  |  |  |  |
| 2-1361 |  | DEMO ROAD - COMMON EX - TYPE 2, 14TH SOUTH SIDE | 1d | 2024-01-03 A | 2024-01-10 A | 2-1357, 2-1374 | 100% | 2023-12-11 | 2023-12-11 |  | MBRT BASE [48 h] | 48 | 48 | WGRM | 48 | 2-1361 | 2-1361 | ZONE-2 | 14 | ROADWAY | NT_WE | IXN | SOUTH |  |  |
| 2-1362 |  | TRENCH CONDUIT, 14TH SOUTH SIDE | 1d | 2024-01-03 A | 2024-01-08 A | 2-1361 SS | 100% | 2023-12-11 | 2023-12-11 |  | MBRT BASE [32 h] | 32 | 32 | ELECRICAL SUB | 32 | 2-1362 | 2-1362 | ZONE-2 | 14 | ROADWAY | NT_WE | IXN | SOUTH |  |  |
| 2-1363 |  | ROADWAY PAVING, 14TH SOUTH SIDE | 1d | 2024-01-05 A | 2024-01-17 A | 2-1362, 2-1351, 2-1375, DSC-683 FF | 100% | 2023-12-12 | 2023-12-12 |  | MBRT BASE [64 h] | 64 | 64 | WCOL | 64 | 2-1363 | 2-1363 | ZONE-2 | 14 | ROADWAY | NT_WE | IXN | SOUTH | PAVE-R |  |
| DSC-683 |  | DSC 683 UNKNOWN CONDUIT CONFLICT | 1d | 2024-01-09 A | 2024-01-09 A | 2-1362 | 100% | 2023-12-11 | 2023-12-11 |  | MBRT DSC [8 h] | 8 | 8 |  | 8 |  |  |  |  |  |  |  |  |  |  |
| DSC-688 |  | Loop NCR 115 | 5d | 2024-03-22 A | 2024-03-23 A | 2-1363 | 100% | 2024-03-04 | 2024-03-08 |  |  |  |  |  |  |  |  |  |  |  |  |  |  |  |  |
|  | 8 | **15TH SOUTH SIDE** |  | 2023-06-25 | 2023-08-08 |  |  |  |  |  |  |  |  |  |  |  |  |  |  |  |  |  |  |  |  |
| 2-1365 |  | DEMO ROAD - COMMON EX - TYPE 2, 15TH SOUTH SIDE | 1d | 2023-06-25 A | 2023-06-25 A | 2-1359 | 100% |  |  | WEEKEND ONLY | MBRT BASE [8 h] | 8 | 8 | WGRM | 8 | 2-1365 | 2-1365 | ZONE-2 | 15 | ROADWAY | NT_WE | IXN | SOUTH |  |  |
| 2-1366 |  | TRENCH CONDUIT, 15TH SOUTH SIDE | 1d | 2023-06-25 A | 2023-06-25 A | 2-1365 SS | 100% |  |  | WEEKEND ONLY | MBRT BASE [8 h] | 8 | 8 | ELECRICAL SUB | 8 | 2-1366 | 2-1366 | ZONE-2 | 15 | ROADWAY | NT_WE | IXN | SOUTH |  |  |
| 2-1367 |  | ROADWAY PAVING, 15TH SOUTH SIDE | 1d | 2023-08-08 A | 2023-08-08 A | 2-1366 | 100% | 2023-07-03 | 2023-07-03 |  | MBRT BASE [8 h] | 8 | 8 | WCOL | 8 | 2-1367 | 2-1367 | ZONE-2 | 15 | ROADWAY | NT_WE | IXN | SOUTH | PAVE-R |  |
|  | 9 | **13TH NORTH SIDE** |  | 2023-06-30 | 2023-07-02 |  |  |  |  |  |  |  |  |  |  |  |  |  |  |  |  |  |  |  |  |
| 2-1369 |  | DEMO ROAD - COMMON EX - TYPE 2, 13TH NORTH SIDE | 1d | 2023-06-30 A | 2023-07-01 A | 2-1308 SS | 100% | 2023-07-01 | 2023-07-01 | WEEKEND ONLY | MBRT BASE [8 h] | 8 | 8 | WGRM | 8 | 2-1369 | 2-1369 | ZONE-2 | 13 | ROADWAY | NT_WE | IXN | NORTH |  | X |
| 2-1370 |  | TRENCH CONDUIT, 13TH NORTH SIDE | 1d | 2023-07-01 A | 2023-07-01 A | 2-1369 SS | 100% |  |  | WEEKEND ONLY | MBRT BASE [8 h] | 8 | 8 | ELECRICAL SUB | 8 | 2-1370 | 2-1370 | ZONE-2 | 13 | ROADWAY | NT_WE | IXN | NORTH |  | X |
| 2-1371 |  | ROADWAY PAVING, 13TH NORTH SIDE | 1d | 2023-07-02 A | 2023-07-02 A | 2-1370 | 100% |  |  | WEEKEND ONLY | MBRT BASE [8 h] | 8 | 8 | WCOL | 8 | 2-1371 | 2-1371 | ZONE-2 | 13 | ROADWAY | NT_WE | IXN | NORTH | PAVE-R | X |

| ID | WBS | Activity | Duration | Start | Finish | Predecessors | Complete | Planned start | Planned finish | Resources | Cost | Actual cost | user_text2 | user_number6 | user_text10 | user_text8 | MBRT-ZONE | ~SELECT |
| --- | --- | --- | --- | --- | --- | --- | --- | --- | --- | --- | --- | --- | --- | --- | --- | --- | --- | --- |
|  | 7 | **POLE FOUNDATIONS** |  | 2023-02-01 | 2023-07-20 |  |  |  |  |  |  |  |  |  |  |  |  |  |
| 2-1381 |  | INST POLE FOUNDATIONS, BROADWAY TO 10TH | 20d | 2023-02-01 A | 2023-07-20 A | 2-1141, MS-2571, 2-1181 SS | 100% | 2023-05-08 | 2023-06-05 | MBRT BASE |  |  | ELECRICAL SUB | 952 | 2-1381 | 2-1381 | ZONE-2 |  |
| 2-1471 |  | INST POLE FOUNDATIONS, 10TH TO 12TH | 20d | 2023-02-01 A | 2023-07-20 A | 2-1381 SS | 100% | 2023-06-06 | 2023-07-03 | MBRT BASE |  |  |  | 952 | 2-1471 | 2-1471 |  |  |
| 2-1496 |  | INST POLE FOUNDATIONS, 12TH TO 14TH | 20d | 2023-02-01 A | 2023-07-20 A | 2-1471 SS | 100% | 2023-07-03 | 2023-07-31 | MBRT BASE |  |  |  | 952 | 2-1496 | 2-1496 |  |  |
| 2-1641 |  | INST POLE FOUNDATIONS, 14TH TO 15TH | 20d | 2023-02-01 A | 2023-07-20 A | 2-1496 SS | 100% | 2023-07-03 | 2023-07-31 | MBRT BASE |  |  |  | 952 | 2-1641 | 2-1641 |  |  |
|  | 8 | **SIDEWALKS** |  | 2022-08-17 | 2024-07-29 |  |  |  |  |  |  |  |  |  |  |  |  |  |
|  | 29 | **SEC 12TH BEFORE POLE IS SET** |  | 2023-07-10 | 2023-12-12 |  |  |  |  |  |  |  |  |  |  |  |  |  |
| 2-7000 |  | REMOVE SIDEWALK | 2d | 2023-07-10 A | 2023-07-11 A | 2-1371 | 100% | 2023-07-03 | 2023-07-05 | MBRT NEW [16 h] | 16 | 16 |  | 16 |  |  |  | X |
| 2-7005 |  | TRENCH ELECTRICAL | 2d | 2023-07-10 A | 2023-07-11 A | 2-7000 SS | 100% | 2023-07-03 | 2023-07-05 | MBRT NEW [16 h] | 16 | 16 |  | 16 |  |  |  |  |
| 2-7010 |  | DSC 556 EXISTING CONDUIT TO INTERSECEPT IS NOT THERE | 5d | 2023-07-10 A | 2023-07-14 A | 2-7005 SS | 100% | 2023-07-03 | 2023-07-10 | MBRT DSC [40 h] | 40 | 40 |  | 40 |  |  |  |  |
| 2-7015 |  | DSC 566 POLE 40W-128-2 | 3d | 2023-07-21 A | 2023-07-25 A | 2-7010 | 100% | 2023-07-03 | 2023-07-06 | MBRT DSC [24 h] | 24 | 24 |  | 24 |  |  |  |  |
| 2-7020 |  | DSC 575 UNKNOWN UNLOCATED CONDUITS | 1d | 2023-08-07 A | 2023-08-07 A | 2-7015 | 100% | 2023-07-03 | 2023-07-03 | MBRT DSC [8 h] | 8 | 8 |  | 8 |  |  |  |  |
| 2-7025 |  | INSTALL ELECTRICAL | 18d | 2023-08-09 A | 2023-09-01 A | 2-7020 SS+4d | 100% | 2023-07-03 | 2023-07-27 | MBRT NEW [144 h] | 144 | 144 |  | 144 |  |  |  |  |
| 2-7030 |  | CHANGE SCL REQUIRNG ENGINEERING FOR POLE HOLDER | 0d | 2023-08-14 A | 2023-09-22 A | 2-7025 SS | 100% | 2023-08-14 | 2023-08-14 | MBRT NEW |  |  |  | 232 |  |  |  |  |
| 2-7055 |  | Delay awaiting SCL Acceptance of Design Change | 0d | 2023-09-25 A | 2023-10-24 A | 2-7030 | 100% | 2023-09-11 | 2023-09-11 | MBRT NEW |  |  |  | 176 |  |  |  |  |
| 2-7060 |  | DC CONDUIT CHANGE | 27d | 2023-10-25 A | 2023-12-05 A | 2-7055 | 100% | 2023-10-02 | 2023-11-07 | MBRT NEW [216 h] | 216 | 216 |  | 216 |  |  |  |  |
| 2-7035 |  | GRADE SIDEWALKS | 14d | 2023-11-13 A | 2023-12-05 A | 2-7030, 2-7055, 2-7060 SS | 100% | 2023-11-06 | 2023-11-28 | MBRT NEW [112 h] | 112 | 112 |  | 112 |  |  |  |  |
| 2-7040 |  | CURB RAMP | 2d | 2023-12-06 A | 2023-12-07 A | 2-7035 | 100% | 2023-11-07 | 2023-11-08 | MBRT NEW [16 h] | 16 | 16 |  | 16 |  |  |  |  |
| 2-7045 |  | SIDEWALKS | 3d | 2023-12-08 A | 2023-12-12 A | 2-7040 | 100% | 2023-11-09 | 2023-11-14 | MBRT NEW [24 h] | 24 | 24 |  | 24 |  |  |  |  |
|  | 30 | **SEC 12TH AFTER POLE IS SET** |  | 2023-06-30 | 2023-12-12 |  |  |  |  |  |  |  |  |  |  |  |  |  |
| 2-7100 |  | DELAY AWAITING SCL TO SLEEVE OR TURN OF POWER | 0d | 2023-06-30 A | 2023-10-31 A | 2-1369 SS | 100% | 2023-07-03 | 2023-07-03 | MBRT NEW |  |  |  | 680 |  |  |  |  |
| 2-7105 |  | SCL SLEAVE OR TURN OFF POWER | 0d | 2023-11-01 A | 2023-11-01 A | 2-7100 | 100% | 2023-10-09 | 2023-10-09 | MBRT NEW |  |  |  | 8 |  |  |  |  |
| 2-7110 |  | INSTALL POLE | 1d | 2023-11-01 A | 2023-11-01 A | 2-7105 | 100% | 2023-10-10 | 2023-10-10 | MBRT NEW [8 h] | 8 | 8 |  | 8 |  |  |  |  |
| 2-7115 |  | TRANSFER SPAN SIGNAL WIRES | 1d | 2023-11-15 A | 2023-11-15 A | 2-7110, 2-7035 | 100% | 2023-11-07 | 2023-11-07 | MBRT NEW [8 h] | 8 | 8 |  | 8 |  |  |  |  |
| 2-7120 |  | TRENCH ELECTRICAL | 6d | 2023-11-16 A | 2023-11-27 A | 2-7115 | 100% | 2023-11-08 | 2023-11-16 | MBRT NEW [48 h] | 48 | 48 |  | 48 |  |  |  |  |
| 2-7125 |  | INSTALL ELECTRICAL | 8d | 2023-11-17 A | 2023-11-30 A | 2-7120, 2-7145 FF | 100% | 2023-11-09 | 2023-11-21 | MBRT NEW [64 h] | 64 | 64 |  | 64 |  |  |  |  |
| 2-7145 |  | DSC 656 UNKNOWN UNLOCATED CONDUIT | 3d | 2023-11-17 A | 2023-11-21 A | 2-7110 | 100% | 2023-11-02 | 2023-11-06 | MBRT DSC [24 h] | 24 | 24 |  | 24 |  |  |  |  |
| 2-7130 |  | GRADE SIDEWALKS | 1d | 2023-12-05 A | 2023-12-05 A | 2-7125 | 100% | 2023-11-10 | 2023-11-10 | MBRT NEW [8 h] | 8 | 8 |  | 8 |  |  |  |  |
| 2-7135 |  | CURB RAMP | 2d | 2023-12-06 A | 2023-12-07 A | 2-7130 | 100% | 2023-11-14 | 2023-11-15 | MBRT NEW [16 h] | 16 | 16 |  | 16 |  |  |  |  |
| 2-7140 |  | SIDEWALKS | 3d | 2023-12-08 A | 2023-12-12 A | 2-7135, 2-7045 SS | 100% | 2023-11-15 | 2023-11-17 | MBRT NEW [24 h] | 24 | 24 |  | 24 |  |  |  |  |

| ID | WBS | Activity | Duration | Start | Finish | Predecessors | Complete | Planned start | Planned finish | Resources | Cost | Actual cost | ~SELECT | user_number6 | user_text2 | user_text10 | user_text8 | MBRT-ZONE | MBRT-LOCATION | MBRT-TYPE | MBRT-SIDE | MBRT-SCOPE | MBRT-RESP | MBRT-ACTIVITY |
| --- | --- | --- | --- | --- | --- | --- | --- | --- | --- | --- | --- | --- | --- | --- | --- | --- | --- | --- | --- | --- | --- | --- | --- | --- |
|  | 31 | **Broadway CRT to 11th North Sdie** |  | 2023-08-09 | 2023-09-26 |  |  |  |  |  |  |  |  |  |  |  |  |  |  |  |  |  |  |  |
| 2-7200 |  | Remvove Sidewalk | 7d | 2023-08-09 A | 2023-08-18 A | 2-7000 | 100% | 2023-07-03 | 2023-07-12 | MBRT NEW [56 h] | 56 | 56 | CPLPX | 56 |  |  |  |  |  |  |  |  |  |  |
| 2-7205 |  | DSC 579 10TH NORTH DUCT BANK CONFICT | 13d | 2023-08-10 A | 2023-08-29 A | 2-7200 SS | 100% | 2023-07-03 | 2023-07-20 | MBRT DSC [104 h] | 104 | 104 | CPLP | 104 |  |  |  |  |  |  |  |  |  |  |
| 2-7210 |  | DSC 578 Broadway CRT to 10th North Duct Bank Conflicts | 13d | 2023-08-10 A | 2023-08-29 A | 2-7200 SS | 100% | 2023-07-03 | 2023-07-20 | MBRT DSC [104 h] | 104 | 104 | CPLP | 104 |  |  |  |  |  |  |  |  |  |  |
| 2-7215 |  | DSC 584 10th to Seneca Thick Sidewalk | 1d | 2023-08-14 A | 2023-08-14 A | 2-7200 SS | 100% |  |  | MBRT DSC [8 h] | 8 | 8 | CPLPX | 8 |  |  |  |  |  |  |  |  |  |  |
| 2-7225 |  | DSC 587 NWC Seneca Unknown Conduit | 14d | 2023-08-14 A | 2023-09-01 A | 2-7200 SS | 100% | 2023-08-14 | 2023-08-31 | MBRT DSC [112 h] | 112 | 112 | CPLPX | 112 |  |  |  |  |  |  |  |  |  |  |
| 2-7230 |  | DSC 588 Duct Bank Conflict 11th North Side | 14d | 2023-08-14 A | 2023-09-01 A | 2-7200 SS | 100% | 2023-08-14 | 2023-08-31 | MBRT DSC [112 h] | 112 | 112 | CPLPX | 112 |  |  |  |  |  |  |  |  |  |  |
| 2-7220 |  | DSC 586 NEC 10th Duct Bank Conflict with with Ped Pole | 13d | 2023-08-15 A | 2023-09-01 A | 2-7200 SS, 2-7215 | 100% | 2023-08-15 | 2023-08-31 | MBRT DSC [104 h] | 104 | 104 | CPLPX | 104 |  |  |  |  |  |  |  |  |  |  |
| 2-7235 |  | Trench Conduit | 14d | 2023-08-15 A | 2023-09-01 A | 2-7200, 2-7215, 2-7210, 2-7205, 2-7200 FF | 100% | 2023-08-30 | 2023-09-19 | MBRT NEW [112 h] | 112 | 112 | CPLP | 112 |  |  |  |  |  |  |  |  |  |  |
| 2-7240 |  | DSC 590 NWC 11th Duct Bank Conflict with Conduit | 8d | 2023-08-22 A | 2023-09-01 A | 2-7235 SS+5d, 2-7220 SS | 100% | 2023-09-07 | 2023-09-18 | MBRT DSC [64 h] | 64 | 64 | CPLPX | 64 |  |  |  |  |  |  |  |  |  |  |
| 2-7245 |  | Install Conduit | 7d | 2023-09-05 A | 2023-09-13 A | 2-7240, 2-7230, 2-7225, 2-7220 | 100% | 2023-09-18 | 2023-09-26 | MBRT NEW [56 h] | 56 | 56 | CPLPX | 56 |  |  |  |  |  |  |  |  |  |  |
| 2-7260 |  | DSC 623 NEC Seneca Light Pole P12-59 Conflict | 2d | 2023-09-19 A | 2023-09-20 A | 2-7245 | 100% | 2023-09-11 | 2023-09-12 | MBRT DSC [16 h] | 16 | 16 | X | 16 |  |  |  |  |  |  |  |  |  |  |
| 2-7250 |  | Curb Ramps | 2d | 2023-09-21 A | 2023-09-22 A | 2-7245, 2-7260 | 100% | 2023-09-14 | 2023-09-15 | MBRT NEW [16 h] | 16 | 16 | CPLPX | 16 |  |  |  |  |  |  |  |  |  |  |
| 2-7255 |  | Sidewalks | 2d | 2023-09-25 A | 2023-09-26 A | 2-7250 | 100% | 2023-09-18 | 2023-09-19 | MBRT NEW [16 h] | 16 | 16 | CPLPX | 16 |  |  |  |  |  |  |  |  |  |  |
|  | 1 | **10TH AVE WEST SIDE** |  | 2023-09-11 | 2023-09-26 |  |  |  |  |  |  |  |  |  |  |  |  |  |  |  |  |  |  |  |
| 2-1384 |  | REMOVE SIDEWALKS, 10TH AVE WEST SIDE | 2d | 2023-09-11 A | 2023-09-12 A | 2-1243, 2-2080 FS-1d | 100% |  |  | MBRT BASE [16 h] | 16 | 16 | CPLP | 16 | EA3 | 2-1384 | 2-1384 | ZONE-2 | 10 | SIDEWALKS | WEST |  |  |  |
| 2-1385 |  | TRENCH CONDUIT, 10TH AVE WEST SIDE | 2d | 2023-09-13 A | 2023-09-14 A | 2-1384 | 100% |  |  | MBRT BASE [16 h] | 16 | 16 | CPLP | 16 | EA3 | 2-1385 | 2-1385 | ZONE-2 | 10 | SIDEWALKS | WEST | ELECTRICAL | PRIME |  |
| 2-1386 |  | INST CONDUIT, 10TH AVE WEST SIDE | 2d | 2023-09-15 A | 2023-09-19 A | 2-1385 SS | 100% | 2023-09-13 | 2023-09-14 | MBRT BASE [24 h] | 24 | 24 | CPLP | 24 | ELECRICAL SUB | 2-1386 | 2-1386 | ZONE-2 | 10 | SIDEWALKS | WEST | ELECTRICAL | PRIME | GRADESW |
| 2-1387 |  | GRADE SIDEWALK, 10TH AVE WEST SIDE | 2d | 2023-09-20 A | 2023-09-21 A | 2-1386 | 100% | 2023-09-15 | 2023-09-18 | MBRT BASE [16 h] | 16 | 16 | CPLP | 16 | EA3 | 2-1387 | 2-1387 | ZONE-2 | 10 | SIDEWALKS | WEST | SIDEWALKS |  | GRADESW |
| 2-1388 |  | F/P CURB RAMPS, 10TH AVE WEST SIDE | 1d | 2023-09-21 A | 2023-09-22 A | 2-1387 | 100% | 2023-09-19 | 2023-09-19 | MBRT BASE [16 h] | 16 | 16 | CPLP | 16 | COM | 2-1388 | 2-1388 | ZONE-2 | 10 | SIDEWALKS | WEST | CURB |  |  |
| 2-1389 |  | SIDEWALK, 10TH AVE WEST SIDE | 3d | 2023-09-26 A | 2023-09-26 A | 2-1388, 2-1396 | 100% | 2023-09-20 | 2023-09-22 | MBRT BASE [8 h] | 8 | 8 | CPLP | 8 | COM | 2-1389 | 2-1389 | ZONE-2 | 10 | SIDEWALKS | WEST |  |  |  |
|  | 2 | **10TH AVE EAST SIDE** |  | 2023-09-11 | 2023-09-20 |  |  |  |  |  |  |  |  |  |  |  |  |  |  |  |  |  |  |  |
| 2-1391 |  | REMOVE SIDEWALKS, 10TH AVE EAST SIDE | 2d | 2023-09-11 A | 2023-09-12 A | 2-1384 SS | 100% | 2023-09-25 | 2023-09-26 | MBRT BASE [16 h] | 16 | 16 | CPLP | 16 | EA3 | 2-1391 | 2-1391 | ZONE-2 | 10 | SIDEWALKS | EAST |  |  |  |
| 2-1392 |  | TRENCH CONDUIT, 10TH AVE EAST SIDE | 2d | 2023-09-11 A | 2023-09-12 A | 2-1391 SS | 100% | 2023-09-25 | 2023-09-26 | MBRT BASE [16 h] | 16 | 16 | CPLP | 16 | EA3 | 2-1392 | 2-1392 | ZONE-2 | 10 | SIDEWALKS | EAST | ELECTRICAL | PRIME |  |
| 2-1393 |  | INST CONDUIT, 10TH AVE EAST SIDE | 2d | 2023-09-13 A | 2023-09-14 A | 2-1392 | 100% | 2023-09-27 | 2023-09-28 | MBRT BASE [16 h] | 16 | 16 | CPLP | 16 | ELECRICAL SUB | 2-1393 | 2-1393 | ZONE-2 | 10 | SIDEWALKS | EAST | ELECTRICAL | PRIME |  |
| 2-1394 |  | GRADE SIDEWALK, 10TH AVE EAST SIDE | 2d | 2023-09-15 A | 2023-09-18 A | 2-1393, 2-1641 | 100% | 2023-09-29 | 2023-10-02 | MBRT BASE [16 h] | 16 | 16 | CPLP | 16 | EA3 | 2-1394 | 2-1394 | ZONE-2 | 10 | SIDEWALKS | EAST | SIDEWALKS |  | GRADESW |
| 2-1395 |  | F/P CURB RAMPS, 10TH AVE EAST SIDE | 1d | 2023-09-19 A | 2023-09-19 A | 2-1394 | 100% | 2023-10-03 | 2023-10-03 | MBRT BASE [8 h] | 8 | 8 | CPLP | 8 | COM | 2-1395 | 2-1395 | ZONE-2 | 10 | SIDEWALKS | EAST | CURB |  |  |
| 2-1396 |  | SIDEWALK, 10TH AVE EAST SIDE | 3d | 2023-09-20 A | 2023-09-20 A | 2-1395 | 100% | 2023-10-04 | 2023-10-06 | MBRT BASE [8 h] | 8 | 8 | CPLP | 8 | COM | 2-1396 | 2-1396 | ZONE-2 | 10 | SIDEWALKS | EAST |  |  |  |

| ID | WBS | Activity | Duration | Start | Finish | Predecessors | Complete | Planned start | Planned finish | Calendar | Resources | Cost | Actual cost | user_text2 | user_number6 | MBRT-ZONE | MBRT-LOCATION | MBRT-TYPE | MBRT-SIDE | MBRT-SCOPE | MBRT-ACTIVITY | user_text10 | user_text8 | MBRT-RESP | MBRT-DELAY |
| --- | --- | --- | --- | --- | --- | --- | --- | --- | --- | --- | --- | --- | --- | --- | --- | --- | --- | --- | --- | --- | --- | --- | --- | --- | --- |
|  | 5 | **UNION ST 12TH TO 11TH NORTH SIDE** |  | 2023-02-21 | 2023-09-05 |  |  |  |  |  |  |  |  |  |  |  |  |  |  |  |  |  |  |  |  |
| 2-1406 |  | REM SIDEWALK, UNION ST 12TH TO 11TH NORTH SIDE | 2d | 2023-02-21 A | 2023-02-27 A | 2-1271 | 100% | 2023-06-21 | 2023-06-22 |  | MBRT BASE [40 h] | 40 | 40 | EA3 | 40 | ZONE-2 | UNION | SIDEWALKS | NORTH |  |  |  |  |  |  |
| 2-1407 |  | GRADE SIDEWALK, UNION ST 12TH TO 11TH NORTH SIDE | 2d | 2023-02-23 A | 2023-02-28 A | 2-1406 | 100% | 2023-06-23 | 2023-06-26 |  | MBRT BASE [32 h] | 32 | 32 | EA3 | 32 | ZONE-2 | UNION | SIDEWALKS | NORTH | SIDEWALKS | GRADESW |  |  |  |  |
| 2-1409 |  | SIDEWALK, UNION ST 12TH TO 11TH NORTH SIDE | 3d | 2023-02-27 A | 2023-03-15 A | 2-1407 | 100% | 2023-06-28 | 2023-06-30 |  | MBRT BASE [104 h] | 104 | 104 | COM | 104 | ZONE-2 | UNION | SIDEWALKS | NORTH |  |  |  |  |  |  |
| 2-2672 |  | REMOVE SIDEWALK; 12TH AND UNION | 3d | 2023-04-07 A | 2023-04-07 A | 2-1409 | 100% | 2023-06-28 | 2023-06-30 |  | MBRT NEW [24 h] | 24 | 8 | COM | 8 | ZONE-2 | UNION | SIDEWALKS | NORTH |  |  | 2-2672 | 2-2672 |  |  |
| PCO632.01 |  | DSC 444-PRIMARY POWER BACKFILLED WITH CONCRETE | 3d | 2023-04-10 A | 2023-08-22 A | 2-2672 | 100% | 2023-06-28 | 2023-06-30 |  | MBRT DSC [760 h] | 760 | 760 | COM | 760 | ZONE-2 | UNION | SIDEWALKS | NORTH |  |  | PCO632.01 | PCO632.01 |  |  |
| 2-2682 |  | TRENCH ELECTRICAL; 12TH AND UNION | 1d | 2023-08-23 A | 2023-08-23 A | PCO632.01 | 100% |  |  |  | MBRT NEW [8 h] | 8 | 8 | COM | 8 | ZONE-2 | UNION | SIDEWALKS | NORTH |  |  | 2-2682 | 2-2682 |  |  |
| 2-2687 |  | INSTALL ELECTRICAL; 12TH AND UNION | 4d | 2023-08-24 A | 2023-08-25 A | 2-2682 | 100% | 2023-08-24 | 2023-08-29 |  | MBRT NEW [32 h] | 32 | 16 | COM | 16 | ZONE-2 | UNION | SIDEWALKS | NORTH |  |  | 2-2687 | 2-2687 |  |  |
| 2-2692 |  | GRADE SIDEWALKS; 12TH AND UNION | 2d | 2023-08-28 A | 2023-08-29 A | 2-2687 | 100% | 2023-08-30 | 2023-08-31 |  | MBRT NEW [16 h] | 16 | 16 | COM | 16 | ZONE-2 | UNION | SIDEWALKS | NORTH |  |  | 2-2692 | 2-2692 |  |  |
| 2-2697 |  | CURB RAMPS; 12TH AND UNION | 2d | 2023-08-30 A | 2023-08-31 A | 2-2692 | 100% | 2023-09-01 | 2023-09-05 |  | MBRT NEW [16 h] | 16 | 16 | COM | 16 | ZONE-2 | UNION | SIDEWALKS | NORTH |  |  | 2-2697 | 2-2697 |  |  |
| 2-2702 |  | POUR SIDEWALKS; 12TH AND UNION | 1d | 2023-09-01 A | 2023-09-05 A | 2-2697 | 100% | 2023-09-06 | 2023-09-06 |  | MBRT NEW [8 h] | 8 | 16 | COM | 16 | ZONE-2 | UNION | SIDEWALKS | NORTH |  |  | 2-2702 | 2-2702 |  |  |
|  | 4 | **UNION ST 12TH TO 11TH SOUTH SIDE DRIVEWAYS** |  | 2023-04-22 | 2023-04-23 |  |  |  |  |  |  |  |  |  |  |  |  |  |  |  |  |  |  |  |  |
| 2-1403 |  | REM DRIVEWAY, UNION ST 12TH TO 11TH SOUTH SIDE DRIVEWAYS | 1d | 2023-04-22 A | 2023-04-22 A | 2-1398 SS | 100% | 2023-05-06 | 2023-05-06 | WEEKEND ONLY | MBRT BASE [8 h] | 8 | 8 | WEA3 | 8 | ZONE-2 | UNION | SIDEWALKS | SOUTH |  |  | 2-1403 | 2-1403 |  |  |
| 2-1404 |  | POUR DRIVEWAY, UNION ST 12TH TO 11TH SOUTH SIDE DRIVEWAYS | 1d | 2023-04-23 A | 2023-04-23 A | 2-1403 | 100% | 2023-05-07 | 2023-05-07 | WEEKEND ONLY | MBRT BASE [8 h] | 8 | 8 | WCOM | 8 | ZONE-2 | UNION | SIDEWALKS | SOUTH |  |  | 2-1404 | 2-1404 |  |  |
|  | 6 | **UNION 12TH TO 11TH NORTH SIDE DRIVEWAYS** |  | 2023-08-30 | 2023-08-31 |  |  |  |  |  |  |  |  |  |  |  |  |  |  |  |  |  |  |  |  |
| 2-1411 |  | REM DRIVEWAY, UNION 12TH TO 11TH NORTH SIDE DRIVEWAYS | 1d | 2023-08-30 A | 2023-08-30 A | 2-1406 SS, 2-1404, 2-2692 | 100% | 2023-09-01 | 2023-09-01 |  | MBRT BASE [8 h] | 8 | 8 | WEA3 | 8 | ZONE-2 | UNION | SIDEWALKS | SOUTH |  |  | 2-1411 | 2-1411 |  |  |
| 2-1412 |  | POUR DRIVEWAY, UNION 12TH TO 11TH NORTH SIDE DRIVEWAYS | 1d | 2023-08-31 A | 2023-08-31 A | 2-1411 | 100% | 2023-09-05 | 2023-09-05 |  | MBRT BASE [8 h] | 8 | 8 | WCOM | 8 | ZONE-2 | UNION | SIDEWALKS | SOUTH |  |  | 2-1412 | 2-1412 |  |  |
|  | 7 | **EAST UNION AND 12TH STATION PLATFORM** |  | 2023-04-19 | 2023-04-28 |  |  |  |  |  |  |  |  |  |  |  |  |  |  |  |  |  |  |  |  |
| 2-1414 |  | TRENCH CONDUIT, EAST UNION & 12TH STATION PLATFORM | 1d | 2023-04-19 A | 2023-04-19 A | 2-2672 | 100% | 2023-05-15 | 2023-05-15 |  | MBRT BASE [8 h] | 8 | 8 | EA3 | 8 | ZONE-2 | UNION | SIDEWALKS |  | ELECTRICAL |  | 2-1414 | 2-1414 | PRIME |  |
| 2-1415 |  | INST CONDUIT, EAST UNION & 12TH STATION PLATFORM | 1d | 2023-04-20 A | 2023-04-20 A | 2-1414 | 100% | 2023-05-16 | 2023-05-16 |  | MBRT BASE [8 h] | 8 | 8 | ELECRICAL SUB | 8 | ZONE-2 | UNION | SIDEWALKS |  | ELECTRICAL |  | 2-1415 | 2-1415 | PRIME |  |
| 2-1416 |  | POUR STATION FOUNDATION, EAST UNION & 12TH STATION PLATFORM | 3d | 2023-04-21 A | 2023-04-25 A | 2-1415 | 100% | 2023-05-17 | 2023-05-19 |  | MBRT BASE [24 h] | 24 | 24 | COM | 24 | ZONE-2 | UNION | SIDEWALKS |  |  |  | 2-1416 | 2-1416 |  |  |
| 2-1417 |  | GRADE SIDEWALK, EAST UNION & 12TH STATION PLATFORM | 1d | 2023-04-26 A | 2023-04-26 A | 2-1416 | 100% | 2023-05-22 | 2023-05-22 |  | MBRT BASE [8 h] | 8 | 8 | EA3 | 8 | ZONE-2 | UNION | SIDEWALKS |  | SIDEWALKS | GRADESW | 2-1417 | 2-1417 |  |  |
| 2-1418 |  | POUR SIDEWALK, EAST UNION & 12TH STATION PLATFORM | 2d | 2023-04-27 A | 2023-04-28 A | 2-1417 | 100% | 2023-05-23 | 2023-05-24 |  | MBRT BASE [16 h] | 16 | 16 | COM | 16 | ZONE-2 | UNION | SIDEWALKS |  |  |  | 2-1418 | 2-1418 |  |  |
|  | 8 | **UNION 12TH TO 13TH SOUTH SIDE** |  | 2022-08-17 | 2022-08-30 |  |  |  |  |  |  |  |  |  |  |  |  |  |  |  |  |  |  |  |  |
| 2-1420 |  | REM SIDEWALK, UNION 12TH TO 13TH SOUTH SIDE | 2d | 2022-08-17 A | 2022-08-18 A | 2-1257 | 100% | 2023-04-13 | 2023-04-14 |  | MBRT BASE [16 h] | 16 | 16 | EA3 | 16 | ZONE-2 | UNION | SIDEWALKS | SOUTH |  |  |  |  |  | OCS |
| 2-1421 |  | GRADE SIDEWALK, UNION 12TH TO 13TH SOUTH SIDE | 1d | 2022-08-19 A | 2022-08-19 A | 2-1420 | 100% | 2023-04-17 | 2023-04-17 |  | MBRT BASE [8 h] | 8 | 8 | EA3 | 8 | ZONE-2 | UNION | SIDEWALKS | SOUTH | SIDEWALKS | GRADESW |  |  |  | OCS |
| 2-1422 |  | SIDEWALK, UNION 12TH TO 13TH SOUTH SIDE | 2d | 2022-08-22 A | 2022-08-30 A | 2-1421 | 100% | 2023-04-18 | 2023-04-19 |  | MBRT BASE [56 h] | 56 | 56 | COM | 56 | ZONE-2 | UNION | SIDEWALKS | SOUTH |  |  |  |  |  | OCS |

| ID | WBS | Activity | Duration | Start | Finish | Predecessors | Complete | Remaining | Planned start | Planned finish | Total float | Free float | Resources | Cost | Actual cost | user_text2 | user_number6 | user_text10 | user_text8 | MBRT-ZONE | MBRT-LOCATION | MBRT-TYPE | MBRT-SIDE | MBRT-DELAY | MBRT-SCOPE | MBRT-ACTIVITY | ~SELECT3 | ~SELECT | MBRT-RESP |
| --- | --- | --- | --- | --- | --- | --- | --- | --- | --- | --- | --- | --- | --- | --- | --- | --- | --- | --- | --- | --- | --- | --- | --- | --- | --- | --- | --- | --- | --- |
|  | 9 | **UNION 12TH TO 13TH NORTH SIDE** |  | 2023-07-06 | 2023-07-19 |  |  |  |  |  |  |  |  |  |  |  |  |  |  |  |  |  |  |  |  |  |  |  |  |
| 2-1424 |  | REM SIDEWALK, UNION 12TH TO 13TH NORTH SIDE | 2d | 2023-07-06 A | 2023-07-07 A | 2-1422, 2-1418 | 100% |  | 2023-07-05 | 2023-07-06 |  |  | MBRT BASE [16 h] | 16 | 16 | EA3 | 16 | 2-1424 | 2-1424 | ZONE-2 | UNION | SIDEWALKS | NORTH | OCS |  |  |  |  |  |
| 2-1425 |  | GRADE SIDEWALK, UNION 12TH TO 13TH NORTH SIDE | 2d | 2023-07-12 A | 2023-07-12 A | 2-1424 | 100% |  | 2023-07-07 | 2023-07-10 |  |  | MBRT BASE [8 h] | 8 | 8 | EA3 | 8 | 2-1425 | 2-1425 | ZONE-2 | UNION | SIDEWALKS | NORTH | OCS | SIDEWALKS | GRADESW |  |  |  |
| 2-1426 |  | SIDEWALK, UNION 12TH TO 13TH NORTH SIDE | 4d | 2023-07-14 A | 2023-07-19 A | 2-1425 | 100% |  | 2023-07-11 | 2023-07-14 |  |  | MBRT BASE [32 h] | 32 | 32 | COM | 32 | 2-1426 | 2-1426 | ZONE-2 | UNION | SIDEWALKS | NORTH | OCS |  |  |  |  |  |
|  | 10 | **13th AVE MADISON TO UNION WEST SIDE** |  | 2023-07-26 | 2023-08-08 |  |  |  |  |  |  |  |  |  |  |  |  |  |  |  |  |  |  |  |  |  |  |  |  |
| 2-1428 |  | REM SIDEWALK, 13th AVE MAD TO UNION WEST SIDE | 1d | 2023-07-26 A | 2023-07-27 A | 2-1425, 3-2238 | 100% |  | 2023-07-11 | 2023-07-11 |  |  | MBRT BASE [16 h] | 16 | 16 | EA3 | 16 | 2-1428 | 2-1428 | ZONE-2 | 13 | SIDEWALKS | WEST |  |  |  |  |  |  |
| 2-1429 |  | GRADE SIDEWALK, 13th AVE MAD TO UNION WEST SIDE | 1d | 2023-08-04 A | 2023-08-04 A | 2-1428 | 100% |  | 2023-07-12 | 2023-07-12 |  |  | MBRT BASE [8 h] | 8 | 8 | EA3 | 8 | 2-1429 | 2-1429 | ZONE-2 | 13 | SIDEWALKS | WEST |  | SIDEWALKS | GRADESW |  |  |  |
| 2-1430 |  | F/P CURB RAMPS, 13th AVE MAD TO UNION WEST SIDE | 1d | 2023-08-07 A | 2023-08-07 A | 2-1429, 2-1426 | 100% |  | 2023-07-17 | 2023-07-17 |  |  | MBRT BASE [8 h] | 8 | 8 | COM | 8 | 2-1430 | 2-1430 | ZONE-2 | 13 | SIDEWALKS | WEST | OCS | CURB |  |  |  |  |
| 2-1431 |  | SIDEWALK, 13th AVE MAD TO UNION WEST SIDE | 3d | 2023-08-08 A | 2023-08-08 A | 2-1430 | 100% |  | 2023-07-18 | 2023-07-20 |  |  | MBRT BASE [8 h] | 8 | 8 | COM | 8 | 2-1431 | 2-1431 | ZONE-2 | 13 | SIDEWALKS | WEST | OCS |  |  |  |  |  |
|  | 11 | **13TH AVE MADISON TO UNION EAST SIDE** |  | 2023-07-12 | 2023-07-19 |  |  |  |  |  |  |  |  |  |  |  |  |  |  |  |  |  |  |  |  |  |  |  |  |
| 2-1433 |  | REM SIDEWALK, 13TH AVE MAD TO UNION EAST SIDE | 1d | 2023-07-12 A | 2023-07-12 A | 2-1424 | 100% |  | 2023-07-21 | 2023-07-21 |  |  | MBRT BASE [8 h] | 8 | 8 | EA3 | 8 | 2-1433 | 2-1433 | ZONE-2 | 13 | SIDEWALKS | EAST | OCS |  |  |  |  |  |
| 2-1434 |  | GRADE SIDEWALK, 13TH AVE MAD TO UNION EAST SIDE | 1d | 2023-07-13 A | 2023-07-13 A | 2-1433 | 100% |  | 2023-07-24 | 2023-07-24 |  |  | MBRT BASE [8 h] | 8 | 8 | EA3 | 8 | 2-1434 | 2-1434 | ZONE-2 | 13 | SIDEWALKS | EAST | OCS | SIDEWALKS | GRADESW |  |  |  |
| 2-1435 |  | F/P CURB RAMPS, 13TH AVE MAD TO UNION EAST SIDE | 1d | 2023-07-14 A | 2023-07-14 A | 2-1434 | 100% |  | 2023-07-25 | 2023-07-25 |  |  | MBRT BASE [8 h] | 8 | 8 | COM | 8 | 2-1435 | 2-1435 | ZONE-2 | 13 | SIDEWALKS | EAST | OCS | CURB |  |  |  |  |
| 2-1436 |  | SIDEWALK, 13TH AVE MAD TO UNION EAST SIDE | 3d | 2023-07-17 A | 2023-07-19 A | 2-1435 | 100% |  | 2023-07-26 | 2023-07-28 |  |  | MBRT BASE [24 h] | 24 | 24 | COM | 24 | 2-1436 | 2-1436 | ZONE-2 | 13 | SIDEWALKS | EAST | OCS |  |  | 147 |  |  |
|  | 12 | **BROADWAY TO 11TH SOUTH SIDE** |  | 2023-06-05 | 2024-04-24 |  |  |  |  |  |  |  |  |  |  |  |  |  |  |  |  |  |  |  |  |  |  |  |  |
| 2-2055 |  | DSC 513 POLE FOUDNATION 40W-788-2 GROUNDWATER | 10d | 2023-06-05 A | 2023-06-16 A | MS-0025 | 100% |  |  |  |  |  | MBRT DSC [80 h] | 80 | 80 |  | 80 | 2-2055 | 2-2055 |  |  |  |  |  |  |  |  | x |  |
| 2-2056 |  | DSC 537 Pole 40W-137-1 Tunnel Obstruction | 12d | 2023-06-21 A | 2024-04-16 | 2-2055 FS+2d |  | 11d | 2023-06-21 | 2023-07-07 | -142d | 0d | MBRT DSC [1480 h] | 1,480 | 96 |  | 1480 | 2-2056 | 2-2056 |  |  |  |  |  |  |  |  | x |  |
| 2-2059 |  | DSC 538 Pole 40W-790-3 Conduit Obstruction | 12d | 2023-06-21 A | 2023-08-25 A | 2-2055 FS+2d | 100% |  | 2023-06-21 | 2023-07-07 |  |  | MBRT DSC [376 h] | 376 | 96 |  | 376 | 2-2059 | 2-2059 |  |  |  |  |  |  |  |  | x |  |
| 2-1438 |  | REM SIDEWALK, BROADWAY TO 11TH SOUTH SIDE | 1d | 2023-08-14 A | 2023-11-03 A | 2-1278, 2-2667, 2-2059, 2-2056 SS | 100% |  | 2023-08-28 | 2023-08-28 |  |  | MBRT BASE [472 h] | 472 | 472 | EA3 | 472 | 2-1438 | 2-1438 | ZONE-2 | BROADWAY | SIDEWALKS | SOUTH | OCS |  |  |  |  |  |
| 2-1439 |  | TRENCH CONDUIT, BROADWAY TO 11TH SOUTH SIDE | 3d | 2023-08-17 A | 2023-11-03 A | 2-1438 SS | 100% |  | 2023-08-29 | 2023-08-31 |  |  | MBRT BASE [448 h] | 448 | 448 | EA3 | 448 | 2-1439 | 2-1439 | ZONE-2 | BROADWAY | SIDEWALKS | SOUTH | OCS | ELECTRICAL |  |  |  | PRIME |
| 2-1450 |  | DSC 596 11th South Side Unknown Unlocated Conduit | 2d | 2023-08-22 A | 2023-08-23 A | 2-1439 SS | 100% |  | 2023-08-14 | 2023-08-15 |  |  | MBRT DSC [16 h] | 16 | 16 |  | 16 |  |  |  |  |  |  |  |  |  |  |  |  |
| 2-1440 |  | INST CONDUIT, BROADWAY TO 11TH SOUTH SIDE | 3d | 2023-08-28 A | 2023-11-07 A | 2-1439 SS, 2-1490 FF, 2-1439 FF | 100% |  | 2023-08-29 | 2023-08-31 |  |  | MBRT BASE [408 h] | 408 | 408 | ELECRICAL SUB | 408 | 2-1440 | 2-1440 | ZONE-2 | BROADWAY | SIDEWALKS | SOUTH | OCS | ELECTRICAL |  |  |  | PRIME |
| 2-1490 |  | DSC 613 SEC 10TH REMOVE REPLACE HH CONFLICT | 9d | 2023-09-06 A | 2023-09-18 A | 2-1450, 2-1439 SS | 100% |  | 2023-08-14 | 2023-08-24 |  |  | MBRT DSC [72 h] | 72 | 72 |  | 72 |  |  |  |  |  |  |  |  |  |  |  |  |
| 2-1441 |  | GRADE SIDEWALK, BROADWAY TO 11TH SOUTH SIDE | 2d | 2023-09-19 A | 2023-11-27 A | 2-1440 SS | 100% |  | 2023-09-18 | 2023-09-19 |  |  | MBRT BASE [376 h] | 376 | 376 | EA3 | 376 | 2-1441 | 2-1441 | ZONE-2 | BROADWAY | SIDEWALKS | SOUTH | OCS | SIDEWALKS | GRADESW |  |  |  |
| 2-1442 |  | F/P CURB RAMPS, BROADWAY TO 11TH SOUTH SIDE | 2d | 2023-09-26 A | 2023-09-27 A | 2-1441 SS | 100% |  | 2023-09-20 | 2023-09-21 |  |  | MBRT BASE [16 h] | 16 | 16 | COM | 16 | 2-1442 | 2-1442 | ZONE-2 | BROADWAY | SIDEWALKS | SOUTH | OCS | CURB |  |  |  |  |
| 2-1443 |  | SIDEWALK, BROADWAY TO 11TH SOUTH SIDE | 3d | 2023-09-28 A | 2023-12-06 A | 2-1442, 2-1431, 2-1478 FF, 2-1458 FF | 100% |  | 2023-09-22 | 2023-09-26 |  |  | MBRT BASE [376 h] | 376 | 24 | COM | 376 | 2-1443 | 2-1443 | ZONE-2 | BROADWAY | SIDEWALKS | SOUTH | OCS |  |  |  |  |  |
| 2-1458 |  | DSC 638 CONCRETE OBSTRUCTION IN SIDEWALKS | 1d | 2023-10-30 A | 2023-10-30 A | 2-1441 SS | 100% |  | 2023-10-02 | 2023-10-02 |  |  | MBRT DSC [8 h] | 8 | 8 |  | 8 |  |  |  |  |  |  |  |  |  |  |  |  |
| 2-1478 |  | DSC 639 CONDUIT CONFLICTS | 2d | 2023-10-30 A | 2023-10-31 A | 2-1440 SS | 100% |  | 2023-10-02 | 2023-10-03 |  |  | MBRT DSC [16 h] | 16 | 16 |  | 16 |  |  |  |  |  |  |  |  |  |  |  |  |
| 2-1668 |  | DSC 646 UNKNOWN UNLOCATED CONDUIT | 2d | 2023-11-01 A | 2023-11-03 A | 2-1478 | 100% |  | 2023-11-02 | 2023-11-03 |  |  | MBRT DSC [16 h] | 16 | 16 |  | 16 |  |  |  |  |  |  |  |  |  |  |  |  |
| 2-1663 |  | DSC 645 TYPE 6 CONFLICT | 2d | 2023-11-02 A | 2023-11-03 A | 2-1478 | 100% |  |  |  |  |  | MBRT DSC [16 h] | 16 | 16 |  | 16 |  |  |  |  |  |  |  |  |  |  |  |  |
| 2-1693 |  | Broadway NEC | 5d | 2024-02-26 A | 2024-03-01 A | 2-1443 | 100% |  | 2024-03-04 | 2024-03-08 |  |  |  |  |  |  |  |  |  |  |  |  |  |  |  |  |  |  |  |
| 2-1673 |  | GRADE SIDEWALK AFTER TUNNEL REMOVAL | 0d | 2024-04-17 | 2024-04-17 | 2-1668, 2-1663, 2-2056 |  |  |  |  | -76d | 0d | MBRT NEW |  |  |  | 0 |  |  |  |  |  |  |  |  |  |  |  |  |
| 2-1698 |  | 11th NWC | 5d | 2024-04-17 | 2024-04-23 | 2-1673 |  |  |  |  | 114d |  |  |  |  |  |  |  |  |  |  |  |  |  |  |  |  |  |  |
| 2-1703 |  | Broadway SEC | 5d | 2024-04-17 | 2024-04-23 | 2-1673 |  |  |  |  | -76d | 0d |  |  |  |  |  |  |  |  |  |  |  |  |  |  |  |  |  |
| 2-1708 |  | Broadway NEC | 5d | 2024-04-17 | 2024-04-23 | 2-1673 |  |  |  |  | -76d | 0d |  |  |  |  |  |  |  |  |  |  |  |  |  |  |  |  |  |
| 2-1678 |  | SIDEWALS AFTER TUNNEL REMOVAL | 0d | 2024-04-24 | 2024-04-24 | 2-1673, 2-1363, 2-7140, 2-1693, 2-1708, 2-1703 |  |  |  |  | -76d | 71d | MBRT NEW |  |  |  | 0 |  |  |  |  |  |  |  |  |  |  |  |  |

| ID | WBS | Activity | Duration | Start | Finish | Predecessors | Complete | Planned start | Planned finish | Total float | Free float | Resources | Cost | Actual cost | user_text2 | user_number6 | user_text10 | user_text8 | MBRT-ZONE | MBRT-LOCATION | MBRT-TYPE | MBRT-SIDE | MBRT-DELAY | ~SELECT | MBRT-SCOPE | MBRT-RESP | MBRT-ACTIVITY |
| --- | --- | --- | --- | --- | --- | --- | --- | --- | --- | --- | --- | --- | --- | --- | --- | --- | --- | --- | --- | --- | --- | --- | --- | --- | --- | --- | --- |
|  | 13 | **11TH TO 12TH SOUTH SIDE** |  | 2023-05-11 | 2023-08-16 |  |  |  |  |  |  |  |  |  |  |  |  |  |  |  |  |  |  |  |  |  |  |
| PCO674.01 |  | DSC 477-POLE 40W-130-1 FOUNDATION CONFLICTS | 3d | 2023-05-11 A | 2023-06-02 A | MS-0025 | 100% | 2023-07-03 | 2023-07-06 |  |  | MBRT DSC [128 h] | 128 | 128 | EA3 | 128 | PCO674.01 | PCO674.01 | ZONE-2 | 11 | SIDEWALKS | SOUTH | OCS |  |  |  |  |
| PCO675.01 |  | DSC 478-POLE 40W-788-5 FOUNDATION CONFLICTS | 3d | 2023-05-11 A | 2023-06-02 A | MS-0025 | 100% | 2023-07-03 | 2023-07-06 |  |  | MBRT DSC [128 h] | 128 | 128 | EA3 | 128 | PCO675.01 | PCO675.01 | ZONE-2 | 11 | SIDEWALKS | SOUTH | OCS |  |  |  |  |
| PCO693.01 |  | DSC 495-CONTAMINATED SOILS POLE FND 40W-12-2 | 3d | 2023-05-16 A | 2023-06-06 A | MS-0025 | 100% | 2023-07-03 | 2023-07-06 |  |  | MBRT DSC [120 h] | 120 | 120 | EA3 | 120 | PCO693.01 | PCO693.01 | ZONE-2 | 11 | SIDEWALKS | SOUTH | OCS | 127 |  |  |  |
| 2-2068 |  | DSC 524 POLE 40W-128-1 FOUNDATION CONFLCIT | 13d | 2023-06-15 A | 2023-08-11 A | PCO693.01 FS+6d | 100% | 2023-06-15 | 2023-07-03 |  |  | MBRT DSC [328 h] | 328 | 104 |  | 328 | 2-2068 | 2-2068 |  |  |  |  |  | 127 |  |  |  |
| 2-1445 |  | REM SIDEWALK, 11TH TO 12TH SOUTH SIDE BEFORE DSC | 1d | 2023-06-29 A | 2023-06-29 A | 2-1285, 2-1355 | 100% | 2023-07-05 | 2023-07-05 |  |  | MBRT DSC [8 h] | 8 | 8 | EA3 | 8 | 2-1445 | 2-1445 | ZONE-2 | 11 | SIDEWALKS | SOUTH | OCS | 127 |  |  |  |
| 2-2069 |  | DSC 545 Water Vault Conflict | 3d | 2023-06-29 A | 2023-07-03 A | 2-2068 SS | 100% |  |  |  |  | MBRT DSC [24 h] | 24 | 24 |  | 24 | 2-2069 | 2-2069 |  |  |  |  |  | x |  |  |  |
| 2-2071 |  | DSC 546 void under sidewalks | 3d | 2023-06-29 A | 2023-07-03 A | 2-2068 SS | 100% |  |  |  |  | MBRT DSC [24 h] | 24 | 24 |  | 24 | 2-2071 | 2-2071 |  |  |  |  |  | x |  |  |  |
| 2-1446 |  | TRENCH CONDUIT, 11TH TO 12TH SOUTH SIDE | 2d | 2023-06-30 A | 2023-07-03 A | 2-1445 | 100% | 2023-07-03 | 2023-07-05 |  |  | MBRT BASE [16 h] | 16 | 16 | EA3 | 16 | 2-1446 | 2-1446 | ZONE-2 | 11 | SIDEWALKS | SOUTH | OCS | 127 | ELECTRICAL | PRIME |  |
| 2-1447 |  | INST CONDUIT, 11TH TO 12TH SOUTH SIDE BEFORE DSC | 2d | 2023-06-30 A | 2023-07-19 A | 2-1446 SS | 100% | 2023-07-03 | 2023-07-05 |  |  | MBRT DSC [104 h] | 104 | 104 | ELECRICAL SUB | 104 | 2-1447 | 2-1447 | ZONE-2 | 11 | SIDEWALKS | SOUTH | OCS | 127 | ELECTRICAL | PRIME |  |
| 2-2073 |  | DSC 548 UNKNOWN UNLOCATED CODUIT CONFLCIT WITH HH | 2d | 2023-06-30 A | 2023-07-10 A | 2-2068 SS | 100% | 2023-06-30 | 2023-07-03 |  |  | MBRT DSC [48 h] | 48 | 48 |  | 48 | 2-2073 | 2-2073 |  |  |  |  |  | x |  |  |  |
| 2-1448 |  | GRADE SIDEWALK, 11TH TO 12TH SOUTH SIDE BEFORE DSC | 3d | 2023-07-20 A | 2023-07-20 A | 2-1447, 2-2071, 2-2069, 2-2073 | 100% | 2023-07-05 | 2023-07-07 |  |  | MBRT DSC [8 h] | 8 | 8 | EA3 | 8 | 2-1448 | 2-1448 | ZONE-2 | 11 | SIDEWALKS | SOUTH | OCS | 127 | SIDEWALKS |  | GRADESW |
| 2-1449 |  | SIDEWALK, 11TH TO 12TH SOUTH SIDE BEFORE DSC | 4d | 2023-07-21 A | 2023-07-26 A | 2-1448 | 100% | 2023-07-10 | 2023-07-13 |  |  | MBRT DSC [32 h] | 32 | 32 | COM | 32 | 2-1449 | 2-1449 | ZONE-2 | 11 | SIDEWALKS | SOUTH | SCL-FC | 127 |  |  |  |
| 2-2089 |  | TRENCH CONDUIT AFTER DSC 524 | 2d | 2023-08-10 A | 2023-08-10 A | 2-2068 FF, 2-1449 | 100% | 2023-07-27 | 2023-07-28 |  |  | MBRT DSC [8 h] | 8 | 8 |  | 8 | 2-2089 | 2-2089 |  |  |  |  |  | 127 |  |  |  |
| 2-2078 |  | INSTALL CONDUIT AFTER DSC 524 | 2d | 2023-08-11 A | 2023-08-14 A | 2-2089 | 100% | 2023-07-31 | 2023-08-01 |  |  | MBRT DSC [16 h] | 16 | 16 |  | 16 | 2-2078 | 2-2078 |  |  |  |  |  | CPLP |  |  |  |
| 2-2099 |  | GRADE SIDEWALKS AFTER DSC 524 | 1d | 2023-08-15 A | 2023-08-15 A | 2-2078 | 100% |  |  |  |  | MBRT DSC [8 h] | 8 | 8 |  | 8 | 2-2099 | 2-2099 |  |  |  |  |  | CPLP |  |  |  |
| 2-2080 |  | SIDEWALK AFTER DSC 524 | 2d | 2023-08-16 A | 2023-08-16 A | 2-2099 | 100% | 2023-08-16 | 2023-08-17 |  |  | MBRT DSC [8 h] | 8 | 8 |  | 8 | 2-2080 | 2-2080 |  |  |  |  |  | CPLP |  |  |  |
|  | 14 | **12TH TO 13TH SOUTH SIDE** |  | 2024-02-12 | 2024-04-03 |  |  |  |  |  |  |  |  |  |  |  |  |  |  |  |  |  |  |  |  |  |  |
| 2-1656 |  | DELAY AWITING PONY BAR SHOP DRAWING RETURN | 14d | 2024-02-12 A | 2024-03-04 A | 2-7140 | 100% | 2024-02-12 | 2024-03-01 |  |  | MBRT NEW [112 h] | 112 | 112 |  | 112 |  |  |  |  |  |  |  |  |  |  |  |
| 2-1451 |  | REM SIDEWALK, 12TH TO 13TH SOUTH SIDE | 2d | 2024-03-04 A | 2024-03-05 A | 2-1449 FS-1d, 2-1367, 2-1656 | 100% |  |  |  |  | MBRT BASE [16 h] | 16 |  | EA3 | 16 | 2-1451 | 2-1451 | ZONE-2 | 12 | SIDEWALKS | SOUTH | SCL-FC |  |  |  |  |
| 2-1661 |  | Sidewalk 13th SEC | 5d | 2024-03-04 A | 2024-03-05 A | 2-1656 | 100% | 2024-03-04 | 2024-03-08 |  |  |  |  |  |  |  |  |  |  |  |  |  |  |  |  |  |  |
| DSC-718 |  | DSC 718 12th to 13th south side unknown pole foundation | 5d | 2024-03-05 A | 2024-03-11 A | 2-1656, 2-1451 | 100% | 2024-03-04 | 2024-03-08 |  |  |  |  |  |  |  |  |  |  |  |  |  |  |  |  |  |  |
| 2-1452 |  | TRENCH CONDUIT, 12TH TO 13TH SOUTH SIDE | 2d | 2024-03-06 A | 2024-03-07 A | 2-1451 | 100% |  |  |  |  | MBRT BASE [16 h] | 16 |  | EA3 | 16 | 2-1452 | 2-1452 | ZONE-2 | 12 | SIDEWALKS | SOUTH | SCL-FC |  | ELECTRICAL | PRIME |  |
| 2-1453 |  | INST CONDUIT, 12TH TO 13TH SOUTH SIDE | 2d | 2024-03-07 A | 2024-03-07 A | 2-1452 | 100% | 2024-03-08 | 2024-03-11 |  |  | MBRT BASE [16 h] | 16 |  | ELECRICAL SUB | 16 | 2-1453 | 2-1453 | ZONE-2 | 12 | SIDEWALKS | SOUTH | SCL-FC |  | ELECTRICAL | PRIME |  |
| 2-1454 |  | GRADE SIDEWALK, 12TH TO 13TH SOUTH SIDE | 3d | 2024-03-08 A | 2024-03-08 A | 2-1453 | 100% | 2024-03-12 | 2024-03-14 |  |  | MBRT BASE [24 h] | 24 |  | EA3 | 24 | 2-1454 | 2-1454 | ZONE-2 | 12 | SIDEWALKS | SOUTH | SCL-FC |  | SIDEWALKS |  | GRADESW |
| 2-1455 |  | BIKE RAMP, 12TH TO 13TH SOUTH SIDE | 2d | 2024-03-11 A | 2024-03-11 A | 2-1454 | 100% | 2024-03-15 | 2024-03-18 |  |  | MBRT BASE [16 h] | 16 |  | COM | 16 | 2-1455 | 2-1455 | ZONE-2 | 12 | SIDEWALKS | SOUTH | SCL-FC |  |  |  |  |
| 2-1457 |  | SIDEWALK, 12TH TO 13TH SOUTH SIDE | 3d | 2024-03-12 A | 2024-03-12 A | 2-1455, DSC-718, 2-1661 | 100% | 2024-03-19 | 2024-03-21 |  |  | MBRT BASE [24 h] | 24 |  | COM | 24 | 2-1457 | 2-1457 | ZONE-2 | 12 | SIDEWALKS | SOUTH | SCL-FC |  |  |  |  |
| 2-1456 |  | INST WOOD RAMP, 12TH TO 13TH SOUTH SIDE | 2d | 2024-04-02 | 2024-04-03 | 2-1457 |  |  |  | -77d | 34d | MBRT BASE [16 h] | 16 |  | COM | 16 | 2-1456 | 2-1456 | ZONE-2 | 12 | SIDEWALKS | SOUTH |  |  |  |  |  |

| ID | WBS | Activity | Duration | Start | Finish | Predecessors | Complete | Remaining | Planned start | Planned finish | Total float | Free float | Resources | Cost | Actual cost | user_number6 | user_text2 | user_text10 | user_text8 | MBRT-ZONE | MBRT-LOCATION | MBRT-TYPE | MBRT-SIDE | MBRT-DELAY | MBRT-SCOPE | MBRT-RESP | MBRT-ACTIVITY | ~SELECT |
| --- | --- | --- | --- | --- | --- | --- | --- | --- | --- | --- | --- | --- | --- | --- | --- | --- | --- | --- | --- | --- | --- | --- | --- | --- | --- | --- | --- | --- |
|  | 15 | **13TH TO 14TH SOUTH SIDE** |  | 2023-10-24 | 2024-04-16 |  |  |  |  |  |  |  |  |  |  |  |  |  |  |  |  |  |  |  |  |  |  |  |
| 2-1464 |  | DSC 636 Pole P27-03 OBSTRUCTION | 13d | 2023-10-24 A | 2023-11-10 A | 2-1443 SS | 100% |  | 2023-11-02 | 2023-11-21 |  |  | MBRT DSC [104 h] | 104 | 104 | 104 |  |  |  |  |  |  |  |  |  |  |  |  |
| 2-1484 |  | DSC 637 POLE 40W-118-3 OBSTRUCITONS | 12d | 2023-10-25 A | 2023-11-10 A | 2-1443 SS, 2-1464 SS | 100% |  | 2023-11-02 | 2023-11-20 |  |  | MBRT DSC [96 h] | 96 | 96 | 96 |  |  |  |  |  |  |  |  |  |  |  |  |
| 2-1459 |  | REM SIDEWALK, 13TH TO 14TH SOUTH SIDE | 2d | 2023-12-21 A | 2024-02-21 A | 2-1299, 2-1484, 2-1464 | 100% |  | 2024-01-02 | 2024-01-03 |  |  | MBRT BASE [328 h] | 328 | 328 | 328 | EA3 | 2-1459 | 2-1459 | ZONE-2 | 13 | SIDEWALKS | SOUTH | SCL-FC |  |  |  |  |
| 2-1460 |  | TRENCH CONDUIT, 13TH TO 14TH SOUTH SIDE | 2d | 2023-12-21 A | 2024-02-22 A | 2-1459 SS, DSC-676 SS, DSC-675 SS, DSC-711 FF | 100% |  | 2024-01-02 | 2024-01-03 |  |  | MBRT BASE [336 h] | 336 | 16 | 336 | EA3 | 2-1460 | 2-1460 | ZONE-2 | 13 | SIDEWALKS | SOUTH | SCL-FC | ELECTRICAL | PRIME |  |  |
| DSC-675 |  | DSC 675 UNKNOWN UNLOCATED DUCT BANK | 6d | 2023-12-21 A | 2023-12-29 A | 2-1484, 2-1464 | 100% |  | 2023-12-11 | 2023-12-18 |  |  | MBRT DSC [48 h] | 48 | 48 | 48 |  |  |  |  |  |  |  |  |  |  |  |  |
| DSC-676 |  | DSC 676 UNKNOWN UNLOCATED SIDE SEWER CONFLICT | 6d | 2023-12-21 A | 2023-12-29 A | 2-1484, 2-1464 | 100% |  | 2023-12-11 | 2023-12-18 |  |  | MBRT DSC [48 h] | 48 | 48 | 48 |  |  |  |  |  |  |  |  |  |  |  |  |
| 2-1461 |  | INST CONDUIT, 13TH TO 14TH SOUTH SIDE | 2d | 2024-01-02 A | 2024-04-05 | 2-1460 SS, DSC-676, DSC-675, DSC-711 FF |  | 4d | 2024-01-04 | 2024-01-05 | -142d | 0d | MBRT BASE [336 h] | 336 | 16 | 336 | ELECRICAL SUB | 2-1461 | 2-1461 | ZONE-2 | 13 | SIDEWALKS | SOUTH | SCL-FC | ELECTRICAL | PRIME |  |  |
| 2-1462 |  | GRADE SIDEWALK, 13TH TO 14TH SOUTH SIDE | 2d | 2024-01-17 A | 2024-04-05 | 2-1461 SS, DSC-721 FF, DSC-723 FF |  | 4d | 2024-01-08 | 2024-01-09 | -142d | 0d | MBRT BASE [256 h] | 256 | 16 | 256 | EA3 | 2-1462 | 2-1462 | ZONE-2 | 13 | SIDEWALKS | SOUTH | SCL-FC | SIDEWALKS |  | GRADESW |  |
| 2-1463 |  | SIDEWALK, 13TH TO 14TH SOUTH SIDE | 3d | 2024-01-23 A | 2024-04-16 | 2-1462 SS, DSC-688 FF |  | 11d | 2024-01-10 | 2024-01-12 | -142d | 0d | MBRT BASE [224 h] | 224 | 24 | 224 | COM | 2-1463 | 2-1463 | ZONE-2 | 13 | SIDEWALKS | SOUTH | SCL-FC |  |  |  |  |
| DSC-711 |  | DSC 711 SWC 14TH FILLED WITH CDF | 1d | 2024-02-21 A | 2024-02-21 A | 2-1459 SS | 100% |  | 2024-02-12 | 2024-02-12 |  |  | MBRT DSC [8 h] | 8 | 8 | 8 |  |  |  |  |  |  |  |  |  |  |  |  |
| DSC-721 |  | DSC 721 13th to 14th South Side Duct Bank conflict with Conduit | 5d | 2024-03-01 A | 2024-04-05 | 2-1460, 2-1459 | 20% | 4d | 2024-03-04 | 2024-03-08 | -142d | 0d |  |  |  |  |  |  |  |  |  |  |  |  |  |  |  |  |
| DSC-723 |  | DSC 723 13th to 14th south side unknown cdf | 5d | 2024-03-01 A | 2024-04-05 | 2-1459, 2-1460 | 20% | 4d | 2024-03-04 | 2024-03-08 | -142d | 0d |  |  |  |  |  |  |  |  |  |  |  |  |  |  |  |  |
| DSC-746 |  | 13th SWC | 5d | 2024-04-08 | 2024-04-12 | DSC-723, DSC-721 |  |  |  |  | -76d | 0d |  |  |  |  |  |  |  |  |  |  |  |  |  |  |  |  |
|  | 16 | **14TH TO 15TH SOUTH SIDE** |  | 2024-03-25 | 2024-04-16 |  |  |  |  |  |  |  |  |  |  |  |  |  |  |  |  |  |  |  |  |  |  |  |
| 2-1465 |  | REM SIDEWALK, 14TH TO 15TH SOUTH SIDE | 3d | 2024-03-25 A | 2024-03-26 A | 2-1306, 2-1463 SS, 2-1327, 2-1412 | 100% |  | 2024-03-26 | 2024-03-28 |  |  | MBRT BASE [24 h] | 24 |  | 24 | EA3 | 2-1465 | 2-1465 | ZONE-2 | 14 | SIDEWALKS | SOUTH | SCL-FC |  |  |  |  |
| DSC-735 |  | DSC 735 SEC 14th unknown concrete obstruction | 5d | 2024-03-27 A | 2024-04-05 | 2-1465 | 20% | 4d | 2024-03-04 | 2024-03-08 | -142d | 0d |  |  |  |  |  |  |  |  |  |  |  |  |  |  |  |  |
| DSC-736 |  | DSC 736 SEC 14th unknown utlities in conflict with the pedestal | 5d | 2024-03-27 A | 2024-04-05 | 2-1465 | 20% | 4d | 2024-03-04 | 2024-03-08 | -142d | 0d |  |  |  |  |  |  |  |  |  |  |  |  |  |  |  |  |
| 2-1466 |  | TRENCH CONDUIT, 14TH TO 15TH SOUTH SIDE | 1d | 2024-04-02 | 2024-04-02 | 2-1465 |  |  |  |  | -138d | 4d | MBRT BASE [8 h] | 8 |  | 8 | EA3 | 2-1466 | 2-1466 | ZONE-2 | 14 | SIDEWALKS | SOUTH | SCL-FC | ELECTRICAL | PRIME |  |  |
| 2-1467 |  | INST CONDUIT, 14TH TO 15TH SOUTH SIDE | 1d | 2024-04-08 | 2024-04-08 | 2-1466 SS, DSC-736, DSC-735 |  |  |  |  | -142d | 0d | MBRT BASE [8 h] | 8 |  | 8 | ELECRICAL SUB | 2-1467 | 2-1467 | ZONE-2 | 14 | SIDEWALKS | SOUTH | SCL-FC | ELECTRICAL | PRIME |  |  |
| 2-1468 |  | GRADE SIDEWALK, 14TH TO 15TH SOUTH SIDE | 2d | 2024-04-09 | 2024-04-10 | 2-1467 |  |  |  |  | -142d | 0d | MBRT BASE [16 h] | 16 |  | 16 | EA3 | 2-1468 | 2-1468 | ZONE-2 | 14 | SIDEWALKS | SOUTH | SCL-FC | SIDEWALKS |  | GRADESW |  |
| 2-1469 |  | F/P CURB RAMPS, 14TH TO 15TH SOUTH SIDE | 1d | 2024-04-11 | 2024-04-11 | 2-1468, DSC-688 |  |  |  |  | -142d | 0d | MBRT BASE [8 h] | 8 |  | 8 | COM | 2-1469 | 2-1469 | ZONE-2 | 14 | SIDEWALKS | SOUTH |  | CURB |  |  |  |
| 2-1470 |  | SIDEWALK, 14TH TO 15TH SOUTH SIDE | 3d | 2024-04-12 | 2024-04-16 | 2-1469 |  |  |  |  | -142d | 5d | MBRT BASE [24 h] | 24 |  | 24 | COM | 2-1470 | 2-1470 | ZONE-2 | 14 | SIDEWALKS | SOUTH |  |  |  |  |  |
|  | 17 | **BROADWAY TO Broadway CRT NORTH SIDE** |  | 2023-05-05 | 2023-07-11 |  |  |  |  |  |  |  |  |  |  |  |  |  |  |  |  |  |  |  |  |  |  |  |
| PCO661.01 |  | DSC 466-POLE FND 40E-845-1 UNSUITABLE SOILS | 4d | 2023-05-05 A | 2023-05-08 A | MS-0025 | 100% |  | 2023-10-10 | 2023-10-13 |  |  | MBRT DSC [16 h] | 16 | 16 | 16 | EA3 | PCO661.01 | PCO661.01 | ZONE-2 | BROADWAY | SIDEWALKS | NORTH | SCL-FC |  |  |  |  |
| 2-1472 |  | REM SIDEWALK, BROADWAY TO 11TH NORTH SIDE | 4d | 2023-06-06 A | 2023-06-07 A | 2-1409 | 100% |  | 2023-07-03 | 2023-07-07 |  |  | MBRT BASE [16 h] | 16 | 16 | 16 | EA3 | 2-1472 | 2-1472 | ZONE-2 | BROADWAY | SIDEWALKS | NORTH | SCL-FC |  |  |  |  |
| 2-1473 |  | TRENCH CONDUIT, BROADWAY TO 11TH NORTH SIDE | 2d | 2023-06-08 A | 2023-06-14 A | 2-1472 | 100% |  | 2023-07-10 | 2023-07-11 |  |  | MBRT BASE [40 h] | 40 | 40 | 40 | EA3 | 2-1473 | 2-1473 | ZONE-2 | BROADWAY | SIDEWALKS | NORTH | SCL-FC | ELECTRICAL | PRIME |  |  |
| 2-2104 |  | DSC 515 BROADWAY TO BROADWAY COURT DUCT BANK CONFLCIT WITH CONDUIT | 0.75d | 2023-06-08 A | 2023-06-08 A | 2-1472 | 100% |  |  |  |  |  | MBRT DSC [8 h] | 8 | 8 | 8 |  | 2-2104 | 2-2104 |  |  |  |  |  |  |  |  | x |
| 2-2105 |  | DSC 516 BROADWAY TO BROADWAY COURT NORTH SIDE BRICK WALL CONFLICT | 11d | 2023-06-09 A | 2023-06-23 A | 2-1473 SS | 100% |  |  |  |  |  | MBRT DSC [88 h] | 88 | 88 | 88 |  | 2-2105 | 2-2105 |  |  |  |  |  |  |  |  | x |
| 2-2106 |  | DSC 517 BROADWAY TO BROADWAY COURT NORTH SIDE 8" THICK SIDEWALK | 1.75d | 2023-06-09 A | 2023-06-12 A | 2-1473 SS | 100% |  |  |  |  |  | MBRT DSC [16 h] | 16 | 16 | 16 |  | 2-2106 | 2-2106 |  |  |  |  |  |  |  |  | x |
| 2-2111 |  | BROADWAY TO BROADWAY COURT MH CONFLICT | 0.75d | 2023-06-12 A | 2023-06-12 A | 2-1473 SS | 100% |  |  |  |  |  | MBRT NEW [6 h] | 6 | 8 | 6 |  | 2-2111 | 2-2111 |  |  |  |  |  |  |  |  | x |
| 2-1474 |  | INST CONDUIT, BROADWAY TO 11TH NORTH SIDE | 2d | 2023-06-15 A | 2023-06-23 A | 2-1473 SS, 2-2104, 2-2106, 2-2111 | 100% |  | 2023-07-10 | 2023-07-11 |  |  | MBRT BASE [56 h] | 56 | 56 | 56 | ELECRICAL SUB | 2-1474 | 2-1474 | ZONE-2 | BROADWAY | SIDEWALKS | NORTH | SCL-FC | ELECTRICAL | PRIME |  |  |
| 2-1475 |  | GRADE SIDEWALK, BROADWAY TO 11TH NORTH SIDE | 2d | 2023-06-26 A | 2023-06-27 A | 2-1474, 2-2105 | 100% |  | 2023-07-12 | 2023-07-13 |  |  | MBRT BASE [16 h] | 16 | 16 | 16 | EA3 | 2-1475 | 2-1475 | ZONE-2 | BROADWAY | SIDEWALKS | NORTH | SCL-FC | SIDEWALKS |  | GRADESW |  |
| 2-1476 |  | F/P CURB RAMPS, BROADWAY TO 11TH NORTH SIDE | 3d | 2023-06-30 A | 2023-07-05 A | 2-1475 FS+4d, 2-1472 | 100% |  | 2023-07-05 | 2023-07-07 |  |  | MBRT BASE [24 h] | 24 | 24 | 24 | COM | 2-1476 | 2-1476 | ZONE-2 | BROADWAY | SIDEWALKS | NORTH | SCL-FC | CURB |  |  |  |
| 2-1477 |  | SIDEWALK, BROADWAY TO 11TH NORTH SIDE | 4d | 2023-07-06 A | 2023-07-11 A | 2-1476, 2-2123 | 100% |  | 2023-08-07 | 2023-08-10 |  |  | MBRT BASE [32 h] | 32 | 32 | 32 | COM | 2-1477 | 2-1477 | ZONE-2 | BROADWAY | SIDEWALKS | NORTH | SCL-FC |  |  |  |  |

| ID | WBS | Activity | Duration | Start | Finish | Predecessors | Complete | Planned start | Planned finish | Resources | Cost | Actual cost | user_number6 | user_text10 | user_text8 | ~SELECT | user_text2 |
| --- | --- | --- | --- | --- | --- | --- | --- | --- | --- | --- | --- | --- | --- | --- | --- | --- | --- |
|  | 27 | **11TH NE Corner** |  | 2023-05-30 | 2023-06-14 |  |  |  |  |  |  |  |  |  |  |  |  |
| 2-2091 |  | REMOVE SIDEWALK | 1d | 2023-05-30 A | 2023-05-30 A | PCO693.01 SF | 100% |  |  | MBRT NEW [8 h] | 8 | 8 | 8 | 2-2091 | 2-2091 |  |  |
| 2-2093 |  | DSC 510 THICK SIDEWALS | 1d | 2023-05-30 A | 2023-05-30 A | 2-2091 SS | 100% |  |  | MBRT DSC [8 h] | 8 | 8 | 8 | 2-2093 | 2-2093 |  |  |
| 2-2094 |  | DSC 511 OLD LIGHT POLE UNDER SIDEWALKS | 1d | 2023-05-31 A | 2023-05-31 A | 2-2091, 2-2093 FF, 2-2091 FF | 100% |  |  | MBRT DSC [8 h] | 8 | 8 | 8 | 2-2094 | 2-2094 | x |  |
| 2-2118 |  | DSC 512 MULTIPLE UNKNOWN UTILITIES | 1d | 2023-06-01 A | 2023-06-01 A | 2-2094 | 100% |  |  | MBRT DSC [8 h] | 8 | 8 | 8 | 2-2118 | 2-2118 | x |  |
| 2-2119 |  | TRENCH ELECTRICAL | 1d | 2023-06-02 A | 2023-06-02 A | 2-2091, 2-2094, 2-2118 | 100% |  |  | MBRT NEW [8 h] | 8 | 8 | 8 | 2-2119 | 2-2119 | x |  |
| 2-2120 |  | ELECTRICAL | 4d | 2023-06-05 A | 2023-06-08 A | 2-2119 | 100% |  |  | MBRT NEW [32 h] | 32 | 32 | 32 | 2-2120 | 2-2120 | x |  |
| 2-2121 |  | GRADE SIDEWALKS | 1d | 2023-06-09 A | 2023-06-09 A | 2-2120 | 100% |  |  | MBRT NEW [8 h] | 8 | 8 | 8 | 2-2121 | 2-2121 | x |  |
| 2-2129 |  | CURB RAMPS | 2d | 2023-06-12 A | 2023-06-13 A | 2-2121 | 100% |  |  | MBRT NEW [16 h] | 16 | 16 | 16 | 2-2129 | 2-2129 | x |  |
| 2-2123 |  | SIDEWALKS | 1d | 2023-06-14 A | 2023-06-14 A | 2-2129 | 100% |  |  | MBRT NEW [8 h] | 8 | 8 | 8 | 2-2123 | 2-2123 | x |  |
|  | 28 | **12TH NW Corner** |  | 2023-04-25 | 2023-07-26 |  |  |  |  |  |  |  |  |  |  |  |  |
| 2-3125 |  | DSC 456 POLE 40W-787-3 TIE BACK CONFLICT | 5d | 2023-04-25 A | 2023-05-01 A | MS-0025 | 100% |  |  | MBRT DSC [40 h] | 40 | 40 | 40 | 2-3125 | 2-3125 |  |  |
| 2-3126 |  | DSC 463 40w-787-3 CONDUIT CONFLICTS | 5d | 2023-04-25 A | 2023-05-01 A | 2-3125 SS | 100% |  |  | MBRT DSC [40 h] | 40 | 40 | 40 | 2-3126 | 2-3126 |  |  |
| 2-3127 |  | DSC 464 POLE 40w-787-2 UNSUATABLE SOILS | 3d | 2023-05-01 A | 2023-05-03 A | MS-0025 | 100% |  |  | MBRT DSC [24 h] | 24 | 24 | 24 | 2-3127 | 2-3127 |  |  |
| 2-3128 |  | COMPLETE POLE 40W-787-3 AFTER DSC'S | 2d | 2023-05-04 A | 2023-05-05 A | 2-3126, 2-3127 | 100% |  |  | MBRT DSC [16 h] | 16 | 16 | 16 | 2-3128 | 2-3128 |  |  |
| 2-3129 |  | REMOVE SIDEWALKS | 2d | 2023-05-24 A | 2023-05-25 A | 2-3128 FS-34d | 100% |  |  | MBRT NEW [16 h] | 16 | 16 | 16 | 2-3129 | 2-3129 |  | EA3 |
| 2-3131 |  | TRENCH CONDUIT Prior to Pride Parade | 2d | 2023-05-24 A | 2023-05-25 A | 2-3129 SS | 100% |  |  | MBRT NEW [16 h] | 16 | 16 | 16 | 2-3131 | 2-3131 |  | EA3 |
| 2-3130 |  | DSC 505 INTERCONTECT CONFLICT WITH ELECTRICAL | 16d | 2023-05-25 A | 2023-06-16 A | MS-0025 | 100% |  |  | MBRT DSC [128 h] | 128 | 128 | 128 | 2-3130 | 2-3130 |  |  |
| 2-3132 |  | Pride parade delay | 5d | 2023-06-19 A | 2023-06-23 A | 2-3130 | 100% |  |  | MBRT NEW [40 h] | 40 | 40 | 40 | 2-3132 | 2-3132 | x |  |
| 2-3133 |  | trenching after pride parade | 3d | 2023-06-26 A | 2023-06-28 A | 2-3132 | 100% |  |  | MBRT NEW [24 h] | 24 | 24 | 24 | 2-3133 | 2-3133 | x |  |
| 2-3134 |  | DSC 542 unknown foundation conflict | 1d | 2023-06-28 A | 2023-06-28 A | 2-3133 SS | 100% |  |  | MBRT DSC [8 h] | 8 | 8 | 8 | 2-3134 | 2-3134 | x |  |
| 2-3135 |  | INSTALL CONDUIT | 2d | 2023-06-29 A | 2023-07-12 A | 2-3131, 2-3130, 2-3134 | 100% | 2023-06-29 | 2023-06-30 | MBRT NEW [16 h] | 16 | 72 | 72 | 2-3135 | 2-3135 |  | ELECRICAL SUB |
| 2-3136 |  | GRADE SIDEWALKS | 2d | 2023-07-13 A | 2023-07-13 A | 2-3135 | 100% | 2023-07-11 | 2023-07-12 | MBRT NEW [16 h] | 16 | 8 | 8 | 2-3136 | 2-3136 |  | EA3 |
| 2-3137 |  | SIDEWALK | 4d | 2023-07-24 A | 2023-07-26 A | 2-3136 | 100% | 2023-07-13 | 2023-07-18 | MBRT NEW [32 h] | 32 | 24 | 24 | 2-3137 | 2-3137 |  | COM |

| ID | WBS | Activity | Duration | Start | Finish | Predecessors | Complete | Planned start | Planned finish | Total float | Free float | Resources | Cost | Actual cost | user_text2 | user_number6 | user_text10 | user_text8 | MBRT-ZONE | MBRT-LOCATION | MBRT-TYPE | MBRT-SIDE | MBRT-DELAY | MBRT-SCOPE | MBRT-RESP | ~SELECT | MBRT-ACTIVITY | ~SELECT2 | ~SELECT3 |
| --- | --- | --- | --- | --- | --- | --- | --- | --- | --- | --- | --- | --- | --- | --- | --- | --- | --- | --- | --- | --- | --- | --- | --- | --- | --- | --- | --- | --- | --- |
|  | 18 | **11TH TO 12TH NORTH SIDE** |  | 2023-04-01 | 2023-06-13 |  |  |  |  |  |  |  |  |  |  |  |  |  |  |  |  |  |  |  |  |  |  |  |  |
| PCO658.01 |  | DSC 464-POLE 40W-787-2 UNSUITABLE SOILS | 2d | 2023-04-01 A | 2023-06-02 A | MS-0025 | 100% | 2023-07-03 | 2023-07-05 |  |  | MBRT DSC [352 h] | 352 | 16 | EA3 | 352 | PCO658.01 | PCO658.01 | ZONE-2 | 11 | SIDEWALKS | NORTH | SCL-FC |  |  |  |  |  |  |
| PCO646.01 |  | DSC 456-POLE 40W-787-3 TIE BACK CONFLICT | 2d | 2023-04-25 A | 2023-05-01 A | 2-1140 | 100% | 2023-10-18 | 2023-10-19 |  |  | MBRT DSC [40 h] | 40 | 40 | EA3 | 40 | PCO646.01 | PCO646.01 | ZONE-2 | 11 | SIDEWALKS | NORTH | SCL-FC |  |  |  |  |  |  |
| PCO657.01 |  | DSC 463-POLE 40W-787-3 CONDUIT CONFLICT | 2d | 2023-04-25 A | 2023-05-01 A | 2-1140 | 100% | 2023-10-18 | 2023-10-19 |  |  | MBRT DSC [40 h] | 40 | 40 | EA3 | 40 | PCO657.01 | PCO657.01 | ZONE-2 | 11 | SIDEWALKS | NORTH | SCL-FC |  |  |  |  |  |  |
| 2-2717 |  | COMPLETE POLE 40W-787-3 AFTER CONFLICTS | 2d | 2023-05-04 A | 2023-05-05 A | PCO646.01 SS, PCO657.01 SS | 100% | 2023-10-18 | 2023-10-19 |  |  | MBRT NEW [16 h] | 16 | 16 | EA3 | 16 | 2-2717 | 2-2717 | ZONE-2 | 11 | SIDEWALKS | NORTH | SCL-FC |  |  |  |  |  |  |
| 2-1479 |  | REM SIDEWALK, 11TH TO 12TH NORTH SIDE | 2d | 2023-05-24 A | 2023-06-01 A | PCO646.01, PCO657.01, 2-2717, 2-1401 | 100% | 2023-07-03 | 2023-07-05 |  |  | MBRT BASE [48 h] | 48 | 48 | EA3 | 48 | 2-1479 | 2-1479 | ZONE-2 | 11 | SIDEWALKS | NORTH | SCL-FC |  |  |  |  |  |  |
| 2-1480 |  | TRENCH CONDUIT, 11TH TO 12TH NORTH SIDE | 2d | 2023-05-24 A | 2023-06-01 A | 2-1479 SS | 100% | 2023-07-03 | 2023-07-05 |  |  | MBRT BASE [48 h] | 48 | 48 | EA3 | 48 | 2-1480 | 2-1480 | ZONE-2 | 11 | SIDEWALKS | NORTH | SCL-FC | ELECTRICAL | PRIME |  |  |  |  |
| PCO704.01 |  | DSC 505-INTERCONNECT CONFLICT WITH ELECTRICAL | 2d | 2023-05-24 A | 2023-06-01 A | 2-1479 | 100% | 2023-07-06 | 2023-07-07 |  |  | MBRT DSC [48 h] | 48 | 48 | EA3 | 48 | PCO704.01 | PCO704.01 | ZONE-2 | 11 | SIDEWALKS | NORTH | SCL-FC |  |  |  |  |  |  |
| 2-1481 |  | INST CONDUIT, 11TH TO 12TH NORTH SIDE | 2d | 2023-06-02 A | 2023-06-05 A | 2-1480 SS, PCO704.01 | 100% |  |  |  |  | MBRT BASE [16 h] | 16 | 16 | ELECRICAL SUB | 16 | 2-1481 | 2-1481 | ZONE-2 | 11 | SIDEWALKS | NORTH |  | ELECTRICAL | PRIME | X |  |  |  |
| 2-1482 |  | GRADE SIDEWALK, 11TH TO 12TH NORTH SIDE | 2d | 2023-06-06 A | 2023-06-07 A | 2-1481 | 100% |  |  |  |  | MBRT BASE [16 h] | 16 | 16 | EA3 | 16 | 2-1482 | 2-1482 | ZONE-2 | 11 | SIDEWALKS | NORTH |  | SIDEWALKS |  | X | GRADESW |  |  |
| 2-1483 |  | SIDEWALK, 11TH TO 12TH NORTH SIDE | 4d | 2023-06-08 A | 2023-06-13 A | 2-1482 | 100% |  |  |  |  | MBRT BASE [32 h] | 32 | 32 | COM | 32 | 2-1483 | 2-1483 | ZONE-2 | 11 | SIDEWALKS | NORTH |  |  |  | X |  |  |  |
|  | 19 | **12TH TO 13TH NORTH SIDE** |  | 2023-08-21 | 2023-10-23 |  |  |  |  |  |  |  |  |  |  |  |  |  |  |  |  |  |  |  |  |  |  |  |  |
| 2-1485 |  | REM SIDEWALK, 12TH TO 13TH NORTH SIDE | 2d | 2023-08-21 A | 2023-08-24 A | 2-1480, 2-3137 | 100% | 2023-08-14 | 2023-08-15 |  |  | MBRT BASE [32 h] | 32 | 32 | EA3 | 32 | 2-1485 | 2-1485 | ZONE-2 | 12 | SIDEWALKS | NORTH | SCL-FC |  |  | X |  |  |  |
| 2-1486 |  | TRENCH CONDUIT, 12TH TO 13TH NORTH SIDE | 2d | 2023-08-22 A | 2023-08-25 A | 2-1485 | 100% | 2023-08-16 | 2023-08-17 |  |  | MBRT BASE [32 h] | 32 | 32 | EA3 | 32 | 2-1486 | 2-1486 | ZONE-2 | 12 | SIDEWALKS | NORTH | SCL-FC | ELECTRICAL | PRIME | X |  |  |  |
| 2-1505 |  | NEC 12th Mulitple Conflicts | 13d | 2023-08-22 A | 2023-09-08 A | 2-1486 SS | 100% | 2023-08-14 | 2023-08-30 |  |  | MBRT NEW [104 h] | 104 | 104 |  | 104 |  |  |  |  |  |  |  |  |  |  |  |  |  |
| 2-1525 |  | DSC 600 Unkown Unlocated Conduits NWC 13th | 10d | 2023-08-25 A | 2023-09-08 A | 2-1486 SS | 100% | 2023-08-14 | 2023-08-25 |  |  | MBRT DSC [80 h] | 80 | 80 |  | 80 |  |  |  |  |  |  |  |  |  |  |  |  |  |
| 2-1530 |  | DSC 601 NWC 13th Unknown Duct Banks | 10d | 2023-08-25 A | 2023-09-08 A | 2-1486 SS | 100% | 2023-08-14 | 2023-08-25 |  |  | MBRT DSC [80 h] | 80 | 80 |  | 80 |  |  |  |  |  |  |  |  |  |  |  |  |  |
| 2-1545 |  | DSC 614 POLE 40e-787-1 CONFLICTS | 5d | 2023-09-06 A | 2023-09-12 A | 2-1486 SS | 100% | 2023-08-14 | 2023-08-18 |  |  | MBRT DSC [40 h] | 40 | 40 |  | 40 |  |  |  |  |  |  |  |  |  |  |  |  |  |
| 2-1487 |  | INST CONDUIT, 12TH TO 13TH NORTH SIDE | 2d | 2023-09-13 A | 2023-09-29 A | 2-1486 SS, 2-1585 FF, 2-1545, 2-1530, 2-1525, 2-1505 | 100% | 2023-09-13 | 2023-09-14 |  |  | MBRT BASE [104 h] | 104 | 104 | ELECRICAL SUB | 104 | 2-1487 | 2-1487 | ZONE-2 | 12 | SIDEWALKS | NORTH | SCL-FC | ELECTRICAL | PRIME | X |  |  |  |
| 2-1585 |  | DSC 605 UNKNOWN CONDUIT | 1d | 2023-09-29 A | 2023-09-29 A | 2-1486 SS | 100% | 2023-08-14 | 2023-08-14 |  |  | MBRT DSC [8 h] | 8 | 8 |  | 8 |  |  |  |  |  |  |  |  |  |  |  |  |  |
| 2-1488 |  | GRADE SIDEWALK, 12TH TO 13TH NORTH SIDE | 2d | 2023-10-02 A | 2023-10-03 A | 2-1487 | 100% |  |  |  |  | MBRT BASE [16 h] | 16 | 16 | EA3 | 16 | 2-1488 | 2-1488 | ZONE-2 | 12 | SIDEWALKS | NORTH | SCL-FC | SIDEWALKS |  | X | GRADESW |  |  |
| 2-1489 |  | SIDEWALK, 12TH TO 13TH NORTH SIDE | 3d | 2023-10-05 A | 2023-10-23 A | 2-1488 | 100% | 2023-10-04 | 2023-10-06 |  |  | MBRT BASE [104 h] | 104 | 104 | COM | 104 | 2-1489 | 2-1489 | ZONE-2 | 12 | SIDEWALKS | NORTH | SCL-FC |  |  | X |  |  |  |
|  | 20 | **13TH TO 14TH NORTH SIDE** |  | 2023-06-30 | 2024-04-19 |  |  |  |  |  |  |  |  |  |  |  |  |  |  |  |  |  |  |  |  |  |  |  |  |
| 2-1314-SCL |  | DELAY AWAITING SCL TO SLEEVE OR TURN OF POWER LINE SO THE SIGNAL POLE CAN BE SET | 0d | 2023-06-30 A | 2023-11-01 A | 2-3134 | 100% | 2023-07-03 | 2023-07-03 |  |  | MBRT NEW |  |  |  | 696 |  |  |  |  |  |  |  |  |  |  |  |  |  |
| 2-1491 |  | REM SIDEWALK, 13TH TO 14TH NORTH SIDE | 2d | 2023-11-28 A | 2023-12-07 A | 2-1489, 2-1320, 2-1314-SCL | 100% | 2023-11-02 | 2023-11-03 |  |  | MBRT BASE [64 h] | 64 | 64 | EA3 | 64 | 2-1491 | 2-1491 | ZONE-2 | 13 | SIDEWALKS | NORTH | SCL-FC |  |  | 133 |  | P2 | 147 |
| 2-1492 |  | TRENCH CONDUIT, 13TH TO 14TH NORTH SIDE | 2d | 2023-11-28 A | 2023-11-29 A | 2-1491, 2-1491 SS | 100% | 2023-11-06 | 2023-11-07 |  |  | MBRT BASE [16 h] | 16 | 16 | EA3 | 16 | 2-1492 | 2-1492 | ZONE-2 | 13 | SIDEWALKS | NORTH | SCL-FC | ELECTRICAL | PRIME | X |  |  |  |
| 2-1517 |  | DSC 660 UNKNOWN DUCT BANK #1 | 13d | 2023-12-06 A | 2023-12-22 A | 2-1491 | 100% | 2023-11-02 | 2023-11-21 |  |  | MBRT DSC [104 h] | 104 | 104 |  | 104 |  |  |  |  |  |  |  |  |  | 133 |  | P2 | 147 |
| 2-1542 |  | DSC 662 UNKNOWN CLAY LINE | 12d | 2023-12-07 A | 2023-12-22 A | 2-1491 | 100% | 2023-11-02 | 2023-11-20 |  |  | MBRT DSC [96 h] | 96 | 96 |  | 96 |  |  |  |  |  |  |  |  |  | 133 |  | P2 | 147 |
| 2-1627 |  | DSC 661 UNKOWN DUCT BANK #2 | 11d | 2023-12-07 A | 2023-12-22 A | 2-1491 | 100% | 2023-11-02 | 2023-11-17 |  |  | MBRT DSC [88 h] | 88 | 88 |  | 88 |  |  |  |  |  |  |  |  |  | 133 |  | P2 | 147 |
| 2-1493 |  | INST CONDUIT, 13TH TO 14TH NORTH SIDE | 2d | 2023-12-08 A | 2024-02-05 A | 2-1492 SS | 100% | 2023-11-06 | 2023-11-07 |  |  | MBRT BASE [312 h] | 312 | 312 | ELECRICAL SUB | 312 | 2-1493 | 2-1493 | ZONE-2 | 13 | SIDEWALKS | NORTH | SCL-FC | ELECTRICAL | PRIME | CPLP-NOV |  | P2 |  |
| 2-1777 |  | DSC 664 TYPE 3 HH CONFLCIT WITH EXISTING HOT CONDUITS | 39d | 2023-12-08 A | 2024-02-06 A | 2-1491 | 100% | 2023-11-02 | 2024-01-02 |  |  | MBRT DSC [312 h] | 312 | 312 |  | 312 |  |  |  |  |  |  |  |  |  | 133 |  | P2 | 147 |
| 2-1494 |  | GRADE SIDEWALK, 13TH TO 14TH NORTH SIDE | 2d | 2024-01-04 A | 2024-02-06 A | 2-1493, 2-1777, 2-1627, 2-1542, 2-1517 | 100% | 2023-12-15 | 2023-12-18 |  |  | MBRT BASE [184 h] | 184 | 184 | EA3 | 184 | 2-1494 | 2-1494 | ZONE-2 | 13 | SIDEWALKS | NORTH | SCL-FC | SIDEWALKS |  | 133 | GRADESW | P2 | 147 |
| 2-1495 |  | SIDEWALK, 13TH TO 14TH NORTH SIDE | 3d | 2024-01-23 A | 2024-02-09 A | 2-1494 | 100% | 2023-12-19 | 2023-12-21 |  |  | MBRT BASE [112 h] | 112 | 112 | COM | 112 | 2-1495 | 2-1495 | ZONE-2 | 13 | SIDEWALKS | NORTH | SCL-FC |  |  | 133 |  | P2 | 147 |
| DSC-741 |  | 13th NWC | 5d | 2024-04-15 | 2024-04-19 | DSC-746, 2-1495 |  |  |  | -76d | 2d |  |  |  |  |  |  |  |  |  |  |  |  |  |  |  |  |  |  |

| ID | WBS | Activity | Duration | Start | Finish | Predecessors | Complete | Planned start | Planned finish | Total float | Free float | Resources | Cost | Actual cost | user_number6 | ~SELECT | user_text2 | user_text10 | user_text8 | MBRT-ZONE | MBRT-LOCATION | MBRT-TYPE | MBRT-SIDE | MBRT-SCOPE | MBRT-RESP | MBRT-ACTIVITY |
| --- | --- | --- | --- | --- | --- | --- | --- | --- | --- | --- | --- | --- | --- | --- | --- | --- | --- | --- | --- | --- | --- | --- | --- | --- | --- | --- |
|  | 22 | **14TH TO 15TH NORTH SIDE** |  | 2023-11-28 | 2024-03-14 |  |  |  |  |  |  |  |  |  |  |  |  |  |  |  |  |  |  |  |  |  |
| DSC-643 |  | DSC 643 POLE 40e-803-1 POLE CONFLICTS | 8d | 2023-11-28 A | 2023-12-07 A | 2-1489 | 100% | 2023-12-11 | 2023-12-20 |  |  | MBRT DSC [64 h] | 64 | 64 | 64 |  |  |  |  |  |  |  |  |  |  |  |
| DSC-693 |  | DSC 693 DUCT BANK CONFLICT WITH RISER | 22d | 2024-01-08 A | 2024-02-07 A | DSC-643 | 100% | 2023-12-11 | 2024-01-11 |  |  | MBRT DSC [176 h] | 176 | 176 | 176 |  |  |  |  |  |  |  |  |  |  |  |
| 2-1500 |  | REM SIDEWALK, 14TH TO 15TH NORTH SIDE | 2d | 2024-01-11 A | 2024-01-12 A | 2-1306, 2-1327, 2-1494 SS | 100% | 2023-12-22 | 2023-12-26 |  |  | MBRT BASE [16 h] | 16 | 16 | 16 | CPLP-NOV | EA3 | 2-1500 | 2-1500 | ZONE-2 | 14 | SIDEWALKS | NORTH |  |  |  |
| 2-1501 |  | TRENCH CONDUIT, 14TH TO 15TH NORTH SIDE | 2d | 2024-01-12 A | 2024-01-31 A | 2-1500 | 100% | 2023-12-27 | 2023-12-28 |  |  | MBRT BASE [104 h] | 104 | 104 | 104 | CPLP-NOV | EA3 | 2-1501 | 2-1501 | ZONE-2 | 14 | SIDEWALKS | NORTH | ELECTRICAL | PRIME |  |
| DSC-686 |  | DSC 686 UNKNOWN POWER DUCT BANK CONFLICT | 18d | 2024-01-12 A | 2024-02-07 A | 2-1500 | 100% | 2023-12-11 | 2024-01-05 |  |  | MBRT DSC [144 h] | 144 | 144 | 144 |  |  |  |  |  |  |  |  |  |  |  |
| 2-1502 |  | INST CONDUIT, 14TH TO 15TH NORTH SIDE | 2d | 2024-01-15 A | 2024-02-09 A | 2-1501 SS | 100% | 2023-12-27 | 2023-12-28 |  |  | MBRT BASE [152 h] | 152 | 152 | 152 | CPLP-NOV | ELECRICAL SUB | 2-1502 | 2-1502 | ZONE-2 | 14 | SIDEWALKS | NORTH | ELECTRICAL | PRIME |  |
| 2-1683 |  | DELAY AWAITING CITY TO PROVIDE DAY TO POUR AT STOREFRONTS | 0d | 2024-02-13 A | 2024-03-04 A | 2-1502, 2-1502 FF | 100% | 2024-02-12 | 2024-02-12 |  |  | MBRT NEW |  |  | 104 |  |  |  |  |  |  |  |  |  |  |  |
| 2-1503 |  | GRADE SIDEWALK, 14TH TO 15TH NORTH SIDE | 2d | 2024-02-14 A | 2024-02-15 A | 2-1502, DSC-693, DSC-686, 2-1683 SF | 100% | 2024-02-12 | 2024-02-13 |  |  | MBRT BASE [16 h] | 16 | 16 | 16 | CPLP-NOV | EA3 | 2-1503 | 2-1503 | ZONE-2 | 14 | SIDEWALKS | NORTH | SIDEWALKS |  | GRADESW |
| 2-1504 |  | SIDEWALK, 14TH TO 15TH NORTH SIDE | 5d | 2024-02-15 A | 2024-03-14 A | 2-1503, 2-1498, 2-1683 FF+1d | 100% | 2024-02-14 | 2024-02-21 |  |  | MBRT BASE [88 h] | 88 | 40 | 88 | CPLP-NOV | COM | 2-1504 | 2-1504 | ZONE-2 | 14 | SIDEWALKS | NORTH |  |  |  |
|  | 21 | **DRIVEWAYS 13TH TO 14TH NORTH SIDE** |  | 2024-02-01 | 2024-02-02 |  |  |  |  |  |  |  |  |  |  |  |  |  |  |  |  |  |  |  |  |  |
| 2-1497 |  | REM SIDEWALK, DRIVEWAYS 13TH TO 14TH NORTH SIDE | 1d | 2024-02-01 A | 2024-02-01 A | 2-1495 | 100% | 2024-02-12 | 2024-02-12 |  |  | MBRT BASE [8 h] | 8 | 8 | 8 | CPLP-NOV | WEA3 | 2-1497 | 2-1497 | ZONE-2 | 13 | SIDEWALKS | NORTH |  |  |  |
| 2-1498 |  | POUR DRIVEWAYS, DRIVEWAYS 13TH TO 14TH NORTH SIDE | 1d | 2024-02-02 A | 2024-02-02 A | 2-1497 | 100% | 2024-02-13 | 2024-02-13 |  |  | MBRT BASE [8 h] | 8 | 8 | 8 | CPLP-NOV | WCOM | 2-1498 | 2-1498 | ZONE-2 | 13 | SIDEWALKS | NORTH |  |  |  |
|  | 23 | **DRIVEWAYS 14TH TO 15TH NORTH SIDE** |  | 2024-03-18 | 2024-03-22 |  |  |  |  |  |  |  |  |  |  |  |  |  |  |  |  |  |  |  |  |  |
| 2-1506 |  | REM SIDEWALK, DRIVEWAYS 14TH TO 15TH NORTH SIDE | 1d | 2024-03-18 A | 2024-03-18 A | 2-1498, 2-1504 | 100% | 2024-03-22 | 2024-03-22 |  |  | MBRT BASE [8 h] | 8 |  | 8 |  | WEA3 | 2-1506 | 2-1506 | ZONE-2 | 14 | SIDEWALKS | NORTH |  |  |  |
| 2-1507 |  | INST CONDUIT, DRIVEWAYS 14TH TO 15TH NORTH SIDE | 1d | 2024-03-19 A | 2024-03-19 A | 2-1506 SS | 100% | 2024-03-22 | 2024-03-22 |  |  | MBRT BASE [8 h] | 8 |  | 8 |  | ELECRICAL SUB | 2-1507 | 2-1507 | ZONE-2 | 14 | SIDEWALKS | NORTH | ELECTRICAL | PRIME |  |
| 2-1508 |  | F/P CURB RAMPS & SIDEWALK, DRIVEWAYS 14TH TO 15TH NORTH SIDE | 1d | 2024-03-20 A | 2024-03-22 A | 2-1507 | 100% | 2024-03-25 | 2024-03-25 |  |  | MBRT BASE [8 h] | 8 |  | 8 |  | WCOM | 2-1508 | 2-1508 | ZONE-2 | 14 | SIDEWALKS | NORTH | CURB |  |  |
|  | 24 | **12TH MADISON TO PIKE NORTH WEST SIDE** |  | 2024-03-22 | 2024-03-28 |  |  |  |  |  |  |  |  |  |  |  |  |  |  |  |  |  |  |  |  |  |
| 2-1510 |  | REM SIDEWALK, 12TH MAD TO PIKE NORTH WEST SIDE | 2d | 2024-03-22 A | 2024-03-25 A | 2-1504, 2-1313 | 100% |  |  |  |  | MBRT BASE [16 h] | 16 |  | 16 | CPLP-NOV | EA3 | 2-1510 | 2-1510 | ZONE-2 | 12 | SIDEWALKS | NORTH |  |  |  |
| 2-1511 |  | GRADE SIDEWALK, 12TH MAD TO PIKE NORTH WEST SIDE | 1d | 2024-03-26 A | 2024-03-26 A | 2-1510 | 100% |  |  |  |  | MBRT BASE [8 h] | 8 |  | 8 | CPLP-NOV | EA3 | 2-1511 | 2-1511 | ZONE-2 | 12 | SIDEWALKS | NORTH | SIDEWALKS |  | GRADESW |
| 2-1512 |  | SIDEWALK, 12TH MAD TO PIKE NORTH WEST SIDE | 2d | 2024-03-27 A | 2024-03-28 A | 2-1511, 2-7255 | 100% |  |  |  |  | MBRT BASE [16 h] | 16 |  | 16 | CPLP-NOV | COM | 2-1512 | 2-1512 | ZONE-2 | 12 | SIDEWALKS | NORTH |  |  |  |
|  | 25 | **12TH MADISON TO PIKE SOUTH EAST SIDE** |  | 2024-03-29 | 2024-04-25 |  |  |  |  |  |  |  |  |  |  |  |  |  |  |  |  |  |  |  |  |  |
| 2-1514 |  | REM SIDEWALK, 12TH MAD TO PIKE SOUTH EAST SIDE | 2d | 2024-03-29 A | 2024-04-01 A | 2-1512 | 100% |  |  |  |  | MBRT BASE [16 h] | 16 |  | 16 | CPLP-NOV | EA3 | 2-1514 | 2-1514 | ZONE-2 | 12 | SIDEWALKS |  |  |  |  |
| 2-1515 |  | GRADE SIDEWALK, 12TH MAD TO PIKE SOUTH EAST SIDE | 1d | 2024-04-02 | 2024-04-02 | 2-1514 |  |  |  | -63d | 15d | MBRT BASE [8 h] | 8 |  | 8 | CPLP-NOV | EA3 | 2-1515 | 2-1515 | ZONE-2 | 12 | SIDEWALKS |  | SIDEWALKS |  | GRADESW |
| 2-1516 |  | SIDEWALK, 12TH MAD TO PIKE SOUTH EAST SIDE | 2d | 2024-04-24 | 2024-04-25 | 2-1515, 1-0650, DSC-741 |  |  |  | -78d | 18d | MBRT BASE [16 h] | 16 |  | 16 | CPLP-NOV | COM | 2-1516 | 2-1516 | ZONE-2 | 12 | SIDEWALKS |  |  |  |  |

| ID | WBS | Activity | Type | Duration | Start | Finish | Predecessors | Complete | Remaining | Planned start | Planned finish | Total float | Free float | Constraint | Resources | Cost | Actual cost | ~SELECT | user_text2 | user_number6 | user_text10 | user_text8 | MBRT-ZONE | MBRT-LOCATION | MBRT-TYPE | MBRT-SCOPE | MBRT-RESP | MBRT-ACTIVITY | MBRT-SIDE |
| --- | --- | --- | --- | --- | --- | --- | --- | --- | --- | --- | --- | --- | --- | --- | --- | --- | --- | --- | --- | --- | --- | --- | --- | --- | --- | --- | --- | --- | --- |
|  | 26 | **14TH AND EAST PIKE** |  |  | 2024-02-13 | 2024-07-29 |  |  |  |  |  |  |  |  |  |  |  |  |  |  |  |  |  |  |  |  |  |  |  |
| 2-1518 |  | REMOVE SIDEWALK, 14TH AND EAST PIKE |  | 2d | 2024-02-13 A | 2024-02-23 A | 2-1334 | 100% |  | 2024-03-07 | 2024-03-08 |  |  |  | MBRT BASE [64 h] | 64 | 64 | CPLP-NOV | EA3 | 64 | 2-1518 | 2-1518 | ZONE-2 | 14 | SIDEWALKS |  |  |  |  |
| 2-1519 |  | TRENCH CONDUIT, 14TH AND EAST PIKE |  | 2d | 2024-02-14 A | 2024-02-27 A | 2-1518 SS+1d | 100% |  | 2024-03-11 | 2024-03-12 |  |  |  | MBRT BASE [72 h] | 72 | 72 | CPLP-NOV | EA3 | 72 | 2-1519 | 2-1519 | ZONE-2 | 14 | SIDEWALKS | ELECTRICAL | PRIME |  |  |
| 2-1520 |  | INST CONDUIT, 14TH AND EAST PIKE |  | 2d | 2024-02-19 A | 2024-03-01 A | 2-1519 SS+3d | 100% |  | 2024-03-11 | 2024-03-12 |  |  |  | MBRT BASE [72 h] | 72 | 72 | CPLP-NOV | ELECRICAL SUB | 72 | 2-1520 | 2-1520 | ZONE-2 | 14 | SIDEWALKS | ELECTRICAL | PRIME |  |  |
| 2-1521 |  | GRADE SIDEWALK, 14TH AND EAST PIKE |  | 2d | 2024-02-21 A | 2024-03-04 A | 2-1520 SS+2d, DSC-713 FF, DSC-715 FF | 100% |  | 2024-03-13 | 2024-03-14 |  |  |  | MBRT BASE [64 h] | 64 | 16 | CPLP-NOV | EA3 | 64 | 2-1521 | 2-1521 | ZONE-2 | 14 | SIDEWALKS | SIDEWALKS |  | GRADESW |  |
| 2-1522 |  | F/P CURB RAMPS, 14TH AND EAST PIKE |  | 4d | 2024-02-22 A | 2024-03-06 A | 2-1521 SS | 100% |  | 2024-03-15 | 2024-03-20 |  |  |  | MBRT BASE [56 h] | 56 | 32 | CPLP-NOV | COM | 56 | 2-1522 | 2-1522 | ZONE-2 | 14 | SIDEWALKS | CURB |  |  |  |
| DSC-713 |  | DSC 713 NEC 14TH AND PIKE ROTTON POLE |  | 7d | 2024-02-23 A | 2024-03-04 A | 2-1518 | 100% |  | 2024-02-12 | 2024-02-21 |  |  |  | MBRT DSC [56 h] | 56 | 56 |  |  | 56 |  |  |  |  |  |  |  |  |  |
| DSC-715 |  | DSC 715 NEC PIKE UNKNOWN CONCRETE WALL |  | 1d | 2024-02-27 A | 2024-02-28 A | 2-1519 SS | 100% |  | 2024-02-12 | 2024-02-12 |  |  |  | MBRT DSC [8 h] | 8 | 8 |  |  | 8 |  |  |  |  |  |  |  |  |  |
| 2-1523 |  | SIDEWALK, 14TH AND EAST PIKE |  | 4d | 2024-03-07 A | 2024-03-19 A | 2-1522 | 100% |  | 2024-03-07 | 2024-03-12 |  |  |  | MBRT BASE [32 h] | 32 |  | CPLP-NOV | COM | 32 | 2-1523 | 2-1523 | ZONE-2 | 14 | SIDEWALKS |  |  |  |  |
| 2-1688 |  | DELAY AWAITING DC FOR ART FOUNATION |  | 0d | 2024-03-20 A | 2024-04-05 | 2-1523 |  | 4d | 2024-03-13 | 2024-03-13 | -124d | 20d |  | MBRT NEW |  |  |  |  | 0 |  |  |  |  |  |  |  |  |  |
| 2-1524 |  | ART FOUNDATIONS & INSTALL, 14TH AND EAST PIKE |  | 60d | 2024-05-06 | 2024-07-29 | 2-1523, 2-1688 |  |  |  |  | -144d | 3d | start on or after 2024-05-06 | MBRT BASE [480 h] | 480 |  |  | COM | 480 | 2-1524 | 2-1524 | ZONE-2 | 14 | SIDEWALKS |  |  |  |  |
|  | 3 | **UNION ST 12TH TO 11TH SOUTH SIDE** |  |  | 2023-04-21 | 2023-05-02 |  |  |  |  |  |  |  |  |  |  |  |  |  |  |  |  |  |  |  |  |  |  |  |
| 2-1398 |  | REM SIDEWALK, UNION ST 12TH TO 11TH SOUTH SIDE |  | 2d | 2023-04-21 A | 2023-04-24 A | 2-1250 | 100% |  | 2023-03-31 | 2023-04-03 |  |  |  | MBRT BASE [16 h] | 16 | 16 |  | EA3 | 16 | 2-1398 | 2-1398 | ZONE-2 | UNION | SIDEWALKS |  |  |  | SOUTH |
| 2-1399 |  | GRADE SIDEWALK, UNION ST 12TH TO 11TH SOUTH SIDE |  | 2d | 2023-04-25 A | 2023-04-26 A | 2-1398 | 100% |  | 2023-04-04 | 2023-04-05 |  |  |  | MBRT BASE [16 h] | 16 | 16 |  | EA3 | 16 | 2-1399 | 2-1399 | ZONE-2 | UNION | SIDEWALKS | SIDEWALKS |  | GRADESW | SOUTH |
| 2-1400 |  | F/P CURB RAMPS, UNION ST 12TH TO 11TH SOUTH SIDE |  | 1d | 2023-04-27 A | 2023-04-27 A | 2-1399 | 100% |  | 2023-04-06 | 2023-04-06 |  |  |  | MBRT BASE [8 h] | 8 | 8 |  | COM | 8 | 2-1400 | 2-1400 | ZONE-2 | UNION | SIDEWALKS | CURB |  |  | SOUTH |
| 2-1401 |  | SIDEWALK, UNION ST 12TH TO 11TH SOUTH SIDE |  | 3d | 2023-04-28 A | 2023-05-02 A | 2-1400 | 100% |  | 2023-04-07 | 2023-04-11 |  |  |  | MBRT BASE [24 h] | 24 | 24 |  | COM | 24 | 2-1401 | 2-1401 | ZONE-2 | UNION | SIDEWALKS |  |  |  | SOUTH |
|  | 9 | **MILLING AND PAVING** |  |  | 2024-04-02 | 2024-04-09 |  |  |  |  |  |  |  |  |  |  |  |  |  |  |  |  |  |  |  |  |  |  |  |
| 2-1526 |  | MILL ZONE 2, MILLING AND PAVING |  | 2d | 2024-04-02 | 2024-04-03 | 2-1334, 2-1442, 2-1651 SS |  |  |  |  | -110d | 0d |  | MBRT BASE [16 h] | 16 |  |  | MILLING SUB | 16 | 2-1526 | 2-1526 | ZONE-2 |  |  |  |  |  |  |
| 2-1651 |  | HOLD FOR WEATHER - PAVING | milestone | 0d | 2024-04-02 | 2024-04-02 | MS-0025 SS |  |  |  |  | -110d | 0d | start on or after 2024-04-01 |  |  |  |  |  | 0 | 2-1651 | 2-1651 |  |  |  |  |  |  |  |
| 2-1527 |  | PREP FOR PAVING, MILLING AND PAVING |  | 2d | 2024-04-04 | 2024-04-05 | 2-1526 |  |  |  |  | -110d | 0d |  | MBRT BASE [16 h] | 16 |  |  | EAS | 16 | 2-1527 | 2-1527 | ZONE-2 |  |  |  |  |  |  |
| 2-1528 |  | PAVE ZONE 2, MILLING AND PAVING |  | 2d | 2024-04-08 | 2024-04-09 | 2-1527 |  |  |  |  | -110d | 0d |  | MBRT BASE [16 h] | 16 |  |  | ASPHALT SUB | 16 | 2-1528 | 2-1528 | ZONE-2 |  |  |  |  |  |  |
|  | 10 | **MEDIAN STATION PLATFORMS** |  |  | 2024-03-19 | 2024-04-19 |  |  |  |  |  |  |  |  |  |  |  |  |  |  |  |  |  |  |  |  |  |  |  |
|  | 1 | **MADISON AND EAST UNION STREET** |  |  | 2024-03-19 | 2024-04-19 |  |  |  |  |  |  |  |  |  |  |  |  |  |  |  |  |  |  |  |  |  |  |  |
| 2-1531 |  | REM TEMP PAVING, MAD & EAST UNION STREET |  | 1d | 2024-03-19 A | 2024-03-19 A | 2-1489, 2-1521 | 100% |  | 2024-03-05 | 2024-03-05 |  |  |  | MBRT BASE [8 h] | 8 |  | X | EA3 | 8 | 2-1531 | 2-1531 | ZONE-2 | UNION |  |  |  |  |  |
| 2-1532 |  | TRENCH CONDUIT, MAD & EAST UNION STREET |  | 2d | 2024-03-20 A | 2024-03-22 A | 2-1531 | 100% |  | 2024-03-06 | 2024-03-07 |  |  |  | MBRT BASE [16 h] | 16 |  | X | EA3 | 16 | 2-1532 | 2-1532 | ZONE-2 | UNION |  |  |  |  |  |
| 2-1533 |  | INST CONDUIT, MAD & EAST UNION STREET |  | 2d | 2024-03-20 A | 2024-03-22 A | 2-1532 SS | 100% |  | 2024-03-06 | 2024-03-07 |  |  |  | MBRT BASE [16 h] | 16 |  | X | ELECRICAL SUB | 16 | 2-1533 | 2-1533 | ZONE-2 | UNION |  | ELECTRICAL |  |  |  |
| 2-1534 |  | STATION FOUNDATIONS, MAD & EAST UNION STREET |  | 4d | 2024-03-25 A | 2024-04-05 | 2-1533 |  | 4d | 2024-03-08 | 2024-03-13 | -94d | 0d |  | MBRT BASE [32 h] | 32 |  | X | COM | 32 | 2-1534 | 2-1534 | ZONE-2 | UNION |  |  |  |  |  |
| 2-1535 |  | STATION NOSING, MAD & EAST UNION STREET |  | 2d | 2024-04-08 | 2024-04-09 | 2-1534 |  |  |  |  | -94d | 0d |  | MBRT BASE [16 h] | 16 |  | X | COM | 16 | 2-1535 | 2-1535 | ZONE-2 | UNION |  |  |  |  |  |
| 2-1536 |  | GRADE FOR CONCRETE, MAD & EAST UNION STREET |  | 4d | 2024-04-10 | 2024-04-15 | 2-1535 |  |  |  |  | -94d | 0d |  | MBRT BASE [32 h] | 32 |  | X | EA3 | 32 | 2-1536 | 2-1536 | ZONE-2 | UNION |  |  |  |  |  |
| 2-1537 |  | STATION SIDEWALK, MAD & EAST UNION STREET |  | 4d | 2024-04-16 | 2024-04-19 | 2-1536 |  |  |  |  | -94d | 0d |  | MBRT BASE [32 h] | 32 |  | X | COM | 32 | 2-1537 | 2-1537 | ZONE-2 | UNION |  |  |  |  |  |

| ID | WBS | Activity | Duration | Start | Finish | Predecessors | Complete | Remaining | Planned start | Planned finish | Total float | Free float | Calendar | Resources | Cost | Actual cost | user_number6 | user_text10 | user_text8 | MBRT-ZONE | user_text2 | ~SELECT | MBRT-LOCATION | MBRT-TYPE | MBRT-RESP | MBRT-ACTIVITY | MBRT-SCOPE | ~SELECT2 | ~SELECT3 |
| --- | --- | --- | --- | --- | --- | --- | --- | --- | --- | --- | --- | --- | --- | --- | --- | --- | --- | --- | --- | --- | --- | --- | --- | --- | --- | --- | --- | --- | --- |
|  | 11 | **STRIPING AND SIGNS** |  | 2024-04-10 | 2024-06-12 |  |  |  |  |  |  |  |  |  |  |  |  |  |  |  |  |  |  |  |  |  |  |  |  |
| 2-1539 |  | CURE TIME, STRIPING AND SIGNS | 21d | 2024-04-10 | 2024-04-30 | 2-1379, 2-1528 |  |  |  |  | -163d | 0d | 7 day per week | MBRT BASE |  |  | 168 | 2-1539 | 2-1539 | ZONE-2 |  |  |  |  |  |  |  |  |  |
| 2-1540 |  | CHANNELIZATION, STRIPING AND SIGNS | 15d | 2024-05-01 | 2024-05-21 | 2-1539 |  |  |  |  | -111d | 0d |  | MBRT BASE [120 h] | 120 |  | 120 | 2-1540 | 2-1540 | ZONE-2 | STRIPING SUB |  |  |  |  |  |  |  |  |
| 2-1541 |  | INST SIGNS, STRIPING AND SIGNS | 15d | 2024-05-22 | 2024-06-12 | 2-1540, 2-1456 |  |  |  |  | -111d | 36d |  | MBRT BASE [120 h] | 120 |  | 120 | 2-1541 | 2-1541 | ZONE-2 | ZZZ |  |  |  |  |  |  |  |  |
|  | 13 | **SIGNALS** |  | 2023-06-03 | 2024-06-12 |  |  |  |  |  |  |  |  |  |  |  |  |  |  |  |  |  |  |  |  |  |  |  |  |
|  | 1 | **MADISON AND BROADWAY** |  | 2023-06-03 | 2024-06-12 |  |  |  |  |  |  |  |  |  |  |  |  |  |  |  |  |  |  |  |  |  |  |  |  |
| 2-1972 |  | INST POLES, MAD AND BROADWAY | 1d | 2023-06-03 A | 2023-06-03 A | PMP-0016 | 100% |  | 2023-06-05 | 2023-06-05 |  |  |  | MBRT NEW [8 h] | 8 | 8 | 0 | 2-1972 | 2-1972 | ZONE-2 | ELECRICAL SUB | X | BROADWAY | SIGNALS | PRIME |  |  |  |  |
| 2-1572 |  | DSC 615 POLE P24-08 CONFLICTS | 96d | 2023-09-08 A | 2024-01-29 A | 2-1972 | 100% |  | 2023-08-14 | 2024-01-02 |  |  |  | MBRT DSC [768 h] | 768 | 768 | 768 |  |  |  |  | CPLP-NOV |  |  |  |  |  |  |  |
| 2-1787 |  | REMOVE POLE | 1d | 2024-01-30 A | 2024-01-30 A | 2-1572 | 100% |  | 2023-12-11 | 2023-12-11 |  |  |  | MBRT NEW [8 h] | 8 | 8 | 8 |  |  |  |  | CPLP-NOV |  |  |  |  |  |  |  |
| 2-1797 |  | REMOVE FOUNDATION | 3d | 2024-01-31 A | 2024-02-02 A | 2-1787 | 100% |  | 2023-12-11 | 2023-12-13 |  |  |  | MBRT NEW [24 h] | 24 | 24 | 24 |  |  |  |  | CPLP-NOV |  |  |  |  |  |  |  |
| 2-1807 |  | POUR FOUNDATION | 4d | 2024-02-06 A | 2024-02-09 A | 2-1797 | 100% |  | 2023-12-11 | 2023-12-14 |  |  |  | MBRT NEW [32 h] | 32 | 32 | 32 |  |  |  |  | CPLP-NOV |  |  |  |  |  |  |  |
| 2-1812 |  | COMPLETE UNDERGROUND NEC BROADWAY | 14d | 2024-02-12 A | 2024-03-01 A | 2-1807 | 100% |  |  |  |  |  |  | MBRT NEW [112 h] | 112 | 112 | 112 |  |  |  |  | CPLP-NOV |  |  |  |  |  |  |  |
| 2-1817 |  | DSC 702 BROADWAY UNKNOWN UTILITES NWC | 39d | 2024-02-14 A | 2024-04-05 | 2-1812 SS | 90% | 4d | 2024-02-12 | 2024-04-05 | -113d | 0d |  | MBRT DSC [312 h] | 312 |  | 312 |  |  |  |  |  |  |  |  |  |  |  |  |
| 2-1822 |  | DSC 705 POLE RISER CONFLICT | 1d | 2024-02-15 A | 2024-02-15 A | 2-1812 SF | 100% |  | 2024-02-12 | 2024-02-12 |  |  |  | MBRT DSC [8 h] | 8 | 8 | 8 |  |  |  |  |  |  |  |  |  |  |  |  |
| 2-1547 |  | INST SERVICE CABINET, MAD & BROADWAY | 1d | 2024-03-01 A | 2024-03-01 A | 2-1477, 2-1572, 2-7255, 2-1812, 2-1812 FF, 2-1822, 2-1817 SS, 2-1822 FF | 100% |  | 2024-03-05 | 2024-03-05 |  |  |  | MBRT BASE [8 h] | 8 | 8 | 8 | 2-1547 | 2-1547 | ZONE-2 | ELECRICAL SUB | CPLP-SEP | BROADWAY | SIGNALS | PRIME |  |  |  |  |
| 2-2050 |  | SDCI INSPECTION | 1d | 2024-03-04 A | 2024-03-04 A | 2-1547 | 100% |  |  |  |  |  |  | MBRT NEW [8 h] | 8 |  | 8 | 2-2050 | 2-2050 |  |  | CPLP-SEP |  |  |  |  |  |  |  |
| 2-2070 |  | SDOT INSPECTION | 1d | 2024-03-05 A | 2024-03-05 A | 2-2050 | 100% |  |  |  |  |  |  | MBRT NEW [8 h] | 8 |  | 8 | 2-2070 | 2-2070 |  |  | CPLP-SEP |  |  |  |  |  |  |  |
| 2-2038 |  | SCL INSPECTION REQUEST | 1d | 2024-03-06 A | 2024-03-06 A | 2-2070 | 100% |  |  |  |  |  |  | MBRT NEW |  |  | 8 | 2-2038 | 2-2038 | ZONE-1 | ELECRICAL SUB | CPLP-SEP | BOYLSTON | SIGNALS | PRIME | NOTIFY |  |  |  |
| 2-2039 |  | 30 DAY WAIT FOR SCL TO INSPECT, MAD AND BOYLSTON | 2d | 2024-03-07 A | 2024-03-08 A | 2-2038 | 100% |  |  |  |  |  |  | MBRT NEW |  |  | 16 | 2-2039 | 2-2039 | ZONE-1 | CITY | CPLP-SEP | BOYLSTON | SIGNALS | SCL | INSPECT |  |  |  |
| 2-1554 |  | 30 DAY WAIT FOR SCL TO COMMISION | 21d | 2024-03-11 A | 2024-04-09 | 2-1553 FF, 2-2039 |  | 6d | 2024-03-12 | 2024-04-09 | -113d | 0d |  | MBRT BASE |  |  | 168 | 2-1554 | 2-1554 | ZONE-2 | CITY | CPLP-SEP | BROADWAY | SIGNALS | SCL | INSPECT |  |  |  |
| 2-1827 |  | COMPLETE UNDERGROUND NWC BROADWAY | 0d | 2024-04-08 | 2024-04-08 | 2-1817 |  |  |  |  | -110d | 37d |  | MBRT NEW |  |  | 0 |  |  |  |  |  |  |  |  |  |  |  |  |
| 2-2079 |  | SCL INSPECTION | 1d | 2024-04-08 | 2024-04-08 | 2-2039, 2-1817 |  |  |  |  | -113d | 0d |  | MBRT NEW [8 h] | 8 |  | 8 | 2-2079 | 2-2079 |  |  | CPLP-SEP |  |  |  |  |  |  |  |
| 2-1553 |  | COMMISION NOTIFICATION | 1d | 2024-04-09 | 2024-04-09 | 2-2079 |  |  |  |  | -113d | 0d |  | MBRT BASE |  |  | 8 | 2-1553 | 2-1553 | ZONE-2 | ELECRICAL SUB | CPLP-SEP | BROADWAY | SIGNALS | PRIME | NOTIFY |  |  |  |
| 2-1555 |  | COMM SERVICE, MAD AND BROADWAY | 1d | 2024-04-10 | 2024-04-10 | 2-1554 |  |  |  |  | -113d | 34d |  | MBRT BASE [8 h] | 8 |  | 8 | 2-1555 | 2-1555 | ZONE-2 | CITY | CPLP-SEP | BROADWAY | SIGNALS | PRIME |  | SIGNALS |  |  |
| 2-1546 |  | INST SIGNAL CABINET, MAD & BROADWAY | 1d | 2024-05-30 | 2024-05-30 | 2-1477, 2-1641, 2-1555, 2-1817, 2-1613, 2-1827, 2-1626, 3-2473 |  |  |  |  | -147d | 0d |  | MBRT BASE [8 h] | 8 |  | 8 | 2-1546 | 2-1546 | ZONE-2 | ELECRICAL SUB | signals | BROADWAY | SIGNALS | PRIME |  |  | P2 | 147 |
| 2-1548 |  | INST MAGNOMETETERS, MAD & BROADWAY | 1d | 2024-05-31 | 2024-05-31 | 2-1546 |  |  |  |  | -147d | 0d |  | MBRT BASE [8 h] | 8 |  | 8 | 2-1548 | 2-1548 | ZONE-2 | ELECRICAL SUB | signals | BROADWAY | SIGNALS | PRIME |  |  | P2 | 147 |
| 2-1549 |  | INST MAST ARMS, MAD AND BROADWAY | 1d | 2024-06-03 | 2024-06-03 | 2-1548 |  |  |  |  | -147d | 0d |  | MBRT BASE [8 h] | 8 |  | 8 | 2-1549 | 2-1549 | ZONE-2 | ELECRICAL SUB | signals | BROADWAY | SIGNALS | PRIME |  |  | P2 | 147 |
| 2-1550 |  | INST SIGNAL GEAR, MAD & BROADWAY | 1d | 2024-06-04 | 2024-06-04 | 2-1549 |  |  |  |  | -136d | 0d |  | MBRT BASE [8 h] | 8 |  | 8 | 2-1550 | 2-1550 | ZONE-2 | ELECRICAL SUB | signals | BROADWAY | SIGNALS | PRIME |  |  | P2 |  |
| 2-1551 |  | INST PEDISTALS, MAD AND BROADWAY | 1d | 2024-06-05 | 2024-06-05 | 2-1550 |  |  |  |  | -136d | 0d |  | MBRT BASE [8 h] | 8 |  | 8 | 2-1551 | 2-1551 | ZONE-2 | ELECRICAL SUB | signals | BROADWAY | SIGNALS | PRIME |  |  | P2 |  |
| 2-1552 |  | INST WIRING, MAD AND BROADWAY | 2d | 2024-06-06 | 2024-06-07 | 2-1551 |  |  |  |  | -136d | 0d |  | MBRT BASE [16 h] | 16 |  | 16 | 2-1552 | 2-1552 | ZONE-2 | ELECRICAL SUB | signals | BROADWAY | SIGNALS | PRIME |  |  | P2 |  |
| 2-1556 |  | NOTIFY SDOT, MAD AND BROADWAY | 1d | 2024-06-10 | 2024-06-10 | 2-1555, 2-1552 |  |  |  |  | -121d | 0d |  | MBRT BASE |  |  | 8 | 2-1556 | 2-1556 | ZONE-2 | ELECRICAL SUB | signals | BROADWAY | SIGNALS | PRIME | NOTIFY |  | P2 |  |
| 2-1557 |  | SDOT INSPECTION, MAD AND BROADWAY | 1d | 2024-06-11 | 2024-06-11 | 2-1556 |  |  |  |  | -121d | 0d |  | MBRT BASE [8 h] | 8 |  | 8 | 2-1557 | 2-1557 | ZONE-2 | CITY | signals | BROADWAY | SIGNALS | PRIME |  |  | P2 |  |
| 2-1558 |  | COMM SIGNAL, MAD AND BROADWAY | 1d | 2024-06-12 | 2024-06-12 | 2-1557 |  |  |  |  | -121d | 0d |  | MBRT BASE [8 h] | 8 |  | 8 | 2-1558 | 2-1558 | ZONE-2 | CITY | signals | BROADWAY | SIGNALS | PRIME |  |  | P2 |  |

| ID | WBS | Activity | Duration | Start | Finish | Predecessors | Complete | Planned start | Planned finish | Resources | Cost | Actual cost | user_text2 | user_number6 | user_text10 | user_text8 | MBRT-ZONE | MBRT-LOCATION | MBRT-TYPE | MBRT-RESP | ~SELECT | MBRT-ACTIVITY |
| --- | --- | --- | --- | --- | --- | --- | --- | --- | --- | --- | --- | --- | --- | --- | --- | --- | --- | --- | --- | --- | --- | --- |
|  | 2 | **10TH AND MADISON** |  | 2023-06-05 | 2024-01-25 |  |  |  |  |  |  |  |  |  |  |  |  |  |  |  |  |  |
| 2-1977 |  | INST POLES, 10TH AND MAD | 2d | 2023-06-05 A | 2023-06-06 A | 2-1972 | 100% |  |  | MBRT NEW [16 h] | 16 | 16 | ELECRICAL SUB | 16 | 2-1977 | 2-1977 | ZONE-2 | 10 | SIGNALS | PRIME |  |  |
| 2-1561 |  | INST SERVICE CABINET, 10TH & MAD | 1d | 2023-11-28 A | 2023-11-28 A | 2-1477, 2-1396, 2-1389 | 100% | 2023-10-23 | 2023-10-23 | MBRT BASE [8 h] | 8 | 8 | ELECRICAL SUB | 8 | 2-1561 | 2-1561 | ZONE-2 | 10 | SIGNALS | PRIME | CPLP |  |
| 2-1050 |  | SDCI INSPECTION | 1d | 2023-11-29 A | 2023-11-29 A | 2-1561 | 100% | 2023-10-24 | 2023-10-24 | MBRT NEW |  |  |  | 8 | 2-1050 | 2-1050 |  |  |  |  | CPLP |  |
| 2-1070 |  | SDOT INSPECTION | 1d | 2023-11-30 A | 2023-11-30 A | 2-1050 | 100% | 2023-10-25 | 2023-10-25 | MBRT NEW |  |  |  | 8 | 2-1070 | 2-1070 |  |  |  |  | CPLP |  |
| 2-1038 |  | SCL INSPECTION REQUEST | 1d | 2024-01-02 A | 2024-01-02 A | 2-1070 | 100% | 2023-12-11 | 2023-12-11 | MBRT NEW |  |  | ELECRICAL SUB | 8 | 2-1038 | 2-1038 | ZONE-1 | BOYLSTON | SIGNALS | PRIME | CPLP | NOTIFY |
| 2-1039 |  | 30 DAY WAIT FOR SCL TO INSPECT, MAD AND BOYLSTON | 21d | 2024-01-03 A | 2024-01-09 A | 2-1038 | 100% | 2023-12-12 | 2024-01-11 | MBRT NEW |  |  | CITY | 40 | 2-1039 | 2-1039 | ZONE-1 | BOYLSTON | SIGNALS | SCL | CPLP | INSPECT |
| 2-1079 |  | SCL INSPECTION | 1d | 2024-01-10 A | 2024-01-10 A | 2-1039 | 100% | 2024-01-12 | 2024-01-12 | MBRT NEW |  |  |  | 8 | 2-1079 | 2-1079 |  |  |  |  | CPLP |  |
| 2-1566 |  | COMMISION NOTIFICATION | 1d | 2024-01-11 A | 2024-01-11 A | 2-1079 | 100% | 2024-01-16 | 2024-01-16 | MBRT BASE |  |  | ELECRICAL SUB | 8 | 2-1566 | 2-1566 | ZONE-2 | 10 | SIGNALS | PRIME | CPLP | NOTIFY |
| 2-1567 |  | 30 DAY WAIT FOR SCL TO COMMISION | 21d | 2024-01-12 A | 2024-01-16 A | 2-1566 | 100% | 2024-01-17 | 2024-02-14 | MBRT BASE |  |  | CITY | 16 | 2-1567 | 2-1567 | ZONE-2 | 10 | SIGNALS | SCL | CPLP | INSPECT |
| 2-1568 |  | COMM SERVICE, 10TH AND MAD | 1d | 2024-01-17 A | 2024-01-17 A | 2-1567 | 100% | 2024-02-15 | 2024-02-15 | MBRT BASE [8 h] | 8 | 8 | CITY | 8 | 2-1568 | 2-1568 | ZONE-2 | 10 | SIGNALS | PRIME | CPLP |  |
| 2-1560 |  | INST SIGNAL CABINET, 10TH AND MAD | 1d | 2024-01-18 A | 2024-01-18 A | 2-1568 | 100% | 2024-02-16 | 2024-02-16 | MBRT BASE [8 h] | 8 | 8 | ELECRICAL SUB | 8 | 2-1560 | 2-1560 | ZONE-2 | 10 | SIGNALS | PRIME | CPLP |  |
| 2-1562 |  | INST MAST ARMS, 10TH AND MAD | 2d | 2024-01-19 A | 2024-01-19 A | 2-1977, 2-1560 | 100% | 2024-02-20 | 2024-02-21 | MBRT BASE [8 h] | 8 | 8 | ELECRICAL SUB | 8 | 2-1562 | 2-1562 | ZONE-2 | 10 | SIGNALS | PRIME | CPLP |  |
| 2-1563 |  | INST PPB POST, 10TH AND MAD | 2d | 2024-01-22 A | 2024-01-22 A | 2-1562 | 100% | 2024-02-22 | 2024-02-23 | MBRT BASE [8 h] | 8 | 8 | ELECRICAL SUB | 8 | 2-1563 | 2-1563 | ZONE-2 | 10 | SIGNALS | PRIME |  |  |
| 2-1564 |  | INST PEDESTALS, 10TH AND MAD | 1d | 2024-01-22 A | 2024-01-22 A | 2-1563 | 100% | 2024-02-26 | 2024-02-26 | MBRT BASE [8 h] | 8 | 8 | ELECRICAL SUB | 8 | 2-1564 | 2-1564 | ZONE-2 | 10 | SIGNALS | PRIME |  |  |
| 2-1565 |  | INST WIRING, 10TH AND MAD | 3d | 2024-01-22 A | 2024-01-22 A | 2-1564 | 100% | 2024-02-27 | 2024-02-29 | MBRT BASE [8 h] | 8 | 8 | ELECRICAL SUB | 8 | 2-1565 | 2-1565 | ZONE-2 | 10 | SIGNALS | PRIME |  |  |
| 2-1569 |  | NOTIFY SDOT, 10TH AND MAD | 1d | 2024-01-22 A | 2024-01-22 A | 2-1568, 2-1565 | 100% | 2024-03-01 | 2024-03-01 | MBRT BASE [8 h] | 8 | 8 | ELECRICAL SUB | 8 | 2-1569 | 2-1569 | ZONE-2 | 10 | SIGNALS | PRIME |  | NOTIFY |
| 2-1570 |  | SDOT INSPECTION, 10TH AND MAD | 5d | 2024-01-22 A | 2024-01-23 A | 2-1569 | 100% | 2024-03-04 | 2024-03-08 | MBRT BASE [16 h] | 16 | 16 | CITY | 16 | 2-1570 | 2-1570 | ZONE-2 | 10 | SIGNALS | PRIME |  |  |
| 2-1571 |  | COMM SIGNAL, 10TH AND MAD | 1d | 2024-01-25 A | 2024-01-25 A | 2-1570 | 100% | 2024-03-11 | 2024-03-11 | MBRT BASE [8 h] | 8 | 8 | CITY | 8 | 2-1571 | 2-1571 | ZONE-2 | 10 | SIGNALS | PRIME | X |  |
|  | 3 | **MADISON AND 11TH** |  | 2023-06-07 | 2024-02-15 |  |  |  |  |  |  |  |  |  |  |  |  |  |  |  |  |  |
| 2-2217 |  | INST POLES, MAD AND 11TH | 2d | 2023-06-07 A | 2023-06-08 A | 2-1977 | 100% |  |  | MBRT NEW [16 h] | 16 | 16 | ELECRICAL SUB | 16 | 2-2217 | 2-2217 | ZONE-2 | 11 | SIGNALS | PRIME |  |  |
| 2-1574 |  | INST SERVICE CABINET, MAD & 11TH | 1d | 2023-11-01 A | 2023-11-01 A | 2-1443, 2-2080 | 100% | 2023-11-21 | 2023-11-21 | MBRT BASE [8 h] | 8 | 8 | ELECRICAL SUB | 8 | 2-1574 | 2-1574 | ZONE-2 | 11 | SIGNALS | PRIME |  |  |
| 2-3050 |  | SDCI INSPECTION | 1d | 2023-11-03 A | 2023-11-03 A | 2-1574 | 100% | 2023-11-22 | 2023-11-22 | MBRT NEW |  |  |  | 8 | 2-3050 | 2-3050 |  |  |  |  |  |  |
| 2-3070 |  | SDOT INSPECTION | 1d | 2023-11-04 A | 2023-11-06 A | 2-3050 | 100% | 2023-11-27 | 2023-11-27 | MBRT NEW |  |  |  | 8 | 2-3070 | 2-3070 |  |  |  |  |  |  |
| 2-3038 |  | SCL INSPECTION REQUEST | 1d | 2023-11-07 A | 2023-11-07 A | 2-3070 | 100% | 2023-11-28 | 2023-11-28 | MBRT NEW |  |  | ELECRICAL SUB | 8 | 2-3038 | 2-3038 | ZONE-1 | BOYLSTON | SIGNALS | PRIME |  | NOTIFY |
| 2-3039 |  | 30 DAY WAIT FOR SCL TO INSPECT, MAD AND BOYLSTON | 21d | 2023-11-08 A | 2023-12-11 A | 2-3038 | 100% | 2023-11-29 | 2023-12-28 | MBRT NEW |  |  | CITY | 168 | 2-3039 | 2-3039 | ZONE-1 | BOYLSTON | SIGNALS | SCL |  | INSPECT |
| 2-3044 |  | DELAY SCL WONT INSPECT AS THEY ARE ENFORCING SPECS THAT DID NOT EXIST AT THE TIME OF BID | 25d | 2023-12-12 A | 2024-01-18 A | 2-3039 | 100% | 2023-12-11 | 2024-01-17 | MBRT NEW [200 h] | 200 | 200 |  | 200 |  |  |  |  |  |  |  |  |
| 2-3079 |  | SCL INSPECTION | 1d | 2024-01-19 A | 2024-01-19 A | 2-3039, 2-3044 | 100% | 2023-12-12 | 2023-12-12 | MBRT NEW |  |  |  | 8 | 2-3079 | 2-3079 |  |  |  |  | x |  |
| 2-1579 |  | COMMISION NOTIFICATION | 1d | 2024-01-22 A | 2024-01-22 A | 2-3079 | 100% | 2023-12-13 | 2023-12-13 | MBRT BASE |  |  | ELECRICAL SUB | 8 | 2-1579 | 2-1579 | ZONE-2 | 11 | SIGNALS | PRIME |  | NOTIFY |
| 2-1580 |  | 30 DAY WAIT FOR SCL TO COMMISION | 21d | 2024-01-23 A | 2024-02-13 A | 2-1579 | 100% | 2023-12-14 | 2024-01-16 | MBRT BASE |  |  | CITY | 128 | 2-1580 | 2-1580 | ZONE-2 | 11 | SIGNALS | SCL |  | INSPECT |
| 2-1573 |  | INST SIGNAL CABINET, MAD AND 11TH | 1d | 2024-02-05 A | 2024-02-14 A | 2-1483, 2-1579 | 100% | 2024-01-18 | 2024-01-18 | MBRT BASE [64 h] | 64 | 64 | ELECRICAL SUB | 64 | 2-1573 | 2-1573 | ZONE-2 | 11 | SIGNALS | PRIME | X |  |
| 2-1575 |  | INST MAST ARMS, MAD AND 11TH | 2d | 2024-02-05 A | 2024-02-14 A | PMP-36, 2-2217, 2-1573 SS, 2-1579 | 100% | 2024-01-19 | 2024-01-22 | MBRT BASE [64 h] | 64 | 64 | ELECRICAL SUB | 64 | 2-1575 | 2-1575 | ZONE-2 | 11 | SIGNALS | PRIME |  |  |
| 2-1576 |  | INST PPB POST, MAD AND 11TH | 2d | 2024-02-05 A | 2024-02-14 A | 2-1575 SS, 2-1579 | 100% | 2024-01-23 | 2024-01-24 | MBRT BASE [64 h] | 64 | 64 | ELECRICAL SUB | 64 | 2-1576 | 2-1576 | ZONE-2 | 11 | SIGNALS | PRIME |  |  |
| 2-1577 |  | INST PEDESTAL, MAD AND 11TH | 1d | 2024-02-05 A | 2024-02-14 A | 2-1576 SS, 2-1579 | 100% | 2024-01-25 | 2024-01-25 | MBRT BASE [64 h] | 64 | 64 | ELECRICAL SUB | 64 | 2-1577 | 2-1577 | ZONE-2 | 11 | SIGNALS | PRIME |  |  |
| 2-1578 |  | INST WIRING, MAD AND 11TH | 3d | 2024-02-05 A | 2024-02-14 A | 2-1577 SS, 2-1579 | 100% | 2024-01-26 | 2024-01-30 | MBRT BASE [64 h] | 64 | 64 | ELECRICAL SUB | 64 | 2-1578 | 2-1578 | ZONE-2 | 11 | SIGNALS | PRIME |  |  |
| 2-1581 |  | COMM SERVICE, MAD AND 11TH | 1d | 2024-02-14 A | 2024-02-14 A | 2-1580 | 100% | 2024-02-16 | 2024-02-16 | MBRT BASE [8 h] | 8 | 8 | CITY | 8 | 2-1581 | 2-1581 | ZONE-2 | 11 | SIGNALS | PRIME |  |  |
| 2-1582 |  | NOTIFY SDOT, MAD AND 11TH | 1d | 2024-02-15 A | 2024-02-15 A | 2-1581, 2-1578 | 100% | 2024-02-20 | 2024-02-20 | MBRT BASE [8 h] | 8 | 8 | ELECRICAL SUB | 8 | 2-1582 | 2-1582 | ZONE-2 | 11 | SIGNALS | PRIME |  | NOTIFY |
| 2-1583 |  | SDOT INSPECTION, MAD AND 11TH | 5d | 2024-02-15 A | 2024-02-15 A | 2-1582 | 100% | 2024-02-21 | 2024-02-27 | MBRT BASE [8 h] | 8 | 8 | CITY | 8 | 2-1583 | 2-1583 | ZONE-2 | 11 | SIGNALS | PRIME |  |  |
| 2-1584 |  | COMM SIGNAL, MAD AND 11TH | 1d | 2024-02-15 A | 2024-02-15 A | 2-1583, 2-1571 | 100% | 2024-02-28 | 2024-02-28 | MBRT BASE [8 h] | 8 | 8 | CITY | 8 | 2-1584 | 2-1584 | ZONE-2 | 11 | SIGNALS | PRIME | X |  |

| ID | WBS | Activity | Duration | Start | Finish | Predecessors | Complete | Planned start | Planned finish | Total float | Free float | Resources | Cost | Actual cost | user_text2 | user_number6 | user_text10 | user_text8 | MBRT-ZONE | MBRT-LOCATION | MBRT-TYPE | MBRT-RESP | MBRT-ACTIVITY | ~SELECT | ~SELECT2 | MBRT-DELAY | ~SELECT3 |
| --- | --- | --- | --- | --- | --- | --- | --- | --- | --- | --- | --- | --- | --- | --- | --- | --- | --- | --- | --- | --- | --- | --- | --- | --- | --- | --- | --- |
|  | 4 | **MADISON AND 12TH** |  | 2023-11-21 | 2024-03-26 |  |  |  |  |  |  |  |  |  |  |  |  |  |  |  |  |  |  |  |  |  |  |
| 2-1587 |  | INST SERVICE CABINET, MAD & 12TH | 1d | 2023-11-21 A | 2023-11-21 A | 2-1489, 2-2702 | 100% | 2023-11-02 | 2023-11-02 |  |  | MBRT BASE [8 h] | 8 | 8 | ELECRICAL SUB | 8 | 2-1587 | 2-1587 | ZONE-2 | 12 | SIGNALS | PRIME |  |  |  |  |  |
| 2-4050 |  | SDCI INSPECTION | 1d | 2023-11-22 A | 2023-11-22 A | 2-1587 | 100% | 2023-11-03 | 2023-11-03 |  |  | MBRT NEW |  |  |  | 8 | 2-4050 | 2-4050 |  |  |  |  |  |  |  |  |  |
| 2-4038 |  | SCL INSPECTION REQUEST | 1d | 2023-11-27 A | 2023-11-27 A | 2-4070 | 100% | 2023-11-07 | 2023-11-07 |  |  | MBRT NEW |  |  | ELECRICAL SUB | 8 | 2-4038 | 2-4038 | ZONE-1 | BOYLSTON | SIGNALS | PRIME | NOTIFY |  |  |  |  |
| 2-4070 |  | SDOT INSPECTION | 1d | 2023-11-27 A | 2023-11-27 A | 2-4050 | 100% | 2023-11-06 | 2023-11-06 |  |  | MBRT NEW |  |  |  | 8 | 2-4070 | 2-4070 |  |  |  |  |  |  |  |  |  |
| 2-1590 |  | INST OCS POLES, MAD AND 12TH | 2d | 2023-11-28 A | 2023-11-29 A | 2-1982 | 100% | 2023-08-16 | 2023-08-17 |  |  | MBRT BASE [16 h] | 16 | 16 | EA3 | 16 | 2-1590 | 2-1590 | ZONE-2 | 12 | SIGNALS | PRIME | OCS |  |  |  |  |
| 2-1982 |  | INST MAST ARM POLES, MAD AND 12TH | 2d | 2023-11-28 A | 2023-11-29 A | 2-2217 | 100% | 2023-08-14 | 2023-08-15 |  |  | MBRT NEW [16 h] | 16 | 16 | ELECRICAL SUB | 16 | 2-1982 | 2-1982 | ZONE-2 | 12 | SIGNALS | PRIME |  |  |  |  |  |
| 2-4039 |  | 30 DAY WAIT FOR SCL TO INSPECT, MAD AND BOYLSTON | 21d | 2023-12-01 A | 2024-01-16 A | 2-4038 | 100% | 2023-11-07 | 2023-12-08 |  |  | MBRT NEW |  |  | CITY | 240 | 2-4039 | 2-4039 | ZONE-1 | BOYLSTON | SIGNALS | SCL | INSPECT |  |  |  |  |
| 2-4079 |  | SCL INSPECTION | 1d | 2024-01-17 A | 2024-01-17 A | 2-4039 | 100% | 2024-01-03 | 2024-01-03 |  |  | MBRT NEW |  |  |  | 8 | 2-4079 | 2-4079 |  |  |  |  |  | x |  |  |  |
| 2-1594 |  | COMMISION NOTIFICATION | 1d | 2024-01-18 A | 2024-01-18 A | 2-4079 | 100% | 2024-01-04 | 2024-01-04 |  |  | MBRT BASE |  |  | ELECRICAL SUB | 8 | 2-1594 | 2-1594 | ZONE-2 | 12 | SIGNALS | PRIME | NOTIFY |  |  |  |  |
| 2-1595 |  | 30 DAY WAIT FOR SCL TO COMMISION | 21d | 2024-01-19 A | 2024-02-23 A | 2-1594 | 100% | 2024-01-05 | 2024-02-05 |  |  | MBRT BASE |  |  | CITY | 200 | 2-1595 | 2-1595 | ZONE-2 | 12 | SIGNALS | SCL | INSPECT |  |  |  |  |
| 2-1596 |  | COMM SERVICE, MAD AND 12TH | 1d | 2024-02-26 A | 2024-02-26 A | 2-1595 | 100% | 2024-02-16 | 2024-02-16 |  |  | MBRT BASE [8 h] | 8 | 8 | CITY | 8 | 2-1596 | 2-1596 | ZONE-2 | 12 | SIGNALS | PRIME |  |  |  |  |  |
| 2-1586 |  | INST SIGNAL CABINET, MAD AND 12TH | 2d | 2024-03-04 A | 2024-03-05 A | 2-1489, 2-1596 | 100% |  |  |  |  | MBRT BASE [16 h] | 16 |  | ELECRICAL SUB | 16 | 2-1586 | 2-1586 | ZONE-2 | 12 | SIGNALS | PRIME |  | X | PX |  |  |
| 2-1588 |  | INST MAGNOMETERS, MAD AND 12TH | 2d | 2024-03-06 A | 2024-03-07 A | 2-1586 | 100% |  |  |  |  | MBRT BASE [16 h] | 16 |  | ELECRICAL SUB | 16 | 2-1588 | 2-1588 | ZONE-2 | 12 | SIGNALS | PRIME |  |  | PX |  |  |
| 2-1589 |  | INST MAST ARMS, MAD AND 12TH | 3d | 2024-03-08 A | 2024-03-12 A | 2-1588 | 100% |  |  |  |  | MBRT BASE [24 h] | 24 |  | ELECRICAL SUB | 24 | 2-1589 | 2-1589 | ZONE-2 | 12 | SIGNALS | PRIME |  |  | PX |  |  |
| 2-1591 |  | INST PPB POST, MAD AND 12TH | 3d | 2024-03-13 A | 2024-03-15 A | 2-1590, 2-1589, 2-1982 | 100% |  |  |  |  | MBRT BASE [24 h] | 24 |  | ELECRICAL SUB | 24 | 2-1591 | 2-1591 | ZONE-2 | 12 | SIGNALS | PRIME |  |  | PX |  |  |
| 2-1592 |  | INST PEDISTAL, MAD AND 12TH | 3d | 2024-03-18 A | 2024-03-20 A | 2-1591 | 100% |  |  |  |  | MBRT BASE [24 h] | 24 |  | ELECRICAL SUB | 24 | 2-1592 | 2-1592 | ZONE-2 | 12 | SIGNALS | PRIME |  |  | PX |  |  |
| 2-1593 |  | INST WIRING, MAD AND 12TH | 3d | 2024-03-21 A | 2024-03-21 A | 2-1592 | 100% | 2024-03-21 | 2024-03-25 |  |  | MBRT BASE [24 h] | 24 |  | ELECRICAL SUB | 24 | 2-1593 | 2-1593 | ZONE-2 | 12 | SIGNALS | PRIME |  |  | PX |  |  |
| 2-1597 |  | NOTIFY SDOT, MAD AND 12TH | 1d | 2024-03-22 A | 2024-03-22 A | 2-1596, 2-1593 | 100% | 2024-03-26 | 2024-03-26 |  |  | MBRT BASE |  |  | ELECRICAL SUB | 8 | 2-1597 | 2-1597 | ZONE-2 | 12 | SIGNALS | PRIME | NOTIFY |  | PX |  |  |
| 2-1598 |  | SDOT INSPECTION, MAD AND 12TH | 5d | 2024-03-25 A | 2024-03-25 A | 2-1597 | 100% | 2024-03-27 | 2024-04-02 |  |  | MBRT BASE [40 h] | 40 |  | CITY | 40 | 2-1598 | 2-1598 | ZONE-2 | 12 | SIGNALS | PRIME |  |  | PX |  |  |
| 2-1599 |  | COMM SIGNAL, MAD AND 12TH | 1d | 2024-03-26 A | 2024-03-26 A | 2-1598, 2-1584 | 100% | 2024-04-03 | 2024-04-03 |  |  | MBRT BASE [8 h] | 8 |  | CITY | 8 | 2-1599 | 2-1599 | ZONE-2 | 12 | SIGNALS | PRIME |  | X | PX |  |  |
|  | 5 | **MADISON AND 13TH** |  | 2023-11-30 | 2024-04-23 |  |  |  |  |  |  |  |  |  |  |  |  |  |  |  |  |  |  |  |  |  |  |
| 2-1987 |  | INST MAST ARM POLES, MAD AND 13TH | 2d | 2023-11-30 A | 2023-12-01 A | 2-1590 | 100% | 2023-08-18 | 2023-08-21 |  |  | MBRT NEW [16 h] | 16 | 16 | ELECRICAL SUB | 16 | 2-1987 | 2-1987 | ZONE-2 | 13 | SIGNALS | PRIME |  |  |  | SCL-FC |  |
| 2-1604 |  | INST OCS POLES, MAD AND 13TH | 2d | 2023-12-04 A | 2023-12-05 A | 2-1359, PMP-36, 2-1987 | 100% | 2023-08-22 | 2023-08-23 |  |  | MBRT BASE [16 h] | 16 | 16 | EA3 | 16 | 2-1604 | 2-1604 | ZONE-2 | 13 | SIGNALS | PRIME | OCS |  |  |  |  |
| 2-1602 |  | INST SERVICE CABINET, MAD & 13TH | 1d | 2024-02-24 A | 2024-02-26 A | 2-1495, 2-1436 | 100% | 2024-02-12 | 2024-02-12 |  |  | MBRT BASE [8 h] | 8 | 8 | ELECRICAL SUB | 8 | 2-1602 | 2-1602 | ZONE-2 | 13 | SIGNALS | PRIME |  | 133 | P2 | SCL-FC | 147 |
| 2-5038 |  | SCL INSPECTION REQUEST | 1d | 2024-02-26 A | 2024-02-26 A | 2-5070 | 100% | 2024-02-15 | 2024-02-15 |  |  | MBRT NEW |  |  | ELECRICAL SUB | 8 | 2-5038 | 2-5038 | ZONE-1 | BOYLSTON | SIGNALS | PRIME | NOTIFY | 133 | P2 |  | 147 |
| 2-5050 |  | SDCI INSPECTION | 1d | 2024-02-26 A | 2024-02-26 A | 2-1602 | 100% | 2024-02-13 | 2024-02-13 |  |  | MBRT NEW |  |  |  | 8 | 2-5050 | 2-5050 |  |  |  |  |  | 133 | P2 |  | 147 |
| 2-5070 |  | SDOT INSPECTION | 1d | 2024-02-26 A | 2024-02-26 A | 2-5050 | 100% | 2024-02-14 | 2024-02-14 |  |  | MBRT NEW |  |  |  | 8 | 2-5070 | 2-5070 |  |  |  |  |  | 133 | P2 |  | 147 |
| 2-5039 |  | 30 DAY WAIT FOR SCL TO INSPECT, MAD AND BOYLSTON | 11d | 2024-02-27 A | 2024-03-14 A | 2-5038 | 100% | 2024-02-16 | 2024-03-04 |  |  | MBRT NEW |  |  | CITY | 32 | 2-5039 | 2-5039 | ZONE-1 | BOYLSTON | SIGNALS | SCL | INSPECT | signals | P2 |  | 147 |
| 2-5079 |  | SCL INSPECTION | 1d | 2024-03-15 A | 2024-03-15 A | 2-5039 | 100% |  |  |  |  | MBRT NEW [8 h] | 8 |  |  | 8 | 2-5079 | 2-5079 |  |  |  |  |  | signals | P2 |  | 147 |
| 2-1608 |  | COMMISION NOTIFICATION | 0d | 2024-03-18 A | 2024-03-18 A | 2-5079 | 100% |  |  |  |  | MBRT BASE |  |  | ELECRICAL SUB | 0 | 2-1608 | 2-1608 | ZONE-2 | 13 | SIGNALS | PRIME | NOTIFY | signals | P2 | SCL-FC | 147 |
| 2-1609 |  | 30 DAY WAIT FOR SCL TO COMMISION | 5d | 2024-03-18 A | 2024-03-22 A | 2-1608 | 100% |  |  |  |  | MBRT BASE |  |  | CITY | 40 | 2-1609 | 2-1609 | ZONE-2 | 13 | SIGNALS | SCL | INSPECT | signals | P2 | SCL-FC | 147 |
| 2-1610 |  | COMM SERVICE, MAD AND 13TH | 1d | 2024-03-25 A | 2024-03-25 A | 2-1609 | 100% |  |  |  |  | MBRT BASE [8 h] | 8 |  | CITY | 8 | 2-1610 | 2-1610 | ZONE-2 | 13 | SIGNALS | PRIME |  | signals | P2 | SCL-FC | 147 |
| 2-1601 |  | INST SIGNAL CABINET, MAD AND 13TH | 2d | 2024-03-26 A | 2024-03-27 A | 2-1495, 2-1610 | 100% |  |  |  |  | MBRT BASE [16 h] | 16 |  | ELECRICAL SUB | 16 | 2-1601 | 2-1601 | ZONE-2 | 13 | SIGNALS | PRIME |  | signals | P2 | SCL-FC | 147 |
| 2-1603 |  | INST MAST ARMS, MAD AND 13TH | 3d | 2024-03-28 A | 2024-04-01 A | 2-1987, 2-1601 | 100% |  |  |  |  | MBRT BASE [24 h] | 24 |  | ELECRICAL SUB | 24 | 2-1603 | 2-1603 | ZONE-2 | 13 | SIGNALS | PRIME |  | signals | P2 | SCL-FC | 147 |
| 2-1605 |  | INST PPB POST, MAD AND 13TH | 3d | 2024-04-02 | 2024-04-04 | 2-1604, 2-1603 |  |  |  | -147d | 0d | MBRT BASE [24 h] | 24 |  | ELECRICAL SUB | 24 | 2-1605 | 2-1605 | ZONE-2 | 13 | SIGNALS | PRIME |  | signals | P2 | SCL-FC | 147 |
| 2-1606 |  | INST PEDISTAL, MAD AND 13TH | 3d | 2024-04-05 | 2024-04-09 | 2-1605 |  |  |  | -147d | 0d | MBRT BASE [24 h] | 24 |  | ELECRICAL SUB | 24 | 2-1606 | 2-1606 | ZONE-2 | 13 | SIGNALS | PRIME |  | signals | P2 | SCL-FC | 147 |
| 2-1607 |  | INST WIRING, MAD AND 13TH | 3d | 2024-04-10 | 2024-04-12 | 2-1606 |  |  |  | -147d | 0d | MBRT BASE [24 h] | 24 |  | ELECRICAL SUB | 24 | 2-1607 | 2-1607 | ZONE-2 | 13 | SIGNALS | PRIME |  | signals | P2 | SCL-FC | 147 |
| 2-1611 |  | NOTIFY SDOT, MAD AND 13TH | 1d | 2024-04-15 | 2024-04-15 | 2-1610, 2-1607 |  |  |  | -147d | 0d | MBRT BASE |  |  | ELECRICAL SUB | 8 | 2-1611 | 2-1611 | ZONE-2 | 13 | SIGNALS | PRIME | NOTIFY | signals | P2 | SCL-FC | 147 |
| 2-1612 |  | SDOT INSPECTION, MAD AND 13TH | 4d | 2024-04-16 | 2024-04-19 | 2-1611 |  |  |  | -147d | 0d | MBRT BASE [32 h] | 32 |  | CITY | 32 | 2-1612 | 2-1612 | ZONE-2 | 13 | SIGNALS | PRIME |  | signals | P2 | SCL-FC | 147 |
| 2-1613 |  | COMM SIGNAL, MAD AND 13TH | 2d | 2024-04-22 | 2024-04-23 | 2-1612, 2-1599 |  |  |  | -147d | 0d | MBRT BASE [16 h] | 16 |  | CITY | 16 | 2-1613 | 2-1613 | ZONE-2 | 13 | SIGNALS | PRIME |  | signals | P2 | SCL-FC | 147 |

| ID | WBS | Activity | Duration | Start | Finish | Predecessors | Complete | Planned start | Planned finish | Total float | Free float | Resources | Cost | Actual cost | user_number6 | user_text10 | user_text8 | MBRT-ZONE | MBRT-LOCATION | MBRT-TYPE | MBRT-RESP | ~SELECT | user_text2 | MBRT-ACTIVITY | ~SELECT2 | ~SELECT3 |
| --- | --- | --- | --- | --- | --- | --- | --- | --- | --- | --- | --- | --- | --- | --- | --- | --- | --- | --- | --- | --- | --- | --- | --- | --- | --- | --- |
|  | 6 | **MADISON AND 14TH** |  | 2023-12-06 | 2024-05-14 |  |  |  |  |  |  |  |  |  |  |  |  |  |  |  |  |  |  |  |  |  |
| 2-1992 |  | INST POLES, MAD AND 14TH | 3d | 2023-12-06 A | 2023-12-06 A | 2-1604 | 100% | 2023-08-24 | 2023-08-28 |  |  | MBRT NEW [24 h] | 24 | 8 | 8 | 2-1992 | 2-1992 | ZONE-2 | 14 | SIGNALS | PRIME |  |  |  |  |  |
| 2-1616 |  | INST SERVICE CABINET, MAD & 14TH | 1d | 2024-02-24 A | 2024-02-26 A | 2-1504 SS | 100% | 2024-03-27 | 2024-03-27 |  |  | MBRT BASE [8 h] | 8 | 8 | 8 | 2-1616 | 2-1616 | ZONE-2 | 14 | SIGNALS | PRIME | CPLP-NOV |  |  |  |  |
| 2-6038 |  | SCL INSPECTION REQUEST | 1d | 2024-02-26 A | 2024-02-26 A | 2-6070 | 100% | 2024-03-28 | 2024-03-28 |  |  | MBRT NEW |  |  | 8 | 2-6038 | 2-6038 | ZONE-1 | BOYLSTON | SIGNALS | PRIME | CPLP-NOV | ELECRICAL SUB | NOTIFY |  |  |
| 2-6050 |  | SDCI INSPECTION | 1d | 2024-02-26 A | 2024-02-26 A | 2-1616 SS | 100% | 2024-03-27 | 2024-03-27 |  |  | MBRT NEW |  |  | 8 | 2-6050 | 2-6050 |  |  |  |  | CPLP-NOV |  |  |  |  |
| 2-6070 |  | SDOT INSPECTION | 1d | 2024-02-26 A | 2024-02-26 A | 2-6050 SS | 100% | 2024-03-27 | 2024-03-27 |  |  | MBRT NEW |  |  | 8 | 2-6070 | 2-6070 |  |  |  |  | CPLP-NOV |  |  |  |  |
| 2-6039 |  | 30 DAY WAIT FOR SCL TO INSPECT, MAD AND BOYLSTON | 2d | 2024-02-27 A | 2024-03-15 A | 2-6038 | 100% | 2024-03-28 | 2024-03-29 |  |  | MBRT NEW |  |  | 32 | 2-6039 | 2-6039 | ZONE-1 | BOYLSTON | SIGNALS | SCL | CPLP-NOV | CITY | INSPECT |  |  |
| 2-6079 |  | SCL INSPECTION | 1d | 2024-03-18 A | 2024-03-18 A | 2-6039 | 100% |  |  |  |  | MBRT NEW [8 h] | 8 |  | 8 | 2-6079 | 2-6079 |  |  |  |  | CPLP-NOV |  |  |  |  |
| 2-1621 |  | COMMISION NOTIFICATION | 0d | 2024-03-19 A | 2024-03-19 A | 2-6079 | 100% |  |  |  |  | MBRT BASE |  |  | 0 | 2-1621 | 2-1621 | ZONE-2 | 14 | SIGNALS | PRIME | CPLP-NOV |  | NOTIFY |  |  |
| 2-1622 |  | 30 DAY WAIT FOR SCL TO COMMISION | 3d | 2024-03-19 A | 2024-03-21 A | 2-1621 | 100% |  |  |  |  | MBRT BASE |  |  | 24 | 2-1622 | 2-1622 | ZONE-2 | 14 | SIGNALS | SCL | CPLP-NOV |  | INSPECT |  |  |
| 2-1623 |  | COMM SERVICE, MAD AND 14TH | 1d | 2024-03-22 A | 2024-03-22 A | 2-1622 | 100% |  |  |  |  | MBRT BASE [8 h] | 8 |  | 8 | 2-1623 | 2-1623 | ZONE-2 | 14 | SIGNALS | PRIME | CPLP-NOV |  |  |  |  |
| 2-1615 |  | INST SIGNAL CABINET, MAD AND 14TH | 1d | 2024-04-24 | 2024-04-24 | 2-1504, 2-1623, 2-1470, 2-1613 |  |  |  | -147d | 0d | MBRT BASE [8 h] | 8 |  | 8 | 2-1615 | 2-1615 | ZONE-2 | 14 | SIGNALS | PRIME | signals |  |  | P2 | 147 |
| 2-1617 |  | INST MAST ARMS, MAD AND 14TH | 1d | 2024-04-25 | 2024-04-25 | 2-1992, 2-1615 |  |  |  | -147d | 0d | MBRT BASE [8 h] | 8 |  | 8 | 2-1617 | 2-1617 | ZONE-2 | 14 | SIGNALS | PRIME | signals |  |  | P2 | 147 |
| 2-1618 |  | INST PPB POST, MAD AND 14TH | 2d | 2024-04-26 | 2024-04-29 | 2-1617 |  |  |  | -147d | 0d | MBRT BASE [16 h] | 16 |  | 16 | 2-1618 | 2-1618 | ZONE-2 | 14 | SIGNALS | PRIME | signals |  |  | P2 | 147 |
| 2-1619 |  | INST PEDISTAL, MAD AND 14TH | 2d | 2024-04-30 | 2024-05-01 | 2-1618 |  |  |  | -147d | 0d | MBRT BASE [16 h] | 16 |  | 16 | 2-1619 | 2-1619 | ZONE-2 | 14 | SIGNALS | PRIME | signals |  |  | P2 | 147 |
| 2-1620 |  | INST WIRING, MAD AND 14TH | 2d | 2024-05-02 | 2024-05-03 | 2-1619 |  |  |  | -147d | 0d | MBRT BASE [16 h] | 16 |  | 16 | 2-1620 | 2-1620 | ZONE-2 | 14 | SIGNALS | PRIME | signals |  |  | P2 | 147 |
| 2-1624 |  | NOTIFY SDOT, MAD AND 14TH | 1d | 2024-05-06 | 2024-05-06 | 2-1623, 2-1620 |  |  |  | -147d | 0d | MBRT BASE |  |  | 8 | 2-1624 | 2-1624 | ZONE-2 | 14 | SIGNALS | PRIME | signals |  | NOTIFY | P2 | 147 |
| 2-1625 |  | SDOT INSPECTION, MAD AND 14TH | 5d | 2024-05-07 | 2024-05-13 | 2-1624 |  |  |  | -147d | 0d | MBRT BASE [40 h] | 40 |  | 40 | 2-1625 | 2-1625 | ZONE-2 | 14 | SIGNALS | PRIME | signals |  |  | P2 | 147 |
| 2-1626 |  | COMM SIGNAL, MAD AND 14TH | 1d | 2024-05-14 | 2024-05-14 | 2-1625 |  |  |  | -147d | 0d | MBRT BASE [8 h] | 8 |  | 8 | 2-1626 | 2-1626 | ZONE-2 | 14 | SIGNALS | PRIME | signals |  |  | P2 | 147 |
|  | 7 | **MADISON AND 15TH** |  | 2023-12-11 | 2024-04-30 |  |  |  |  |  |  |  |  |  |  |  |  |  |  |  |  |  |  |  |  |  |
| 2-1997 |  | INST POLES, MAD AND 15TH | 2d | 2023-12-11 A | 2023-12-12 A | 2-1992 | 100% |  |  |  |  | MBRT NEW [16 h] | 16 | 16 | 16 | 2-1997 | 2-1997 | ZONE-2 | 15 | SIGNALS | PRIME |  |  |  |  |  |
| 2-1629 |  | INST SERVICE CABINET, MAD & 15TH | 1d | 2024-03-26 A | 2024-03-26 A | 2-1508, 3-2115 | 100% |  |  |  |  | MBRT BASE [8 h] | 8 |  | 8 | 2-1629 | 2-1629 | ZONE-2 | 15 | SIGNALS | PRIME |  |  |  |  |  |
| 2-7050 |  | SDCI INSPECTION | 1d | 2024-03-27 A | 2024-03-27 A | 2-1629 | 100% |  |  |  |  | MBRT NEW [8 h] | 8 |  | 8 | 2-7050 | 2-7050 |  |  |  |  |  |  |  |  |  |
| 2-7070 |  | SDOT INSPECTION | 1d | 2024-03-28 A | 2024-03-28 A | 2-7050 | 100% |  |  |  |  | MBRT NEW [8 h] | 8 |  | 8 | 2-7070 | 2-7070 |  |  |  |  |  |  |  |  |  |
| 2-7038 |  | SCL INSPECTION REQUEST | 0d | 2024-03-29 A | 2024-03-29 A | 2-7070 | 100% |  |  |  |  | MBRT NEW |  |  | 0 | 2-7038 | 2-7038 | ZONE-1 | BOYLSTON | SIGNALS | PRIME |  | ELECRICAL SUB | NOTIFY |  |  |
| 2-7039 |  | 30 DAY WAIT FOR SCL TO INSPECT, MAD AND BOYLSTON | 2d | 2024-03-29 A | 2024-04-01 A | 2-7038 | 100% |  |  |  |  | MBRT NEW |  |  | 16 | 2-7039 | 2-7039 | ZONE-1 | BOYLSTON | SIGNALS | SCL |  | CITY | INSPECT |  |  |
| 2-7079 |  | SCL INSPECTION | 1d | 2024-04-02 | 2024-04-02 | 2-7039 |  |  |  | -130d | 0d | MBRT NEW [8 h] | 8 |  | 8 | 2-7079 | 2-7079 |  |  |  |  | x |  |  |  |  |
| 2-1635 |  | COMMISION NOTIFICATION | 0d | 2024-04-03 | 2024-04-03 | 2-7079 |  |  |  | -130d | 0d | MBRT BASE |  |  | 0 | 2-1635 | 2-1635 | ZONE-2 | 15 | SIGNALS | PRIME |  |  | NOTIFY |  |  |
| 2-1636 |  | 30 DAY WAIT FOR SCL TO COMMISION | 3d | 2024-04-03 | 2024-04-05 | 2-1635 |  |  |  | -130d | 0d | MBRT BASE |  |  | 24 | 2-1636 | 2-1636 | ZONE-2 | 15 | SIGNALS | SCL |  |  | INSPECT |  |  |
| 2-1637 |  | COMM SERVICE, MAD AND 15TH | 1d | 2024-04-08 | 2024-04-08 | 2-1636, 2-1997 |  |  |  | -130d | 6d | MBRT BASE [8 h] | 8 |  | 8 | 2-1637 | 2-1637 | ZONE-2 | 15 | SIGNALS | PRIME |  |  |  |  |  |
| 2-1628 |  | INST SIGNAL CABINET, MAD AND 15TH | 1d | 2024-04-17 | 2024-04-17 | 2-1637, 3-2116, 2-1607, 3-2389 |  |  |  | -136d | 0d | MBRT BASE [8 h] | 8 |  | 8 | 2-1628 | 2-1628 | ZONE-2 | 15 | SIGNALS | PRIME | signals |  |  | P1 |  |
| 2-1630 |  | INST MAGNOMETERS, MAD AND 15TH | 1d | 2024-04-18 | 2024-04-18 | 2-1628 |  |  |  | -136d | 0d | MBRT BASE [8 h] | 8 |  | 8 | 2-1630 | 2-1630 | ZONE-2 | 15 | SIGNALS | PRIME | signals |  |  | P1 |  |
| 2-1631 |  | INST MAST ARMS, MAD AND 15TH | 1d | 2024-04-19 | 2024-04-19 | 2-1630 |  |  |  | -136d | 0d | MBRT BASE [8 h] | 8 |  | 8 | 2-1631 | 2-1631 | ZONE-2 | 15 | SIGNALS | PRIME | signals |  |  | P1 |  |
| 2-1632 |  | INST PPB POST, MAD AND 15TH | 1d | 2024-04-22 | 2024-04-22 | 2-1631 |  |  |  | -136d | 0d | MBRT BASE [8 h] | 8 |  | 8 | 2-1632 | 2-1632 | ZONE-2 | 15 | SIGNALS | PRIME | signals |  |  | P1 |  |
| 2-1633 |  | INST PEDISTAL, MAD AND 15TH | 1d | 2024-04-23 | 2024-04-23 | 2-1632 |  |  |  | -136d | 0d | MBRT BASE [8 h] | 8 |  | 8 | 2-1633 | 2-1633 | ZONE-2 | 15 | SIGNALS | PRIME | signals |  |  | P1 |  |
| 2-1634 |  | INST WIRING, MAD AND 15TH | 2d | 2024-04-24 | 2024-04-25 | 2-1633 |  |  |  | -136d | 0d | MBRT BASE [16 h] | 16 |  | 16 | 2-1634 | 2-1634 | ZONE-2 | 15 | SIGNALS | PRIME | signals |  |  | P1 |  |
| 2-1638 |  | NOTIFY SDOT, MAD AND 15TH | 1d | 2024-04-26 | 2024-04-26 | 2-1637, 2-1634 |  |  |  | -136d | 0d | MBRT BASE |  |  | 8 | 2-1638 | 2-1638 | ZONE-2 | 15 | SIGNALS | PRIME | signals |  | NOTIFY | P1 |  |
| 2-1639 |  | SDOT INSPECTION, MAD AND 15TH | 1d | 2024-04-29 | 2024-04-29 | 2-1638 |  |  |  | -136d | 0d | MBRT BASE [8 h] | 8 |  | 8 | 2-1639 | 2-1639 | ZONE-2 | 15 | SIGNALS | PRIME | signals |  |  | P1 |  |
| 2-1640 |  | COMM SIGNAL, MAD AND 15TH | 1d | 2024-04-30 | 2024-04-30 | 2-1639 |  |  |  | -136d | 0d | MBRT BASE [8 h] | 8 |  | 8 | 2-1640 | 2-1640 | ZONE-2 | 15 | SIGNALS | PRIME | signals |  |  | P1 |  |

| ID | WBS | Activity | Duration | Start | Finish | Predecessors | Complete | Remaining | Planned start | Planned finish | Total float | Free float | Resources | Cost | Actual cost | user_text2 | user_number6 | user_text10 | user_text8 | MBRT-ZONE | MBRT-TYPE | MBRT-RESP | ~SELECT | ~SELECT3 | MBRT-LOCATION | MBRT-ACTIVITY |
| --- | --- | --- | --- | --- | --- | --- | --- | --- | --- | --- | --- | --- | --- | --- | --- | --- | --- | --- | --- | --- | --- | --- | --- | --- | --- | --- |
|  | 12 | **LANDSCAPING** |  | 2024-03-28 | 2024-05-17 |  |  |  |  |  |  |  |  |  |  |  |  |  |  |  |  |  |  |  |  |  |
| 2-1543 |  | INST POUROUS PAVMENT, POROUS PAVMENT | 10d | 2024-03-28 A | 2024-04-15 | 2-1504 |  | 10d | 2024-03-28 | 2024-04-10 | -70d | 77d | MBRT BASE [80 h] | 80 |  | COM | 80 | 2-1543 | 2-1543 | ZONE-2 |  |  |  |  |  |  |
| 2-1643 |  | INSTALL TREES, LANDSCAPING & SHRUBS | 20d | 2024-04-22 | 2024-05-17 | 2-1537 |  |  |  |  | -94d | 53d | MBRT BASE [160 h] | 160 |  |  | 160 | 2-1643 | 2-1643 |  |  |  |  |  |  |  |
|  | 14 | **ITS WIRING** |  | 2024-05-01 | 2024-05-07 |  |  |  |  |  |  |  |  |  |  |  |  |  |  |  |  |  |  |  |  |  |
| 2-1642 |  | INST WIRING, ITS, ITS WIRING | 5d | 2024-05-01 | 2024-05-07 | 2-1640 |  |  |  |  | -86d | 61d | MBRT BASE [40 h] | 40 |  | ELECRICAL SUB | 40 | 2-1642 | 2-1642 | ZONE-2 | ITS | PRIME |  |  |  |  |
|  | 15 | **LIGHTING** |  | 2023-12-26 | 2024-07-26 |  |  |  |  |  |  |  |  |  |  |  |  |  |  |  |  |  |  |  |  |  |
|  | 1 | **BROADWAY (SCHEMATIC 12)** |  | 2024-06-04 | 2024-07-26 |  |  |  |  |  |  |  |  |  |  |  |  |  |  |  |  |  |  |  |  |  |
| 2-1645 |  | INST POLES, BROADWAY | 15d | 2024-06-04 | 2024-06-24 | 2-1549 |  |  |  |  | -147d | 0d | MBRT BASE [120 h] | 120 |  | ELECRICAL SUB | 120 | 2-1645 | 2-1645 | ZONE-2 | LIGHTING | PRIME | CPLP-SEP | 147 | BROADWAY |  |
| 2-1646 |  | INST WIRING, BROADWAY | 10d | 2024-06-25 | 2024-07-08 | 2-1645, 2-1552 |  |  |  |  | -147d | 0d | MBRT BASE [80 h] | 80 |  | ELECRICAL SUB | 80 | 2-1646 | 2-1646 | ZONE-2 | LIGHTING | PRIME |  | 147 | BROADWAY |  |
| 2-1647 |  | NOTIFY SCL, BROADWAY | 0d | 2024-07-09 | 2024-07-09 | 2-1646 |  |  |  |  | -147d | 0d | MBRT BASE |  |  | ELECRICAL SUB | 0 | 2-1647 | 2-1647 | ZONE-2 | LIGHTING | PRIME |  | 147 | BROADWAY | NOTIFY |
| 2-1648 |  | SCL Lighting Final Inspection, BROADWAY | 2d | 2024-07-09 | 2024-07-10 | 2-1647 |  |  |  |  | -147d | 0d | MBRT BASE [16 h] | 16 |  | CITY | 16 | 2-1648 | 2-1648 | ZONE-2 | LIGHTING | SCL |  | 147 | BROADWAY | INSPECT |
| 2-1649 |  | COMM SERVICE,BROADWAY | 1d | 2024-07-11 | 2024-07-11 | 2-1648 |  |  |  |  | -147d | 0d | MBRT BASE [8 h] | 8 |  | CITY | 8 | 2-1649 | 2-1649 | ZONE-2 | LIGHTING | PRIME |  | 147 | BROADWAY |  |
| 2-2127 |  | NOTIFY SCL, BROADWAY | 0d | 2024-07-12 | 2024-07-12 | 2-1649 |  |  |  |  | -147d | 0d | MBRT NEW |  |  | ELECRICAL SUB | 0 | 2-2127 | 2-2127 | ZONE-2 | LIGHTING | PRIME |  | 147 | BROADWAY | NOTIFY |
| 2-2132 |  | SCL Commissioning Inspection, BROADWAY | 10d | 2024-07-12 | 2024-07-25 | 2-2127 |  |  |  |  | -147d | 0d | MBRT NEW |  |  | CITY | 80 | 2-2132 | 2-2132 | ZONE-2 | LIGHTING | SCL |  | 147 | BROADWAY | INSPECT |
| 2-2137 |  | COMM LIGHTING, BROADWAY | 1d | 2024-07-26 | 2024-07-26 | 2-2132 |  |  |  |  | -147d | 0d | MBRT NEW [8 h] | 8 |  | CITY | 8 | 2-2137 | 2-2137 | ZONE-2 | LIGHTING | PRIME |  | 147 | BROADWAY |  |
|  | 2 | **10TH (SCHEMATIC 13)** |  | 2023-12-26 | 2024-01-24 |  |  |  |  |  |  |  |  |  |  |  |  |  |  |  |  |  |  |  |  |  |
| 2-2002 |  | INST POLES, 10TH | 18d | 2023-12-26 A | 2023-12-26 A | 2-1562 | 100% |  | 2024-03-26 | 2024-04-18 |  |  | MBRT NEW [144 h] | 144 | 8 | ELECRICAL SUB | 8 | 2-2002 | 2-2002 | ZONE-2 | LIGHTING | PRIME | CPLP-SEP |  | BROADWAY |  |
| 2-2007 |  | INST WIRING, 10TH | 10d | 2023-12-26 A | 2024-01-09 A | 2-2002, 2-1565 | 100% |  | 2024-04-19 | 2024-05-02 |  |  | MBRT NEW [80 h] | 80 | 80 | ELECRICAL SUB | 80 | 2-2007 | 2-2007 | ZONE-2 | LIGHTING | PRIME |  |  | BROADWAY |  |
| 2-2012 |  | NOTIFY SCL, 10TH | 0d | 2024-01-11 A | 2024-01-11 A | 2-2007 | 100% |  | 2024-05-03 | 2024-05-03 |  |  | MBRT NEW |  |  | ELECRICAL SUB | 0 | 2-2012 | 2-2012 | ZONE-2 | LIGHTING | PRIME |  |  | BROADWAY | NOTIFY |
| 2-2017 |  | SCL Lighting Final Inspection, 10TH | 10d | 2024-01-11 A | 2024-01-18 A | 2-2012 | 100% |  | 2024-05-03 | 2024-05-16 |  |  | MBRT NEW [80 h] | 80 | 40 | CITY | 40 | 2-2017 | 2-2017 | ZONE-2 | LIGHTING | SCL |  |  | BROADWAY | INSPECT |
| 2-2022 |  | COMM SERVICE, 10TH | 1d | 2024-01-19 A | 2024-01-19 A | 2-2017 | 100% |  | 2024-05-17 | 2024-05-17 |  |  | MBRT NEW [8 h] | 8 | 8 | CITY | 8 | 2-2022 | 2-2022 | ZONE-2 | LIGHTING | PRIME |  |  | BROADWAY |  |
| 2-2142 |  | NOTIFY SCL, 10TH | 0d | 2024-01-19 A | 2024-01-19 A | 2-2022 | 100% |  | 2024-05-20 | 2024-05-20 |  |  | MBRT NEW |  |  | ELECRICAL SUB | 0 | 2-2142 | 2-2142 | ZONE-2 | LIGHTING | PRIME |  |  | BROADWAY | NOTIFY |
| 2-2147 |  | SCL Commissioning Inspection, 10TH | 10d | 2024-01-22 A | 2024-01-23 A | 2-2142 | 100% |  | 2024-05-20 | 2024-06-03 |  |  | MBRT NEW [80 h] | 80 | 16 | CITY | 16 | 2-2147 | 2-2147 | ZONE-2 | LIGHTING | SCL |  |  | BROADWAY | INSPECT |
| 2-2152 |  | COMM LIGHTING, 10TH | 1d | 2024-01-24 A | 2024-01-24 A | 2-2147 | 100% |  | 2024-06-04 | 2024-06-04 |  |  | MBRT NEW [8 h] | 8 | 8 | CITY | 8 | 2-2152 | 2-2152 | ZONE-2 | LIGHTING | PRIME |  |  | BROADWAY |  |

| ID | WBS | Activity | Duration | Start | Finish | Predecessors | Complete | Remaining | Planned start | Planned finish | Total float | Free float | Resources | Cost | Actual cost | ~SELECT | user_text2 | user_number6 | user_text10 | user_text8 | MBRT-ZONE | MBRT-LOCATION | MBRT-TYPE | MBRT-RESP | MBRT-ACTIVITY |
| --- | --- | --- | --- | --- | --- | --- | --- | --- | --- | --- | --- | --- | --- | --- | --- | --- | --- | --- | --- | --- | --- | --- | --- | --- | --- |
|  | 3 | **11TH (SCHEMATIC 14)** |  | 2023-12-27 | 2024-04-15 |  |  |  |  |  |  |  |  |  |  |  |  |  |  |  |  |  |  |  |  |
| 2-2027 |  | INST POLES, 11TH | 18d | 2023-12-27 A | 2023-12-27 A | 2-2217, 2-2002 | 100% |  | 2024-04-19 | 2024-05-14 |  |  | MBRT NEW [144 h] | 144 | 8 | CPLP-SEP | ELECRICAL SUB | 8 | 2-2027 | 2-2027 | ZONE-2 | BROADWAY | LIGHTING | PRIME |  |
| 2-2632 |  | DELAY AWAITING SCL TO INSPECT DUCT BANK | 0d | 2024-01-02 A | 2024-02-02 A | 2-2027 | 100% |  | 2023-12-11 | 2023-12-11 |  |  | MBRT NEW |  |  |  |  | 184 |  |  |  |  |  |  |  |
| 2-2032 |  | INST WIRING, 11TH | 10d | 2024-02-05 A | 2024-02-28 A | 2-2027, 2-1578, 2-2632 | 100% |  | 2024-05-15 | 2024-05-29 |  |  | MBRT NEW [80 h] | 80 | 136 | CPLP-SEP | ELECRICAL SUB | 136 | 2-2032 | 2-2032 | ZONE-2 | BROADWAY | LIGHTING | PRIME |  |
| 2-2037 |  | NOTIFY SCL, 11TH | 1d | 2024-02-28 A | 2024-02-28 A | 2-2032 | 100% |  | 2024-03-11 | 2024-03-11 |  |  | MBRT NEW [8 h] | 8 | 8 | CPLP-SEP | ELECRICAL SUB | 8 | 2-2037 | 2-2037 | ZONE-2 | BROADWAY | LIGHTING | PRIME | NOTIFY |
| 2-2042 |  | SCL Lighting Final Inspection, 11TH | 10d | 2024-02-29 A | 2024-03-12 A | 2-2037 | 100% |  | 2024-03-11 | 2024-03-22 |  |  | MBRT NEW [80 h] | 80 | 80 | CPLP-SEP | CITY | 16 | 2-2042 | 2-2042 | ZONE-2 | BROADWAY | LIGHTING | SCL | INSPECT |
| 2-2047 |  | COMM SERVICE, 11TH | 1d | 2024-03-13 A | 2024-03-27 A | 2-2042 | 100% |  | 2024-03-14 | 2024-03-14 |  |  | MBRT NEW [8 h] | 8 |  | CPLP-SEP | CITY | 8 | 2-2047 | 2-2047 | ZONE-2 | BROADWAY | LIGHTING | PRIME |  |
| 2-2157 |  | NOTIFY SCL, 11TH | 0d | 2024-03-28 A | 2024-03-28 A | 2-2047 | 100% |  | 2024-03-15 | 2024-03-15 |  |  | MBRT NEW |  |  | CPLP-SEP | ELECRICAL SUB | 0 | 2-2157 | 2-2157 | ZONE-2 | BROADWAY | LIGHTING | PRIME | NOTIFY |
| 2-2162 |  | SCL Commissioning Inspection, 11TH - DELAY | 10d | 2024-03-29 A | 2024-04-12 | 2-2157 |  | 9d | 2024-03-15 | 2024-03-28 | -92d | 0d | MBRT NEW |  |  | CPLP-SEP | CITY | 80 | 2-2162 | 2-2162 | ZONE-2 | BROADWAY | LIGHTING | SCL | INSPECT |
| 2-2167 |  | COMM LIGHTING, 11TH | 1d | 2024-04-15 | 2024-04-15 | 2-2162 |  |  |  |  | -92d | 0d | MBRT NEW [8 h] | 8 |  | CPLP-SEP | CITY | 8 | 2-2167 | 2-2167 | ZONE-2 | BROADWAY | LIGHTING | PRIME |  |
|  | 4 | **12TH (SCHEMATIC 15)** |  | 2023-12-26 | 2024-03-18 |  |  |  |  |  |  |  |  |  |  |  |  |  |  |  |  |  |  |  |  |
| 2-2052 |  | INST POLES, 12TH | 18d | 2023-12-26 A | 2023-12-26 A | 2-2002 SS | 100% |  | 2024-02-13 | 2024-03-08 |  |  | MBRT NEW [144 h] | 144 | 8 |  | ELECRICAL SUB | 8 | 2-2052 | 2-2052 | ZONE-2 | BROADWAY | LIGHTING | PRIME |  |
| 2-2057 |  | INST WIRING, 12TH | 10d | 2023-12-26 A | 2024-03-08 A | 2-2052 | 100% |  | 2024-03-11 | 2024-03-22 |  |  | MBRT NEW [80 h] | 80 | 80 |  | ELECRICAL SUB | 368 | 2-2057 | 2-2057 | ZONE-2 | BROADWAY | LIGHTING | PRIME |  |
| 2-2062 |  | NOTIFY SCL, 12TH | 1d | 2024-03-11 A | 2024-03-11 A | 2-2057 | 100% |  | 2024-02-28 | 2024-02-28 |  |  | MBRT NEW [8 h] | 8 | 8 |  | ELECRICAL SUB | 8 | 2-2062 | 2-2062 | ZONE-2 | BROADWAY | LIGHTING | PRIME | NOTIFY |
| 2-2067 |  | SCL Lighting Final Inspection, 12TH | 2d | 2024-03-12 A | 2024-03-12 A | 2-2062 | 100% |  | 2024-03-04 | 2024-03-05 |  |  | MBRT NEW [16 h] | 16 |  |  | CITY | 16 | 2-2067 | 2-2067 | ZONE-2 | BROADWAY | LIGHTING | SCL | INSPECT |
| 2-2072 |  | COMM SERVICE, 12TH | 1d | 2024-03-13 A | 2024-03-13 A | 2-2067 | 100% |  | 2024-03-06 | 2024-03-06 |  |  | MBRT NEW [8 h] | 8 |  |  | CITY | 8 | 2-2072 | 2-2072 | ZONE-2 | BROADWAY | LIGHTING | PRIME |  |
| 2-2172 |  | NOTIFY SCL, 12TH | 0d | 2024-03-14 A | 2024-03-14 A | 2-2072 | 100% |  | 2024-03-07 | 2024-03-07 |  |  | MBRT NEW |  |  |  | ELECRICAL SUB | 0 | 2-2172 | 2-2172 | ZONE-2 | BROADWAY | LIGHTING | PRIME | NOTIFY |
| 2-2177 |  | SCL Commissioning Inspection, 12TH - DELAY | 10d | 2024-03-15 A | 2024-03-15 A | 2-2172 | 100% |  | 2024-03-07 | 2024-03-20 |  |  | MBRT NEW |  |  |  | CITY | 80 | 2-2177 | 2-2177 | ZONE-2 | BROADWAY | LIGHTING | SCL | INSPECT |
| 2-2182 |  | COMM LIGHTING, 12TH | 1d | 2024-03-18 A | 2024-03-18 A | 2-2177 | 100% |  | 2024-04-16 | 2024-04-16 |  |  | MBRT NEW [8 h] | 8 |  |  | CITY | 8 | 2-2182 | 2-2182 | ZONE-2 | BROADWAY | LIGHTING | PRIME |  |
|  | 5 | **13TH (SCHEMATIC 16)** |  | 2024-04-02 | 2024-05-30 |  |  |  |  |  |  |  |  |  |  |  |  |  |  |  |  |  |  |  |  |
| 2-2077 |  | INST POLES, 13TH | 18d | 2024-04-02 | 2024-04-25 | 2-1603 |  |  |  |  | -124d | 0d | MBRT NEW [144 h] | 144 |  |  | ELECRICAL SUB | 144 | 2-2077 | 2-2077 | ZONE-2 | BROADWAY | LIGHTING | PRIME |  |
| 2-2082 |  | INST WIRING, 13TH | 10d | 2024-04-26 | 2024-05-09 | 2-2077, 2-1607 |  |  |  |  | -124d | 0d | MBRT NEW [80 h] | 80 |  |  | ELECRICAL SUB | 80 | 2-2082 | 2-2082 | ZONE-2 | BROADWAY | LIGHTING | PRIME |  |
| 2-2087 |  | NOTIFY SCL, 13TH | 0d | 2024-05-10 | 2024-05-10 | 2-2082 |  |  |  |  | -124d | 0d | MBRT NEW |  |  |  | ELECRICAL SUB | 0 | 2-2087 | 2-2087 | ZONE-2 | BROADWAY | LIGHTING | PRIME | NOTIFY |
| 2-2092 |  | SCL Lighting Final Inspection, 13TH | 2d | 2024-05-10 | 2024-05-13 | 2-2087 |  |  |  |  | -124d | 0d | MBRT NEW [16 h] | 16 |  |  | CITY | 16 | 2-2092 | 2-2092 | ZONE-2 | BROADWAY | LIGHTING | SCL | INSPECT |
| 2-2097 |  | COMM SERVICE, 13TH | 1d | 2024-05-14 | 2024-05-14 | 2-2092 |  |  |  |  | -124d | 0d | MBRT NEW [8 h] | 8 |  |  | CITY | 8 | 2-2097 | 2-2097 | ZONE-2 | BROADWAY | LIGHTING | PRIME |  |
| 2-2187 |  | NOTIFY SCL, 13TH | 0d | 2024-05-15 | 2024-05-15 | 2-2097 |  |  |  |  | -124d | 0d | MBRT NEW |  |  |  | ELECRICAL SUB | 0 | 2-2187 | 2-2187 | ZONE-2 | BROADWAY | LIGHTING | PRIME | NOTIFY |
| 2-2192 |  | SCL Commissioning Inspection, 13TH | 10d | 2024-05-15 | 2024-05-29 | 2-2187 |  |  |  |  | -124d | 0d | MBRT NEW |  |  |  | CITY | 80 | 2-2192 | 2-2192 | ZONE-2 | BROADWAY | LIGHTING | SCL | INSPECT |
| 2-2197 |  | COMM LIGHTING, 13TH | 1d | 2024-05-30 | 2024-05-30 | 2-2192 |  |  |  |  | -124d | 0d | MBRT NEW [8 h] | 8 |  |  | CITY | 8 | 2-2197 | 2-2197 | ZONE-2 | BROADWAY | LIGHTING | PRIME |  |

| ID | WBS | Activity | Duration | Start | Finish | Predecessors | Total float | Free float | Resources | Cost | ~SELECT | user_text2 | user_number6 | user_text10 | user_text8 | MBRT-ZONE | MBRT-LOCATION | MBRT-TYPE | MBRT-RESP | MBRT-ACTIVITY | MBRT-SIDE | MBRT-SCOPE | ~SELECT3 |
| --- | --- | --- | --- | --- | --- | --- | --- | --- | --- | --- | --- | --- | --- | --- | --- | --- | --- | --- | --- | --- | --- | --- | --- |
|  | 6 | **14TH (SCHEMATIC 17)** |  | 2024-04-25 | 2024-06-07 |  |  |  |  |  |  |  |  |  |  |  |  |  |  |  |  |  |  |
| 2-2102 |  | INST POLES, 14TH | 1d | 2024-04-25 | 2024-04-25 | 2-1617 SS | -127d | 6d | MBRT NEW [8 h] | 8 | CPLP-NOV | ELECRICAL SUB | 8 | 2-2102 | 2-2102 | ZONE-2 | BROADWAY | LIGHTING | PRIME |  |  |  |  |
| 2-2107 |  | INST WIRING, 14TH | 10d | 2024-05-06 | 2024-05-17 | 2-2102, 2-1620 | -133d | 0d | MBRT NEW [80 h] | 80 | CPLP-NOV | ELECRICAL SUB | 80 | 2-2107 | 2-2107 | ZONE-2 | BROADWAY | LIGHTING | PRIME |  |  |  |  |
| 2-2112 |  | NOTIFY SCL, 14TH | 0d | 2024-05-20 | 2024-05-20 | 2-2107 | -133d | 0d | MBRT NEW |  | CPLP-NOV | ELECRICAL SUB | 0 | 2-2112 | 2-2112 | ZONE-2 | BROADWAY | LIGHTING | PRIME | NOTIFY |  |  |  |
| 2-2117 |  | SCL Lighting Final Inspection, 14TH | 2d | 2024-05-20 | 2024-05-21 | 2-2112 | -133d | 0d | MBRT NEW [16 h] | 16 | CPLP-NOV | CITY | 16 | 2-2117 | 2-2117 | ZONE-2 | BROADWAY | LIGHTING | SCL | INSPECT |  |  |  |
| 2-2122 |  | COMM SERVICE, 14TH | 1d | 2024-05-22 | 2024-05-22 | 2-2117 | -133d | 0d | MBRT NEW [8 h] | 8 | CPLP-NOV | CITY | 8 | 2-2122 | 2-2122 | ZONE-2 | BROADWAY | LIGHTING | PRIME |  |  |  |  |
| 2-2202 |  | NOTIFY SCL, 14TH | 0d | 2024-05-23 | 2024-05-23 | 2-2122 | -133d | 0d | MBRT NEW |  | CPLP-NOV | ELECRICAL SUB | 0 | 2-2202 | 2-2202 | ZONE-2 | BROADWAY | LIGHTING | PRIME | NOTIFY |  |  |  |
| 2-2207 |  | SCL Commissioning Inspection, 14TH | 10d | 2024-05-23 | 2024-06-06 | 2-2202 | -133d | 0d | MBRT NEW |  | CPLP-NOV | CITY | 80 | 2-2207 | 2-2207 | ZONE-2 | BROADWAY | LIGHTING | SCL | INSPECT |  |  |  |
| 2-2212 |  | COMM LIGHTING, 14TH | 1d | 2024-06-07 | 2024-06-07 | 2-2207 | -133d | 0d | MBRT NEW [8 h] | 8 | CPLP-NOV | CITY | 8 | 2-2212 | 2-2212 | ZONE-2 | BROADWAY | LIGHTING | PRIME |  |  |  |  |
|  | 19 | **WORK TO COMPLETE AFTER SIGNAL/LIGHTING COMMISSIONING** |  | 2024-03-27 | 2024-08-01 |  |  |  |  |  |  |  |  |  |  |  |  |  |  |  |  |  |  |
|  | 27 | **BROADWAY** |  | 2024-06-10 | 2024-07-31 |  |  |  |  |  |  |  |  |  |  |  |  |  |  |  |  |  |  |
| 2-2222 |  | KCM RELOCATE OCS LINE | 10d | 2024-06-10 | 2024-06-21 | 2-1552 | -122d | 25d | MBRT ADDED [80 h] | 80 |  | EA3 | 80 | 2-2222 | 2-2222 | ZONE-2 | UNION | SIDEWALKS |  |  | SOUTH |  |  |
| 2-2232 |  | REMOVE POLES | 2d | 2024-06-13 | 2024-06-14 | 2-1558 | -121d | 0d | MBRT ADDED [16 h] | 16 |  | COM | 16 | 2-2232 | 2-2232 | ZONE-2 | UNION | SIDEWALKS |  |  | SOUTH | CURB |  |
| 2-2237 |  | REMOVE CABINET | 1d | 2024-06-17 | 2024-06-17 | 2-2232 | -121d | 0d | MBRT ADDED [8 h] | 8 |  | COM | 8 | 2-2237 | 2-2237 | ZONE-2 | UNION | SIDEWALKS |  |  | SOUTH |  |  |
| 2-2242 |  | REMOVE FOUNDATIONS | 2d | 2024-06-18 | 2024-06-19 | 2-2237 | -121d | 0d | MBRT ADDED [16 h] | 16 |  | COM | 16 | 2-2242 | 2-2242 | ZONE-2 | UNION | SIDEWALKS |  |  | SOUTH |  |  |
| 2-2247 |  | GRADE SIDEWALK | 1d | 2024-06-20 | 2024-06-20 | 2-2242 | -121d | 0d | MBRT ADDED [8 h] | 8 |  | COM | 8 | 2-2247 | 2-2247 | ZONE-2 | UNION | SIDEWALKS |  |  | SOUTH |  |  |
| 2-2252 |  | CURB RAMP | 2d | 2024-06-21 | 2024-06-24 | 2-2247 | -121d | 26d | MBRT ADDED [16 h] | 16 |  | COM | 16 | 2-2252 | 2-2252 | ZONE-2 | UNION | SIDEWALKS |  |  | SOUTH |  |  |
| 2-2227 |  | REMOVE TEMP LIGHTING | 2d | 2024-07-29 | 2024-07-30 | 2-2222, 2-2137 | -147d | 0d | MBRT ADDED [16 h] | 16 |  | EA3 | 16 | 2-2227 | 2-2227 | ZONE-2 | UNION | SIDEWALKS |  | GRADESW | SOUTH | SIDEWALKS | 147 |
| 2-2257 |  | SIDEWALKS | 1d | 2024-07-31 | 2024-07-31 | 2-2227, 2-2252 | -147d | 0d | MBRT ADDED [8 h] | 8 |  | COM | 8 | 2-2257 | 2-2257 | ZONE-2 | UNION | SIDEWALKS |  |  | SOUTH |  | 147 |
|  | 1 | **MADISON AND 11TH** |  | 2024-04-16 | 2024-05-13 |  |  |  |  |  |  |  |  |  |  |  |  |  |  |  |  |  |  |
| 2-2267 |  | REMOVE TEMP LIGHTING | 2d | 2024-04-16 | 2024-04-17 | 2-2167 | -92d | 0d | MBRT ADDED [16 h] | 16 | CPLP-SEP | EA3 | 16 | 2-2267 | 2-2267 | ZONE-2 | UNION | SIDEWALKS |  | GRADESW | SOUTH | SIDEWALKS |  |
| 2-2272 |  | REMOVE POLES | 2d | 2024-04-18 | 2024-04-19 | 2-2267, 2-1584 | -92d | 0d | MBRT ADDED [16 h] | 16 | CPLP-SEP | COM | 16 | 2-2272 | 2-2272 | ZONE-2 | UNION | SIDEWALKS |  |  | SOUTH | CURB |  |
| 2-2277 |  | REMOVE CABINET | 1d | 2024-04-22 | 2024-04-22 | 2-2272 | -92d | 0d | MBRT ADDED [8 h] | 8 | CPLP-SEP | COM | 8 | 2-2277 | 2-2277 | ZONE-2 | UNION | SIDEWALKS |  |  | SOUTH |  |  |
| 2-2282 |  | REMOVE FOUNDATIONS 1ST CORNER | 1d | 2024-04-23 | 2024-04-23 | 2-2277 | -92d | 0d | MBRT ADDED [8 h] | 8 | CPLP-SEP | COM | 8 | 2-2282 | 2-2282 | ZONE-2 | UNION | SIDEWALKS |  |  | SOUTH |  |  |
| 2-2287 |  | GRADE SIDEWALK 1ST CORNER | 1d | 2024-04-24 | 2024-04-24 | 2-2282 | -92d | 0d | MBRT ADDED [8 h] | 8 | CPLP-SEP | COM | 8 | 2-2287 | 2-2287 | ZONE-2 | UNION | SIDEWALKS |  |  | SOUTH |  |  |
| 2-2292 |  | CURB RAMPS 1ST CORNER | 2d | 2024-04-25 | 2024-04-26 | 2-2287 | -92d | 0d | MBRT ADDED [16 h] | 16 | CPLP-SEP | COM | 16 | 2-2292 | 2-2292 | ZONE-2 | UNION | SIDEWALKS |  |  | SOUTH |  |  |
| 2-2297 |  | SIDEWALKS 1ST CORNER | 1d | 2024-04-29 | 2024-04-29 | 2-2292 | -92d | 0d | MBRT ADDED [8 h] | 8 | CPLP-SEP | COM | 8 | 2-2297 | 2-2297 | ZONE-2 | UNION | SIDEWALKS |  |  | SOUTH |  |  |
| 2-2302 |  | REMOVE FOUNDATIONS 2ND CORNER | 1d | 2024-04-30 | 2024-04-30 | 2-2297 | -92d | 0d | MBRT ADDED [8 h] | 8 | CPLP-SEP | COM | 8 | 2-2302 | 2-2302 | ZONE-2 | UNION | SIDEWALKS |  |  | SOUTH |  |  |
| 2-2307 |  | GRADE SIDEWALKS 2ND CORNER | 1d | 2024-05-01 | 2024-05-01 | 2-2302 | -92d | 0d | MBRT ADDED [8 h] | 8 | CPLP-SEP | COM | 8 | 2-2307 | 2-2307 | ZONE-2 | UNION | SIDEWALKS |  |  | SOUTH |  |  |
| 2-2312 |  | CURB RAMPS 2ND CORNER | 2d | 2024-05-02 | 2024-05-03 | 2-2307 | -92d | 0d | MBRT ADDED [16 h] | 16 | CPLP-SEP | COM | 16 | 2-2312 | 2-2312 | ZONE-2 | UNION | SIDEWALKS |  |  | SOUTH |  |  |
| 2-2317 |  | SIDEWALKS 2ND CORNER | 1d | 2024-05-06 | 2024-05-06 | 2-2312 | -92d | 0d | MBRT ADDED [8 h] | 8 | CPLP-SEP | COM | 8 | 2-2317 | 2-2317 | ZONE-2 | UNION | SIDEWALKS |  |  | SOUTH |  |  |
| 2-2322 |  | REMOVE FOUNDATIONS 3RD CORNER | 1d | 2024-05-07 | 2024-05-07 | 2-2317 | -92d | 0d | MBRT ADDED [8 h] | 8 | CPLP-SEP | COM | 8 | 2-2322 | 2-2322 | ZONE-2 | UNION | SIDEWALKS |  |  | SOUTH |  |  |
| 2-2327 |  | GRADE SIDEWALKS 3RD CORNER | 1d | 2024-05-08 | 2024-05-08 | 2-2322 | -92d | 0d | MBRT ADDED [8 h] | 8 | CPLP-SEP | COM | 8 | 2-2327 | 2-2327 | ZONE-2 | UNION | SIDEWALKS |  |  | SOUTH |  |  |
| 2-2332 |  | CURB RAMPS 3RD CORNER | 2d | 2024-05-09 | 2024-05-10 | 2-2327 | -92d | 0d | MBRT ADDED [16 h] | 16 | CPLP-SEP | COM | 16 | 2-2332 | 2-2332 | ZONE-2 | UNION | SIDEWALKS |  |  | SOUTH |  |  |
| 2-2337 |  | SIDEWALKS 3RD CORNER | 1d | 2024-05-13 | 2024-05-13 | 2-2332 | -92d | 0d | MBRT ADDED [8 h] | 8 | CPLP-SEP | COM | 8 | 2-2337 | 2-2337 | ZONE-2 | UNION | SIDEWALKS |  |  | SOUTH |  |  |

| ID | WBS | Activity | Duration | Start | Finish | Predecessors | Complete | Planned start | Planned finish | Total float | Free float | Resources | Cost | user_text2 | user_number6 | user_text10 | user_text8 | MBRT-ZONE | MBRT-LOCATION | MBRT-SCOPE | MBRT-TYPE | MBRT-ACTIVITY | MBRT-SIDE | ~SELECT3 |
| --- | --- | --- | --- | --- | --- | --- | --- | --- | --- | --- | --- | --- | --- | --- | --- | --- | --- | --- | --- | --- | --- | --- | --- | --- |
|  | 2 | **MADISON AND 12TH** |  | 2024-03-27 | 2024-05-14 |  |  |  |  |  |  |  |  |  |  |  |  |  |  |  |  |  |  |  |
| 2-2342 |  | REMOVE TEMP LIGHTING | 2d | 2024-03-27 A | 2024-03-28 A | 2-2182 | 100% | 2024-03-22 | 2024-03-25 |  |  | MBRT ADDED [16 h] | 16 | EA3 | 16 | 2-2342 | 2-2342 | ZONE-2 | UNION | SIDEWALKS | SIDEWALKS | GRADESW | SOUTH |  |
| 2-2347 |  | REMOVE POLES | 2d | 2024-03-27 A | 2024-03-28 A | 2-2342, 2-1599 | 100% | 2024-04-04 | 2024-04-05 |  |  | MBRT ADDED [16 h] | 16 | COM | 16 | 2-2347 | 2-2347 | ZONE-2 | UNION | CURB | SIDEWALKS |  | SOUTH |  |
| 2-2352 |  | REMOVE CABINET | 1d | 2024-04-02 | 2024-04-02 | 2-2347 |  |  |  | -82d | 0d | MBRT ADDED [8 h] | 8 | COM | 8 | 2-2352 | 2-2352 | ZONE-2 | UNION |  | SIDEWALKS |  | SOUTH |  |
| 2-2357 |  | REMOVE FOUNDATIONS 1ST CORNER | 1d | 2024-04-03 | 2024-04-03 | 2-2352 |  |  |  | -82d | 0d | MBRT ADDED [8 h] | 8 | COM | 8 | 2-2357 | 2-2357 | ZONE-2 | UNION |  | SIDEWALKS |  | SOUTH |  |
| 2-2362 |  | GRADE SIDEWALK 1ST CORNER | 1d | 2024-04-04 | 2024-04-04 | 2-2357, 2-2342 |  |  |  | -82d | 0d | MBRT ADDED [8 h] | 8 | COM | 8 | 2-2362 | 2-2362 | ZONE-2 | UNION |  | SIDEWALKS |  | SOUTH |  |
| 2-2367 |  | CURB RAMPS 1ST CORNER | 2d | 2024-04-05 | 2024-04-08 | 2-2362 |  |  |  | -82d | 0d | MBRT ADDED [16 h] | 16 | COM | 16 | 2-2367 | 2-2367 | ZONE-2 | UNION |  | SIDEWALKS |  | SOUTH |  |
| 2-2372 |  | SIDEWALKS 1ST CORNER | 1d | 2024-04-09 | 2024-04-09 | 2-2367 |  |  |  | -82d | 0d | MBRT ADDED [8 h] | 8 | COM | 8 | 2-2372 | 2-2372 | ZONE-2 | UNION |  | SIDEWALKS |  | SOUTH |  |
| 2-2377 |  | REMOVE FOUNDATIONS 2ND CORNER | 1d | 2024-04-10 | 2024-04-10 | 2-2372 |  |  |  | -82d | 0d | MBRT ADDED [8 h] | 8 | COM | 8 | 2-2377 | 2-2377 | ZONE-2 | UNION |  | SIDEWALKS |  | SOUTH |  |
| 2-2382 |  | GRADE SIDEWALKS 2ND CORNER | 1d | 2024-04-11 | 2024-04-11 | 2-2377 |  |  |  | -82d | 0d | MBRT ADDED [8 h] | 8 | COM | 8 | 2-2382 | 2-2382 | ZONE-2 | UNION |  | SIDEWALKS |  | SOUTH |  |
| 2-2387 |  | CURB RAMPS 2ND CORNER | 2d | 2024-04-12 | 2024-04-15 | 2-2382 |  |  |  | -82d | 0d | MBRT ADDED [16 h] | 16 | COM | 16 | 2-2387 | 2-2387 | ZONE-2 | UNION |  | SIDEWALKS |  | SOUTH |  |
| 2-2392 |  | SIDEWALKS 2ND CORNER | 1d | 2024-04-16 | 2024-04-16 | 2-2387 |  |  |  | -82d | 0d | MBRT ADDED [8 h] | 8 | COM | 8 | 2-2392 | 2-2392 | ZONE-2 | UNION |  | SIDEWALKS |  | SOUTH |  |
| 2-2397 |  | REMOVE FOUNDATIONS 3RD CORNER | 1d | 2024-04-17 | 2024-04-17 | 2-2392 |  |  |  | -82d | 0d | MBRT ADDED [8 h] | 8 | COM | 8 | 2-2397 | 2-2397 | ZONE-2 | UNION |  | SIDEWALKS |  | SOUTH |  |
| 2-2402 |  | GRADE SIDEWALKS 3RD CORNER | 1d | 2024-04-18 | 2024-04-18 | 2-2397 |  |  |  | -82d | 0d | MBRT ADDED [8 h] | 8 | COM | 8 | 2-2402 | 2-2402 | ZONE-2 | UNION |  | SIDEWALKS |  | SOUTH |  |
| 2-2407 |  | CURB RAMPS 3RD CORNER | 2d | 2024-04-19 | 2024-04-22 | 2-2402 |  |  |  | -82d | 0d | MBRT ADDED [16 h] | 16 | COM | 16 | 2-2407 | 2-2407 | ZONE-2 | UNION |  | SIDEWALKS |  | SOUTH |  |
| 2-2412 |  | SIDEWALKS 3RD CORNER | 1d | 2024-04-23 | 2024-04-23 | 2-2407 |  |  |  | -82d | 0d | MBRT ADDED [8 h] | 8 | COM | 8 | 2-2412 | 2-2412 | ZONE-2 | UNION |  | SIDEWALKS |  | SOUTH |  |
| 2-2417 |  | REMOVE FOUNDATIONS 4TH CORNER | 1d | 2024-04-24 | 2024-04-24 | 2-2412 |  |  |  | -82d | 0d | MBRT ADDED [8 h] | 8 | COM | 8 | 2-2417 | 2-2417 | ZONE-2 | UNION |  | SIDEWALKS |  | SOUTH |  |
| 2-2422 |  | GRADE SIDEWALKS 4TH CORNER | 1d | 2024-04-25 | 2024-04-25 | 2-2417 |  |  |  | -82d | 0d | MBRT ADDED [8 h] | 8 | COM | 8 | 2-2422 | 2-2422 | ZONE-2 | UNION |  | SIDEWALKS |  | SOUTH |  |
| 2-2427 |  | CURB RAMPS 4TH CORNER | 2d | 2024-04-26 | 2024-04-29 | 2-2422 |  |  |  | -82d | 10d | MBRT ADDED [16 h] | 16 | COM | 16 | 2-2427 | 2-2427 | ZONE-2 | UNION |  | SIDEWALKS |  | SOUTH |  |
| 2-2432 |  | SIDEWALKS 4TH CORNER | 1d | 2024-05-14 | 2024-05-14 | 2-2427, 2-2337 |  |  |  | -92d | 55d | MBRT ADDED [8 h] | 8 | COM | 8 | 2-2432 | 2-2432 | ZONE-2 | UNION |  | SIDEWALKS |  | SOUTH |  |
|  | 3 | **MADISON AND 13TH** |  | 2024-04-24 | 2024-08-01 |  |  |  |  |  |  |  |  |  |  |  |  |  |  |  |  |  |  |  |
| 2-2442 |  | REMOVE POLES | 2d | 2024-04-24 | 2024-04-25 | 2-1613 |  |  |  | -99d | 0d | MBRT ADDED [16 h] | 16 | COM | 16 | 2-2442 | 2-2442 | ZONE-2 | UNION | CURB | SIDEWALKS |  | SOUTH |  |
| 2-2447 |  | REMOVE CABINET | 1d | 2024-04-26 | 2024-04-26 | 2-2442 |  |  |  | -99d | 25d | MBRT ADDED [8 h] | 8 | COM | 8 | 2-2447 | 2-2447 | ZONE-2 | UNION |  | SIDEWALKS |  | SOUTH |  |
| 2-2437 |  | REMOVE TEMP LIGHTING | 2d | 2024-05-31 | 2024-06-03 | 2-2197 |  |  |  | -124d | 0d | MBRT ADDED [16 h] | 16 | EA3 | 16 | 2-2437 | 2-2437 | ZONE-2 | UNION | SIDEWALKS | SIDEWALKS | GRADESW | SOUTH |  |
| 2-2452 |  | REMOVE FOUNDATIONS 1ST CORNER | 1d | 2024-06-04 | 2024-06-04 | 2-2447, 2-2437 |  |  |  | -124d | 0d | MBRT ADDED [8 h] | 8 | COM | 8 | 2-2452 | 2-2452 | ZONE-2 | UNION |  | SIDEWALKS |  | SOUTH |  |
| 2-2457 |  | GRADE SIDEWALK 1ST CORNER | 1d | 2024-06-05 | 2024-06-05 | 2-2452 |  |  |  | -124d | 0d | MBRT ADDED [8 h] | 8 | COM | 8 | 2-2457 | 2-2457 | ZONE-2 | UNION |  | SIDEWALKS |  | SOUTH |  |
| 2-2462 |  | CURB RAMPS 1ST CORNER | 2d | 2024-06-06 | 2024-06-07 | 2-2457 |  |  |  | -124d | 0d | MBRT ADDED [16 h] | 16 | COM | 16 | 2-2462 | 2-2462 | ZONE-2 | UNION |  | SIDEWALKS |  | SOUTH |  |
| 2-2467 |  | SIDEWALKS 1ST CORNER | 1d | 2024-06-10 | 2024-06-10 | 2-2462 |  |  |  | -124d | 0d | MBRT ADDED [8 h] | 8 | COM | 8 | 2-2467 | 2-2467 | ZONE-2 | UNION |  | SIDEWALKS |  | SOUTH |  |
| 2-2472 |  | REMOVE FOUNDATIONS 2ND CORNER | 1d | 2024-06-11 | 2024-06-11 | 2-2467 |  |  |  | -124d | 0d | MBRT ADDED [8 h] | 8 | COM | 8 | 2-2472 | 2-2472 | ZONE-2 | UNION |  | SIDEWALKS |  | SOUTH |  |
| 2-2477 |  | GRADE SIDEWALKS 2ND CORNER | 1d | 2024-06-12 | 2024-06-12 | 2-2472 |  |  |  | -124d | 0d | MBRT ADDED [8 h] | 8 | COM | 8 | 2-2477 | 2-2477 | ZONE-2 | UNION |  | SIDEWALKS |  | SOUTH |  |
| 2-2482 |  | CURB RAMPS 2ND CORNER | 2d | 2024-06-13 | 2024-06-14 | 2-2477 |  |  |  | -124d | 0d | MBRT ADDED [16 h] | 16 | COM | 16 | 2-2482 | 2-2482 | ZONE-2 | UNION |  | SIDEWALKS |  | SOUTH |  |
| 2-2487 |  | SIDEWALKS 2ND CORNER | 1d | 2024-06-17 | 2024-06-17 | 2-2482 |  |  |  | -124d | 0d | MBRT ADDED [8 h] | 8 | COM | 8 | 2-2487 | 2-2487 | ZONE-2 | UNION |  | SIDEWALKS |  | SOUTH |  |
| 2-2492 |  | REMOVE FOUNDATIONS 3RD CORNER | 1d | 2024-06-18 | 2024-06-18 | 2-2487 |  |  |  | -124d | 0d | MBRT ADDED [8 h] | 8 | COM | 8 | 2-2492 | 2-2492 | ZONE-2 | UNION |  | SIDEWALKS |  | SOUTH |  |
| 2-2497 |  | GRADE SIDEWALKS 3RD CORNER | 1d | 2024-06-19 | 2024-06-19 | 2-2492 |  |  |  | -124d | 0d | MBRT ADDED [8 h] | 8 | COM | 8 | 2-2497 | 2-2497 | ZONE-2 | UNION |  | SIDEWALKS |  | SOUTH |  |
| 2-2502 |  | CURB RAMPS 3RD CORNER | 2d | 2024-06-20 | 2024-06-21 | 2-2497 |  |  |  | -124d | 0d | MBRT ADDED [16 h] | 16 | COM | 16 | 2-2502 | 2-2502 | ZONE-2 | UNION |  | SIDEWALKS |  | SOUTH |  |
| 2-2507 |  | SIDEWALKS 3RD CORNER | 1d | 2024-06-24 | 2024-06-24 | 2-2502 |  |  |  | -124d | 0d | MBRT ADDED [8 h] | 8 | COM | 8 | 2-2507 | 2-2507 | ZONE-2 | UNION |  | SIDEWALKS |  | SOUTH |  |
| 2-2512 |  | REMOVE FOUNDATIONS 4TH CORNER | 1d | 2024-06-25 | 2024-06-25 | 2-2507 |  |  |  | -124d | 0d | MBRT ADDED [8 h] | 8 | COM | 8 | 2-2512 | 2-2512 | ZONE-2 | UNION |  | SIDEWALKS |  | SOUTH |  |
| 2-2517 |  | GRADE SIDEWALKS 4TH CORNER | 1d | 2024-06-26 | 2024-06-26 | 2-2512 |  |  |  | -124d | 0d | MBRT ADDED [8 h] | 8 | COM | 8 | 2-2517 | 2-2517 | ZONE-2 | UNION |  | SIDEWALKS |  | SOUTH |  |
| 2-2522 |  | CURB RAMPS 4TH CORNER | 2d | 2024-06-27 | 2024-06-28 | 2-2517 |  |  |  | -124d | 23d | MBRT ADDED [16 h] | 16 | COM | 16 | 2-2522 | 2-2522 | ZONE-2 | UNION |  | SIDEWALKS |  | SOUTH |  |
| 2-2527 |  | SIDEWALKS 4TH CORNER | 1d | 2024-08-01 | 2024-08-01 | 2-2522, 2-2257, 2-2432 |  |  |  | -147d | 0d | MBRT ADDED [8 h] | 8 | COM | 8 | 2-2527 | 2-2527 | ZONE-2 | UNION |  | SIDEWALKS |  | SOUTH | 147 |

| ID | WBS | Activity | Duration | Start | Finish | Predecessors | Total float | Free float | Resources | Cost | ~SELECT | user_text2 | user_number6 | user_text10 | user_text8 | MBRT-ZONE | MBRT-LOCATION | MBRT-SCOPE | MBRT-TYPE | MBRT-ACTIVITY | MBRT-SIDE |
| --- | --- | --- | --- | --- | --- | --- | --- | --- | --- | --- | --- | --- | --- | --- | --- | --- | --- | --- | --- | --- | --- |
|  | 4 | **MADISON AND 14TH** |  | 2024-06-10 | 2024-07-12 |  |  |  |  |  |  |  |  |  |  |  |  |  |  |  |  |
| 2-2532 |  | REMOVE TEMP LIGHTING | 2d | 2024-06-10 | 2024-06-11 | 2-2212 | -133d | 0d | MBRT ADDED [16 h] | 16 | CPLP-NOV | EA3 | 16 | 2-2532 | 2-2532 | ZONE-2 | UNION | SIDEWALKS | SIDEWALKS | GRADESW | SOUTH |
| 2-2537 |  | REMOVE POLES | 2d | 2024-06-12 | 2024-06-13 | 2-2532 | -133d | 0d | MBRT ADDED [16 h] | 16 | CPLP-NOV | COM | 16 | 2-2537 | 2-2537 | ZONE-2 | UNION | CURB | SIDEWALKS |  | SOUTH |
| 2-2542 |  | REMOVE CABINET | 1d | 2024-06-14 | 2024-06-14 | 2-2537 | -133d | 0d | MBRT ADDED [8 h] | 8 | CPLP-NOV | COM | 8 | 2-2542 | 2-2542 | ZONE-2 | UNION |  | SIDEWALKS |  | SOUTH |
| 2-2547 |  | REMOVE FOUNDATIONS 1ST CORNER | 1d | 2024-06-17 | 2024-06-17 | 2-2542 | -133d | 0d | MBRT ADDED [8 h] | 8 | CPLP-NOV | COM | 8 | 2-2547 | 2-2547 | ZONE-2 | UNION |  | SIDEWALKS |  | SOUTH |
| 2-2552 |  | GRADE SIDEWALK 1ST CORNER | 1d | 2024-06-18 | 2024-06-18 | 2-2547 | -133d | 0d | MBRT ADDED [8 h] | 8 | CPLP-NOV | COM | 8 | 2-2552 | 2-2552 | ZONE-2 | UNION |  | SIDEWALKS |  | SOUTH |
| 2-2557 |  | CURB RAMPS 1ST CORNER | 2d | 2024-06-19 | 2024-06-20 | 2-2552 | -133d | 0d | MBRT ADDED [16 h] | 16 | CPLP-NOV | COM | 16 | 2-2557 | 2-2557 | ZONE-2 | UNION |  | SIDEWALKS |  | SOUTH |
| 2-2562 |  | SIDEWALKS 1ST CORNER | 1d | 2024-06-21 | 2024-06-21 | 2-2557 | -133d | 0d | MBRT ADDED [8 h] | 8 | CPLP-NOV | COM | 8 | 2-2562 | 2-2562 | ZONE-2 | UNION |  | SIDEWALKS |  | SOUTH |
| 2-2567 |  | REMOVE FOUNDATIONS 2ND CORNER | 1d | 2024-06-24 | 2024-06-24 | 2-2562 | -133d | 0d | MBRT ADDED [8 h] | 8 | CPLP-NOV | COM | 8 | 2-2567 | 2-2567 | ZONE-2 | UNION |  | SIDEWALKS |  | SOUTH |
| 2-2572 |  | GRADE SIDEWALKS 2ND CORNER | 1d | 2024-06-25 | 2024-06-25 | 2-2567 | -133d | 0d | MBRT ADDED [8 h] | 8 | CPLP-NOV | COM | 8 | 2-2572 | 2-2572 | ZONE-2 | UNION |  | SIDEWALKS |  | SOUTH |
| 2-2577 |  | CURB RAMPS 2ND CORNER | 2d | 2024-06-26 | 2024-06-27 | 2-2572 | -133d | 0d | MBRT ADDED [16 h] | 16 | CPLP-NOV | COM | 16 | 2-2577 | 2-2577 | ZONE-2 | UNION |  | SIDEWALKS |  | SOUTH |
| 2-2582 |  | SIDEWALKS 2ND CORNER | 1d | 2024-06-28 | 2024-06-28 | 2-2577 | -133d | 0d | MBRT ADDED [8 h] | 8 | CPLP-NOV | COM | 8 | 2-2582 | 2-2582 | ZONE-2 | UNION |  | SIDEWALKS |  | SOUTH |
| 2-2587 |  | REMOVE FOUNDATIONS 3RD CORNER | 1d | 2024-07-01 | 2024-07-01 | 2-2582 | -133d | 0d | MBRT ADDED [8 h] | 8 | CPLP-NOV | COM | 8 | 2-2587 | 2-2587 | ZONE-2 | UNION |  | SIDEWALKS |  | SOUTH |
| 2-2592 |  | GRADE SIDEWALKS 3RD CORNER | 1d | 2024-07-02 | 2024-07-02 | 2-2587 | -133d | 0d | MBRT ADDED [8 h] | 8 | CPLP-NOV | COM | 8 | 2-2592 | 2-2592 | ZONE-2 | UNION |  | SIDEWALKS |  | SOUTH |
| 2-2597 |  | CURB RAMPS 3RD CORNER | 2d | 2024-07-03 | 2024-07-04 | 2-2592 | -133d | 0d | MBRT ADDED [16 h] | 16 | CPLP-NOV | COM | 16 | 2-2597 | 2-2597 | ZONE-2 | UNION |  | SIDEWALKS |  | SOUTH |
| 2-2602 |  | SIDEWALKS 3RD CORNER | 1d | 2024-07-05 | 2024-07-05 | 2-2597 | -133d | 0d | MBRT ADDED [8 h] | 8 | CPLP-NOV | COM | 8 | 2-2602 | 2-2602 | ZONE-2 | UNION |  | SIDEWALKS |  | SOUTH |
| 2-2607 |  | REMOVE FOUNDATIONS 4TH CORNER | 1d | 2024-07-08 | 2024-07-08 | 2-2602 | -133d | 0d | MBRT ADDED [8 h] | 8 | CPLP-NOV | COM | 8 | 2-2607 | 2-2607 | ZONE-2 | UNION |  | SIDEWALKS |  | SOUTH |
| 2-2612 |  | GRADE SIDEWALKS 4TH CORNER | 1d | 2024-07-09 | 2024-07-09 | 2-2607 | -133d | 0d | MBRT ADDED [8 h] | 8 | CPLP-NOV | COM | 8 | 2-2612 | 2-2612 | ZONE-2 | UNION |  | SIDEWALKS |  | SOUTH |
| 2-2617 |  | CURB RAMPS 4TH CORNER | 2d | 2024-07-10 | 2024-07-11 | 2-2612 | -133d | 0d | MBRT ADDED [16 h] | 16 | CPLP-NOV | COM | 16 | 2-2617 | 2-2617 | ZONE-2 | UNION |  | SIDEWALKS |  | SOUTH |
| 2-2622 |  | SIDEWALKS 4TH CORNER | 1d | 2024-07-12 | 2024-07-12 | 2-2617 | -133d | 14d | MBRT ADDED [8 h] | 8 | CPLP-NOV | COM | 8 | 2-2622 | 2-2622 | ZONE-2 | UNION |  | SIDEWALKS |  | SOUTH |
|  | 5 | **MADISON AND 15TH** |  | 2024-05-01 | 2024-05-06 |  |  |  |  |  |  |  |  |  |  |  |  |  |  |  |  |
| 2-2627 |  | REMOVE SIGNAL CABINET | 1d | 2024-05-01 | 2024-05-01 | 2-1640 | -85d | 0d | MBRT ADDED [8 h] | 8 |  | EA3 | 8 | 2-2627 | 2-2627 | ZONE-2 | UNION | SIDEWALKS | SIDEWALKS | GRADESW | SOUTH |
| 2-2637 |  | REMOVE CABINET FOUNDATION | 1d | 2024-05-02 | 2024-05-02 | 2-2627 | -85d | 0d | MBRT ADDED [8 h] | 8 |  | COM | 8 | 2-2637 | 2-2637 | ZONE-2 | UNION |  | SIDEWALKS |  | SOUTH |
| 2-2647 |  | GRADE SIDEWALK | 1d | 2024-05-03 | 2024-05-03 | 2-2637 | -85d | 0d | MBRT ADDED [8 h] | 8 |  | COM | 8 | 2-2647 | 2-2647 | ZONE-2 | UNION |  | SIDEWALKS |  | SOUTH |
| 2-2657 |  | POUR SIDEWALK | 1d | 2024-05-06 | 2024-05-06 | 2-2647 | -85d | 62d | MBRT ADDED [8 h] | 8 |  | COM | 8 | 2-2657 | 2-2657 | ZONE-2 | UNION |  | SIDEWALKS |  | SOUTH |

| ID | WBS | Activity | Duration | Start | Finish | Predecessors | Complete | Planned start | Planned finish | Total float | Free float | Resources | Cost | Actual cost | user_text2 | user_number6 | user_text10 | user_text8 | MBRT-ZONE | MBRT-LOCATION | MBRT-TYPE | ~SELECT | MBRT-ACTIVITY | MBRT-DELAY | MBRT-SCOPE | user_text1 |
| --- | --- | --- | --- | --- | --- | --- | --- | --- | --- | --- | --- | --- | --- | --- | --- | --- | --- | --- | --- | --- | --- | --- | --- | --- | --- | --- |
|  | 16 | **STATIONS** |  | 2024-04-22 | 2024-05-17 |  |  |  |  |  |  |  |  |  |  |  |  |  |  |  |  |  |  |  |  |  |
|  | 1 | **MADISON AND EAST UNION ST** |  | 2024-04-22 | 2024-05-17 |  |  |  |  |  |  |  |  |  |  |  |  |  |  |  |  |  |  |  |  |  |
| 2-1652 |  | INST SHELTER, MAD & EAST UNION ST | 6d | 2024-04-22 | 2024-04-29 | 2-1537 |  |  |  | -94d | 0d | MBRT BASE [48 h] | 48 |  | SHELTER INTALL SUB | 48 | 2-1652 | 2-1652 | ZONE-2 | UNION | STATIONS |  |  |  |  |  |
| 2-1653 |  | INST TEC PYLON, MAD & EAST UNION ST | 4d | 2024-04-30 | 2024-05-03 | 2-1652 |  |  |  | -94d | 0d | MBRT BASE [32 h] | 32 |  | ELECRICAL SUB | 32 | 2-1653 | 2-1653 | ZONE-2 | UNION | STATIONS |  |  |  |  |  |
| 2-1654 |  | INST AMENITIES, MAD & EAST UNION ST | 4d | 2024-05-06 | 2024-05-09 | 2-1653 |  |  |  | -94d | 0d | MBRT BASE [32 h] | 32 |  | ZZZZ | 32 | 2-1654 | 2-1654 | ZONE-2 | UNION | STATIONS |  |  |  |  |  |
| 2-1655 |  | INST RAILING, MAD & EAST UNION ST | 6d | 2024-05-10 | 2024-05-17 | 2-1654 |  |  |  | -94d | 53d | MBRT BASE [48 h] | 48 |  | ZZZZ | 48 | 2-1655 | 2-1655 | ZONE-2 | UNION | STATIONS |  |  |  |  |  |
|  | 17 | **REMANING OCS POLES** |  | 2024-01-26 | 2024-02-02 |  |  |  |  |  |  |  |  |  |  |  |  |  |  |  |  |  |  |  |  |  |
| 2-1657 |  | INST REMAINING OCS POLES, REMANING OCS POLES | 28d | 2024-01-26 A | 2024-02-02 A | 2-1379, 2-1641, OCS-0043, PMP-41, PMP-36 | 100% | 2024-07-26 | 2024-09-03 |  |  | MBRT BASE [48 h] | 48 | 48 | ELECRICAL SUB | 48 | 2-1657 | 2-1657 | ZONE-2 |  |  | CPLP-SEP | OCS |  |  |  |
|  | 6 | **ZONE 3 - 15TH TO MLK** |  | 2021-10-21 | 2024-07-30 |  |  |  |  |  |  |  |  |  |  |  |  |  |  |  |  |  |  |  |  |  |
| PCO101.01 |  | DSC 63-Zone 3 Unknown Clay Duct Bank | 5d | 2022-01-14 A | 2022-01-15 A | MS-0025 | 100% | 2023-02-27 | 2023-03-03 |  |  | MBRT DSC [8 h] | 8 | 8 |  | 8 |  |  |  |  |  |  |  |  |  |  |
|  | 1 | **POTHOLING FOUNDATIONS** |  | 2021-10-29 | 2022-02-04 |  |  |  |  |  |  |  |  |  |  |  |  |  |  |  |  |  |  |  |  |  |
| 3-1662 |  | POTHOLING FOUNDATIONS, POTHOLING FOUNDATIONS | 5d | 2021-10-29 A | 2022-01-21 A | MS-0026 | 100% | 2021-10-29 | 2021-11-04 |  |  | MBRT BASE |  |  | ELECRICAL SUB | 440 |  |  | ZONE-3 |  |  |  |  |  |  |  |
| 3-1663 |  | POTHOLE SUBMITAL REVIEW, POTHOLING FOUNDATIONS | 10d | 2022-01-24 A | 2022-02-04 A | 3-1662 | 100% | 2022-01-25 | 2022-02-07 |  |  | MBRT BASE [72 h] | 72 | 72 | CITY | 72 |  |  | ZONE-3 |  |  |  |  |  |  |  |
|  | 2 | **STORM** |  | 2021-10-21 | 2022-10-25 |  |  |  |  |  |  |  |  |  |  |  |  |  |  |  |  |  |  |  |  |  |
| 3-1850 |  | FM 001 DEWATERING PH, WAITING ON OWNER DIRECTION | 5d | 2021-10-21 A | 2021-11-23 A | MS-0026 SS | 100% | 2021-09-20 | 2021-09-24 |  |  | MBRT NEW [40 h] | 40 | 176 |  | 176 |  |  |  |  | DELAY |  |  | FM001 |  |  |
| 3-1671 |  | MAD AND 15TH, STORM | 1d | 2021-10-25 A | 2021-10-26 A | MS-0026 SS | 100% | 2021-10-29 | 2021-10-29 |  |  | MBRT BASE [16 h] | 16 | 16 | UNS | 16 |  |  | ZONE-3 | 15 | CIVIL |  |  |  | STORM |  |
| 3-1885 |  | FM 037_DIRECTION REGARDING DEWATERING, STORM Z3 | 1d | 2021-11-24 A | 2021-11-24 A | 3-1850 | 100% | 2021-12-01 | 2021-12-01 |  |  | MBRT NEW [8 h] | 8 | 8 |  | 8 |  |  |  |  |  |  |  |  |  |  |
| 3-1665 |  | STORM MH17 TO MH 15 (DENNY TO 20TH), STORM | 15d | 2021-11-29 A | 2021-12-23 A | MS-0026, 3-1885, LS-1465 FF | 100% | 2021-10-29 | 2021-11-19 |  |  | MBRT BASE [152 h] | 152 | 152 | UNM | 152 |  |  | ZONE-3 | DENNY | CIVIL |  |  | FM001 | STORM |  |
| PCO059.01 |  | DSC 37-Existing Storm Pipe at MH 17 | 5d | 2021-12-01 A | 2021-12-02 A | MS-0025 | 100% | 2023-02-27 | 2023-03-03 |  |  | MBRT DSC [8 h] | 8 | 8 |  | 8 |  |  |  |  |  |  |  |  |  | STORM |
| PCO060.01 |  | DSC 38-Side Sewer Conflict Denny to 20th | 5d | 2021-12-06 A | 2021-12-08 A | MS-0025 | 100% | 2023-02-27 | 2023-03-03 |  |  | MBRT DSC [16 h] | 16 | 16 |  | 16 |  |  |  |  |  |  |  |  |  |  |
| PCO062.01 |  | DSC 39-Buried logs Storm MH 17 to MH 16 | 5d | 2021-12-07 A | 2021-12-08 A | MS-0025 | 100% | 2023-02-27 | 2023-03-03 |  |  | MBRT DSC [8 h] | 8 | 8 |  | 8 |  |  |  |  |  |  |  |  |  | STORM |
| PCO066.01 |  | DSC 42-Concrete foundation Storm Conflict MH 17 to MH 16 | 5d | 2021-12-09 A | 2021-12-11 A | MS-0025 | 100% | 2023-02-27 | 2023-03-03 |  |  | MBRT DSC [16 h] | 16 | 16 |  | 16 |  |  |  |  |  |  |  |  |  | STORM |
| 3-1683 |  | MAD AND 28TH, STORM | 4d | 2021-12-14 A | 2021-12-14 A | 3-1665 SS | 100% | 2022-02-09 | 2022-02-14 |  |  | MBRT BASE [8 h] | 8 | 8 | UNS | 8 |  |  | ZONE-3 | 28 | CIVIL |  |  |  | STORM |  |
| 3-1684 |  | ARTHUR AND MLK, STORM | 2d | 2021-12-15 A | 2021-12-16 A | 3-1683 | 100% | 2022-02-15 | 2022-02-16 |  |  | MBRT BASE [16 h] | 16 | 16 | UNS | 16 |  |  | ZONE-3 | ARTHUR | CIVIL |  |  |  | STORM |  |
| 3-1685 |  | SIDE SEWER ARTHUR AND MLK, STORM | 2d | 2021-12-17 A | 2021-12-23 A | 3-1684 | 100% | 2022-02-17 | 2022-02-18 |  |  | MBRT BASE [40 h] | 40 | 40 | UNS | 40 |  |  | ZONE-3 | MLK | CIVIL |  |  |  | STORM |  |
| PCO072.01 |  | DSC 44-Unknown Duct Bank Storm 20th Ave intersection | 5d | 2021-12-21 A | 2021-12-23 A | MS-0025 | 100% | 2023-02-27 | 2023-03-03 |  |  | MBRT DSC [16 h] | 16 | 16 |  | 16 |  |  |  |  |  |  |  |  |  |  |
| 3-1666 |  | EXISTING SDMH2 TO MH11 (19TH TO 18TH), PRIOR TO DSC 054 | 12d | 2022-01-03 A | 2022-01-06 A | 3-1665, MS-2576 | 100% | 2022-01-03 | 2022-01-19 |  |  | MBRT DSC [32 h] | 32 | 32 | UNM | 32 |  |  | ZONE-3 |  | CIVIL |  |  |  | STORM |  |
| 3-1675 |  | STORM MAD 20TH TO DENNY, STORM | 4d | 2022-01-03 A | 2022-02-11 A | MS-2576, 3-1665 | 100% | 2022-01-10 | 2022-01-13 |  |  | MBRT BASE [232 h] | 232 | 232 | UNS | 232 |  |  | ZONE-3 | 20 | CIVIL |  |  | FM001 | STORM |  |
| 3-1682 |  | MAD AND 27TH, STORM | 4d | 2022-01-03 A | 2022-01-04 A | MS-2576 | 100% | 2022-02-14 | 2022-02-17 |  |  | MBRT BASE [16 h] | 16 | 16 | UNS | 16 |  |  | ZONE-3 | 27 | CIVIL |  |  |  | STORM |  |
| PCO081.01 |  | DSC 50-Concrete obstuctions Storm Mainline 18th to 19th | 5d | 2022-01-04 A | 2022-01-15 A | MS-0025 | 100% | 2023-02-27 | 2023-03-03 |  |  | MBRT DSC [72 h] | 72 | 72 |  | 72 |  |  |  |  |  |  |  |  |  | STORM |
| 3-1681 |  | MAD AND 26TH, STORM | 5d | 2022-01-05 A | 2022-01-11 A | 3-1682 | 100% | 2022-02-07 | 2022-02-11 |  |  | MBRT BASE [40 h] | 40 | 40 | UNS | 40 |  |  | ZONE-3 | 26 | CIVIL |  |  |  | STORM |  |
| PCO087.01 |  | DSC 54-Side Sewer Conflict Storm STA 281+90 | 5d | 2022-01-07 A | 2022-01-15 A | MS-0025 | 100% | 2023-02-27 | 2023-03-03 |  |  | MBRT DSC [48 h] | 48 | 48 |  | 48 |  |  |  |  |  |  |  |  |  | STORM |
| 3-1678 |  | STORM MAD AND JOHN, STORM | 1d | 2022-01-07 A | 2022-01-07 A | 3-1682 | 100% | 2022-01-20 | 2022-01-20 |  |  | MBRT BASE [8 h] | 8 | 8 | UNS | 8 |  |  | ZONE-3 | JOHN | CIVIL |  |  | FM001 | STORM |  |
| 3-1769 |  | WAITING FOR DIRECTION ON DSC 054 | 5d | 2022-01-07 A | 2022-01-13 A | 3-1685, 3-1666 | 100% | 2022-01-03 | 2022-01-07 |  |  | MBRT DSC [40 h] | 40 | 40 |  | 40 |  |  |  |  |  |  |  |  |  |  |
| PCO094.01 |  | DSC 58-Inlet 28B Conflict | 5d | 2022-01-12 A | 2022-01-13 A | MS-0025 | 100% | 2023-02-27 | 2023-03-03 |  |  | MBRT DSC [8 h] | 8 | 8 |  | 8 |  |  |  |  |  |  |  |  |  | STORM |
| 3-1679 |  | STORM MAD AND 24TH, STORM | 1d | 2022-01-12 A | 2022-01-14 A | 3-1681 SS | 100% | 2022-01-21 | 2022-01-21 |  |  | MBRT BASE [24 h] | 24 | 24 | UNS | 24 |  |  | ZONE-3 | 24 | CIVIL |  |  | FM001 | STORM |  |
| 3-1677 |  | STORM MAD AND 22ND, STORM | 1d | 2022-01-13 A | 2022-01-13 A | 3-1678 | 100% | 2022-01-19 | 2022-01-19 |  |  | MBRT BASE [8 h] | 8 | 8 | UNS | 8 |  |  | ZONE-3 | 22 | CIVIL |  |  | FM001 | STORM |  |
| PCO100.01 |  | DSC 62-Inlet 34 connection existing WYE | 5d | 2022-01-14 A | 2022-01-26 A | MS-0025 | 100% | 2023-02-27 | 2023-03-03 |  |  | MBRT DSC [56 h] | 56 | 56 |  | 56 |  |  |  |  |  |  |  |  |  |  |
| 3-1674 |  | STORM MAD AND 20TH INLET & CB CONN, STORM | 5d | 2022-01-14 A | 2022-02-02 A | 3-1665, 3-1671, MS-2576, 3-1677 | 100% | 2022-01-03 | 2022-01-07 |  |  | MBRT BASE [104 h] | 104 | 104 | UNS | 104 |  |  | ZONE-3 | 20 | CIVIL |  |  | FM001 | STORM |  |
| 3-1676 |  | STORM MAD AND DENNY, STORM | 2d | 2022-01-14 A | 2022-01-18 A | 3-1677 | 100% |  |  |  |  | MBRT BASE [16 h] | 16 | 16 | UNS | 16 |  |  | ZONE-3 | DENNY | CIVIL |  |  | FM001 | STORM |  |
| 3-1680 |  | STORM MAD AND 25TH, STORM | 4d | 2022-01-14 A | 2022-01-20 A | 3-1679 SS, 3-1676 FF | 100% | 2022-01-24 | 2022-01-27 |  |  | MBRT BASE [32 h] | 32 | 32 | UNS | 32 |  |  | ZONE-3 | 25 | CIVIL |  |  | FM001 | STORM |  |
| 3-1686 |  | EXISTING SDMH2 TO MH11 (19TH TO 18TH), AFTER DSC 054 | 5d | 2022-01-14 A | 2022-02-04 A | 3-1769 | 100% | 2022-01-03 | 2022-01-07 |  |  | MBRT DSC [112 h] | 112 | 112 |  | 112 |  |  |  |  |  |  |  |  |  |  |
| PCO110.01 |  | DSC 71-CDF/Concrete obstruction @ Storm Conn @ Madison/Thomas | 5d | 2022-01-24 A | 2022-03-23 A | MS-0025 | 100% | 2023-02-27 | 2023-03-03 |  |  | MBRT DSC [328 h] | 328 | 40 |  | 328 |  |  |  |  |  |  |  |  |  |  |
| PCO114.01 |  | DSC 74-Inlet 35 conflict | 5d | 2022-01-26 A | 2022-01-27 A | MS-0025 | 100% | 2023-02-27 | 2023-03-03 |  |  | MBRT DSC [8 h] | 8 | 8 |  | 8 |  |  |  |  |  |  |  |  |  | STORM |
| PCO124.01 |  | DSC 82-Inlett 33 conflict | 5d | 2022-02-01 A | 2022-02-03 A | MS-0025 | 100% | 2023-02-27 | 2023-03-03 |  |  | MBRT DSC [16 h] | 16 | 16 |  | 16 |  |  |  |  |  |  |  |  |  | STORM |
| PCO126.01 |  | DSC 84-CB-29 Connection Concrete Wall Obstruction | 5d | 2022-02-03 A | 2022-02-11 A | MS-0025 | 100% | 2023-02-27 | 2023-03-03 |  |  | MBRT DSC [48 h] | 48 | 48 |  | 48 |  |  |  |  |  |  |  |  |  | STORM |
| PCO127.01 |  | DSC 85-Inlet 30 Gas Line and Tree roots | 5d | 2022-02-04 A | 2022-02-06 A | MS-0025 | 100% | 2023-02-27 | 2023-03-03 |  |  | MBRT DSC [8 h] | 8 | 8 |  | 8 |  |  |  |  |  |  |  |  |  | STORM |
| 3-1672 |  | STORM MAD AND 18TH, STORM | 3d | 2022-02-04 A | 2022-02-14 A | 3-1667, 3-1680, 3-1788 | 100% | 2022-02-17 | 2022-02-22 |  |  | MBRT BASE [56 h] | 56 | 56 | UNS | 56 |  |  | ZONE-3 | 18 | CIVIL |  |  | FM001 | STORM |  |
| PCO129.01 |  | DSC 87-Inlet 27A Conflict | 5d | 2022-02-07 A | 2022-02-08 A | MS-0025 | 100% | 2023-02-27 | 2023-03-03 |  |  | MBRT DSC [8 h] | 8 | 8 |  | 8 |  |  |  |  |  |  |  |  |  | STORM |
| 3-1667 |  | MH 12 TO EXISTING MH ON OLIVE & 18TH, SEWER | 3d | 2022-02-07 A | 2022-02-08 A | 3-1666, 3-1686 | 100% | 2022-02-14 | 2022-02-16 |  |  | MBRT BASE [16 h] | 16 | 16 | UNM | 16 |  |  | ZONE-3 | 18 | CIVIL |  |  |  | STORM |  |
| 3-1673 |  | STORM MAD AND 19TH, STORM | 3d | 2022-02-08 A | 2022-02-08 A | 3-1672 | 100% | 2022-02-22 | 2022-02-24 |  |  | MBRT BASE [8 h] | 8 | 8 | UNS | 8 |  |  | ZONE-3 | 19 | CIVIL |  |  | FM001 | STORM |  |
| PCO133.01 |  | DSC 90-Gas Main conflict with Sewer MH at 18th | 5d | 2022-02-09 A | 2022-02-10 A | MS-0025 | 100% | 2023-02-27 | 2023-03-03 |  |  | MBRT DSC [8 h] | 8 | 8 |  | 8 |  |  |  |  |  |  |  |  |  | STORM |
| 3-1708 |  | DSC 090 GAS MAIN CONFLICT WITH SEWER LINE MH12 | 5d | 2022-02-09 A | 2022-02-15 A | 3-1667 | 100% | 2022-01-31 | 2022-02-04 |  |  | MBRT DSC [40 h] | 40 | 40 |  | 40 |  |  |  |  |  |  |  |  |  |  |
| PCO134.01 |  | DSC 91-Leaking waterline at inlet 25B | 5d | 2022-02-10 A | 2022-02-11 A | MS-0025 | 100% | 2023-02-27 | 2023-03-03 |  |  | MBRT DSC [8 h] | 8 | 8 |  | 8 |  |  |  |  |  |  |  |  |  | STORM |
| 3-1788 |  | COMPLETE SDMH2 TO MH ON OLIVE & 18TH, AFTER DSC 090 | 5d | 2022-02-16 A | 2022-02-18 A | 3-1708 | 100% | 2022-01-31 | 2022-02-04 |  |  | MBRT DSC [16 h] | 16 | 16 |  | 16 |  |  |  |  |  |  |  |  |  |  |
| PCO144.01 |  | DSC 101-Tree Roots Conflict Sewer 18th | 5d | 2022-02-17 A | 2022-02-18 A | MS-0025 | 100% | 2023-02-27 | 2023-03-03 |  |  | MBRT DSC [8 h] | 8 | 8 |  | 8 |  |  |  |  |  |  |  |  |  | STORM |
| 3-1828 |  | HUB COORDINATION & SHORING DELAY WITH PRIVATE CONTRACTOR | 5d | 2022-02-21 A | 2022-02-25 A | 3-1788 | 100% | 2022-01-31 | 2022-02-04 |  |  | MBRT NEW [40 h] | 40 | 32 |  | 32 |  |  |  |  |  |  |  |  |  |  |
| 3-1668 |  | INST SHORING FOR STORM & PINE, STORM | 10d | 2022-02-28 A | 2022-03-14 A | 3-1667, 3-1788, 3-1828 | 100% | 2022-02-17 | 2022-03-03 |  |  | MBRT BASE [88 h] | 88 | 88 | UNM | 88 |  |  | ZONE-3 |  | CIVIL |  |  |  | STORM |  |
| PCO156.01 |  | DSC 110-Gas Line Conflict Detention Pipe Pine Street | 5d | 2022-03-02 A | 2022-03-10 A | MS-0025 | 100% | 2023-02-27 | 2023-03-03 |  |  | MBRT DSC [48 h] | 48 | 48 |  | 48 |  |  |  |  |  |  |  |  |  |  |
| PCO158.01 |  | DSC 111-Unknown abandoned Gas line conflict slide rail | 5d | 2022-03-02 A | 2022-03-03 A | MS-0025 | 100% | 2023-02-27 | 2023-03-03 |  |  | MBRT DSC [8 h] | 8 | 8 |  | 8 |  |  |  |  |  |  |  |  |  |  |
| PCO167.01 |  | DSC 116-Inlet 37C conflict | 5d | 2022-03-15 A | 2022-03-16 A | MS-0025 | 100% | 2023-02-27 | 2023-03-03 |  |  | MBRT DSC [8 h] | 8 | 8 |  | 8 |  |  |  |  |  |  |  |  |  | STORM |
| 3-1669 |  | MH 10C TO MH10 (PINE ST), STORM | 12d | 2022-03-15 A | 2022-03-30 A | 3-1668, PMP-0020, LS-1470 SS | 100% |  |  |  |  | MBRT BASE [96 h] | 96 | 96 | UNM | 96 |  |  | ZONE-3 | PINE | CIVIL |  |  |  | STORM |  |
| PCO168.01 |  | DSC 117-Inlet 32 Root conflict | 5d | 2022-03-16 A | 2022-03-25 A | MS-0025 | 100% | 2023-02-27 | 2023-03-03 |  |  | MBRT DSC [56 h] | 56 | 56 |  | 56 |  |  |  |  |  |  |  |  |  | STORM |
| 3-1670 |  | REMOVE SHORING, STORM | 5d | 2022-03-31 A | 2022-04-12 A | 3-1669 | 100% | 2022-03-31 | 2022-04-06 |  |  | MBRT BASE [72 h] | 72 | 72 | UNM | 72 |  |  | ZONE-3 |  | CIVIL |  |  |  | STORM |  |
| PCO192.01 |  | DSC 137-Gas line Conflict MH 10A | 5d | 2022-04-01 A | 2022-04-08 A | MS-0025 | 100% | 2023-02-27 | 2023-03-03 |  |  | MBRT DSC [40 h] | 40 | 40 |  | 40 |  |  |  |  |  |  |  |  |  | STORM |
| PCO199.01 |  | DSC 142-Utility Conflicts MH 10 | 5d | 2022-04-06 A | 2022-04-12 A | MS-0025 | 100% | 2023-02-27 | 2023-03-03 |  |  | MBRT DSC [32 h] | 32 | 32 |  | 32 |  |  |  |  |  |  |  |  |  | STORM |
| PCO203.01 |  | DSC 146-Unlocated Conduites MH10 | 5d | 2022-04-07 A | 2022-04-08 A | MS-0025 | 100% | 2023-02-27 | 2023-03-03 |  |  | MBRT DSC [8 h] | 8 | 8 |  | 8 |  |  |  |  |  |  |  |  |  | STORM |
| PCO205.01 |  | DSC 147-2nd unlocated side sewer MH10 | 5d | 2022-04-07 A | 2022-04-08 A | MS-0025 | 100% | 2023-02-27 | 2023-03-03 |  |  | MBRT DSC [8 h] | 8 | 8 |  | 8 |  |  |  |  |  |  |  |  |  | STORM |
| PCO282.01 |  | DSC 207-CB10 - Utility Conflict 3" Steel Line | 5d | 2022-06-20 A | 2022-06-21 A | MS-0025 | 100% | 2023-02-27 | 2023-03-03 |  |  | MBRT DSC [8 h] | 8 | 8 |  | 8 |  |  |  |  |  |  |  |  |  | STORM |
| PCO424.01 |  | DSC 310-Unknown Conduit conflict with Storm Denny | 5d | 2022-10-19 A | 2022-10-25 A | MS-0025 | 100% | 2023-02-27 | 2023-03-03 |  |  | MBRT DSC [32 h] | 32 | 32 |  | 32 |  |  |  |  |  |  |  |  |  |  |

Notes:
- 3-1665: Description: REMOVE PRED LS-1465 BYPASS ACTIVITY / DSC 39 & 42 Have added 4 Days of Duration to the work
- 3-1769: Description: During / installation of the Storm Mainline we discovered what appears to be a side sewer / that is in conflict with the mainline at STA 281+90.
- 3-1828: Description: PUSHED OUT STORM WORK ON PINE TO ALLOW FOR PRIVATE CONTRACTOR TO FINISH / NEARBY WORK AT OLIVE/15TH.

| ID | WBS | Activity | Duration | Start | Finish | Predecessors | Complete | Planned start | Planned finish | Resources | Cost | Actual cost | user_text2 | user_number6 | MBRT-ZONE | MBRT-LOCATION | MBRT-SCOPE | MBRT-TYPE | MBRT-DELAY | MBRT-ACTIVITY | MBRT-RESP | MBRT-NIGHT |
| --- | --- | --- | --- | --- | --- | --- | --- | --- | --- | --- | --- | --- | --- | --- | --- | --- | --- | --- | --- | --- | --- | --- |
|  | 3 | **WATER** |  | 2022-01-10 | 2023-05-11 |  |  |  |  |  |  |  |  |  |  |  |  |  |  |  |  |  |
|  | 1 | **STAGE 6 (18TH TO 19TH)** |  | 2022-02-14 | 2022-04-11 |  |  |  |  |  |  |  |  |  |  |  |  |  |  |  |  |  |
| 3-1688 |  | INST TEMP MAIN, SERVICES & LATERALS, T08 & T09, STAGE 6 (18TH TO 19TH) | 2d | 2022-02-14 A | 2022-02-15 A | MS-0026, 3-1673, 3-1675 | 100% | 2022-03-01 | 2022-03-02 | MBRT BASE [16 h] | 16 | 16 | UNM | 16 | ZONE-3 | 18 | WATERLINE | CIVIL | FM001 |  |  |  |
| 3-1689 |  | FLUSH, TEST & DISINFECT TEMP MAIN, STAGE 6 (18TH TO 19TH) | 2d | 2022-02-16 A | 2022-02-17 A | 3-1688 | 100% | 2022-03-03 | 2022-03-04 | MBRT BASE [16 h] | 16 | 16 | UNM | 16 | ZONE-3 | 18 | WATERLINE | CIVIL | FM001 | BACT |  |  |
| 3-1690 |  | BAC T RESULTS, STAGE 6 (18TH TO 19TH) | 3d | 2022-02-18 A | 2022-02-22 A | 3-1689 | 100% | 2022-03-07 | 2022-03-09 | MBRT BASE [16 h] | 16 | 16 | CITY | 16 | ZONE-3 | 18 | WATERLINE | CIVIL | FM001 | BACT |  |  |
| 3-1696 |  | INST MAIN LINE FROM 18TH TO 19TH, STAGE 6 (18TH TO 19TH) | 3d | 2022-02-22 A | 2022-03-08 A | PMP-0017, 3-1690 | 100% | 2022-03-01 | 2022-03-03 | MBRT BASE [88 h] | 88 | 88 | UNM | 88 | ZONE-3 | 18 | WATERLINE | CIVIL | FM001 |  |  |  |
| 3-1691 |  | 5d NOTICE FOR SPU, STAGE 6 (18TH TO 19TH) | 5d | 2022-02-23 A | 2022-03-03 A | 3-1690 | 100% | 2022-03-10 | 2022-03-16 | MBRT BASE |  |  | CITY | 56 | ZONE-3 | 18 | WATERLINE | CIVIL | FM001 | BACT |  |  |
| PCO150.01 |  | DSC 107-CC18 Relocation at 18th | 5d | 2022-02-24 A | 2022-03-17 A | MS-0025 | 100% | 2023-02-27 | 2023-03-03 | MBRT DSC [120 h] | 120 | 120 |  | 120 |  |  |  |  |  |  |  |  |
| 3-1692 |  | SPU TAP MAIN AT CC17 & CONNECT TO T08, STAGE 6 (18TH TO 19TH) | 1d | 2022-03-04 A | 2022-03-04 A | 3-1673, 3-1691 | 100% | 2022-03-02 | 2022-03-02 | MBRT BASE [8 h] | 8 | 8 | UNM,CITY | 8 | ZONE-3 | 18 | WATERLINE | CIVIL | FM001 |  | SPU |  |
| 3-1693 |  | SPU TAP MAIN AT CC19 & CONNECT TO T09, STAGE 6 (18TH TO 19TH) | 1d | 2022-03-04 A | 2022-03-04 A | 3-1692 | 100% | 2022-03-03 | 2022-03-03 | MBRT BASE [8 h] | 8 | 8 | UNM,CITY | 8 | ZONE-3 | 18 | WATERLINE | CIVIL | FM001 |  | SPU |  |
| 3-1694 |  | SPU TRANSFER SERVICES TO TEMP MAIN, STAGE 6 (18TH TO 19TH) | 1d | 2022-03-04 A | 2022-03-04 A | 3-1693 | 100% |  |  | MBRT BASE [8 h] | 8 | 8 | UNM,CITY | 8 | ZONE-3 | 18 | WATERLINE | CIVIL | FM001 |  | SPU |  |
| 3-1695 |  | SPU CUT & CAP AT CC16, CC17 & CC19, STAGE 6 (18TH TO 19TH) | 1d | 2022-03-04 A | 2022-03-04 A | 3-1694, 3-1672, 3-1673 | 100% | 2022-03-07 | 2022-03-07 | MBRT BASE [8 h] | 8 | 8 | UNM,CITY | 8 | ZONE-3 | 18 | WATERLINE | CIVIL | FM001 |  | SPU | NIGHT |
| PCO162.01 |  | DSC 113-Conduit Laying on top of watermain at 18th & Madison | 5d | 2022-03-09 A | 2022-03-15 A | MS-0025 | 100% | 2023-02-27 | 2023-03-03 | MBRT DSC [32 h] | 32 | 32 |  | 32 |  |  |  |  |  |  |  |  |
| 3-1697 |  | INST MAIN ON 18TH, STAGE 6 (18TH TO 19TH) | 2d | 2022-03-09 A | 2022-03-10 A | 3-1696 | 100% | 2022-03-04 | 2022-03-07 | MBRT BASE [16 h] | 16 | 16 | UNM | 16 | ZONE-3 | 18 | WATERLINE | CIVIL | FM001 |  |  |  |
| PCO165.01 |  | DSC 115-Valve Vault conflcit stage 6 | 5d | 2022-03-11 A | 2022-03-14 A | MS-0025 | 100% | 2023-02-27 | 2023-03-03 | MBRT DSC [8 h] | 8 | 8 |  | 8 |  |  |  |  |  |  |  |  |
| 3-1698 |  | INST FIRE HYDRANTS, STAGE 6 (18TH TO 19TH) | 1d | 2022-03-11 A | 2022-03-11 A | 3-1697, 3-1695 | 100% | 2022-03-08 | 2022-03-08 | MBRT BASE [8 h] | 8 | 8 | UNM | 8 | ZONE-3 | 18 | WATERLINE | CIVIL | FM001 |  |  |  |
| 3-1699 |  | INST THRUST BLOCKS, STAGE 6 (18TH TO 19TH) | 1d | 2022-03-14 A | 2022-03-14 A | 3-1698 | 100% | 2022-03-09 | 2022-03-09 | MBRT BASE [8 h] | 8 | 8 | UNM | 8 | ZONE-3 | 18 | WATERLINE | CIVIL | FM001 |  |  |  |
| 3-1700 |  | INST THRUST COLLAR, STAGE 6 (18TH TO 19TH) | 2d | 2022-03-16 A | 2022-03-21 A | 3-1699 | 100% | 2022-03-10 | 2022-03-11 | MBRT BASE [32 h] | 32 | 32 | UNM | 32 | ZONE-3 | 18 | WATERLINE | CIVIL | FM001 |  |  |  |
| 3-1701 |  | FLUSH, TEST & DISINFECT MAIN, STAGE 6 (18TH TO 19TH) | 2d | 2022-03-22 A | 2022-03-23 A | 3-1700 | 100% | 2022-03-14 | 2022-03-15 | MBRT BASE [16 h] | 16 | 16 | UNM | 16 | ZONE-3 | 18 | WATERLINE | CIVIL | FM001 | BACT |  |  |
| 3-1702 |  | BAC T RESULTS, STAGE 6 (18TH TO 19TH) | 3d | 2022-03-24 A | 2022-03-28 A | 3-1701 | 100% |  |  | MBRT BASE [24 h] | 24 | 24 | CITY | 24 | ZONE-3 | 18 | WATERLINE | CIVIL | FM001 | BACT |  |  |
| 3-1703 |  | 5d NOTICE FOR SPU, STAGE 6 (18TH TO 19TH) | 5d | 2022-03-29 A | 2022-04-06 A | 3-1702 | 100% | 2022-03-21 | 2022-03-25 | MBRT BASE |  |  | CITY | 56 | ZONE-3 | 18 | WATERLINE | CIVIL | FM001 | BACT |  |  |
| 3-1704 |  | SPU CONNECT TO CC16 & CC18, STAGE 6 (18TH TO 19TH) | 1d | 2022-04-07 A | 2022-04-07 A | 3-1703 | 100% |  |  | MBRT BASE [8 h] | 8 | 8 | UNM,CITY | 8 | ZONE-3 | 18 | WATERLINE | CIVIL | FM001 |  | SPU | NIGHT |
| 3-1705 |  | SPU TRANFER SERVICES, STAGE 6 (18TH TO 19TH) | 1d | 2022-04-08 A | 2022-04-08 A | 3-1704 | 100% |  |  | MBRT BASE [8 h] | 8 | 8 | UNM,CITY | 8 | ZONE-3 | 18 | WATERLINE | CIVIL | FM001 |  | SPU |  |
| 3-1706 |  | SPU CONNECT TO CC17, STAGE 6 (18TH TO 19TH) | 1d | 2022-04-11 A | 2022-04-11 A | 3-1705 | 100% |  |  | MBRT BASE [8 h] | 8 | 8 | UNM,CITY | 8 | ZONE-3 | 18 | WATERLINE | CIVIL | FM001 |  | SPU | NIGHT |
| 3-1707 |  | REMOVE TEMP MAIN, STAGE 6 (18TH TO 19TH) | 1d | 2022-04-11 A | 2022-04-11 A | 3-1706 SS | 100% | 2022-04-12 | 2022-04-12 | MBRT BASE [8 h] | 8 | 8 | UNM | 8 | ZONE-3 | 18 | WATERLINE | CIVIL | FM001 |  |  |  |

| ID | WBS | Activity | Duration | Start | Finish | Predecessors | Complete | Planned start | Planned finish | Resources | Cost | Actual cost | user_number6 | user_text2 | MBRT-ZONE | MBRT-LOCATION | MBRT-SCOPE | MBRT-TYPE | MBRT-RESP | MBRT-NIGHT | MBRT-DELAY | MBRT-ACTIVITY |
| --- | --- | --- | --- | --- | --- | --- | --- | --- | --- | --- | --- | --- | --- | --- | --- | --- | --- | --- | --- | --- | --- | --- |
|  | 2 | **STAGE 7 (19TH TO 20TH)** |  | 2022-03-28 | 2022-05-26 |  |  |  |  |  |  |  |  |  |  |  |  |  |  |  |  |  |
| PCO185.01 |  | DSC 131-CC20 North Side 19th conflict | 5d | 2022-03-28 A | 2022-03-29 A | MS-0025 | 100% | 2023-02-27 | 2023-03-03 | MBRT DSC [8 h] | 8 | 8 | 8 |  |  |  |  |  |  |  |  |  |
| 3-1709 |  | SPU CUT & CAPCC20, CC21 & CC22, STAGE 7 (19TH TO 20TH) | 1d | 2022-04-11 A | 2022-04-11 A | 3-1707, 3-1685, 3-1670, 3-1682, 3-1673 | 100% | 2022-04-13 | 2022-04-13 | MBRT BASE [8 h] | 8 | 8 | 8 | UNM,CITY | ZONE-3 | 19 | WATERLINE | CIVIL | SPU | NIGHT | FM001 |  |
| 3-1710 |  | INST MAIN 19TH TO 20TH, STAGE 7 (19TH TO 20TH) | 5d | 2022-04-12 A | 2022-04-18 A | 3-1703 | 100% | 2022-04-07 | 2022-04-13 | MBRT BASE [40 h] | 40 | 40 | 40 | UNM | ZONE-3 | 19 | WATERLINE | CIVIL |  |  | FM001 |  |
| PCO216.01 |  | DSC 154-Unknown water service stage 7 | 5d | 2022-04-15 A | 2022-04-16 A | MS-0025 | 100% | 2023-02-27 | 2023-03-03 | MBRT DSC [8 h] | 8 | 8 | 8 |  |  |  |  |  |  |  |  |  |
| 3-1711 |  | INST MAIN ON 19TH, STAGE 7 (19TH TO 20TH) | 1d | 2022-04-19 A | 2022-04-25 A | 3-1710 | 100% | 2022-04-14 | 2022-04-14 | MBRT BASE [40 h] | 40 | 40 | 40 | UNM | ZONE-3 | 19 | WATERLINE | CIVIL |  |  | FM001 |  |
| PCO227.01 |  | DSC 162-Waterline @ 19th Conflict | 5d | 2022-04-23 A | 2022-05-06 A | MS-0025 | 100% | 2023-02-27 | 2023-03-03 | MBRT DSC [72 h] | 72 | 72 | 72 |  |  |  |  |  |  |  |  |  |
| PCO233.01 |  | DSC 168-Unknown Unlocated Comm Line at 19th | 5d | 2022-04-26 A | 2022-04-27 A | MS-0025 | 100% | 2023-02-27 | 2023-03-03 | MBRT DSC [8 h] | 8 | 8 | 8 |  |  |  |  |  |  |  |  |  |
| 3-1712 |  | INST FIRE HYDRANTS, STAGE 7 (19TH TO 20TH) | 1d | 2022-04-26 A | 2022-04-26 A | 3-1711 | 100% | 2022-04-15 | 2022-04-15 | MBRT BASE [8 h] | 8 | 8 | 8 | UNM | ZONE-3 | 19 | WATERLINE | CIVIL |  |  | FM001 |  |
| 3-1713 |  | INST THRUST BLOCKS, STAGE 7 (19TH TO 20TH) | 1d | 2022-04-27 A | 2022-04-27 A | 3-1712 | 100% | 2022-04-18 | 2022-04-18 | MBRT BASE [8 h] | 8 | 8 | 8 | UNM | ZONE-3 | 19 | WATERLINE | CIVIL |  |  | FM001 |  |
| 3-1714 |  | INST THRUST COLLAR, STAGE 7 (19TH TO 20TH) | 2d | 2022-04-28 A | 2022-04-28 A | 3-1713, 3-1709 | 100% | 2022-04-19 | 2022-04-20 | MBRT BASE [8 h] | 8 | 8 | 8 | UNM | ZONE-3 | 19 | WATERLINE | CIVIL |  |  | FM001 |  |
| 3-1715 |  | FLUSH, TEST & DISINFECT MAIN, STAGE 7 (19TH TO 20TH) | 2d | 2022-04-29 A | 2022-05-02 A | 3-1714 | 100% | 2022-04-21 | 2022-04-22 | MBRT BASE [16 h] | 16 | 16 | 16 | UNM | ZONE-3 | 19 | WATERLINE | CIVIL |  |  | FM001 | BACT |
| 3-1716 |  | BAC T RESULTS, STAGE 7 (19TH TO 20TH) | 3d | 2022-05-03 A | 2022-05-04 A | 3-1715 | 100% | 2022-05-04 | 2022-05-06 | MBRT BASE [16 h] | 16 | 16 | 16 | CITY | ZONE-3 | 19 | WATERLINE | CIVIL |  |  | FM001 | BACT |
| 3-1717 |  | 5d NOTICE FOR SPU, STAGE 7 (19TH TO 20TH) | 3d | 2022-05-05 A | 2022-05-10 A | 3-1716 | 100% | 2022-05-09 | 2022-05-11 | MBRT BASE |  |  | 32 | CITY | ZONE-3 | 19 | WATERLINE | CIVIL |  |  | FM001 | BACT |
| 3-1718 |  | SPU CONNECT MAIN AT 283+40, CC20 & CC21, STAGE 7 (19TH TO 20TH) | 1d | 2022-05-11 A | 2022-05-11 A | 3-1717 | 100% |  |  | MBRT BASE [8 h] | 8 | 8 | 8 | UNM,CITY | ZONE-3 | 19 | WATERLINE | CIVIL | SPU | NIGHT | FM001 |  |
| 3-1719 |  | SPU TRANSFER SERVICES, STAGE 7 (19TH TO 20TH) | 1d | 2022-05-12 A | 2022-05-12 A | 3-1718 | 100% | 2022-05-13 | 2022-05-13 | MBRT BASE [8 h] | 8 | 8 | 8 | UNM,CITY | ZONE-3 | 19 | WATERLINE | CIVIL | SPU |  | FM001 |  |
| PCO247.01 |  | DSC 180-DSC Stage 7 at 20th 12" to 8" | 5d | 2022-05-16 A | 2022-05-16 A | MS-0025 | 100% | 2023-02-27 | 2023-03-03 | MBRT DSC [8 h] | 8 | 8 | 8 |  |  |  |  |  |  |  |  |  |
| 3-1720 |  | SPU INST PRE FLUSHED PIPE AT 90 BEND TO EX MAIN ON 20TH, STAGE 7 (19TH TO 20TH) | 1d | 2022-05-16 A | 2022-05-16 A | 3-1719 | 100% |  |  | MBRT BASE [8 h] | 8 | 8 | 8 | UNM,CITY | ZONE-3 | 19 | WATERLINE | CIVIL | SPU |  | FM001 |  |
| 3-1840 |  | DELAY DUE TO CHANGING PIPE TO 8INCH AT 20TH | 5d | 2022-05-17 A | 2022-05-25 A | 3-1720 | 100% | 2022-05-02 | 2022-05-06 | MBRT BASE [56 h] | 56 | 56 | 56 |  |  |  |  |  |  |  |  |  |
| 3-1920 |  | COMPLETE STAGE 7 AFTER DELAY | 5d | 2022-05-26 A | 2022-05-26 A | 3-1840 | 100% | 2022-05-02 | 2022-05-06 | MBRT NEW [40 h] | 40 | 8 | 0 |  |  |  |  |  |  |  |  |  |
|  | 3 | **STAGE 8 (20TH TO DENNY)** |  | 2022-07-05 | 2022-08-05 |  |  |  |  |  |  |  |  |  |  |  |  |  |  |  |  |  |
| PCO302.01 |  | DSC 223-unknown water services Stage 8 | 5d | 2022-07-05 A | 2022-07-28 A | MS-0025 | 100% | 2023-02-27 | 2023-03-03 | MBRT DSC [136 h] | 136 | 136 | 136 |  |  |  |  |  |  |  |  |  |
| PCO304.01 |  | DSC 224-Unknown CDF in conflict with Stage 8 watermain | 5d | 2022-07-05 A | 2022-07-15 A | MS-0025 | 100% | 2023-02-27 | 2023-03-03 | MBRT DSC [64 h] | 64 | 64 | 64 |  |  |  |  |  |  |  |  |  |
| 3-1722 |  | SPU CUT & CAP CC23 & CC24, STAGE 8 (20TH TO DENNY) | 1d | 2022-07-05 A | 2022-07-05 A | 3-1675, 3-1716, 3-1749, 3-1920 | 100% | 2022-07-15 | 2022-07-15 | MBRT BASE [8 h] | 8 | 8 | 8 | UNM,CITY | ZONE-3 | 20 | WATERLINE | CIVIL | SPU | NIGHT | FM001 |  |
| PCO305.01 |  | DSC 225-Unlocated 2" Rigid Conduit - @ SCL trench | 5d | 2022-07-07 A | 2022-07-08 A | MS-0025 | 100% | 2023-02-27 | 2023-03-03 | MBRT DSC [8 h] | 8 | 8 | 8 |  |  |  |  |  |  |  |  |  |
| PCO306.01 |  | DSC 226-Ductbank Conflict with Watermain Stage 8 | 5d | 2022-07-07 A | 2022-07-15 A | MS-0025 | 100% | 2023-02-27 | 2023-03-03 | MBRT DSC [48 h] | 48 | 48 | 48 |  |  |  |  |  |  |  |  |  |
| PCO307.01 |  | DSC 227-Gas Pothole Conflict - Stage 8 Watermain | 5d | 2022-07-07 A | 2022-07-22 A | MS-0025 | 100% | 2023-02-27 | 2023-03-03 | MBRT DSC [88 h] | 88 | 88 | 88 |  |  |  |  |  |  |  |  |  |
| 3-1723 |  | INST MAIN 20TH TO WEST OF DENNY, STAGE 8 (20TH TO DENNY) | 5d | 2022-07-07 A | 2022-07-13 A | 3-1722 | 100% | 2022-07-18 | 2022-07-22 | MBRT BASE [40 h] | 40 | 40 | 40 | UNM | ZONE-3 | 20 | WATERLINE | CIVIL |  |  | FM001 |  |
| PCO314.01 |  | DSC 231-Contaminated Soils 20th-22nd | 5d | 2022-07-11 A | 2022-07-29 A | MS-0025 | 100% | 2023-02-27 | 2023-03-03 | MBRT DSC [112 h] | 112 | 112 | 112 |  |  |  |  |  |  |  |  |  |
| 3-1725 |  | INST THRUST BLOCKS, STAGE 8 (20TH TO DENNY) | 1d | 2022-07-14 A | 2022-07-14 A | 3-1723 | 100% | 2022-07-26 | 2022-07-26 | MBRT BASE [8 h] | 8 | 8 | 8 | UNM | ZONE-3 | 20 | WATERLINE | CIVIL |  |  | FM001 |  |
| 3-1726 |  | FLUSH, TEST & DISINFECT MAIN, STAGE 8 (20TH TO DENNY) | 2d | 2022-07-18 A | 2022-07-19 A | 3-1725 | 100% | 2022-07-27 | 2022-07-28 | MBRT BASE [16 h] | 16 | 16 | 16 | UNM | ZONE-3 | 20 | WATERLINE | CIVIL |  |  | FM001 | BACT |
| 3-1727 |  | BAC T RESULTS, STAGE 8 (20TH TO DENNY) | 3d | 2022-07-21 A | 2022-07-25 A | 3-1726 | 100% | 2022-07-29 | 2022-08-02 | MBRT BASE [24 h] | 24 | 24 | 24 | CITY | ZONE-3 | 20 | WATERLINE | CIVIL |  |  | FM001 | BACT |
| 3-1728 |  | 5d NOTICE FOR SPU, STAGE 8 (20TH TO DENNY) | 5d | 2022-07-26 A | 2022-07-29 A | 3-1727 | 100% | 2022-07-26 | 2022-08-01 | MBRT BASE |  |  | 24 | CITY | ZONE-3 | 20 | WATERLINE | CIVIL |  |  | FM001 | BACT |
| 3-1724 |  | INST FIRE HYDRANTS, STAGE 8 (20TH TO DENNY) | 1d | 2022-08-01 A | 2022-08-01 A | 3-1723, 3-1728 | 100% |  |  | MBRT BASE [8 h] | 8 | 8 | 8 | UNM | ZONE-3 | 20 | WATERLINE | CIVIL |  |  | FM001 |  |
| 3-1729 |  | SPU CONNECT NEW MAIN, STAGE 8 (20TH TO DENNY) | 1d | 2022-08-01 A | 2022-08-01 A | 3-1728, 3-1720 | 100% |  |  | MBRT BASE [8 h] | 8 | 8 | 8 | UNM,CITY | ZONE-3 | 20 | WATERLINE | CIVIL | SPU |  | FM001 |  |
| 3-1730 |  | SPU TRANSFER SERVICES, STAGE 8 (20TH TO DENNY) | 3d | 2022-08-02 A | 2022-08-05 A | 3-1729, 3-1724 | 100% | 2022-08-02 | 2022-08-04 | MBRT BASE [32 h] | 32 | 32 | 32 | UNM,CITY | ZONE-3 | 20 | WATERLINE | CIVIL | SPU |  | FM001 |  |

| ID | WBS | Activity | Duration | Start | Finish | Predecessors | Complete | Planned start | Planned finish | Resources | Cost | Actual cost | user_number6 | user_text2 | MBRT-ZONE | MBRT-LOCATION | MBRT-SCOPE | MBRT-TYPE | MBRT-DELAY | MBRT-ACTIVITY | MBRT-RESP | MBRT-NIGHT |
| --- | --- | --- | --- | --- | --- | --- | --- | --- | --- | --- | --- | --- | --- | --- | --- | --- | --- | --- | --- | --- | --- | --- |
|  | 4 | **STAGE 9 (DENNY TO 23RD)** |  | 2022-03-10 | 2022-08-09 |  |  |  |  |  |  |  |  |  |  |  |  |  |  |  |  |  |
| PCO163.01 |  | DSC 114-Water Service Obstruction STA 299+50 | 5d | 2022-03-10 A | 2022-03-17 A | MS-0025 | 100% | 2023-02-27 | 2023-03-03 | MBRT DSC [40 h] | 40 | 40 | 40 |  |  |  |  |  |  |  |  |  |
| 3-1742 |  | INST NEW MAIN FROM WEST OF DENNY TO 23RD, STAGE 9 (DENNY TO 23RD) | 10d | 2022-05-09 A | 2022-06-28 A | 3-1741 | 100% | 2022-05-31 | 2022-06-13 | MBRT BASE [288 h] | 288 | 288 | 288 | UNM | ZONE-3 | DENNY | WATERLINE | CIVIL | FM001 |  |  |  |
| 3-1732 |  | INST TEMP MAIN, SERVICES & LATERALS, T11, T12 & T13, STAGE 9 (DENNY TO 23RD) | 5d | 2022-05-17 A | 2022-05-19 A | 3-1720 | 100% | 2022-05-17 | 2022-05-23 | MBRT BASE [24 h] | 24 | 24 | 24 | UNM | ZONE-3 | DENNY | WATERLINE | CIVIL | FM001 |  |  |  |
| 3-1733 |  | FLUSH, TEST & DISINFECT TEMP MAIN, STAGE 9 (DENNY TO 23RD) | 1d | 2022-05-20 A | 2022-05-23 A | 3-1732 | 100% | 2022-05-24 | 2022-05-24 | MBRT BASE [16 h] | 16 | 16 | 16 | UNM | ZONE-3 | DENNY | WATERLINE | CIVIL | FM001 | BACT |  |  |
| 3-1734 |  | BAC T RESULTS, STAGE 9 (DENNY TO 23RD) | 3d | 2022-05-24 A | 2022-05-26 A | 3-1733 | 100% | 2022-05-25 | 2022-05-27 | MBRT BASE [24 h] | 24 | 24 | 24 | CITY | ZONE-3 | DENNY | WATERLINE | CIVIL | FM001 | BACT |  |  |
| 3-1735 |  | 5d NOTICE FOR SPU, STAGE 9 (DENNY TO 23RD) | 5d | 2022-05-27 A | 2022-06-03 A | 3-1734 | 100% | 2022-05-31 | 2022-06-06 | MBRT BASE |  |  | 40 | CITY | ZONE-3 | DENNY | WATERLINE | CIVIL | FM001 | BACT |  |  |
| 3-1736 |  | SPU TAP MAIN AT CC28 FOR TEMP MAIN T11, STAGE 9 (DENNY TO 23RD) | 1d | 2022-06-06 A | 2022-06-08 A | 3-1735 | 100% | 2022-06-06 | 2022-06-06 | MBRT BASE [24 h] | 24 | 24 | 24 | UNM,CITY | ZONE-3 | DENNY | WATERLINE | CIVIL | FM001 |  | SPU |  |
| 3-1737 |  | TRANSFER SERVICES TO T11, STAGE 9 (DENNY TO 23RD) | 1d | 2022-06-06 A | 2022-06-08 A | 3-1736 | 100% | 2022-05-31 | 2022-05-31 | MBRT BASE [24 h] | 24 | 24 | 24 | UNM,CITY | ZONE-3 | DENNY | WATERLINE | CIVIL | FM001 |  |  |  |
| 3-1738 |  | SPU CUT & CAP C29 & INST TEMP MAIN AT T12 & T13, STAGE 9 (DENNY TO 23RD) | 1d | 2022-06-06 A | 2022-06-08 A | 3-1737 SS | 100% | 2022-05-31 | 2022-05-31 | MBRT BASE [24 h] | 24 | 24 | 24 | UNM,CITY | ZONE-3 | DENNY | WATERLINE | CIVIL | FM001 |  | SPU | NIGHT |
| 3-1739 |  | SPU CUT & CAP CC30, STAGE 9 (DENNY TO 23RD) | 1d | 2022-06-06 A | 2022-06-08 A | 3-1738 SS | 100% | 2022-05-31 | 2022-05-31 | MBRT BASE [24 h] | 24 | 24 | 24 | UNM,CITY | ZONE-3 | DENNY | WATERLINE | CIVIL | FM001 |  | SPU | NIGHT |
| 3-1740 |  | SPU TRANSFER SERVICESS TO T12 & T13, STAGE 9 (DENNY TO 23RD) | 1d | 2022-06-06 A | 2022-06-08 A | 3-1739 SS | 100% | 2022-05-31 | 2022-05-31 | MBRT BASE [24 h] | 24 | 24 | 24 | UNM,CITY | ZONE-3 | DENNY | WATERLINE | CIVIL | FM001 |  | SPU |  |
| 3-1741 |  | SPU CUT & CAP AT CC26, CC27, CC28 & CC31, STAGE 9 (DENNY TO 23RD) | 1d | 2022-06-06 A | 2022-06-08 A | 3-1740 | 100% | 2022-06-01 | 2022-06-01 | MBRT BASE [24 h] | 24 | 24 | 24 | UNM,CITY | ZONE-3 | DENNY | WATERLINE | CIVIL | FM001 |  | SPU | NIGHT |
| PCO284.01 |  | DSC 209-Stage 9 Water - Ductbank Conflict | 5d | 2022-06-20 A | 2022-06-22 A | MS-0025 | 100% | 2023-02-27 | 2023-03-03 | MBRT DSC [16 h] | 16 | 16 | 16 |  |  |  |  |  |  |  |  |  |
| PCO286.01 |  | DSC 211-Stage 9 Water - CDF encased Gas line | 5d | 2022-06-20 A | 2022-06-21 A | MS-0025 | 100% | 2023-02-27 | 2023-03-03 | MBRT DSC [8 h] | 8 | 8 | 8 |  |  |  |  |  |  |  |  |  |
| PCO293.01 |  | DSC 215-Stage 9 Gas and Conduit Conflict at STA295+05 | 5d | 2022-06-27 A | 2022-06-30 A | MS-0025 | 100% | 2023-02-27 | 2023-03-03 | MBRT DSC [24 h] | 24 | 24 | 24 |  |  |  |  |  |  |  |  |  |
| 3-1743 |  | INST MAIN ON DENNY, STAGE 9 (DENNY TO 23RD) | 1d | 2022-07-05 A | 2022-07-06 A | 3-1742 | 100% | 2022-07-01 | 2022-07-01 | MBRT BASE [16 h] | 16 | 16 | 16 | UNM | ZONE-3 | DENNY | WATERLINE | CIVIL | FM001 |  |  |  |
| 3-1744 |  | INST MAIN ON 22ND, STAGE 9 (DENNY TO 23RD) | 1d | 2022-07-13 A | 2022-07-13 A | 3-1743 | 100% | 2022-07-05 | 2022-07-05 | MBRT BASE [8 h] | 8 | 8 | 8 | UNM | ZONE-3 | DENNY | WATERLINE | CIVIL | FM001 |  |  |  |
| 3-1747 |  | INST THRUST BLOCKS, STAGE 9 (DENNY TO 23RD) | 1d | 2022-07-13 A | 2022-07-13 A | 3-1743 | 100% | 2022-07-08 | 2022-07-08 | MBRT BASE [8 h] | 8 | 8 | 8 | UNM | ZONE-3 | DENNY | WATERLINE | CIVIL | FM001 |  |  |  |
| 3-1745 |  | INST MAIN ON 23RD, STAGE 9 (DENNY TO 23RD) | 1d | 2022-07-14 A | 2022-07-14 A | 3-1744 SS | 100% | 2022-07-05 | 2022-07-05 | MBRT BASE [8 h] | 8 | 8 | 8 | UNM | ZONE-3 | DENNY | WATERLINE | CIVIL | FM001 |  |  |  |
| 3-1748 |  | INST THRUST COLLARS, STAGE 9 (DENNY TO 23RD) | 2d | 2022-07-14 A | 2022-07-15 A | 3-1747 | 100% | 2022-07-11 | 2022-07-12 | MBRT BASE [16 h] | 16 | 16 | 16 | UNM | ZONE-3 | DENNY | WATERLINE | CIVIL | FM001 |  |  |  |
| 3-1749 |  | FLUSH, TEST & DISINFECT MAIN, STAGE 9 (DENNY TO 23RD) | 2d | 2022-07-18 A | 2022-07-20 A | 3-1748 | 100% | 2022-07-13 | 2022-07-14 | MBRT BASE [16 h] | 16 | 16 | 16 | UNM | ZONE-3 | DENNY | WATERLINE | CIVIL | FM001 | BACT |  |  |
| 3-1750 |  | BAC T RESULTS, STAGE 9 (DENNY TO 23RD) | 3d | 2022-07-21 A | 2022-07-25 A | 3-1749 | 100% | 2022-07-15 | 2022-07-19 | MBRT BASE [24 h] | 24 | 24 | 24 | CITY | ZONE-3 | DENNY | WATERLINE | CIVIL | FM001 | BACT |  |  |
| 3-1751 |  | 5d NOTICE FOR SPU, STAGE 9 (DENNY TO 23RD) | 5d | 2022-07-26 A | 2022-07-29 A | 3-1750 | 100% | 2022-08-01 | 2022-08-05 | MBRT BASE |  |  | 32 | CITY | ZONE-3 | DENNY | WATERLINE | CIVIL | FM001 | BACT |  |  |
| PCO335.01 |  | DSC 245-unknown water service | 5d | 2022-07-27 A | 2022-08-05 A | MS-0025 | 100% | 2023-02-27 | 2023-03-03 | MBRT DSC [56 h] | 56 | 56 | 56 |  |  |  |  |  |  |  |  |  |
| PCO336.01 |  | DSC 246-Concrete obstrution stage 9 tie in | 5d | 2022-07-27 A | 2022-08-05 A | MS-0025 | 100% | 2023-02-27 | 2023-03-03 | MBRT DSC [56 h] | 56 | 56 | 56 |  |  |  |  |  |  |  |  |  |
| 3-1746 |  | INST HYDRANTS, STAGE 9 (DENNY TO 23RD) | 2d | 2022-08-01 A | 2022-08-02 A | 3-1751, 3-1745 | 100% | 2022-08-02 | 2022-08-03 | MBRT BASE [16 h] | 16 | 16 | 16 | UNM | ZONE-3 | DENNY | WATERLINE | CIVIL | FM001 |  |  |  |
| 3-1752 |  | SPU CONNECT NEW MAIN AT 291+40 & CC27, STAGE 9 (DENNY TO 23RD) | 1d | 2022-08-01 A | 2022-08-01 A | 3-1751 | 100% | 2022-08-02 | 2022-08-02 | MBRT BASE [8 h] | 8 | 8 | 8 | UNM,CITY | ZONE-3 | DENNY | WATERLINE | CIVIL | FM001 |  | SPU | NIGHT |
| 3-1753 |  | SPU TRANSFER SERVICES, STAGE 9 (DENNY TO 23RD) | 3d | 2022-08-02 A | 2022-08-04 A | 3-1752, 3-1746 FF | 100% | 2022-08-03 | 2022-08-05 | MBRT BASE [24 h] | 24 | 24 | 24 | UNM,CITY | ZONE-3 | DENNY | WATERLINE | CIVIL | FM001 |  | SPU |  |
| 3-1754 |  | SPU CONNECT AT CC28, CC29, CC30 & CC31, STAGE 9 (DENNY TO 23RD) | 1d | 2022-08-05 A | 2022-08-05 A | 3-1753 | 100% | 2022-08-08 | 2022-08-08 | MBRT BASE [8 h] | 8 | 8 | 8 | UNM,CITY | ZONE-3 | DENNY | WATERLINE | CIVIL | FM001 |  | SPU | NIGHT |
| 3-1755 |  | REM TEMP MAIN, STAGE 9 (DENNY TO 23RD) | 2d | 2022-08-08 A | 2022-08-09 A | 3-1754 | 100% | 2022-08-09 | 2022-08-10 | MBRT BASE [16 h] | 16 | 16 | 16 | UNM | ZONE-3 | DENNY | WATERLINE | CIVIL | FM001 |  |  |  |

| ID | WBS | Activity | Duration | Start | Finish | Predecessors | Complete | Planned start | Planned finish | Resources | Cost | Actual cost | user_text2 | user_number6 | MBRT-ZONE | MBRT-LOCATION | MBRT-SCOPE | MBRT-TYPE | MBRT-RESP | MBRT-NIGHT | MBRT-DELAY | MBRT-ACTIVITY |
| --- | --- | --- | --- | --- | --- | --- | --- | --- | --- | --- | --- | --- | --- | --- | --- | --- | --- | --- | --- | --- | --- | --- |
|  | 5 | **STAGE 10 (23RD TO 24TH)** |  | 2022-01-10 | 2022-03-28 |  |  |  |  |  |  |  |  |  |  |  |  |  |  |  |  |  |
| 3-1757 |  | SPU CUT & CAP CC32A, CC32B, CC33, CC34, CC35A & CC35B, STAGE 10 (23RD TO 24TH) | 6d | 2022-01-10 A | 2022-01-20 A | 3-1679 FF | 100% | 2022-09-06 | 2022-09-13 | MBRT BASE [64 h] | 64 | 64 | UNM,CITY | 64 | ZONE-3 | 23 | WATERLINE | CIVIL | SPU | NIGHT | FM001 |  |
| 3-1758 |  | INST MAIN 23RD TO 24TH, STAGE 10 (23RD TO 24TH) | 10d | 2022-01-24 A | 2022-02-10 A | 3-1757 | 100% | 2022-09-14 | 2022-09-27 | MBRT BASE [112 h] | 112 | 112 | UNM | 112 | ZONE-3 | 23 | WATERLINE | CIVIL |  |  | FM001 |  |
| PCO128.01 |  | DSC 86-Ductbank conflict phase 10 waterline STA 303+20 | 5d | 2022-02-04 A | 2022-02-12 A | MS-0025 | 100% | 2023-02-27 | 2023-03-03 | MBRT DSC [48 h] | 48 | 48 |  | 48 |  |  |  |  |  |  |  |  |
| PCO135.01 |  | DSC 92-Gas Main conflict with Waterline at 24th South side | 5d | 2022-02-10 A | 2022-02-12 A | MS-0025 | 100% | 2023-02-27 | 2023-03-03 | MBRT DSC [16 h] | 16 | 16 |  | 16 |  |  |  |  |  |  |  |  |
| 3-1759 |  | INST MAIN AT 24TH, STAGE 10 (23RD TO 24TH) | 4d | 2022-02-11 A | 2022-02-21 A | 3-1758 | 100% | 2022-02-07 | 2022-02-10 | MBRT BASE [48 h] | 48 | 48 | UNM | 48 | ZONE-3 | 23 | WATERLINE | CIVIL |  |  | FM001 |  |
| PCO140.01 |  | DSC 97-Watermain conflict 24th Ave north side | 5d | 2022-02-15 A | 2022-02-16 A | MS-0025 | 100% | 2023-02-27 | 2023-03-03 | MBRT DSC [8 h] | 8 | 8 |  | 8 |  |  |  |  |  |  |  |  |
| PCO147.01 |  | DSC 104-Concrete Obstructions deaper than 18" Waterline conflict east of 23rd | 5d | 2022-02-18 A | 2022-02-25 A | MS-0025 | 100% | 2023-02-27 | 2023-03-03 | MBRT DSC [32 h] | 32 | 32 |  | 32 |  |  |  |  |  |  |  |  |
| PCO149.01 |  | DSC 106-Tree Conflict Waterline Stage 10 | 5d | 2022-02-21 A | 2022-02-22 A | MS-0025 | 100% | 2023-02-27 | 2023-03-03 | MBRT DSC [8 h] | 8 | 8 |  | 8 |  |  |  |  |  |  |  |  |
| 3-1761 |  | INST THRUST BLOCKS, STAGE 10 (23RD TO 24TH) | 2d | 2022-02-22 A | 2022-02-22 A | 3-1759 | 100% | 2022-02-14 | 2022-02-15 | MBRT BASE [8 h] | 8 | 8 | UNM | 8 | ZONE-3 | 23 | WATERLINE | CIVIL |  |  | FM001 |  |
| PCO151.01 |  | DSC 108-unknown utility conflict waterline TEE zone 10 | 5d | 2022-02-24 A | 2022-02-25 A | MS-0025 | 100% | 2023-02-27 | 2023-03-03 | MBRT DSC [8 h] | 8 | 8 |  | 8 |  |  |  |  |  |  |  |  |
| 3-1762 |  | INST THRUST COLLARS, STAGE 10 (23RD TO 24TH) | 2d | 2022-03-01 A | 2022-03-01 A | 3-1761 | 100% | 2022-02-16 | 2022-02-17 | MBRT BASE [8 h] | 8 | 8 | UNM | 8 | ZONE-3 | 23 | WATERLINE | CIVIL |  |  | FM001 |  |
| 3-1763 |  | FLUSH, TEST & DISINFECT MAIN, STAGE 10 (23RD TO 24TH) | 2d | 2022-03-01 A | 2022-03-02 A | 3-1762 | 100% | 2022-02-18 | 2022-02-22 | MBRT BASE [16 h] | 16 | 16 | UNM | 16 | ZONE-3 | 23 | WATERLINE | CIVIL |  |  | FM001 | BACT |
| PCO155.01 |  | DSC 109-Unlocated unmarked water service STA 281+00 | 5d | 2022-03-02 A | 2022-03-03 A | MS-0025 | 100% | 2023-02-27 | 2023-03-03 | MBRT DSC [8 h] | 8 | 8 |  | 8 |  |  |  |  |  |  |  |  |
| 3-1764 |  | BAC T RESULTS, STAGE 10 (23RD TO 24TH) | 3d | 2022-03-02 A | 2022-03-05 A | 3-1763 | 100% | 2022-02-22 | 2022-02-24 | MBRT BASE [24 h] | 24 | 24 | CITY | 24 | ZONE-3 | 23 | WATERLINE | CIVIL |  |  | FM001 | BACT |
| 3-1765 |  | 5d NOTICE FOR SPU, STAGE 10 (23RD TO 24TH) | 5d | 2022-03-03 A | 2022-03-11 A | 3-1764 | 100% | 2022-03-04 | 2022-03-10 | MBRT BASE |  |  | CITY | 56 | ZONE-3 | 23 | WATERLINE | CIVIL |  |  | FM001 | BACT |
| 3-1766 |  | SPU CONECT AT CC32A, STAGE 10 (23RD TO 24TH) | 1d | 2022-03-14 A | 2022-03-14 A | 3-1765 | 100% | 2022-03-11 | 2022-03-11 | MBRT BASE [8 h] | 8 | 8 | UNM,CITY | 8 | ZONE-3 | 23 | WATERLINE | CIVIL | SPU | NIGHT | FM001 |  |
| 3-1767 |  | SPU TRANSFER SERVICES, STAGE 10 (23RD TO 24TH) | 5d | 2022-03-15 A | 2022-03-16 A | 3-1766 | 100% | 2022-03-14 | 2022-03-18 | MBRT BASE [16 h] | 16 | 16 | UNM,CITY | 16 | ZONE-3 | 23 | WATERLINE | CIVIL | SPU |  | FM001 |  |
| 3-1768 |  | SPU CONNECT AT CC33, CC34, CC35A & CC49, STAGE 10 (23RD TO 24TH) | 2d | 2022-03-15 A | 2022-03-28 A | 3-1767 SS, 3-1760 FF | 100% | 2022-03-21 | 2022-03-22 | MBRT BASE [80 h] | 80 | 80 | UNM,CITY | 80 | ZONE-3 | 23 | WATERLINE | CIVIL | SPU | NIGHT | FM001 |  |
| 3-1760 |  | INST HYDRANTS, STAGE 10 (23RD TO 24TH) | 1d | 2022-03-28 A | 2022-03-28 A | 3-1759 | 100% | 2022-03-31 | 2022-03-31 | MBRT BASE [8 h] | 8 | 8 | UNM | 8 | ZONE-3 | 23 | WATERLINE | CIVIL |  |  | FM001 |  |
|  | 6 | **STAGE 11 (24TH TO 25TH)** |  | 2022-02-28 | 2022-07-12 |  |  |  |  |  |  |  |  |  |  |  |  |  |  |  |  |  |
| 3-1770 |  | INST TEMP MAIN, SERVICES & LATERALS, T14, STAGE 11 (24TH TO 25TH) | 1d | 2022-02-28 A | 2022-02-28 A | 3-1763 | 100% | 2022-03-01 | 2022-03-01 | MBRT BASE [8 h] | 8 | 8 | UNM | 8 | ZONE-3 | 24 | WATERLINE | CIVIL |  |  | FM001 |  |
| 3-1771 |  | FLUSH, TEST & DISINFECT MAIN, STAGE 11 (24TH TO 25TH) | 2d | 2022-03-01 A | 2022-03-02 A | 3-1770 | 100% | 2022-03-02 | 2022-03-03 | MBRT BASE [16 h] | 16 | 16 | UNM | 16 | ZONE-3 | 24 | WATERLINE | CIVIL |  |  | FM001 | BACT |
| 3-1772 |  | BAC T RESULTS, STAGE 11 (24TH TO 25TH) | 3d | 2022-03-03 A | 2022-03-07 A | 3-1771 | 100% | 2022-03-04 | 2022-03-08 | MBRT BASE [24 h] | 24 | 24 | CITY | 24 | ZONE-3 | 24 | WATERLINE | CIVIL |  |  | FM001 | BACT |
| 3-1773 |  | 5d NOTICE FOR SPU, STAGE 11 (24TH TO 25TH) | 5d | 2022-03-08 A | 2022-03-14 A | 3-1772 | 100% | 2022-03-09 | 2022-03-15 | MBRT BASE |  |  | CITY | 40 | ZONE-3 | 24 | WATERLINE | CIVIL |  |  | FM001 | BACT |
| 3-1774 |  | SPU CUT & CAP AT CC36 & CONECT TO T14, STAGE 11 (24TH TO 25TH) | 1d | 2022-03-15 A | 2022-03-15 A | 3-1773 | 100% | 2022-03-16 | 2022-03-16 | MBRT BASE [8 h] | 8 | 8 | UNM,CITY | 8 | ZONE-3 | 24 | WATERLINE | CIVIL | SPU | NIGHT | FM001 |  |
| 3-1775 |  | SPU TRANSER SERVICES TO T14, STAGE 11 (24TH TO 25TH) | 1d | 2022-03-16 A | 2022-03-16 A | 3-1774 | 100% | 2022-03-17 | 2022-03-17 | MBRT BASE [8 h] | 8 | 8 | UNM,CITY | 8 | ZONE-3 | 24 | WATERLINE | CIVIL | SPU |  | FM001 |  |
| 3-1776 |  | SPU CUT & CAP CC37, CC38 & CC39, STAGE 11 (24TH TO 25TH) | 1d | 2022-03-21 A | 2022-03-21 A | 3-1775 | 100% | 2022-03-18 | 2022-03-18 | MBRT BASE [8 h] | 8 | 8 | UNM,CITY | 8 | ZONE-3 | 24 | WATERLINE | CIVIL | SPU | NIGHT | FM001 |  |
| 3-1777 |  | INST MAIN 24TH TO 25TH, STAGE 11 (24TH TO 25TH) | 2d | 2022-03-22 A | 2022-05-04 A | 3-1776 | 100% | 2022-03-21 | 2022-03-22 | MBRT BASE [256 h] | 256 | 256 | UNM | 256 | ZONE-3 | 24 | WATERLINE | CIVIL |  |  | FM001 |  |
| PCO188.01 |  | DSC 135-Unknown Unlocated Utility Waterline 308+00 | 5d | 2022-03-29 A | 2022-03-31 A | MS-0025 | 100% | 2023-02-27 | 2023-03-03 | MBRT DSC [16 h] | 16 | 16 |  | 16 |  |  |  |  |  |  |  |  |
| 3-1780 |  | INST THRUST BLOCKS, STAGE 11 (24TH TO 25TH) | 2d | 2022-05-20 A | 2022-05-23 A | 3-1777 | 100% | 2022-05-06 | 2022-05-09 | MBRT BASE [16 h] | 16 | 16 | UNM | 16 | ZONE-3 | 24 | WATERLINE | CIVIL |  |  | FM001 |  |
| 3-1778 |  | INST MAIN AT 25TH, STAGE 11 (24TH TO 25TH) | 2d | 2022-05-23 A | 2022-05-23 A | 3-1777 FF | 100% | 2022-05-03 | 2022-05-04 | MBRT BASE [8 h] | 8 | 8 | UNM | 8 | ZONE-3 | 24 | WATERLINE | CIVIL |  |  | FM001 |  |
| 3-1779 |  | INST MAIN AT STA 310+00, STAGE 11 (24TH TO 25TH) | 1d | 2022-06-13 A | 2022-06-13 A | 3-1778 | 100% | 2022-05-31 | 2022-05-31 | MBRT BASE |  | 8 | UNM | 0 | ZONE-3 | 24 | WATERLINE | CIVIL |  |  | FM001 |  |
| 3-1781 |  | FLUSH, TEST & DISINFECT MAIN, STAGE 11 (24TH TO 25TH) | 2d | 2022-06-16 A | 2022-06-17 A | 3-1780, 3-1779 | 100% | 2022-05-31 | 2022-06-01 | MBRT BASE [8 h] | 8 | 8 | UNM | 8 | ZONE-3 | 24 | WATERLINE | CIVIL |  |  | FM001 | BACT |
| 3-1782 |  | BAC T RESULTS, STAGE 11 (24TH TO 25TH) | 3d | 2022-06-20 A | 2022-06-22 A | 3-1781 | 100% | 2022-05-31 | 2022-06-02 | MBRT BASE [24 h] | 24 | 24 | CITY | 24 | ZONE-3 | 24 | WATERLINE | CIVIL |  |  | FM001 | BACT |
| 3-1783 |  | 5d NOTICE FOR SPU, STAGE 11 (24TH TO 25TH) | 5d | 2022-06-23 A | 2022-07-07 A | 3-1782 | 100% | 2022-07-07 | 2022-07-13 | MBRT BASE |  |  | CITY | 80 | ZONE-3 | 24 | WATERLINE | CIVIL |  |  | FM001 | BACT |
| PCO308.01 |  | DSC 228-Unknown Unlocated utilities by stage 11 south side connection | 5d | 2022-07-08 A | 2022-07-10 A | MS-0025 | 100% | 2023-02-27 | 2023-03-03 | MBRT DSC [8 h] | 8 | 8 |  | 8 |  |  |  |  |  |  |  |  |
| 3-1784 |  | SPU CONNECT AT 307+15, STAGE 11 (24TH TO 25TH) | 1d | 2022-07-08 A | 2022-07-08 A | 3-1783 | 100% | 2022-07-14 | 2022-07-14 | MBRT BASE [8 h] | 8 | 8 | UNM,CITY | 8 | ZONE-3 | 24 | WATERLINE | CIVIL | SPU |  | FM001 |  |
| 3-1785 |  | SPU TRANSFER SERVICES, STAGE 11 (24TH TO 25TH) | 1d | 2022-07-08 A | 2022-07-08 A | 3-1784 | 100% | 2022-07-01 | 2022-07-01 | MBRT BASE [8 h] | 8 | 8 | UNM,CITY | 8 | ZONE-3 | 24 | WATERLINE | CIVIL | SPU |  | FM001 |  |
| 3-1786 |  | SPU CONECT AT CC36, CC37 ANC CC38, STAGE 11 (24TH TO 25TH) | 1d | 2022-07-11 A | 2022-07-11 A | 3-1785 | 100% | 2022-07-05 | 2022-07-05 | MBRT BASE [8 h] | 8 | 8 | UNM,CITY | 8 | ZONE-3 | 24 | WATERLINE | CIVIL | SPU | NIGHT | FM001 |  |
| 3-1787 |  | REM TEMP MAIN, STAGE 11 (24TH TO 25TH) | 1d | 2022-07-12 A | 2022-07-12 A | 3-1786 | 100% | 2022-07-06 | 2022-07-06 | MBRT BASE [8 h] | 8 | 8 | UNM | 8 | ZONE-3 | 24 | WATERLINE | CIVIL |  |  | FM001 |  |

Notes:
- 3-1768: Description: Cut and caps only took 3 days over this period. more simple to represent / the duration as 1 block.

| ID | WBS | Activity | Duration | Start | Finish | Predecessors | Complete | Planned start | Planned finish | Resources | Cost | Actual cost | user_text2 | user_number6 | MBRT-ZONE | MBRT-LOCATION | MBRT-SCOPE | MBRT-TYPE | MBRT-DELAY | MBRT-ACTIVITY | MBRT-RESP | MBRT-NIGHT |
| --- | --- | --- | --- | --- | --- | --- | --- | --- | --- | --- | --- | --- | --- | --- | --- | --- | --- | --- | --- | --- | --- | --- |
|  | 7 | **STAGE 12 (ST 311+00 TO 26TH)** |  | 2022-07-28 | 2022-11-16 |  |  |  |  |  |  |  |  |  |  |  |  |  |  |  |  |  |
| 3-1789 |  | INST TEMP MAIN, SERVICES & LATERALS, T15, STAGE 12 (ST 311+00 TO 26TH) | 2d | 2022-07-28 A | 2022-08-01 A | 3-1787 | 100% | 2022-07-22 | 2022-07-25 | MBRT BASE [24 h] | 24 | 24 | UNM | 24 | ZONE-3 | 25 | WATERLINE | CIVIL | FM001 |  |  |  |
| 3-1790 |  | FLUSH, TEST & DISINFECT TEMP MAIN, STAGE 12 (ST 311+00 TO 26TH) | 2d | 2022-08-02 A | 2022-08-03 A | 3-1789 | 100% | 2022-08-03 | 2022-08-04 | MBRT BASE [16 h] | 16 | 16 | UNM | 16 | ZONE-3 | 25 | WATERLINE | CIVIL | FM001 | BACT |  |  |
| 3-1791 |  | BAC T RESULTS, STAGE 12 (ST 311+00 TO 26TH) | 3d | 2022-08-04 A | 2022-08-08 A | 3-1790 | 100% | 2022-08-05 | 2022-08-09 | MBRT BASE [24 h] | 24 | 24 | CITY | 24 | ZONE-3 | 25 | WATERLINE | CIVIL | FM001 | BACT |  |  |
| 3-1792 |  | 5d NOTICE FOR SPU, STAGE 12 (ST 311+00 TO 26TH) | 5d | 2022-08-09 A | 2022-08-15 A | 3-1791 | 100% | 2022-08-10 | 2022-08-16 | MBRT BASE |  |  | CITY | 40 | ZONE-3 | 25 | WATERLINE | CIVIL | FM001 | BACT |  |  |
| 3-1793 |  | SPU CONNECT TEMP MAIN TO FIRE HYDRANT, STAGE 12 (ST 311+00 TO 26TH) | 1d | 2022-08-16 A | 2022-08-16 A | 3-1792 | 100% | 2022-08-17 | 2022-08-17 | MBRT BASE [8 h] | 8 | 8 | UNM,CITY | 8 | ZONE-3 | 25 | WATERLINE | CIVIL | FM001 |  | SPU |  |
| 3-1794 |  | SPU TRANSFER SERVICES TO TEMP MAIN, STAGE 12 (ST 311+00 TO 26TH) | 1d | 2022-08-17 A | 2022-08-17 A | 3-1793 | 100% | 2022-08-18 | 2022-08-18 | MBRT BASE [8 h] | 8 | 8 | UNM,CITY | 8 | ZONE-3 | 25 | WATERLINE | CIVIL | FM001 |  | SPU |  |
| 3-1795 |  | SPU CUT & CAP CC40, STAGE 12 (ST 311+00 TO 26TH) | 1d | 2022-08-23 A | 2022-08-23 A | 3-1794 | 100% | 2022-08-19 | 2022-08-19 | MBRT BASE [8 h] | 8 | 8 | UNM,CITY | 8 | ZONE-3 | 25 | WATERLINE | CIVIL | FM001 |  | SPU | NIGHT |
| 3-1796 |  | INST NEW MAIN STA 311+00 TO 312+58, STAGE 12 (ST 311+00 TO 26TH) | 3d | 2022-09-06 A | 2022-09-08 A | 3-1795 | 100% | 2022-08-31 | 2022-09-02 | MBRT BASE [24 h] | 24 | 24 | UNM | 24 | ZONE-3 | 25 | WATERLINE | CIVIL | FM001 |  |  |  |
| 3-1797 |  | INST THRUST BLOCKS, STAGE 12 (ST 311+00 TO 26TH) | 1d | 2022-09-09 A | 2022-09-09 A | 3-1796 | 100% | 2022-09-06 | 2022-09-06 | MBRT BASE [8 h] | 8 | 8 | UNM | 8 | ZONE-3 | 25 | WATERLINE | CIVIL | FM001 |  |  |  |
| 3-1798 |  | FLUSH, TEST & DISINFECT MAIN, STAGE 12 (ST 311+00 TO 26TH) | 2d | 2022-09-12 A | 2022-09-13 A | 3-1797 | 100% | 2022-09-07 | 2022-09-08 | MBRT BASE [16 h] | 16 | 16 | UNM | 16 | ZONE-3 | 25 | WATERLINE | CIVIL | FM001 | BACT |  |  |
| 3-1799 |  | BAC T RESULTS, STAGE 12 (ST 311+00 TO 26TH) | 3d | 2022-09-14 A | 2022-09-16 A | 3-1798 | 100% | 2022-09-09 | 2022-09-13 | MBRT BASE [24 h] | 24 | 24 | CITY | 24 | ZONE-3 | 25 | WATERLINE | CIVIL | FM001 | BACT |  |  |
| 3-1800 |  | 5d NOTICE FOR SPU, STAGE 12 (ST 311+00 TO 26TH) | 5d | 2022-09-19 A | 2022-09-30 A | 3-1799 | 100% | 2022-09-14 | 2022-09-20 | MBRT BASE |  |  | CITY | 80 | ZONE-3 | 25 | WATERLINE | CIVIL | FM001 | BACT |  |  |
| 3-2605 |  | CONNECT NEW MAIN DELAY (SPU WOULD NOT CONNECT DUE TO LOSS OF <2GAL OF WATER) | 1d | 2022-10-03 A | 2022-10-03 A | 3-1800 | 100% |  |  | MBRT NEW [8 h] | 8 | 8 | UNM,CITY | 8 | ZONE-3 | 25 | WATERLINE | CIVIL | FM001 |  | SPU |  |
| 3-2610 |  | RE-FLUSH NEW MAIN (SPU DELAY) | 2d | 2022-10-04 A | 2022-10-05 A | 3-2605 | 100% |  |  | MBRT NEW [16 h] | 16 | 16 | UNM,CITY | 16 | ZONE-3 | 25 | WATERLINE | CIVIL | FM001 |  | SPU |  |
| 3-2615 |  | RE-BAC-T TEST NEW MAIN (SPU DELAY) | 3d | 2022-10-06 A | 2022-10-10 A | 3-2610 | 100% |  |  | MBRT NEW [24 h] | 24 | 24 | UNM,CITY | 24 | ZONE-3 | 25 | WATERLINE | CIVIL | FM001 |  | SPU |  |
| 3-2620 |  | 5 DAY WAIT FOR SPU (SPU DELAY) | 5d | 2022-10-11 A | 2022-10-17 A | 3-2615 | 100% |  |  | MBRT NEW [40 h] | 40 | 40 | UNM,CITY | 40 | ZONE-3 | 25 | WATERLINE | CIVIL | FM001 |  | SPU |  |
| 3-1801 |  | SPU CONNECT NEW MAIN, STAGE 12 (ST 311+00 TO 26TH) | 1d | 2022-10-22 A | 2022-10-22 A | 3-2620 | 100% | 2022-10-18 | 2022-10-18 | MBRT BASE |  | 8 | UNM,CITY | 0 | ZONE-3 | 25 | WATERLINE | CIVIL | FM001 |  | SPU |  |
| 3-1802 |  | SPU TRANSFER SERVICES, STAGE 12 (ST 311+00 TO 26TH) - PRIOR TO DELAY | 1d | 2022-10-23 A | 2022-10-23 A | 3-1801 | 100% | 2022-10-19 | 2022-10-19 | MBRT BASE |  | 8 | UNM,CITY | 0 | ZONE-3 | 25 | WATERLINE | CIVIL | FM001 |  | SPU |  |
| 3-2625 |  | SPU TRANSFER SERVICES DELAY - SPU CREWS LEFT WITHOUT FINISHING WORK | 1d | 2022-10-23 A | 2022-11-11 A | 3-1802 | 100% | 2022-10-19 | 2022-10-19 | MBRT NEW [8 h] | 8 | 112 | UNM,CITY | 112 | ZONE-3 | 25 | WATERLINE | CIVIL | FM001 |  | SPU |  |
| PCO431.01 |  | DSC 314-Backside of Service leaking Stage 12 | 5d | 2022-10-24 A | 2022-10-25 A | MS-0025 | 100% | 2023-02-27 | 2023-03-03 | MBRT DSC [8 h] | 8 | 8 |  | 8 |  |  |  |  |  |  |  |  |
| 3-2630 |  | SPU TRANSFER SERVICES - AFTER DELAY | 1d | 2022-11-15 A | 2022-11-15 A | 3-2625 | 100% | 2022-10-31 | 2022-10-31 | MBRT NEW [8 h] | 8 | 8 | UNM,CITY | 8 | ZONE-3 | 25 | WATERLINE | CIVIL | FM001 |  | SPU |  |
| 3-1803 |  | REM TEM MAIN, STAGE 12 (ST 311+00 TO 26TH) | 1d | 2022-11-16 A | 2022-11-16 A | 3-1802, 3-2630 | 100% | 2022-11-01 | 2022-11-01 | MBRT BASE [8 h] | 8 | 8 | UNM | 8 | ZONE-3 | 25 | WATERLINE | CIVIL | FM001 |  |  |  |
|  | 8 | **STAGE 13 (26TH TO MLK)** |  | 2022-12-09 | 2023-03-05 |  |  |  |  |  |  |  |  |  |  |  |  |  |  |  |  |  |
| 3-2585 |  | INSTALL TEMP MAIN (CHANGE) | 1d | 2022-12-09 A | 2022-12-13 A | 3-1796 | 100% | 2022-12-01 | 2022-12-01 | MBRT NEW [8 h] | 8 | 24 | UNM,CITY | 24 | ZONE-3 | 26 | WATERLINE | CIVIL | FM001 |  | SPU | NIGHT |
| 3-2590 |  | FLUSH AND TEST TEMP MAIN | 1d | 2022-12-14 A | 2022-12-15 A | 3-2585 | 100% | 2022-12-02 | 2022-12-02 | MBRT NEW [8 h] | 8 | 16 | UNM,CITY | 16 | ZONE-3 | 26 | WATERLINE | CIVIL | FM001 |  | SPU | NIGHT |
| 3-2595 |  | BAC-T RESULTS | 1d | 2022-12-16 A | 2022-12-20 A | 3-2590 | 100% | 2022-12-05 | 2022-12-05 | MBRT NEW [8 h] | 8 | 24 | UNM,CITY | 24 | ZONE-3 | 26 | WATERLINE | CIVIL | FM001 |  | SPU | NIGHT |
| 3-2635 |  | 5 DAY WAIT FOR SPU | 1d | 2022-12-21 A | 2022-12-28 A | 3-2595 | 100% | 2022-12-05 | 2022-12-05 | MBRT NEW [8 h] | 8 | 40 | UNM,CITY | 40 | ZONE-3 | 26 | WATERLINE | CIVIL | FM001 |  | SPU | NIGHT |
| 3-2600 |  | DELAY WAITING FOR SUPPORT SPU TO CONNECT TO TEMP MAIN | 1d | 2022-12-29 A | 2023-01-03 A | 3-2635 | 100% | 2022-12-01 | 2022-12-01 | MBRT NEW [8 h] | 8 | 24 | UNM,CITY | 24 | ZONE-3 | 26 | WATERLINE | CIVIL | FM001 |  | SPU | NIGHT |
| 3-2640 |  | SUPPORT SPU TO CONNECT TO TEMP MAIN AFTER DELAY | 3d | 2023-01-04 A | 2023-01-06 A | 3-2600, 3-2635 | 100% |  |  | MBRT NEW [24 h] | 24 | 24 | UNM,CITY | 24 | ZONE-3 | 26 | WATERLINE | CIVIL | FM001 |  | SPU | NIGHT |
| 3-1805 |  | SPU CUT & CAP AT CC43, STAGE 13 (26TH TO MLK) | 1d | 2023-01-07 A | 2023-01-07 A | 3-2600, 3-2640 | 100% | 2023-01-03 | 2023-01-03 | MBRT BASE |  | 8 | UNM,CITY | 0 | ZONE-3 | 26 | WATERLINE | CIVIL | FM001 |  | SPU | NIGHT |
| 3-1806 |  | INST NEW MAIN 26TH TO MLK, STAGE 13 (26TH TO MLK) | 14d | 2023-01-13 A | 2023-02-03 A | 3-1805 | 100% | 2023-01-03 | 2023-01-23 | MBRT BASE [120 h] | 120 | 120 | UNM | 120 | ZONE-3 | 26 | WATERLINE | CIVIL | FM001 |  |  |  |
| PCO522.01 |  | DSC 374-Stage 13 Gas line Conflict | 5d | 2023-01-19 A | 2023-01-20 A | MS-0025 | 100% | 2023-02-27 | 2023-03-03 | MBRT DSC [8 h] | 8 | 8 |  | 8 |  |  |  |  |  |  |  |  |
| PCO527.01 |  | DSC 375-6 Inch Clay Storm Line Stage 13 | 5d | 2023-01-20 A | 2023-01-20 A | MS-0025 | 100% | 2023-02-27 | 2023-03-03 | MBRT DSC [8 h] | 8 | 8 |  | 8 |  |  |  |  |  |  |  |  |
| PCO548.01 |  | DSC 385-MLK Stage 13 CDF conflict | 5d | 2023-01-31 A | 2023-02-10 A | MS-0025 | 100% | 2023-02-27 | 2023-03-03 | MBRT DSC [64 h] | 64 | 64 |  | 64 |  |  |  |  |  |  |  |  |
| 3-1807 |  | INST MAIN AT 26TH, STAGE 13 (26TH TO MLK) | 2d | 2023-02-06 A | 2023-02-07 A | 3-1806, 3-1796, 3-1803 | 100% | 2023-02-03 | 2023-02-06 | MBRT BASE [16 h] | 16 | 16 | UNM | 16 | ZONE-3 | 26 | WATERLINE | CIVIL | FM001 |  |  |  |
| 3-1808 |  | INST MAIN AT 27TH, STAGE 13 (26TH TO MLK) | 2d | 2023-02-08 A | 2023-02-09 A | 3-1807 | 100% | 2023-02-07 | 2023-02-08 | MBRT BASE [16 h] | 16 | 16 | UNM | 16 | ZONE-3 | 26 | WATERLINE | CIVIL | FM001 |  |  |  |
| 3-1809 |  | INST THRUST BLOCKS, STAGE 13 (26TH TO MLK) | 1d | 2023-02-10 A | 2023-02-10 A | 3-1808 | 100% | 2023-02-09 | 2023-02-09 | MBRT BASE [8 h] | 8 | 8 | UNM | 8 | ZONE-3 | 26 | WATERLINE | CIVIL | FM001 |  |  |  |
| 3-1810 |  | FLUSH, TEST & DISINFECT MAIN, STAGE 13 (26TH TO MLK) | 2d | 2023-02-13 A | 2023-02-14 A | 3-1809 | 100% | 2023-02-10 | 2023-02-13 | MBRT BASE [16 h] | 16 | 16 | UNM | 16 | ZONE-3 | 26 | WATERLINE | CIVIL | FM001 | BACT |  |  |
| 3-1811 |  | BAC T RESULTS, STAGE 13 (26TH TO MLK) | 3d | 2023-02-15 A | 2023-02-17 A | 3-1810 | 100% | 2023-02-14 | 2023-02-16 | MBRT BASE [24 h] | 24 | 24 | CITY | 24 | ZONE-3 | 26 | WATERLINE | CIVIL | FM001 | BACT |  |  |
| 3-1812 |  | 5d NOTICE FOR SPU, STAGE 13 (26TH TO MLK) | 5d | 2023-02-20 A | 2023-02-24 A | 3-1811 | 100% | 2023-02-17 | 2023-02-24 | MBRT BASE |  |  | CITY | 32 | ZONE-3 | 26 | WATERLINE | CIVIL | FM001 | BACT |  |  |
| 3-1813 |  | SPU CONNECT NEW MAIN AT CC41, CC42 & CC43, STAGE 13 (26TH TO MLK) | 1d | 2023-02-27 A | 2023-02-27 A | 3-1812 | 100% | 2023-03-01 | 2023-03-01 | MBRT BASE [8 h] | 8 | 8 | UNM,CITY | 8 | ZONE-3 | 26 | WATERLINE | CIVIL | FM001 |  | SPU | NIGHT |
| 3-1814 |  | SPU TRANSFER SERVICES, STAGE 13 (26TH TO MLK) | 6d | 2023-02-28 A | 2023-03-03 A | 3-1813 | 100% | 2023-03-02 | 2023-03-09 | MBRT BASE [32 h] | 32 | 32 | UNM,CITY | 32 | ZONE-3 | 26 | WATERLINE | CIVIL | FM001 |  | SPU |  |
| 3-3320 |  | OWNER CAUSED DELAY CONNECTION AT 26TH | 1d | 2023-02-28 A | 2023-03-04 A | 3-1813 | 100% | 2023-03-01 | 2023-03-01 | MBRT NEW [8 h] | 8 | 32 | UNM,CITY | 32 | ZONE-3 | 26 | WATERLINE | CIVIL | FM001 |  | SPU | NIGHT |
| 3-1815 |  | SPU CONNECT AT 320+30, STAGE 13 (26TH TO MLK) | 1d | 2023-03-05 A | 2023-03-05 A | 3-1814, 3-3320 | 100% | 2023-03-10 | 2023-03-10 | MBRT BASE |  | 8 | UNM,CITY | 0 | ZONE-3 | 26 | WATERLINE | CIVIL | FM001 |  | SPU |  |

| ID | WBS | Activity | Duration | Start | Finish | Predecessors | Complete | Planned start | Planned finish | Resources | Cost | Actual cost | user_text2 | user_number6 | MBRT-ZONE | MBRT-LOCATION | MBRT-SCOPE | MBRT-TYPE | MBRT-RESP | MBRT-NIGHT | user_text10 | user_text8 | MBRT-ACTIVITY |
| --- | --- | --- | --- | --- | --- | --- | --- | --- | --- | --- | --- | --- | --- | --- | --- | --- | --- | --- | --- | --- | --- | --- | --- |
|  | 9 | **STAGE 14 (ARTHURPL / MLK / E HARRISON)** |  | 2023-03-15 | 2023-05-11 |  |  |  |  |  |  |  |  |  |  |  |  |  |  |  |  |  |  |
| 3-1817 |  | SPU CUT & CAP CC44 & CC45 & PROVIDE TEMP SERVICE 085, STAGE 14 ARTHUR/MLK/E HARRISON | 1d | 2023-03-15 A | 2023-03-15 A | 3-1815 | 100% | 2023-03-01 | 2023-03-01 | MBRT BASE [8 h] | 8 | 8 | UNM,CITY | 8 | ZONE-3 | MLK | WATERLINE | CIVIL | SPU | NIGHT |  |  |  |
| 3-1818 |  | SPU CUT & CAP AT CC46 & TEMP SERVICE 088, STAGE 14 ARTHUR/MLK/E HARRISON | 1d | 2023-03-15 A | 2023-03-15 A | 3-1817 | 100% | 2023-03-02 | 2023-03-02 | MBRT BASE [8 h] | 8 | 8 | UNM,CITY | 8 | ZONE-3 | MLK | WATERLINE | CIVIL | SPU | NIGHT |  |  |  |
| 3-1819 |  | INST MAIN LINE, STAGE 14 ARTHUR/MLK/E HARRISON | 4d | 2023-04-14 A | 2023-04-19 A | 3-1818 | 100% | 2023-03-31 | 2023-04-05 | MBRT BASE [32 h] | 32 | 32 | UNM | 32 | ZONE-3 | MLK | WATERLINE | CIVIL |  |  | 3-1819 | 3-1819 |  |
| 3-1820 |  | INST FIRE HYDRANT, STAGE 14 ARTHUR/MLK/E HARRISON | 1d | 2023-04-20 A | 2023-04-20 A | 3-1819 | 100% | 2023-04-06 | 2023-04-06 | MBRT BASE [8 h] | 8 | 8 | UNM | 8 | ZONE-3 | MLK | WATERLINE | CIVIL |  |  | 3-1820 | 3-1820 |  |
| 3-1821 |  | INST THRUST BLOCKS, STAGE 14 ARTHUR/MLK/E HARRISON | 1d | 2023-04-21 A | 2023-04-21 A | 3-1820 | 100% | 2023-04-07 | 2023-04-07 | MBRT BASE [8 h] | 8 | 8 | UNM | 8 | ZONE-3 | MLK | WATERLINE | CIVIL |  |  | 3-1821 | 3-1821 |  |
| 3-1822 |  | FLUSH, TEST & DISINFECT MAIN, STAGE 14 ARTHUR/MLK/E HARRISON | 2d | 2023-04-24 A | 2023-04-25 A | 3-1821 | 100% | 2023-04-10 | 2023-04-11 | MBRT BASE [16 h] | 16 | 16 | UNM | 16 | ZONE-3 | MLK | WATERLINE | CIVIL |  |  | 3-1822 | 3-1822 | BACT |
| 3-1823 |  | BAC T RESULTS, STAGE 14 ARTHUR/MLK/E HARRISON | 3d | 2023-04-26 A | 2023-04-28 A | 3-1822 | 100% | 2023-04-12 | 2023-04-14 | MBRT BASE [24 h] | 24 | 24 | CITY | 24 | ZONE-3 | MLK | WATERLINE | CIVIL |  |  | 3-1823 | 3-1823 | BACT |
| 3-1824 |  | 5d NOTICE FOR SPU, STAGE 14 ARTHUR/MLK/E HARRISON | 5d | 2023-05-01 A | 2023-05-08 A | 3-1823 | 100% | 2023-05-01 | 2023-05-05 | MBRT BASE |  |  | CITY | 48 | ZONE-3 | MLK | WATERLINE | CIVIL |  |  | 3-1824 | 3-1824 | BACT |
| 3-1825 |  | SPU CONNECT AT CC45, STAGE 14 ARTHUR/MLK/E HARRISON | 1d | 2023-05-09 A | 2023-05-09 A | 3-1824 | 100% | 2023-05-08 | 2023-05-08 | MBRT BASE [8 h] | 8 | 8 | UNM,CITY | 8 | ZONE-3 | MLK | WATERLINE | CIVIL | SPU | NIGHT | 3-1825 | 3-1825 |  |
| 3-1826 |  | SPU CONNECT AT CC44 & CC46, STAGE 14 ARTHUR/MLK/E HARRISON | 1d | 2023-05-10 A | 2023-05-10 A | 3-1825 | 100% | 2023-05-09 | 2023-05-09 | MBRT BASE [8 h] | 8 | 8 | UNM,CITY | 8 | ZONE-3 | MLK | WATERLINE | CIVIL | SPU | NIGHT | 3-1826 | 3-1826 |  |
| 3-1827 |  | SPU CONNECT SERVICES & REM TEMP SERVICES, STAGE 14 ARTHUR/MLK/E HARRISON | 1d | 2023-05-11 A | 2023-05-11 A | 3-1826 | 100% | 2023-05-10 | 2023-05-10 | MBRT BASE [8 h] | 8 | 8 | UNM,CITY | 8 | ZONE-3 | MLK | WATERLINE | CIVIL | SPU |  | 3-1827 | 3-1827 |  |
|  | 4 | **TEMP SIGNALS** |  | 2021-10-25 | 2022-11-04 |  |  |  |  |  |  |  |  |  |  |  |  |  |  |  |  |  |  |
| 3-1829 |  | MAD AND 16TH, TEMP SIGNALS | 2d | 2021-10-25 A | 2021-11-01 A | MS-0026 | 100% | 2021-10-29 | 2021-11-01 | MBRT BASE [48 h] | 48 | 48 | ELECRICAL SUB | 48 | ZONE-3 | 16 |  | TEMPSIG |  |  |  |  |  |
| 3-1830 |  | MAD AND 17TH, TEMP SIGNALS | 2d | 2021-10-25 A | 2021-11-01 A | 3-1829 SS | 100% | 2021-11-02 | 2021-11-03 | MBRT BASE [48 h] | 48 | 48 | ELECRICAL SUB | 48 | ZONE-3 | 17 |  | TEMPSIG |  |  |  |  |  |
| 3-1832 |  | MAD AND 19TH, TEMP SIGNALS | 2d | 2022-02-10 A | 2022-02-10 A | MS-2576, 3-1830 | 100% | 2022-01-31 | 2022-02-01 | MBRT BASE [8 h] | 8 | 8 | ELECRICAL SUB | 8 | ZONE-3 | 19 |  | TEMPSIG |  |  |  |  |  |
| 3-1833 |  | MAD AND 20TH, TEMP SIGNALS | 2d | 2022-02-11 A | 2022-02-11 A | 3-1832 | 100% | 2022-02-02 | 2022-02-03 | MBRT BASE [8 h] | 8 | 8 | ELECRICAL SUB | 8 | ZONE-3 | 20 |  | TEMPSIG |  |  |  |  |  |
| 3-1834 |  | MAD AND 22ND(DENNY), TEMP SIGNALS | 2d | 2022-02-14 A | 2022-02-15 A | 3-1833 SS | 100% | 2022-03-01 | 2022-03-02 | MBRT BASE [16 h] | 16 | 16 | ELECRICAL SUB | 16 | ZONE-3 | 22 |  | TEMPSIG |  |  |  |  |  |
| PCO142.01 |  | DSC 99-Exposed Wire SDOT Juntion Box 19th | 5d | 2022-02-16 A | 2022-02-17 A | MS-0025 | 100% | 2023-02-27 | 2023-03-03 | MBRT DSC [8 h] | 8 | 8 |  | 8 |  |  |  |  |  |  |  |  |  |
| PCO143.01 |  | DSC 100-Service and Interconnect 19th same box | 5d | 2022-02-16 A | 2022-02-24 A | MS-0025 | 100% | 2023-02-27 | 2023-03-03 | MBRT DSC [40 h] | 40 | 40 |  | 40 |  |  |  |  |  |  |  |  |  |
| 3-1838 |  | MAD AND JOHN, TEMP SIGNALS | 2d | 2022-02-16 A | 2022-02-16 A | 3-1834 | 100% | 2022-03-01 | 2022-03-02 | MBRT BASE [8 h] | 8 | 8 | ELECRICAL SUB | 8 | ZONE-3 | 26 |  | TEMPSIG |  |  |  |  |  |
| 3-1839 |  | MAD AND MLK, TEMP SIGNALS | 2d | 2022-02-17 A | 2022-02-18 A | 3-1838 | 100% | 2022-03-03 | 2022-03-04 | MBRT BASE [16 h] | 16 | 16 | ELECRICAL SUB | 16 | ZONE-3 | 27 |  | TEMPSIG |  |  |  |  |  |
| 3-1835 |  | MAD AND 23RD, TEMP SIGNALS | 2d | 2022-07-25 A | 2022-07-26 A | 3-1834 | 100% | 2022-07-01 | 2022-07-05 | MBRT BASE [16 h] | 16 | 16 | ELECRICAL SUB | 16 | ZONE-3 | 23 |  | TEMPSIG |  |  |  |  |  |
| 3-1837 |  | MAD AND 25TH, TEMP SIGNALS | 2d | 2022-11-03 A | 2022-11-04 A | 3-1835 | 100% | 2022-12-01 | 2022-12-02 | MBRT BASE [16 h] | 16 | 16 | ELECRICAL SUB | 16 | ZONE-3 | 25 |  | TEMPSIG |  |  |  |  |  |

| ID | WBS | Activity | Duration | Start | Finish | Predecessors | Complete | Planned start | Planned finish | Calendar | Resources | Cost | Actual cost | user_text2 | user_number6 | MBRT-ZONE | MBRT-LOCATION | MBRT-SCOPE | MBRT-TYPE | MBRT-SIDE | user_text1 |
| --- | --- | --- | --- | --- | --- | --- | --- | --- | --- | --- | --- | --- | --- | --- | --- | --- | --- | --- | --- | --- | --- |
|  | 5 | **ROADWAY WORK** |  | 2021-11-02 | 2024-02-09 |  |  |  |  |  |  |  |  |  |  |  |  |  |  |  |  |
|  | 1 | **ROADWAY 15TH TO MLK BETWEEN INTERSECTIONS** |  | 2021-11-02 | 2024-02-09 |  |  |  |  |  |  |  |  |  |  |  |  |  |  |  |  |
|  | 1 | **15TH TO 16TH NORTH SIDE** |  | 2021-11-02 | 2021-11-24 |  |  |  |  |  |  |  |  |  |  |  |  |  |  |  |  |
| 3-1844 |  | DEMO ROAD - COMMON EX - TYPE 2, 15TH TO 16TH NORTH SIDE | 6d | 2021-11-02 A | 2021-11-05 A | 3-1671 | 100% | 2021-11-01 | 2021-11-08 |  | MBRT BASE [32 h] | 32 | 32 | GRM | 32 | ZONE-3 | 15 | DEMOPREP | ROADWAY | NORTH |  |
| 3-1845 |  | CONDUIT RD CROSSING, 15TH TO 16TH NORTH SIDE | 6d | 2021-11-02 A | 2021-11-05 A | 3-1844 SS | 100% | 2021-11-01 | 2021-11-08 |  | MBRT BASE [32 h] | 32 | 32 | ELECRICAL SUB | 32 | ZONE-3 | 15 | ELECTRICAL | ROADWAY | NORTH |  |
| 3-1846 |  | ROADWAY PAVING - 2 POURS, 15TH TO 16TH NORTH SIDE | 4d | 2021-11-09 A | 2021-11-12 A | 3-1845 | 100% |  |  |  | MBRT BASE [32 h] | 32 | 32 | COL | 32 | ZONE-3 | 15 | PAVE-R | ROADWAY | NORTH |  |
| 3-1847 |  | CONCRETE CURE, 15TH TO 16TH NORTH SIDE | 3d | 2021-11-13 A | 2021-11-15 A | 3-1846 | 100% |  |  | 7 day per week | MBRT BASE |  |  |  | 24 | ZONE-3 | 15 |  | ROADWAY | NORTH |  |
| 3-1848 |  | F/P CURB, 15TH TO 16TH NORTH SIDE | 2d | 2021-11-22 A | 2021-11-23 A | 3-1847 | 100% | 2021-11-16 | 2021-11-17 |  | MBRT BASE [16 h] | 16 | 16 | COM | 16 | ZONE-3 | 15 | CURB | ROADWAY | NORTH |  |
| 3-1849 |  | TEMP PATCH, 15TH TO 16TH NORTH SIDE | 1d | 2021-11-24 A | 2021-11-24 A | 3-1848 | 100% | 2021-11-18 | 2021-11-18 |  | MBRT BASE [8 h] | 8 | 8 | EA3 | 8 | ZONE-3 | 15 |  | ROADWAY | NORTH |  |
|  | 2 | **16TH TO 17TH NORTH SIDE** |  | 2021-11-05 | 2022-10-21 |  |  |  |  |  |  |  |  |  |  |  |  |  |  |  |  |
| PCO025.01 |  | DSC 16-Existing storm pipe poured in exising road | 5d | 2021-11-05 A | 2022-10-21 A | MS-0025 | 100% | 2023-02-27 | 2023-03-03 |  | MBRT DSC [1920 h] | 1,920 | 1,920 |  | 1920 |  |  |  |  |  | ROADWAY |
| 3-1851 |  | DEMO ROAD - COMMON EX - TYPE 2, 16TH TO 17TH NORTH SIDE | 6d | 2021-11-08 A | 2021-11-11 A | 3-1844, 3-1830 | 100% | 2021-11-09 | 2021-11-17 |  | MBRT BASE [32 h] | 32 | 32 | GRM | 32 | ZONE-3 | 16 | DEMOPREP | ROADWAY | NORTH |  |
| 3-1852 |  | CONDUIT RD CROSSING, 16TH TO 17TH NORTH SIDE | 6d | 2021-11-08 A | 2021-11-11 A | 3-1851 SS | 100% | 2021-11-09 | 2021-11-17 |  | MBRT BASE [32 h] | 32 | 32 | ELECRICAL SUB | 32 | ZONE-3 | 16 | ELECTRICAL | ROADWAY | NORTH |  |
| 3-1853 |  | ROADWAY PAVING - 2 POURS, 16TH TO 17TH NORTH SIDE | 4d | 2021-11-16 A | 2021-11-19 A | 3-1852, 3-1846 | 100% | 2021-11-18 | 2021-11-23 |  | MBRT BASE [32 h] | 32 | 32 | COL | 32 | ZONE-3 | 16 | PAVE-R | ROADWAY | NORTH |  |
| 3-1854 |  | CONCRETE CURE, 16TH TO 17TH NORTH SIDE | 3d | 2021-11-20 A | 2021-11-22 A | 3-1853 | 100% | 2021-11-24 | 2021-11-27 | 7 day per week | MBRT BASE |  |  |  | 24 | ZONE-3 | 16 |  | ROADWAY | NORTH |  |
| 3-1855 |  | F/P CURB, 16TH TO 17TH NORTH SIDE | 2d | 2021-11-22 A | 2021-11-23 A | 3-1854 | 100% | 2021-11-29 | 2021-11-30 |  | MBRT BASE [16 h] | 16 | 16 | COM | 16 | ZONE-3 | 16 | CURB | ROADWAY | NORTH |  |
| 3-1856 |  | TEMP PATCH, 16TH TO 17TH NORTH SIDE | 1d | 2021-11-24 A | 2021-11-24 A | 3-1849, 3-1855 | 100% | 2021-12-01 | 2021-12-01 |  | MBRT BASE [8 h] | 8 | 8 | EA3 | 8 | ZONE-3 | 16 |  | ROADWAY | NORTH |  |
|  | 7 | **17TH TO 18TH NORTH SIDE** |  | 2021-11-12 | 2021-11-26 |  |  |  |  |  |  |  |  |  |  |  |  |  |  |  |  |
| 3-1886 |  | DEMO ROAD - COMMON EX - TYPE 2, 17TH TO 18TH NORTH SIDE | 6d | 2021-11-12 A | 2021-11-18 A | 3-1851 | 100% | 2022-04-28 | 2022-05-05 |  | MBRT BASE [32 h] | 32 | 32 | GRM | 32 | ZONE-3 | 17 | DEMOPREP | ROADWAY | NORTH |  |
| 3-1887 |  | CONDUIT RD CROSSING, 17TH TO 18TH NORTH SIDE | 6d | 2021-11-12 A | 2021-11-18 A | 3-1886 SS | 100% | 2022-04-28 | 2022-05-05 |  | MBRT BASE [32 h] | 32 | 32 | ELECRICAL SUB | 32 | ZONE-3 | 17 | ELECTRICAL | ROADWAY | NORTH |  |
| 3-1888 |  | ROADWAY PAVING - 2 POURS, 17TH TO 18TH NORTH SIDE | 4d | 2021-11-19 A | 2021-11-22 A | 3-1887 | 100% | 2022-05-06 | 2022-05-11 |  | MBRT BASE [16 h] | 16 | 16 | COL | 16 | ZONE-3 | 17 | PAVE-R | ROADWAY | NORTH |  |
| 3-1889 |  | CONCRETE CURE, 17TH TO 18TH NORTH SIDE | 3d | 2021-11-23 A | 2021-11-26 A | 3-1888 | 100% | 2022-05-12 | 2022-05-14 | 7 day per week | MBRT BASE |  |  |  | 24 | ZONE-3 | 17 |  | ROADWAY | NORTH |  |
| 3-1890 |  | F/P CURB, 17TH TO 18TH NORTH SIDE | 2d | 2021-11-23 A | 2021-11-23 A | 3-1889 | 100% | 2022-05-16 | 2022-05-17 |  | MBRT BASE [8 h] | 8 | 8 | COM | 8 | ZONE-3 | 17 | CURB | ROADWAY | NORTH |  |
| 3-1891 |  | TEMP PATCH, 17TH TO 18TH NORTH SIDE | 1d | 2021-11-24 A | 2021-11-24 A | 3-1890 | 100% | 2022-05-18 | 2022-05-18 |  | MBRT BASE [8 h] | 8 | 8 | EA3 | 8 | ZONE-3 | 17 |  | ROADWAY | NORTH |  |

| ID | WBS | Activity | Duration | Start | Finish | Predecessors | Complete | Planned start | Planned finish | Calendar | Resources | Cost | Actual cost | user_text2 | user_number6 | MBRT-ZONE | MBRT-LOCATION | MBRT-SCOPE | MBRT-TYPE | MBRT-SIDE | user_text10 | user_text8 |
| --- | --- | --- | --- | --- | --- | --- | --- | --- | --- | --- | --- | --- | --- | --- | --- | --- | --- | --- | --- | --- | --- | --- |
|  | 3 | **15TH TO 16TH SOUTH SIDE** |  | 2021-11-29 | 2022-04-15 |  |  |  |  |  |  |  |  |  |  |  |  |  |  |  |  |  |
| 3-1858 |  | DEMO ROAD - COMMON EX - TYPE 2, 15TH TO 16TH SOUTH SIDE | 6d | 2021-11-29 A | 2021-12-08 A | 3-1856 | 100% | 2021-11-29 | 2021-12-06 |  | MBRT BASE [64 h] | 64 | 64 | GRM | 64 | ZONE-3 | 15 | DEMOPREP | ROADWAY | SOUTH |  |  |
| 3-1859 |  | CONDUIT RD CROSSING, 15TH TO 16TH SOUTH SIDE | 6d | 2021-11-29 A | 2021-12-08 A | 3-1858 SS | 100% | 2021-11-29 | 2021-12-06 |  | MBRT BASE [64 h] | 64 | 64 | ELECRICAL SUB | 64 | ZONE-3 | 15 | ELECTRICAL | ROADWAY | SOUTH |  |  |
| PCO058.01 |  | DSC 36-Inlet Pipe in Exsing Roadway 16th South side | 5d | 2021-12-01 A | 2021-12-08 A | MS-0025 | 100% | 2023-02-27 | 2023-03-03 |  | MBRT DSC [40 h] | 40 | 40 |  | 40 |  |  |  |  |  |  |  |
| 3-1860 |  | ROADWAY PAVING - 2 POURS, 15TH TO 16TH SOUTH SIDE | 4d | 2022-04-04 A | 2022-04-11 A | 3-1859, MS-2571 | 100% | 2022-03-31 | 2022-04-05 |  | MBRT BASE [48 h] | 48 | 48 | COL | 48 | ZONE-3 | 15 | PAVE-R | ROADWAY | SOUTH |  |  |
| 3-1861 |  | CONCRETE CURE, 15TH TO 16TH SOUTH SIDE | 3d | 2022-04-12 A | 2022-04-12 A | 3-1860 | 100% | 2022-04-06 | 2022-04-08 | 7 day per week | MBRT BASE |  |  |  | 8 | ZONE-3 | 15 |  | ROADWAY | SOUTH |  |  |
| 3-1862 |  | F/P CURB, 15TH TO 16TH SOUTH SIDE | 2d | 2022-04-13 A | 2022-04-14 A | 3-1861 | 100% | 2022-04-11 | 2022-04-12 |  | MBRT BASE [16 h] | 16 | 16 | COM | 16 | ZONE-3 | 15 | CURB | ROADWAY | SOUTH |  |  |
| 3-1863 |  | TEMP PATCH, 15TH TO 16TH SOUTH SIDE | 1d | 2022-04-15 A | 2022-04-15 A | 3-1862 | 100% | 2022-04-13 | 2022-04-13 |  | MBRT BASE [8 h] | 8 | 8 | EA3 | 8 | ZONE-3 | 15 |  | ROADWAY | SOUTH |  |  |
|  | 4 | **16TH TO 17TH SOUTH SIDE** |  | 2021-11-29 | 2022-04-15 |  |  |  |  |  |  |  |  |  |  |  |  |  |  |  |  |  |
| 3-1865 |  | DEMO ROAD - COMMON EX - TYPE 2, 16TH TO 17TH SOUTH SIDE | 6d | 2021-11-29 A | 2021-12-08 A | 3-1858 SS | 100% | 2021-11-29 | 2021-12-06 |  | MBRT BASE [64 h] | 64 | 64 | GRM | 64 | ZONE-3 | 16 | DEMOPREP | ROADWAY | SOUTH |  |  |
| 3-1866 |  | CONDUIT RD CROSSING, 16TH TO 17TH SOUTH SIDE | 6d | 2021-11-29 A | 2021-12-08 A | 3-1865 SS | 100% | 2021-11-29 | 2021-12-06 |  | MBRT BASE [64 h] | 64 | 64 | ELECRICAL SUB | 64 | ZONE-3 | 16 | ELECTRICAL | ROADWAY | SOUTH |  |  |
| 3-1867 |  | ROADWAY PAVING - 2 POURS, 16TH TO 17TH SOUTH SIDE | 4d | 2022-04-04 A | 2022-04-11 A | 3-1866, 3-1860 SS, MS-2571 | 100% | 2022-04-06 | 2022-04-11 |  | MBRT BASE [48 h] | 48 | 48 | COL | 48 | ZONE-3 | 16 | PAVE-R | ROADWAY | SOUTH |  |  |
| 3-1868 |  | CONCRETE CURE, 16TH TO 17TH SOUTH SIDE | 3d | 2022-04-12 A | 2022-04-12 A | 3-1867 | 100% | 2022-04-12 | 2022-04-14 | 7 day per week | MBRT BASE |  |  |  | 8 | ZONE-3 | 16 |  | ROADWAY | SOUTH |  |  |
| 3-1869 |  | F/P CURB, 16TH TO 17TH SOUTH SIDE | 2d | 2022-04-13 A | 2022-04-14 A | 3-1868 | 100% | 2022-04-15 | 2022-04-18 |  | MBRT BASE [16 h] | 16 | 16 | COM | 16 | ZONE-3 | 16 | CURB | ROADWAY | SOUTH |  |  |
| 3-1870 |  | TEMP PATCH, 16TH TO 17TH SOUTH SIDE | 1d | 2022-04-15 A | 2022-04-15 A | 3-1863, 3-1869 | 100% | 2022-04-19 | 2022-04-19 |  | MBRT BASE [8 h] | 8 | 8 | EA3 | 8 | ZONE-3 | 16 |  | ROADWAY | SOUTH |  |  |
|  | 5 | **17TH TO 18TH SOUTH SIDE** |  | 2023-01-26 | 2023-08-03 |  |  |  |  |  |  |  |  |  |  |  |  |  |  |  |  |  |
| 3-1892 |  | Delay Awaiting KCM to Allow The Work to Proceed | 5d | 2023-01-26 A | 2023-06-26 A | MS-0025 | 100% | 2023-05-31 | 2023-06-06 |  | MBRT NEW |  |  |  | 848 |  |  |  |  |  | 3-1892 | 3-1892 |
| 3-1872 |  | DEMO ROAD - COMMON EX - TYPE 2, 17TH TO 18TH SOUTH SIDE | 11d | 2023-06-27 A | 2023-07-17 A | 3-1870 FF, 3-1667 FF, 3-1865, MS-2576, MS-2571 SS, 3-1788, 3-1892 | 100% | 2023-06-27 | 2023-07-12 |  | MBRT BASE [112 h] | 112 | 112 | GRM | 112 | ZONE-3 | 17 | DEMOPREP | ROADWAY | SOUTH | 3-1872 | 3-1872 |
| 3-1873 |  | CONDUIT RD CROSSING, 17TH TO 18TH SOUTH SIDE | 11d | 2023-06-27 A | 2023-07-17 A | 3-1872 SS, 3-1866 | 100% | 2023-06-27 | 2023-07-12 |  | MBRT BASE [112 h] | 112 | 112 | ELECRICAL SUB | 112 | ZONE-3 | 17 | ELECTRICAL | ROADWAY | SOUTH | 3-1873 | 3-1873 |
| 3-1874 |  | ROADWAY PAVING - 2 POURS, 17TH TO 18TH SOUTH SIDE | 4d | 2023-07-18 A | 2023-07-31 A | 3-1873, 3-1867, MS-2571 | 100% | 2023-07-13 | 2023-07-18 |  | MBRT BASE [80 h] | 80 | 80 | COL | 80 | ZONE-3 | 17 | PAVE-R | ROADWAY | SOUTH | 3-1874 | 3-1874 |
| 3-1875 |  | CONCRETE CURE, 17TH TO 18TH SOUTH SIDE | 3d | 2023-07-31 A | 2023-08-01 A | 3-1874 | 100% | 2023-07-19 | 2023-07-21 | 7 day per week | MBRT BASE |  |  |  | 16 | ZONE-3 | 17 |  | ROADWAY | SOUTH | 3-1875 | 3-1875 |
| 3-1876 |  | F/P CURB, 17TH TO 18TH SOUTH SIDE | 2d | 2023-08-01 A | 2023-08-02 A | 3-1875 | 100% | 2023-07-24 | 2023-07-25 |  | MBRT BASE [16 h] | 16 | 16 | COM | 16 | ZONE-3 | 17 | CURB | ROADWAY | SOUTH | 3-1876 | 3-1876 |
| 3-1877 |  | TEMP PATCH, 17TH TO 18TH SOUTH SIDE | 1d | 2023-08-03 A | 2023-08-03 A | 3-1876, 3-1832 | 100% | 2023-07-26 | 2023-07-26 |  | MBRT BASE [8 h] | 8 | 8 | EA3 | 8 | ZONE-3 | 17 |  | ROADWAY | SOUTH | 3-1877 | 3-1877 |
|  | 6 | **18TH TO 19TH SOUTH SIDE** |  | 2023-01-26 | 2023-08-04 |  |  |  |  |  |  |  |  |  |  |  |  |  |  |  |  |  |
| 3-2665 |  | DELAY AWAITING KCM TO ALLOW THE WORK TO PROCEED | 6d | 2023-01-26 A | 2023-06-27 A | 3-1901 | 100% | 2023-01-31 | 2023-02-07 |  | MBRT NEW |  |  | GRM | 856 | ZONE-3 | 18 | DEMOPREP | ROADWAY | SOUTH | 3-2665 | 3-2665 |
| 3-1879 |  | DEMO ROAD - COMMON EX - TYPE 2, 18TH TO 19TH SOUTH SIDE | 11d | 2023-06-28 A | 2023-07-17 A | 3-2665 | 100% | 2023-06-28 | 2023-07-13 |  | MBRT BASE [104 h] | 104 | 104 | GRM | 104 | ZONE-3 | 18 | DEMOPREP | ROADWAY | SOUTH | 3-1879 | 3-1879 |
| 3-1880 |  | CONDUIT RD CROSSING, 18TH TO 19TH SOUTH SIDE | 11d | 2023-06-28 A | 2023-07-17 A | 3-1879 SS | 100% | 2023-06-28 | 2023-07-13 |  | MBRT BASE [104 h] | 104 | 104 | ELECRICAL SUB | 104 | ZONE-3 | 18 | ELECTRICAL | ROADWAY | SOUTH | 3-1880 | 3-1880 |
| 3-1881 |  | ROADWAY PAVING - 2 POURS, 18TH TO 19TH SOUTH SIDE | 4d | 2023-07-18 A | 2023-07-31 A | 3-1880, 3-2238 | 100% | 2023-07-14 | 2023-07-19 |  | MBRT BASE [80 h] | 80 | 80 | COL | 80 | ZONE-3 | 18 | PAVE-R | ROADWAY | SOUTH | 3-1881 | 3-1881 |
| 3-1882 |  | CONCRETE CURE, 18TH TO 19TH SOUTH SIDE | 3d | 2023-07-31 A | 2023-08-01 A | 3-1881 | 100% | 2023-07-20 | 2023-07-22 | 7 day per week | MBRT BASE |  |  |  | 16 | ZONE-3 | 18 |  | ROADWAY | SOUTH | 3-1882 | 3-1882 |
| 3-1883 |  | F/P CURB, 18TH TO 19TH SOUTH SIDE | 2d | 2023-08-01 A | 2023-08-02 A | 3-1882 | 100% | 2023-07-24 | 2023-07-25 |  | MBRT BASE [16 h] | 16 | 16 | COM | 16 | ZONE-3 | 18 | CURB | ROADWAY | SOUTH | 3-1883 | 3-1883 |
| 3-1884 |  | TEMP PATCH, 18TH TO 19TH SOUTH SIDE | 1d | 2023-08-04 A | 2023-08-04 A | 3-1877, 3-1883 | 100% | 2023-07-27 | 2023-07-27 |  | MBRT BASE [8 h] | 8 | 8 | EA3 | 8 | ZONE-3 | 18 |  | ROADWAY | SOUTH | 3-1884 | 3-1884 |

Notes:
- 3-1872: Description: ACTIVITIES RESEQUENCED TO MITIGATE STORM IMPACTS

| ID | WBS | Activity | Duration | Start | Finish | Predecessors | Complete | Planned start | Planned finish | Calendar | Resources | Cost | Actual cost | user_text2 | user_number6 | user_text10 | user_text8 | MBRT-ZONE | MBRT-LOCATION | MBRT-SCOPE | MBRT-TYPE | MBRT-SIDE | user_text1 |
| --- | --- | --- | --- | --- | --- | --- | --- | --- | --- | --- | --- | --- | --- | --- | --- | --- | --- | --- | --- | --- | --- | --- | --- |
|  | 8 | **18TH TO 19TH NORTH SIDE** |  | 2023-08-08 | 2023-09-20 |  |  |  |  |  |  |  |  |  |  |  |  |  |  |  |  |  |  |
| 3-1893 |  | DEMO ROAD - COMMON EX - TYPE 2, 18TH TO 19TH NORTH SIDE | 10d | 2023-08-08 A | 2023-08-30 A | 3-1720, 3-1755, 3-1920, 3-1884 | 100% | 2023-07-28 | 2023-08-10 |  | MBRT BASE [136 h] | 136 | 136 | GRM | 136 | 3-1893 | 3-1893 | ZONE-3 | 18 | DEMOPREP | ROADWAY | NORTH |  |
| 3-1894 |  | CONDUIT RD CROSSING, 18TH TO 19TH NORTH SIDE | 10d | 2023-08-08 A | 2023-08-25 A | 3-1893 SS | 100% | 2023-07-28 | 2023-08-10 |  | MBRT BASE [112 h] | 112 | 112 | ELECRICAL SUB | 112 | 3-1894 | 3-1894 | ZONE-3 | 18 | ELECTRICAL | ROADWAY | NORTH |  |
| 3-1895 |  | ROADWAY PAVING - 2 POURS, 18TH TO 19TH NORTH SIDE | 4d | 2023-09-06 A | 2023-09-15 A | 3-1894, 3-1888 | 100% | 2023-08-22 | 2023-08-25 |  | MBRT BASE [64 h] | 64 | 64 | COL | 64 | 3-1895 | 3-1895 | ZONE-3 | 18 | PAVE-R | ROADWAY | NORTH |  |
| 3-1896 |  | CONCRETE CURE, 18TH TO 19TH NORTH SIDE | 3d | 2023-09-18 A | 2023-09-20 A | 3-1895 | 100% | 2023-09-16 | 2023-09-18 | 7 day per week | MBRT BASE |  |  |  | 24 | 3-1896 | 3-1896 | ZONE-3 | 18 |  | ROADWAY | NORTH |  |
| 3-1897 |  | F/P CURB, 18TH TO 19TH NORTH SIDE | 2d | 2023-09-19 A | 2023-09-19 A | 3-1895, 3-1896 | 100% | 2023-09-19 | 2023-09-20 |  | MBRT BASE [8 h] | 8 | 8 | COM | 8 | 3-1897 | 3-1897 | ZONE-3 | 18 | CURB | ROADWAY | NORTH |  |
| 3-1898 |  | TEMP PATCH, 18TH TO 19TH NORTH SIDE | 1d | 2023-09-20 A | 2023-09-20 A | 3-1891, 3-1897 | 100% | 2023-09-21 | 2023-09-21 |  | MBRT BASE [8 h] | 8 | 8 | EA3 | 8 | 3-1898 | 3-1898 | ZONE-3 | 18 |  | ROADWAY | NORTH |  |
|  | 11 | **19TH TO 20TH NORTH SIDE** |  | 2022-08-29 | 2022-10-13 |  |  |  |  |  |  |  |  |  |  |  |  |  |  |  |  |  |  |
| 3-1914 |  | DEMO ROAD - COMMON EX - TYPE 2, 19TH TO 20TH NORTH SIDE | 6d | 2022-08-29 A | 2022-09-20 A | 3-1674 | 100% | 2022-09-09 | 2022-09-16 |  | MBRT BASE [128 h] | 128 | 128 | GRM | 128 |  |  | ZONE-3 | 19 | DEMOPREP | ROADWAY | NORTH |  |
| 3-1915 |  | CONDUIT RD CROSSING, 19TH TO 20TH NORTH SIDE | 6d | 2022-08-29 A | 2022-09-20 A | 3-1914 SS | 100% | 2022-09-09 | 2022-09-16 |  | MBRT BASE [128 h] | 128 | 128 | ELECRICAL SUB | 128 |  |  | ZONE-3 | 19 | ELECTRICAL | ROADWAY | NORTH |  |
| 3-1916 |  | ROADWAY PAVING - 2 POURS, 19TH TO 20TH NORTH SIDE | 4d | 2022-09-28 A | 2022-10-07 A | 3-1915 | 100% | 2022-10-03 | 2022-10-06 |  | MBRT BASE [64 h] | 64 | 64 | COL | 64 |  |  | ZONE-3 | 19 | PAVE-R | ROADWAY | NORTH |  |
| 3-1917 |  | CONCRETE CURE, 19TH TO 20TH NORTH SIDE | 3d | 2022-10-08 A | 2022-10-10 A | 3-1916 | 100% | 2022-10-07 | 2022-10-09 | 7 day per week | MBRT BASE |  |  |  | 24 |  |  | ZONE-3 | 19 |  | ROADWAY | NORTH |  |
| 3-1918 |  | F/P CURB, 19TH TO 20TH NORTH SIDE | 2d | 2022-10-11 A | 2022-10-12 A | 3-1917 | 100% | 2022-10-10 | 2022-10-11 |  | MBRT BASE [16 h] | 16 | 16 | COM | 16 |  |  | ZONE-3 | 19 | CURB | ROADWAY | NORTH |  |
| 3-1919 |  | TEMP PATCH, 19TH TO 20TH NORTH SIDE | 1d | 2022-10-13 A | 2022-10-13 A | 3-1918 | 100% | 2022-10-12 | 2022-10-12 |  | MBRT BASE [8 h] | 8 | 8 | EA3 | 8 |  |  | ZONE-3 | 19 |  | ROADWAY | NORTH |  |
|  | 12 | **20TH TO DENNY NORTH SIDE** |  | 2021-12-08 | 2022-10-14 |  |  |  |  |  |  |  |  |  |  |  |  |  |  |  |  |  |  |
| PCO064.01 |  | DSC 41-I Beam in Roadway 22nd to 20th | 5d | 2021-12-08 A | 2021-12-10 A | MS-0025 | 100% | 2023-02-27 | 2023-03-03 |  | MBRT DSC [16 h] | 16 | 16 |  | 16 |  |  |  |  |  |  |  | ROADWAY |
| PCO364.01 |  | DSC 265-Inlet NE Denny | 5d | 2022-08-30 A | 2022-08-31 A | MS-0025 | 100% | 2023-02-27 | 2023-03-03 |  | MBRT DSC [8 h] | 8 | 8 |  | 8 |  |  |  |  |  |  |  |  |
| 3-1921 |  | DEMO ROAD - COMMON EX - TYPE 2, 20TH TO DENNY NORTH SIDE | 6d | 2022-09-01 A | 2022-09-20 A | 3-1914 | 100% | 2022-09-19 | 2022-09-26 |  | MBRT BASE [104 h] | 104 | 104 | GRM | 104 |  |  | ZONE-3 | 20 | DEMOPREP | ROADWAY | NORTH |  |
| 3-1922 |  | CONDUIT RD CROSSING, 20TH TO DENNY NORTH SIDE | 6d | 2022-09-01 A | 2022-09-20 A | 3-1921 SS | 100% | 2022-09-19 | 2022-09-26 |  | MBRT BASE [104 h] | 104 | 104 | ELECRICAL SUB | 104 |  |  | ZONE-3 | 20 | ELECTRICAL | ROADWAY | NORTH |  |
| 3-1923 |  | ROADWAY PAVING - 2 POURS, 20TH TO DENNY NORTH SIDE | 4d | 2022-09-28 A | 2022-10-07 A | 3-1922 | 100% | 2022-10-07 | 2022-10-12 |  | MBRT BASE [64 h] | 64 | 64 | COL | 64 |  |  | ZONE-3 | 20 | PAVE-R | ROADWAY | NORTH |  |
| 3-1924 |  | CONCRETE CURE, 20TH TO DENNY NORTH SIDE | 3d | 2022-10-08 A | 2022-10-10 A | 3-1923 | 100% |  |  | 7 day per week | MBRT BASE |  |  |  | 24 |  |  | ZONE-3 | 20 |  | ROADWAY | NORTH |  |
| 3-1925 |  | F/P CURB, 20TH TO DENNY NORTH SIDE | 2d | 2022-10-11 A | 2022-10-12 A | 3-1924 | 100% |  |  |  | MBRT BASE [16 h] | 16 | 16 | COM | 16 |  |  | ZONE-3 | 20 | CURB | ROADWAY | NORTH |  |
| 3-1926 |  | TEMP PATCH, 20TH TO DENNY NORTH SIDE | 1d | 2022-10-14 A | 2022-10-14 A | 3-1919, 3-1925 | 100% | 2022-10-13 | 2022-10-13 |  | MBRT BASE [8 h] | 8 | 8 | EA3 | 8 |  |  | ZONE-3 | 20 |  | ROADWAY | NORTH |  |
|  | 14 | **DENNY TO 23RD NORTH SIDE** |  | 2022-08-15 | 2022-09-28 |  |  |  |  |  |  |  |  |  |  |  |  |  |  |  |  |  |  |
| 3-1935 |  | DEMO ROAD - COMMON EX - TYPE 2, DENNY TO 23RD NORTH SIDE | 6d | 2022-08-15 A | 2022-08-30 A | 3-1950 | 100% | 2022-09-21 | 2022-09-28 |  | MBRT BASE [96 h] | 96 | 96 | GRM | 96 |  |  | ZONE-3 | DENNY | DEMOPREP | ROADWAY | NORTH |  |
| 3-1936 |  | CONDUIT RD CROSSING, DENNY TO 23RD NORTH SIDE | 6d | 2022-08-15 A | 2022-08-24 A | 3-1935 SS | 100% | 2022-09-21 | 2022-09-28 |  | MBRT BASE [64 h] | 64 | 64 | ELECRICAL SUB | 64 |  |  | ZONE-3 | DENNY | ELECTRICAL | ROADWAY | NORTH |  |
| 3-1937 |  | ROADWAY PAVING - 2 POURS, DENNY TO 23RD NORTH SIDE | 4d | 2022-09-08 A | 2022-09-21 A | 3-1936 | 100% | 2022-08-31 | 2022-09-06 |  | MBRT BASE [80 h] | 80 | 80 | COL | 80 |  |  | ZONE-3 | DENNY | PAVE-R | ROADWAY | NORTH |  |
| 3-1938 |  | CONCRETE CURE, DENNY TO 23RD NORTH SIDE | 3d | 2022-09-22 A | 2022-09-24 A | 3-1937 | 100% | 2022-09-07 | 2022-09-09 | 7 day per week | MBRT BASE |  |  |  | 24 |  |  | ZONE-3 | DENNY |  | ROADWAY | NORTH |  |
| 3-1939 |  | F/P CURB, DENNY TO 23RD NORTH SIDE | 2d | 2022-09-26 A | 2022-09-27 A | 3-1938 | 100% | 2022-09-12 | 2022-09-13 |  | MBRT BASE [16 h] | 16 | 16 | COM | 16 |  |  | ZONE-3 | DENNY | CURB | ROADWAY | NORTH |  |
| 3-1940 |  | TEMP PATCH, DENNY TO 23RD NORTH SIDE | 1d | 2022-09-28 A | 2022-09-28 A | 3-1939 | 100% | 2022-10-03 | 2022-10-03 |  | MBRT BASE [8 h] | 8 | 8 | EA3 | 8 |  |  | ZONE-3 | DENNY |  | ROADWAY | NORTH |  |

Notes:
- 3-1914: Description: .

| ID | WBS | Activity | Duration | Start | Finish | Predecessors | Complete | Planned start | Planned finish | Calendar | Resources | Cost | Actual cost | user_text2 | user_number6 | MBRT-ZONE | MBRT-LOCATION | MBRT-SCOPE | MBRT-TYPE | MBRT-SIDE |
| --- | --- | --- | --- | --- | --- | --- | --- | --- | --- | --- | --- | --- | --- | --- | --- | --- | --- | --- | --- | --- |
|  | 9 | **19TH TO 20TH SOUTH SIDE** |  | 2022-11-28 | 2023-01-26 |  |  |  |  |  |  |  |  |  |  |  |  |  |  |  |
| 3-1900 |  | DEMO ROAD - COMMON EX - TYPE 2, 19TH TO 20TH SOUTH SIDE | 6d | 2022-11-28 A | 2022-12-21 A | 3-1720, 3-1755, 3-1920 | 100% | 2022-12-01 | 2022-12-08 |  | MBRT BASE [144 h] | 144 | 144 | GRM | 144 | ZONE-3 | 19 | DEMOPREP | ROADWAY | SOUTH |
| 3-1901 |  | CONDUIT RD CROSSING, 19TH TO 20TH SOUTH SIDE | 6d | 2022-11-28 A | 2022-12-21 A | 3-1900 SS | 100% | 2022-12-01 | 2022-12-08 |  | MBRT BASE [144 h] | 144 | 144 | ELECRICAL SUB | 144 | ZONE-3 | 19 | ELECTRICAL | ROADWAY | SOUTH |
| PCO485.01 |  | DSC 349-unknown gas line at 19th | 5d | 2022-12-03 A | 2022-12-06 A | MS-0025 | 100% | 2023-02-27 | 2023-03-03 |  | MBRT DSC [8 h] | 8 | 8 |  | 8 |  |  |  |  |  |
| 3-1902 |  | ROADWAY PAVING - 2 POURS, 19TH TO 20TH SOUTH SIDE | 4d | 2023-01-11 A | 2023-01-23 A | 3-1901 | 100% | 2023-01-03 | 2023-01-06 |  | MBRT BASE [64 h] | 64 | 64 | COL | 64 | ZONE-3 | 19 | PAVE-R | ROADWAY | SOUTH |
| 3-1904 |  | F/P CURB, 19TH TO 20TH SOUTH SIDE | 2d | 2023-01-23 A | 2023-01-23 A | 3-1903 SS | 100% | 2023-01-03 | 2023-01-04 |  | MBRT BASE [8 h] | 8 | 8 | COM | 8 | ZONE-3 | 19 | CURB | ROADWAY | SOUTH |
| 3-1903 |  | CONCRETE CURE, 19TH TO 20TH SOUTH SIDE | 3d | 2023-01-24 A | 2023-01-26 A | 3-1902 | 100% | 2022-12-31 | 2023-01-02 | 7 day per week | MBRT BASE |  |  |  | 24 | ZONE-3 | 19 |  | ROADWAY | SOUTH |
| 3-1905 |  | TEMP PATCH, 19TH TO 20TH SOUTH SIDE | 1d | 2023-01-24 A | 2023-01-24 A | 3-1904 | 100% | 2023-01-25 | 2023-01-25 |  | MBRT BASE [8 h] | 8 | 8 | EA3 | 8 | ZONE-3 | 19 |  | ROADWAY | SOUTH |
|  | 15 | **23RD TO 24TH SOUTH SIDE** |  | 2022-10-31 | 2022-12-22 |  |  |  |  |  |  |  |  |  |  |  |  |  |  |  |
| 3-1942 |  | DEMO ROAD - COMMON EX - TYPE 2, 23RD TO 24TH SOUTH SIDE | 6d | 2022-10-31 A | 2022-11-23 A | 3-1768, 3-1835 | 100% | 2022-10-31 | 2022-11-07 |  | MBRT BASE [136 h] | 136 | 136 | GRM | 136 | ZONE-3 | 23 | DEMOPREP | ROADWAY | SOUTH |
| 3-1943 |  | CONDUIT RD CROSSING, 23RD TO 24TH SOUTH SIDE | 6d | 2022-10-31 A | 2022-11-23 A | 3-1942 SS | 100% | 2022-10-31 | 2022-11-07 |  | MBRT BASE [136 h] | 136 | 136 | ELECRICAL SUB | 136 | ZONE-3 | 23 | ELECTRICAL | ROADWAY | SOUTH |
| PCO451.01 |  | DSC 330-CDF in subgrade 23rd to 25th 2319 Madison | 5d | 2022-11-08 A | 2022-11-15 A | MS-0025 | 100% | 2023-02-27 | 2023-03-03 |  | MBRT DSC [32 h] | 32 | 32 |  | 32 |  |  |  |  |  |
| PCO452.01 |  | DSC 331-Gas line conflict with Roadway 23rd to 25th | 5d | 2022-11-08 A | 2022-11-11 A | MS-0025 | 100% | 2023-02-27 | 2023-03-03 |  | MBRT DSC [24 h] | 24 | 24 |  | 24 |  |  |  |  |  |
| 3-1944 |  | ROADWAY PAVING - 2 POURS, 23RD TO 24TH SOUTH SIDE | 4d | 2022-12-07 A | 2022-12-15 A | 3-1943 | 100% | 2022-12-01 | 2022-12-06 |  | MBRT BASE [56 h] | 56 | 56 | COL | 56 | ZONE-3 | 23 | PAVE-R | ROADWAY | SOUTH |
| 3-1945 |  | CONCRETE CURE, 23RD TO 24TH SOUTH SIDE | 3d | 2022-12-16 A | 2022-12-18 A | 3-1944 | 100% | 2022-12-07 | 2022-12-09 | 7 day per week | MBRT BASE |  |  |  | 24 | ZONE-3 | 23 |  | ROADWAY | SOUTH |
| 3-1946 |  | F/P CURB, 23RD TO 24TH SOUTH SIDE | 2d | 2022-12-19 A | 2022-12-20 A | 3-1945 | 100% | 2022-12-12 | 2022-12-13 |  | MBRT BASE [16 h] | 16 | 16 | COM | 16 | ZONE-3 | 23 | CURB | ROADWAY | SOUTH |
| 3-1947 |  | TEMP PATCH, 23RD TO 24TH SOUTH SIDE | 1d | 2022-12-21 A | 2022-12-22 A | 3-1946 | 100% | 2022-12-14 | 2022-12-14 |  | MBRT BASE [16 h] | 16 | 16 | EA3 | 16 | ZONE-3 | 23 |  | ROADWAY | SOUTH |
|  | 10 | **20TH TO DENNY SOUTH SIDE** |  | 2022-11-28 | 2023-01-26 |  |  |  |  |  |  |  |  |  |  |  |  |  |  |  |
| 3-1907 |  | DEMO ROAD - COMMON EX - TYPE 2, 20TH TO DENNY SOUTH SIDE | 8d | 2022-11-28 A | 2022-12-21 A | 3-1730, 3-1900 SS, 3-1665 | 100% | 2022-12-09 | 2022-12-20 |  | MBRT BASE [144 h] | 144 | 144 | GRM | 144 | ZONE-3 | 20 | DEMOPREP | ROADWAY | SOUTH |
| 3-1908 |  | CONDUIT RD CROSSING, 20TH TO DENNY SOUTH SIDE | 8d | 2022-11-28 A | 2022-12-21 A | 3-1907 SS | 100% | 2022-12-09 | 2022-12-20 |  | MBRT BASE [144 h] | 144 | 144 | ELECRICAL SUB | 144 | ZONE-3 | 20 | ELECTRICAL | ROADWAY | SOUTH |
| PCO491.01 |  | DSC 352-Unknown Unlocated Gas Line Struck 2020 Madison | 5d | 2022-12-12 A | 2022-12-13 A | MS-0025 | 100% | 2023-02-27 | 2023-03-03 |  | MBRT DSC [8 h] | 8 | 8 |  | 8 |  |  |  |  |  |
| 3-1909 |  | ROADWAY PAVING - 4 POURS, 20TH TO DENNY SOUTH SIDE | 8d | 2023-01-11 A | 2023-01-23 A | 3-1908, 3-1902 | 100% | 2023-01-03 | 2023-01-12 |  | MBRT BASE [64 h] | 64 | 64 | COL | 64 | ZONE-3 | 20 | PAVE-R | ROADWAY | SOUTH |
| 3-1910 |  | CONCRETE CURE, 20TH TO DENNY SOUTH SIDE | 3d | 2023-01-24 A | 2023-01-26 A | 3-1909 | 100% | 2023-01-13 | 2023-01-15 | 7 day per week | MBRT BASE |  |  |  | 24 | ZONE-3 | 20 |  | ROADWAY | SOUTH |
| 3-1911 |  | F/P CURB, 20TH TO DENNY SOUTH SIDE | 3d | 2023-01-24 A | 2023-01-24 A | 3-1910 | 100% | 2023-01-17 | 2023-01-19 |  | MBRT BASE [8 h] | 8 | 8 | COM | 8 | ZONE-3 | 20 | CURB | ROADWAY | SOUTH |
| 3-1912 |  | TEMP PATCH, 20TH TO DENNY SOUTH SIDE | 1d | 2023-01-25 A | 2023-01-25 A | 3-1911, 3-1905 FF | 100% | 2023-01-26 | 2023-01-26 |  | MBRT BASE [8 h] | 8 | 8 | EA3 | 8 | ZONE-3 | 20 |  | ROADWAY | SOUTH |

| ID | WBS | Activity | Duration | Start | Finish | Predecessors | Complete | Planned start | Planned finish | Calendar | Resources | Cost | Actual cost | user_text2 | user_number6 | MBRT-ZONE | MBRT-LOCATION | MBRT-SCOPE | MBRT-TYPE | MBRT-SIDE |
| --- | --- | --- | --- | --- | --- | --- | --- | --- | --- | --- | --- | --- | --- | --- | --- | --- | --- | --- | --- | --- |
|  | 16 | **23RD TO 24TH NORTH SIDE** |  | 2022-08-01 | 2022-09-06 |  |  |  |  |  |  |  |  |  |  |  |  |  |  |  |
| 3-1949 |  | DEMO ROAD - COMMON EX - TYPE 2, 23RD TO 24TH NORTH SIDE | 6d | 2022-08-01 A | 2022-08-12 A | 3-1750 | 100% | 2022-11-03 | 2022-11-10 |  | MBRT BASE [80 h] | 80 | 80 | GRM | 80 | ZONE-3 | 23 | DEMOPREP | ROADWAY | NORTH |
| 3-1950 |  | CONDUIT RD CROSSING, 23RD TO 24TH NORTH SIDE | 6d | 2022-08-01 A | 2022-08-12 A | 3-1949 SS | 100% | 2022-11-03 | 2022-11-10 |  | MBRT BASE [80 h] | 80 | 80 | ELECRICAL SUB | 80 | ZONE-3 | 23 | ELECTRICAL | ROADWAY | NORTH |
| PCO339.01 |  | DSC 248-Unknown Unlocated Gas service 24th to 23rd north side | 5d | 2022-08-03 A | 2022-08-12 A | MS-0025 | 100% | 2023-02-27 | 2023-03-03 |  | MBRT DSC [56 h] | 56 | 56 |  | 56 |  |  |  |  |  |
| PCO344.01 |  | DSC 253-Void in Road Madison, 24th-23rd | 5d | 2022-08-09 A | 2022-08-11 A | MS-0025 | 100% | 2023-02-27 | 2023-03-03 |  | MBRT DSC [16 h] | 16 | 16 |  | 16 |  |  |  |  |  |
| 3-1951 |  | ROADWAY PAVING - 2 POURS, 23RD TO 24TH NORTH SIDE | 4d | 2022-08-23 A | 2022-08-30 A | 3-1950 | 100% | 2022-11-11 | 2022-11-17 |  | MBRT BASE [48 h] | 48 | 48 | COL | 48 | ZONE-3 | 23 | PAVE-R | ROADWAY | NORTH |
| 3-1952 |  | CONCRETE CURE, 23RD TO 24TH NORTH SIDE | 3d | 2022-08-30 A | 2022-09-01 A | 3-1951 | 100% | 2022-09-07 | 2022-09-09 | 7 day per week | MBRT BASE |  |  |  | 24 | ZONE-3 | 23 |  | ROADWAY | NORTH |
| 3-1953 |  | F/P CURB, 23RD TO 24TH NORTH SIDE | 2d | 2022-08-31 A | 2022-09-01 A | 3-1952 | 100% | 2022-09-12 | 2022-09-13 |  | MBRT BASE [16 h] | 16 | 16 | COM | 16 | ZONE-3 | 23 | CURB | ROADWAY | NORTH |
| 3-1954 |  | TEMP PATCH, 23RD TO 24TH NORTH SIDE | 1d | 2022-09-02 A | 2022-09-06 A | 3-1953 | 100% | 2022-09-14 | 2022-09-14 |  | MBRT BASE [16 h] | 16 | 16 | EA3 | 16 | ZONE-3 | 23 |  | ROADWAY | NORTH |
|  | 13 | **DENNY TO 23RD SOUTH SIDE** |  | 2022-10-10 | 2022-12-07 |  |  |  |  |  |  |  |  |  |  |  |  |  |  |  |
| 3-1928 |  | DEMO ROAD - COMMON EX - TYPE 2, DENNY TO 23RD SOUTH SIDE | 6d | 2022-10-10 A | 2022-10-25 A | 3-1834, 3-1835, 3-1787 | 100% | 2022-11-11 | 2022-11-21 |  | MBRT BASE [96 h] | 96 | 96 | GRM | 96 | ZONE-3 | DENNY | DEMOPREP | ROADWAY | SOUTH |
| 3-1929 |  | CONDUIT RD CROSSING, DENNY TO 23RD SOUTH SIDE | 6d | 2022-10-10 A | 2022-10-26 A | 3-1928 SS | 100% | 2022-11-11 | 2022-11-21 |  | MBRT BASE [104 h] | 104 | 104 | ELECRICAL SUB | 104 | ZONE-3 | DENNY | ELECTRICAL | ROADWAY | SOUTH |
| PCO432.01 |  | DSC 315-CDF in Roadway Denny Way South Side | 5d | 2022-10-24 A | 2022-11-04 A | MS-0025 | 100% | 2023-02-27 | 2023-03-03 |  | MBRT DSC [72 h] | 72 | 72 |  | 72 |  |  |  |  |  |
| 3-1930 |  | ROADWAY PAVING - 2 POURS, DENNY TO 23RD SOUTH SIDE | 4d | 2022-11-15 A | 2022-12-01 A | 3-1929 | 100% | 2022-10-31 | 2022-11-03 |  | MBRT BASE [88 h] | 88 | 88 | COL | 88 | ZONE-3 | DENNY | PAVE-R | ROADWAY | SOUTH |
| 3-1931 |  | CONCRETE CURE, DENNY TO 23RD SOUTH SIDE | 3d | 2022-12-02 A | 2022-12-04 A | 3-1930 | 100% | 2022-12-07 | 2022-12-09 | 7 day per week | MBRT BASE |  |  |  | 24 | ZONE-3 | DENNY |  | ROADWAY | SOUTH |
| 3-1932 |  | F/P CURB, DENNY TO 23RD SOUTH SIDE | 2d | 2022-12-05 A | 2022-12-06 A | 3-1931 | 100% | 2022-12-12 | 2022-12-13 |  | MBRT BASE [16 h] | 16 | 16 | COM | 16 | ZONE-3 | DENNY | CURB | ROADWAY | SOUTH |
| 3-1933 |  | TEMP PATCH, DENNY TO 23RD SOUTH SIDE | 1d | 2022-12-07 A | 2022-12-07 A | 3-1932, 3-1947 | 100% | 2022-12-15 | 2022-12-15 |  | MBRT BASE [8 h] | 8 | 8 | EA3 | 8 | ZONE-3 | DENNY |  | ROADWAY | SOUTH |
|  | 17 | **24TH TO 25TH SOUTH SIDE** |  | 2022-10-31 | 2023-01-05 |  |  |  |  |  |  |  |  |  |  |  |  |  |  |  |
| 3-1956 |  | DEMO ROAD - COMMON EX - TYPE 2, 24TH TO 25TH SOUTH SIDE | 6d | 2022-10-31 A | 2022-11-23 A | 3-1787, 3-1837, 3-1929 | 100% | 2022-12-16 | 2022-12-23 |  | MBRT BASE [136 h] | 136 | 136 | GRM | 136 | ZONE-3 | 24 | DEMOPREP | ROADWAY | SOUTH |
| 3-1957 |  | CONDUIT RD CROSSING, 24TH TO 25TH SOUTH SIDE | 6d | 2022-10-31 A | 2022-11-23 A | 3-1956 SS | 100% | 2022-12-16 | 2022-12-23 |  | MBRT BASE [136 h] | 136 | 136 | ELECRICAL SUB | 136 | ZONE-3 | 24 | ELECTRICAL | ROADWAY | SOUTH |
| 3-1958 |  | ROADWAY PAVING - 2 POURS, 24TH TO 25TH SOUTH SIDE | 4d | 2022-12-07 A | 2022-12-27 A | 3-1957 | 100% | 2022-12-27 | 2022-12-30 |  | MBRT BASE [104 h] | 104 | 104 | COL | 104 | ZONE-3 | 24 | PAVE-R | ROADWAY | SOUTH |
| 3-1959 |  | CONCRETE CURE, 24TH TO 25TH SOUTH SIDE | 3d | 2022-12-28 A | 2022-12-30 A | 3-1958 | 100% | 2023-01-07 | 2023-01-09 | 7 day per week | MBRT BASE |  |  |  | 24 | ZONE-3 | 24 |  | ROADWAY | SOUTH |
| 3-1960 |  | F/P CURB, 24TH TO 25TH SOUTH SIDE | 2d | 2023-01-03 A | 2023-01-04 A | 3-1959 | 100% | 2023-01-10 | 2023-01-11 |  | MBRT BASE [16 h] | 16 | 16 | COM | 16 | ZONE-3 | 24 | CURB | ROADWAY | SOUTH |
| 3-1961 |  | TEMP PATCH, 24TH TO 25TH SOUTH SIDE | 1d | 2023-01-05 A | 2023-01-05 A | 3-1960 | 100% | 2023-01-12 | 2023-01-12 |  | MBRT BASE [8 h] | 8 | 8 | EA3 | 8 | ZONE-3 | 24 |  | ROADWAY | SOUTH |

| ID | WBS | Activity | Duration | Start | Finish | Predecessors | Complete | Planned start | Planned finish | Calendar | Resources | Cost | Actual cost | user_text2 | user_number6 | MBRT-ZONE | MBRT-LOCATION | MBRT-SCOPE | MBRT-TYPE | MBRT-SIDE | user_text10 | user_text8 | MBRT-DELAY |
| --- | --- | --- | --- | --- | --- | --- | --- | --- | --- | --- | --- | --- | --- | --- | --- | --- | --- | --- | --- | --- | --- | --- | --- |
|  | 18 | **24TH TO 25TH NORTH SIDE** |  | 2022-08-01 | 2022-09-06 |  |  |  |  |  |  |  |  |  |  |  |  |  |  |  |  |  |  |
| 3-1963 |  | DEMO ROAD - COMMON EX - TYPE 2, 24TH TO 25TH NORTH SIDE | 6d | 2022-08-01 A | 2022-08-12 A | 3-1949 SS | 100% | 2023-01-20 | 2023-01-27 |  | MBRT BASE [80 h] | 80 | 80 | GRM | 80 | ZONE-3 | 24 | DEMOPREP | ROADWAY | NORTH |  |  |  |
| 3-1964 |  | CONDUIT RD CROSSING, 24TH TO 25TH NORTH SIDE | 6d | 2022-08-01 A | 2022-08-12 A | 3-1963 SS | 100% | 2023-01-20 | 2023-01-27 |  | MBRT BASE [80 h] | 80 | 80 | ELECRICAL SUB | 80 | ZONE-3 | 24 | ELECTRICAL | ROADWAY | NORTH |  |  |  |
| 3-1965 |  | ROADWAY PAVING - 2 POURS, 24TH TO 25TH NORTH SIDE | 4d | 2022-08-17 A | 2022-08-22 A | 3-1964 | 100% | 2023-01-30 | 2023-02-02 |  | MBRT BASE [32 h] | 32 | 32 | COL | 32 | ZONE-3 | 24 | PAVE-R | ROADWAY | NORTH |  |  |  |
| 3-1966 |  | CONCRETE CURE, 24TH TO 25TH NORTH SIDE | 3d | 2022-08-23 A | 2022-08-25 A | 3-1965 | 100% | 2023-02-03 | 2023-02-05 | 7 day per week | MBRT BASE |  |  |  | 24 | ZONE-3 | 24 |  | ROADWAY | NORTH |  |  |  |
| 3-1967 |  | F/P CURB, 24TH TO 25TH NORTH SIDE | 2d | 2022-08-31 A | 2022-09-01 A | 3-1966 | 100% |  |  |  | MBRT BASE [16 h] | 16 | 16 | COM | 16 | ZONE-3 | 24 | CURB | ROADWAY | NORTH |  |  |  |
| 3-1968 |  | TEMP PATCH, 24TH TO 25TH NORTH SIDE | 1d | 2022-09-06 A | 2022-09-06 A | 3-1967 | 100% | 2022-09-02 | 2022-09-02 |  | MBRT BASE [8 h] | 8 | 8 | EA3 | 8 | ZONE-3 | 24 |  | ROADWAY | NORTH |  |  |  |
|  | 19 | **25TH TO 27TH NORTH SIDE** |  | 2023-07-19 | 2023-09-06 |  |  |  |  |  |  |  |  |  |  |  |  |  |  |  |  |  |  |
| 3-1970 |  | DEMO ROAD - COMMON EX - TYPE 2, 25TH TO 27TH NORTH SIDE | 8d | 2023-07-19 A | 2023-08-07 A | 3-1964, 3-1998 | 100% | 2023-07-03 | 2023-07-13 |  | MBRT BASE [112 h] | 112 | 112 | GRM | 112 | ZONE-3 | 25 | DEMOPREP | ROADWAY | NORTH | 3-1970 | 3-1970 | FM001 |
| 3-1971 |  | CONDUIT RD CROSSING, 25TH TO 27TH NORTH SIDE | 8d | 2023-07-19 A | 2023-08-07 A | 3-1970 SS | 100% | 2023-07-03 | 2023-07-13 |  | MBRT BASE [112 h] | 112 | 112 | ELECRICAL SUB | 112 | ZONE-3 | 25 | ELECTRICAL | ROADWAY | NORTH | 3-1971 | 3-1971 | FM001 |
| 3-1972 |  | ROADWAY PAVING - 4 POURS, 25TH TO 27TH NORTH SIDE | 8d | 2023-08-15 A | 2023-08-30 A | 3-1971 | 100% | 2023-08-14 | 2023-08-23 |  | MBRT BASE [96 h] | 96 | 96 | COL | 96 | ZONE-3 | 25 | PAVE-R | ROADWAY | NORTH | 3-1972 | 3-1972 | FM001 |
| 3-1973 |  | CONCRETE CURE, 25TH TO 27TH NORTH SIDE | 3d | 2023-08-31 A | 2023-09-05 A | 3-1972 | 100% | 2023-08-24 | 2023-08-26 | 7 day per week | MBRT BASE |  |  |  | 48 | ZONE-3 | 25 |  | ROADWAY | NORTH | 3-1973 | 3-1973 |  |
| 3-1974 |  | F/P CURB, 25TH TO 27TH NORTH SIDE | 3d | 2023-09-01 A | 2023-09-01 A | 3-1973 | 100% | 2023-08-28 | 2023-08-30 |  | MBRT BASE [8 h] | 8 | 8 | COM | 8 | ZONE-3 | 25 | CURB | ROADWAY | NORTH | 3-1974 | 3-1974 |  |
| 3-1975 |  | TEMP PATCH, 25TH TO 27TH NORTH SIDE | 1d | 2023-09-06 A | 2023-09-06 A | 3-1974 | 100% | 2023-08-31 | 2023-08-31 |  | MBRT BASE [8 h] | 8 | 8 | EA3 | 8 | ZONE-3 | 25 |  | ROADWAY | NORTH | 3-1975 | 3-1975 |  |
|  | 20 | **27TH TO MLK NORTH SIDE** |  | 2023-09-25 | 2023-10-26 |  |  |  |  |  |  |  |  |  |  |  |  |  |  |  |  |  |  |
| 3-1977 |  | DEMO ROAD - COMMON EX - TYPE 2, 27TH TO MLK NORTH SIDE | 6d | 2023-09-25 A | 2023-10-14 A | 3-1970, 3-1975 | 100% | 2023-09-11 | 2023-09-18 |  | MBRT BASE [120 h] | 120 | 120 | GRM | 120 | ZONE-3 | 27 | DEMOPREP | ROADWAY | NORTH | 3-1977 | 3-1977 |  |
| 3-1983 |  | DSC 628 EXISTING INLET POURED IN CONCRETE | 3d | 2023-10-02 A | 2023-10-04 A | 3-1977 SS | 100% |  |  |  | MBRT DSC [24 h] | 24 | 24 |  | 24 |  |  |  |  |  |  |  |  |
| 3-1978 |  | CONDUIT RD CROSSING, 27TH TO MLK NORTH SIDE | 6d | 2023-10-05 A | 2023-10-06 A | 3-1977 SS, 3-1983 | 100% | 2023-10-02 | 2023-10-09 |  | MBRT BASE [16 h] | 16 | 16 | ELECRICAL SUB | 16 | ZONE-3 | 27 | ELECTRICAL | ROADWAY | NORTH | 3-1978 | 3-1978 |  |
| 3-1979 |  | ROADWAY PAVING - 2 POURS, 27TH TO MLK NORTH SIDE | 4d | 2023-10-16 A | 2023-10-19 A | 3-1972, 3-1978, 3-1977 | 100% | 2023-10-10 | 2023-10-13 |  | MBRT BASE [32 h] | 32 | 32 | COL | 32 | ZONE-3 | 27 | PAVE-R | ROADWAY | NORTH | 3-1979 | 3-1979 | FM001 |
| 3-1981 |  | F/P CURB, 27TH TO MLK NORTH SIDE | 3d | 2023-10-18 A | 2023-10-18 A | 3-1979 SS | 100% | 2023-10-17 | 2023-10-19 |  | MBRT BASE [8 h] | 8 | 8 | COM | 8 | ZONE-3 | 27 | CURB | ROADWAY | NORTH | 3-1981 | 3-1981 | FM001 |
| 3-1980 |  | CONCRETE CURE, 27TH TO MLK NORTH SIDE | 3d | 2023-10-20 A | 2023-10-24 A | 3-1979 | 100% | 2023-10-14 | 2023-10-16 | 7 day per week | MBRT BASE |  |  |  | 40 | ZONE-3 | 27 |  | ROADWAY | NORTH | 3-1980 | 3-1980 | FM001 |
| 3-1982 |  | TEMP PATCH, 27TH TO MLK NORTH SIDE | 1d | 2023-10-26 A | 2023-10-26 A | 3-1981, 3-1980, 3-1981 FF | 100% | 2023-10-20 | 2023-10-20 |  | MBRT BASE [8 h] | 8 | 8 | EA3 | 8 | ZONE-3 | 27 |  | ROADWAY | NORTH | 3-1982 | 3-1982 | FM001 |
|  | 21 | **25TH TO 26TH SOUTH SIDE** |  | 2023-03-10 | 2023-04-28 |  |  |  |  |  |  |  |  |  |  |  |  |  |  |  |  |  |  |
| 3-1984 |  | DEMO ROAD - COMMON EX - TYPE 2, 25TH TO 27TH SOUTH SIDE | 8d | 2023-03-10 A | 2023-03-23 A | 2-1280 | 100% | 2023-03-31 | 2023-04-11 |  | MBRT BASE [80 h] | 80 | 80 | GRM | 80 | ZONE-3 | 25 | DEMOPREP | ROADWAY | SOUTH |  |  | FM001 |
| 3-1985 |  | CONDUIT RD CROSSING, 25TH TO 27TH SOUTH SIDE | 8d | 2023-03-10 A | 2023-03-23 A | 3-1984 SS | 100% | 2023-03-31 | 2023-04-11 |  | MBRT BASE [80 h] | 80 | 80 | ELECRICAL SUB | 80 | ZONE-3 | 25 | ELECTRICAL | ROADWAY | SOUTH |  |  | FM001 |
| 3-1986 |  | ROADWAY PAVING - 4 POURS, 25TH TO 27TH SOUTH SIDE | 8d | 2023-03-24 A | 2023-04-25 A | 3-1985 | 100% | 2023-04-12 | 2023-04-21 |  | MBRT BASE [184 h] | 184 | 184 | COL | 184 | ZONE-3 | 25 | PAVE-R | ROADWAY | SOUTH | 3-1986 | 3-1986 | FM001 |
| 3-1987 |  | CONCRETE CURE, 25TH TO 27TH SOUTH SIDE | 3d | 2023-04-26 A | 2023-04-28 A | 3-1986 | 100% | 2023-04-22 | 2023-04-24 | 7 day per week | MBRT BASE |  |  |  | 24 | ZONE-3 | 25 |  | ROADWAY | SOUTH | 3-1987 | 3-1987 |  |
| 3-1988 |  | F/P CURB, 25TH TO 27TH SOUTH SIDE | 3d | 2023-04-26 A | 2023-04-27 A | 3-1987 | 100% | 2023-04-25 | 2023-04-27 |  | MBRT BASE [16 h] | 16 | 16 | COM | 16 | ZONE-3 | 25 | CURB | ROADWAY | SOUTH | 3-1988 | 3-1988 |  |
| 3-1989 |  | TEMP PATCH, 25TH TO 27TH SOUTH SIDE | 1d | 2023-04-28 A | 2023-04-28 A | 3-1988 | 100% |  |  |  | MBRT BASE [8 h] | 8 | 8 | EA3 | 8 | ZONE-3 | 25 |  | ROADWAY | SOUTH | 3-1989 | 3-1989 |  |

| ID | WBS | Activity | Duration | Start | Finish | Predecessors | Complete | Planned start | Planned finish | Calendar | Resources | Cost | Actual cost | user_text2 | user_number6 | user_text10 | user_text8 | MBRT-ZONE | MBRT-LOCATION | MBRT-SCOPE | MBRT-TYPE | MBRT-SIDE | MBRT-DELAY |
| --- | --- | --- | --- | --- | --- | --- | --- | --- | --- | --- | --- | --- | --- | --- | --- | --- | --- | --- | --- | --- | --- | --- | --- |
|  | 22 | **26TH TO MLK SOUTH SIDE** |  | 2023-05-09 | 2023-06-20 |  |  |  |  |  |  |  |  |  |  |  |  |  |  |  |  |  |  |
| 3-1991 |  | DEMO ROAD - COMMON EX - TYPE 2, 26TH TO MLK SOUTH SIDE | 6d | 2023-05-09 A | 2023-05-26 A | 3-1984, 3-1839 | 100% | 2023-06-07 | 2023-06-14 |  | MBRT BASE [112 h] | 112 | 112 | GRM | 112 | 3-1991 | 3-1991 | ZONE-3 | 27 | DEMOPREP | ROADWAY | SOUTH |  |
| 3-1992 |  | CONDUIT RD CROSSING, 26TH TO MLK SOUTH SIDE | 6d | 2023-05-09 A | 2023-05-26 A | 3-1991 SS | 100% | 2023-06-07 | 2023-06-14 |  | MBRT BASE [112 h] | 112 | 112 | ELECRICAL SUB | 112 | 3-1992 | 3-1992 | ZONE-3 | 27 | ELECTRICAL | ROADWAY | SOUTH |  |
| 3-1993 |  | ROADWAY PAVING - 2 POURS, 26TH TO MLK SOUTH SIDE | 10d | 2023-05-31 A | 2023-06-13 A | 3-1992, 3-1986 | 100% |  |  |  | MBRT BASE [80 h] | 80 | 80 | COL | 80 | 3-1993 | 3-1993 | ZONE-3 | 27 | PAVE-R | ROADWAY | SOUTH | FM001 |
| 3-1994 |  | CONCRETE CURE, 26TH TO MLK SOUTH SIDE | 3d | 2023-06-14 A | 2023-06-16 A | 3-1993 | 100% |  |  | 7 day per week | MBRT BASE |  |  |  | 24 | 3-1994 | 3-1994 | ZONE-3 | 27 |  | ROADWAY | SOUTH | FM001 |
| 3-1995 |  | F/P CURB, 26TH TO MLK SOUTH SIDE | 3d | 2023-06-15 A | 2023-06-19 A | 3-1994 SS+1d | 100% |  |  |  | MBRT BASE [24 h] | 24 | 24 | COM | 24 | 3-1995 | 3-1995 | ZONE-3 | 27 | CURB | ROADWAY | SOUTH | FM001 |
| 3-1996 |  | TEMP PATCH, 26TH TO MLK SOUTH SIDE | 1d | 2023-06-20 A | 2023-06-20 A | 3-1995, 3-1989 | 100% |  |  |  | MBRT BASE [8 h] | 8 | 8 | EA3 | 8 | 3-1996 | 3-1996 | ZONE-3 | 27 |  | ROADWAY | SOUTH | FM001 |
|  | 23 | **MLK MADISON TO HARRISION EAST SIDE** |  | 2023-06-06 | 2023-07-17 |  |  |  |  |  |  |  |  |  |  |  |  |  |  |  |  |  |  |
| 3-1998 |  | DEMO ROAD - COMMON EX - TYPE 2, MLK MAD TO HARRISON EAST SIDE | 6d | 2023-06-06 A | 2023-06-21 A | 3-1685, 3-1827, 3-1996 | 100% | 2023-06-21 | 2023-06-28 |  | MBRT BASE [96 h] | 96 | 96 | GRM | 96 | 3-1998 | 3-1998 | ZONE-3 | MLK | DEMOPREP | ROADWAY | EAST |  |
| 3-1999 |  | CONDUIT RD CROSSING, MLK MAD TO HARRISON EAST SIDE | 6d | 2023-06-12 A | 2023-06-20 A | 3-1998 SS | 100% | 2023-06-21 | 2023-06-28 |  | MBRT BASE [56 h] | 56 | 56 | ELECRICAL SUB | 56 | 3-1999 | 3-1999 | ZONE-3 | MLK | ELECTRICAL | ROADWAY | EAST |  |
| 3-2000 |  | ROADWAY PAVING - 2 POURS, MLK MAD TO HARRISON EAST SIDE | 4d | 2023-06-22 A | 2023-07-12 A | 3-1999, 3-1993 | 100% | 2023-06-29 | 2023-07-05 |  | MBRT BASE [112 h] | 112 | 112 | COL | 112 | 3-2000 | 3-2000 | ZONE-3 | MLK | PAVE-R | ROADWAY | EAST |  |
| 3-2001 |  | CONCRETE CURE, MLK MAD TO HARRISON EAST SIDE | 3d | 2023-07-13 A | 2023-07-13 A | 3-2000 | 100% | 2023-07-11 | 2023-07-13 | 7 day per week | MBRT BASE |  |  |  | 8 | 3-2001 | 3-2001 | ZONE-3 | MLK |  | ROADWAY | EAST |  |
| 3-2002 |  | F/P CURB, MLK MAD TO HARRISON EAST SIDE | 2d | 2023-07-14 A | 2023-07-14 A | 3-2001 | 100% | 2023-07-14 | 2023-07-17 |  | MBRT BASE [8 h] | 8 | 8 | COM | 8 | 3-2002 | 3-2002 | ZONE-3 | MLK | CURB | ROADWAY | EAST |  |
| 3-2003 |  | TEMP PATCH, MLK MAD TO HARRISON EAST SIDE | 1d | 2023-07-17 A | 2023-07-17 A | 3-2002, 3-1996 | 100% | 2023-07-18 | 2023-07-18 |  | MBRT BASE [8 h] | 8 | 8 | EA3 | 8 | 3-2003 | 3-2003 | ZONE-3 | MLK |  | ROADWAY | EAST |  |
|  | 24 | **MLK MADISON TO HARRISON WEST SIDE** |  | 2023-11-27 | 2024-02-09 |  |  |  |  |  |  |  |  |  |  |  |  |  |  |  |  |  |  |
| 3-2005 |  | DEMO ROAD - COMMON EX - TYPE 2, MLK MAD TO HARRISON WEST SIDE | 6d | 2023-11-27 A | 2023-12-29 A | 3-1998, 3-2003, 3-1977 | 100% | 2023-11-14 | 2023-11-21 |  | MBRT BASE [192 h] | 192 | 192 | GRM | 192 | 3-2005 | 3-2005 | ZONE-3 | DENNY | DEMOPREP | ROADWAY | WEST |  |
| 3-2006 |  | CONDUIT RD CROSSING, MLK MAD TO HARRISON WEST SIDE | 6d | 2023-12-01 A | 2023-12-20 A | 3-2005 SS | 100% | 2023-11-14 | 2023-11-21 |  | MBRT BASE [112 h] | 112 | 112 | ELECRICAL SUB | 112 | 3-2006 | 3-2006 | ZONE-3 | DENNY | ELECTRICAL | ROADWAY | WEST |  |
| 3-2011 |  | DSC 663 UNKNOWN UNLOCATED CONDUIT | 1d | 2023-12-07 A | 2023-12-07 A | 3-2006 SS | 100% | 2023-11-02 | 2023-11-02 |  | MBRT DSC [8 h] | 8 | 8 |  | 8 |  |  |  |  |  |  |  |  |
| 3-2007 |  | ROADWAY PAVING - 2 POURS, MLK MAD TO HARRISON WEST SIDE | 4d | 2023-12-08 A | 2024-01-18 A | 3-2006, 3-2011 | 100% | 2023-12-19 | 2023-12-22 |  | MBRT BASE [216 h] | 216 | 216 | COL | 216 | 3-2007 | 3-2007 | ZONE-3 | DENNY | PAVE-R | ROADWAY | WEST |  |
| 3-2008 |  | CONCRETE CURE, MLK MAD TO HARRISON WEST SIDE | 3d | 2024-01-19 A | 2024-01-23 A | 3-2007 | 100% | 2023-12-26 | 2023-12-28 |  | MBRT BASE |  |  |  | 24 | 3-2008 | 3-2008 | ZONE-3 | DENNY |  | ROADWAY | WEST |  |
| 3-2009 |  | F/P CURB, MLK MAD TO HARRISON WEST SIDE | 3d | 2024-02-06 A | 2024-02-08 A | 3-2008 | 100% | 2023-12-29 | 2024-01-03 |  | MBRT BASE [24 h] | 24 | 24 | COM | 24 | 3-2009 | 3-2009 | ZONE-3 | DENNY | CURB | ROADWAY | WEST |  |
| 3-2010 |  | TEMP PATCH, MLK MAD TO HARRISON WEST SIDE | 1d | 2024-02-09 A | 2024-02-09 A | 3-2009 | 100% | 2024-01-04 | 2024-01-04 |  | MBRT BASE [8 h] | 8 | 8 | EA3 | 8 | 3-2010 | 3-2010 | ZONE-3 | DENNY |  | ROADWAY | WEST |  |
|  | 25 | **ARTHUR PL HARRISON ST INTERSECTION** |  | 2024-01-11 | 2024-02-09 |  |  |  |  |  |  |  |  |  |  |  |  |  |  |  |  |  |  |
| 3-2012 |  | DEMO ROAD - COMMON EX - TYPE 2, ARTHUR PL HARRISON ST INTERSECTION | 8d | 2024-01-11 A | 2024-01-25 A | 3-2005, 3-2053 | 100% | 2023-12-26 | 2024-01-05 |  | MBRT BASE [80 h] | 80 | 80 | GRM | 80 | 3-2012 | 3-2012 | ZONE-3 | AR-HARR | DEMOPREP | ROADWAY |  |  |
| 3-2013 |  | CONDUIT RD CROSSING, ARTHUR PL HARRISON ST INTERSECTION | 8d | 2024-01-11 A | 2024-01-18 A | 3-2012 SS | 100% | 2023-12-26 | 2024-01-05 |  | MBRT BASE [40 h] | 40 | 40 | ELECRICAL SUB | 40 | 3-2013 | 3-2013 | ZONE-3 | AR-HARR | ELECTRICAL | ROADWAY |  |  |
| DSC-690 |  | DSC 690 CLEANOUT IN ROAWAY AFTER WIDENING AURTHUR | 1d | 2024-01-19 A | 2024-01-19 A | 3-2013 | 100% | 2023-12-11 | 2023-12-11 |  | MBRT DSC [8 h] | 8 | 8 |  | 8 |  |  |  |  |  |  |  |  |
| 3-2014 |  | ROADWAY PAVING - 4 POURS, ARTHUR PL HARRISON ST INTERSECTION | 8d | 2024-01-20 A | 2024-02-05 A | 3-2013, DSC-690, DSC-692 FF | 100% | 2024-01-08 | 2024-01-18 |  | MBRT BASE [88 h] | 88 | 88 | COL | 88 | 3-2014 | 3-2014 | ZONE-3 | AR-HARR | PAVE-R | ROADWAY |  |  |
| DSC-692 |  | DSC 692 INLET CAST INTO ROADWAY | 1d | 2024-01-22 A | 2024-01-22 A | DSC-690 | 100% | 2023-12-11 | 2023-12-11 |  | MBRT DSC [8 h] | 8 | 8 |  | 8 |  |  |  |  |  |  |  |  |
| 3-2015 |  | CONCRETE CURE, ARTHUR PL HARRISON ST INTERSECTION | 3d | 2024-02-06 A | 2024-02-08 A | 3-2014 | 100% | 2024-01-19 | 2024-01-23 |  | MBRT BASE |  |  |  | 24 | 3-2015 | 3-2015 | ZONE-3 | AR-HARR |  | ROADWAY |  |  |
| 3-2016 |  | F/P CURB, ARTHUR PL HARRISON ST INTERSECTION | 3d | 2024-02-06 A | 2024-02-08 A | 3-2015 | 100% | 2024-01-24 | 2024-01-26 |  | MBRT BASE [24 h] | 24 | 24 | COM | 24 | 3-2016 | 3-2016 | ZONE-3 | AR-HARR | CURB | ROADWAY |  |  |
| 3-2017 |  | TEMP PATCH, ARTHUR PL HARRISON ST INTERSECTION | 1d | 2024-02-09 A | 2024-02-09 A | 3-2016 | 100% | 2024-01-29 | 2024-01-29 |  | MBRT BASE [8 h] | 8 | 8 | EA3 | 8 | 3-2017 | 3-2017 | ZONE-3 | AR-HARR |  | ROADWAY |  |  |

| ID | WBS | Activity | Duration | Start | Finish | Predecessors | Complete | Planned start | Planned finish | Calendar | Resources | Cost | Actual cost | user_text2 | user_number6 | MBRT-ZONE | MBRT-LOCATION | MBRT-TYPE | MBRT-SCOPE | MBRT-SIDE | MBRT-RESP | user_text10 | user_text8 |
| --- | --- | --- | --- | --- | --- | --- | --- | --- | --- | --- | --- | --- | --- | --- | --- | --- | --- | --- | --- | --- | --- | --- | --- |
|  | 26 | **PINE ST** |  | 2022-04-13 | 2022-05-23 |  |  |  |  |  |  |  |  |  |  |  |  |  |  |  |  |  |  |
| 3-2019 |  | DEMO ROAD - COMMON EX - TYPE 2, PINE ST | 6d | 2022-04-13 A | 2022-04-19 A | 3-1670 | 100% | 2023-06-29 | 2023-07-07 |  | MBRT BASE [40 h] | 40 | 40 | GRM | 40 | ZONE-3 | PINE | ROADWAY |  |  |  |  |  |
| 3-2020 |  | F/P CURB AND GUTTER, PINE ST | 2d | 2022-04-20 A | 2022-04-27 A | 3-2019 | 100% | 2023-07-10 | 2023-07-11 |  | MBRT BASE [48 h] | 48 | 48 | COM | 48 | ZONE-3 | PINE | ROADWAY | CURB |  |  |  |  |
| 3-2021 |  | ROADWAY CONCRETE PAVING, PINE ST | 2d | 2022-04-21 A | 2022-04-22 A | 3-2020 | 100% | 2023-07-12 | 2023-07-13 |  | MBRT BASE [16 h] | 16 | 16 | COL | 16 | ZONE-3 | PINE | ROADWAY | PAVE-R |  |  |  |  |
| 3-2023 |  | F/P CURB, PINE ST | 2d | 2022-04-21 A | 2022-04-22 A | 3-2021 SS | 100% | 2023-07-18 | 2023-07-19 |  | MBRT BASE [16 h] | 16 | 16 | COM | 16 | ZONE-3 | PINE | ROADWAY | CURB |  |  |  |  |
| 3-2024 |  | TEMP PAVING, PINE ST | 1d | 2022-04-25 A | 2022-04-25 A | 3-2023 | 100% | 2023-07-20 | 2023-07-20 |  | MBRT BASE [8 h] | 8 | 8 | EA3 | 8 | ZONE-3 | PINE | ROADWAY | PAVE-R |  |  |  |  |
| 3-2022 |  | ASPHALT PAVING, PINE ST | 2d | 2022-05-20 A | 2022-05-23 A | 3-2021 | 100% | 2022-05-02 | 2022-05-03 |  | MBRT BASE [16 h] | 16 | 16 | ASPHALT SUB | 16 | ZONE-3 | PINE | ROADWAY |  |  |  |  |  |
|  | 2 | **INTERSECTIONS** |  | 2021-11-13 | 2024-01-08 |  |  |  |  |  |  |  |  |  |  |  |  |  |  |  |  |  |  |
|  | 1 | **16TH NORTH SIDE** |  | 2021-11-13 | 2021-11-14 |  |  |  |  |  |  |  |  |  |  |  |  |  |  |  |  |  |  |
| 3-2027 |  | DEMO ROAD - COMMON EX - TYPE 2, 16TH NORTH SIDE | 1d | 2021-11-13 A | 2021-11-13 A | 3-1851 SS | 100% |  |  | WEEKEND ONLY | MBRT BASE [8 h] | 8 | 8 | WGRM | 8 | ZONE-3 | 16 | ROADWAY |  | NORTH |  |  |  |
| 3-2028 |  | TRENCH CONDUIT, 16TH NORTH SIDE | 1d | 2021-11-13 A | 2021-11-13 A | 3-2027 SS | 100% |  |  | WEEKEND ONLY | MBRT BASE [8 h] | 8 | 8 | ELECRICAL SUB | 8 | ZONE-3 | 16 | ROADWAY | ELECTRICAL |  | PRIME |  |  |
| 3-2029 |  | ROADWAY PAVING, 16TH NORTH SIDE | 1d | 2021-11-14 A | 2021-11-14 A | 3-2028 | 100% |  |  | WEEKEND ONLY | MBRT BASE [8 h] | 8 | 8 | WCOL | 8 | ZONE-3 | 16 | ROADWAY | PAVE-R |  |  |  |  |
|  | 10 | **20TH NORTH SIDE** |  | 2023-06-03 | 2023-06-06 |  |  |  |  |  |  |  |  |  |  |  |  |  |  |  |  |  |  |
| 3-2063 |  | DEMO ROAD - COMMON EX - TYPE 2, 20TH NORTH SIDE | 1d | 2023-06-03 A | 2023-06-06 A | 3-1921 SS | 100% | 2023-06-03 | 2023-06-03 | WEEKEND ONLY | MBRT BASE [16 h] | 16 | 16 | WGRM | 16 | ZONE-3 | 20 | ROADWAY |  | NORTH |  | 3-2063 | 3-2063 |
| 3-2064 |  | TRENCH CONDUIT, 20TH NORTH SIDE | 1d | 2023-06-03 A | 2023-06-06 A | 3-2063 SS | 100% | 2023-06-03 | 2023-06-03 | WEEKEND ONLY | MBRT BASE [16 h] | 16 | 16 | ELECRICAL SUB | 16 | ZONE-3 | 20 | ROADWAY | ELECTRICAL | NORTH | PRIME | 3-2064 | 3-2064 |
| 3-2065 |  | ROADWAY PAVING, 20TH NORTH SIDE | 1d | 2023-06-04 A | 2023-06-06 A | 3-2064 | 100% | 2023-06-04 | 2023-06-04 | WEEKEND ONLY | MBRT BASE [8 h] | 8 | 8 | WCOL | 8 | ZONE-3 | 20 | ROADWAY | PAVE-R | NORTH |  | 3-2065 | 3-2065 |
|  | 11 | **DENNY SOUTH SIDE** |  | 2022-10-10 | 2022-11-30 |  |  |  |  |  |  |  |  |  |  |  |  |  |  |  |  |  |  |
| 3-2067 |  | DEMO ROAD - COMMON EX - TYPE 2, DENNY SOUTH SIDE | 1d | 2022-10-10 A | 2022-10-17 A | 3-1928 SS | 100% | 2022-11-05 | 2022-11-05 | WEEKEND ONLY | MBRT BASE [16 h] | 16 | 16 | WGRM | 16 | ZONE-3 | DENNY | ROADWAY |  | SOUTH |  |  |  |
| 3-2068 |  | TRENCH CONDUIT, DENNY SOUTH SIDE | 1d | 2022-10-18 A | 2022-10-20 A | 3-2067 SS | 100% | 2022-11-05 | 2022-11-05 | WEEKEND ONLY | MBRT BASE |  | 8 | ELECRICAL SUB | 0 | ZONE-3 | DENNY | ROADWAY | ELECTRICAL | SOUTH | PRIME |  |  |
| 3-2069 |  | ROADWAY PAVING, DENNY SOUTH SIDE | 1d | 2022-11-15 A | 2022-11-30 A | 3-2068 | 100% | 2022-11-06 | 2022-11-06 | WEEKEND ONLY | MBRT BASE [32 h] | 32 | 32 | WCOL | 32 | ZONE-3 | DENNY | ROADWAY | PAVE-R | SOUTH |  |  |  |
|  | 12 | **DENNY NORTH SIDE** |  | 2022-08-15 | 2022-10-06 |  |  |  |  |  |  |  |  |  |  |  |  |  |  |  |  |  |  |
| 3-2071 |  | DEMO ROAD - COMMON EX - TYPE 2, DENNY NORTH SIDE | 1d | 2022-08-15 A | 2022-08-30 A | 3-1935 SS | 100% | 2022-12-10 | 2022-12-10 | WEEKEND ONLY | MBRT BASE [32 h] | 32 | 32 | WGRM | 32 | ZONE-3 | DENNY | ROADWAY |  | NORTH |  |  |  |
| 3-2072 |  | TRENCH CONDUIT, DENNY NORTH SIDE | 1d | 2022-08-15 A | 2022-08-30 A | 3-2071 SS | 100% | 2022-08-20 | 2022-08-20 | WEEKEND ONLY | MBRT BASE [32 h] | 32 | 32 | ELECRICAL SUB | 32 | ZONE-3 | DENNY | ROADWAY | ELECTRICAL | NORTH | PRIME |  |  |
| 3-2073 |  | ROADWAY PAVING, DENNY NORTH SIDE | 1d | 2022-10-03 A | 2022-10-06 A | 3-2072 | 100% | 2022-10-01 | 2022-10-01 | WEEKEND ONLY | MBRT BASE |  | 8 | WCOL | 0 | ZONE-3 | DENNY | ROADWAY | PAVE-R | NORTH |  |  |  |

| ID | WBS | Activity | Duration | Start | Finish | Predecessors | Complete | Planned start | Planned finish | Calendar | Resources | Cost | Actual cost | user_text2 | user_number6 | MBRT-ZONE | MBRT-LOCATION | MBRT-TYPE | MBRT-SIDE | MBRT-SCOPE | MBRT-RESP | user_text10 | user_text8 |
| --- | --- | --- | --- | --- | --- | --- | --- | --- | --- | --- | --- | --- | --- | --- | --- | --- | --- | --- | --- | --- | --- | --- | --- |
|  | 13 | **24TH SOUTH SIDE** |  | 2022-11-05 | 2022-12-11 |  |  |  |  |  |  |  |  |  |  |  |  |  |  |  |  |  |  |
| 3-2075 |  | DEMO ROAD - COMMON EX - TYPE 2, 24TH SOUTH SIDE | 4d | 2022-11-05 A | 2022-11-13 A | 3-1956 SS | 100% | 2023-01-21 | 2023-01-29 | WEEKEND ONLY | MBRT BASE [32 h] | 32 | 32 | WGRM | 32 | ZONE-3 | 24 | ROADWAY | SOUTH |  |  |  |  |
| 3-2076 |  | TRENCH CONDUIT, 24TH SOUTH SIDE | 4d | 2022-11-05 A | 2022-11-13 A | 3-2075 SS | 100% | 2023-01-21 | 2023-01-29 | WEEKEND ONLY | MBRT BASE [32 h] | 32 | 32 | ELECRICAL SUB | 32 | ZONE-3 | 24 | ROADWAY | SOUTH | ELECTRICAL | PRIME |  |  |
| 3-2077 |  | ROADWAY PAVING, 24TH SOUTH SIDE | 4d | 2022-11-29 A | 2022-12-11 A | 3-2076 | 100% | 2023-02-04 | 2023-02-12 | WEEKEND ONLY | MBRT BASE |  | 32 | WCOL | 0 | ZONE-3 | 24 | ROADWAY | SOUTH | PAVE-R |  |  |  |
|  | 14 | **24TH NORTH SIDE** |  | 2022-12-14 | 2023-02-26 |  |  |  |  |  |  |  |  |  |  |  |  |  |  |  |  |  |  |
| 3-2080 |  | TRENCH CONDUIT, 24TH NORTH SIDE | 4d | 2022-12-14 A | 2023-01-15 A | 3-2077 | 100% | 2022-12-31 | 2023-01-08 | WEEKEND ONLY | MBRT BASE [80 h] | 80 | 80 | ELECRICAL SUB | 80 | ZONE-3 | 24 | ROADWAY | NORTH | ELECTRICAL | PRIME |  |  |
| PCO504.01 |  | DSC 359-Lighting conduit conflict with vault and MH 24th and madison | 5d | 2023-01-07 A | 2023-01-08 A | MS-0025 | 100% | 2023-02-27 | 2023-03-03 |  | MBRT DSC [8 h] | 8 | 8 |  | 8 |  |  |  |  |  |  |  |  |
| PCO510.01 |  | DSC 365-Counduit Crossing @ John Ductbank Conflict | 5d | 2023-01-11 A | 2023-01-18 A | MS-0025 | 100% | 2023-02-27 | 2023-03-03 |  | MBRT DSC [32 h] | 32 | 32 |  | 32 |  |  |  |  |  |  |  |  |
| PCO513.01 |  | DSC 366-NWC John & Madison Ductbank Conflict | 5d | 2023-01-13 A | 2023-01-14 A | MS-0025 | 100% | 2023-02-27 | 2023-03-03 |  | MBRT DSC [8 h] | 8 | 8 |  | 8 |  |  |  |  |  |  |  |  |
| PCO541.01 |  | DSC 381-Existing Type 164 inlet 24th and John | 5d | 2023-01-26 A | 2023-01-27 A | MS-0025 | 100% | 2023-02-27 | 2023-03-03 |  | MBRT DSC [8 h] | 8 | 8 |  | 8 |  |  |  |  |  |  |  |  |
| 3-2079 |  | DEMO ROAD - COMMON EX - TYPE 2, 24TH NORTH SIDE | 4d | 2023-02-11 A | 2023-02-26 A | 3-2080 | 100% | 2023-02-04 | 2023-02-12 | WEEKEND ONLY | MBRT BASE [48 h] | 48 | 48 | WGRM | 48 | ZONE-3 | 24 | ROADWAY | NORTH |  |  |  |  |
| 3-2081 |  | ROADWAY PAVING, 24TH NORTH SIDE | 4d | 2023-02-11 A | 2023-02-26 A | 3-2080, 3-2079 | 100% | 2023-02-18 | 2023-02-26 | WEEKEND ONLY | MBRT BASE [48 h] | 48 | 48 | WCOL | 48 | ZONE-3 | 24 | ROADWAY | NORTH | PAVE-R |  |  |  |
|  | 15 | **MLK NORTH SIDE** |  | 2023-10-19 | 2023-11-14 |  |  |  |  |  |  |  |  |  |  |  |  |  |  |  |  |  |  |
| 3-2083 |  | DEMO ROAD - COMMON EX - TYPE 2, MLK NORTH SIDE | 1d | 2023-10-19 A | 2023-10-31 A | 3-2091 | 100% | 2023-10-10 | 2023-10-10 |  | MBRT BASE [72 h] | 72 | 72 | WGRM | 72 | ZONE-3 | MLK | ROADWAY | NORTH |  |  | 3-2083 | 3-2083 |
| 3-2093 |  | DSC 634 SINK HOLE | 1d | 2023-10-23 A | 2023-10-23 A | 3-2083 SS | 100% | 2023-10-02 | 2023-10-02 |  | MBRT DSC [8 h] | 8 | 8 |  | 8 |  |  |  |  |  |  |  |  |
| 3-2103 |  | DSC 635 UNKNOWN UNLOCATED CONDUIT | 2d | 2023-10-23 A | 2023-10-24 A | 3-2093 SS | 100% | 2023-10-02 | 2023-10-03 |  | MBRT DSC [16 h] | 16 | 16 |  | 16 |  |  |  |  |  |  |  |  |
| 3-2084 |  | TRENCH CONDUIT, MLK NORTH SIDE | 1d | 2023-10-25 A | 2023-10-27 A | 3-2083 SS, 3-2103 | 100% | 2023-10-10 | 2023-10-10 |  | MBRT BASE [24 h] | 24 | 24 | ELECRICAL SUB | 24 | ZONE-3 | MLK | ROADWAY | NORTH | ELECTRICAL | PRIME | 3-2084 | 3-2084 |
| 3-2085 |  | ROADWAY PAVING, MLK NORTH SIDE | 1d | 2023-11-01 A | 2023-11-14 A | 3-2084 | 100% | 2023-10-11 | 2023-10-11 |  | MBRT BASE [72 h] | 72 | 72 | WCOL | 72 | ZONE-3 | MLK | ROADWAY | NORTH | PAVE-R |  | 3-2085 | 3-2085 |
|  | 16 | **MLK SOUTH SIDE** |  | 2023-12-20 | 2023-12-21 |  |  |  |  |  |  |  |  |  |  |  |  |  |  |  |  |  |  |
| 3-2087 |  | DEMO ROAD - COMMON EX - TYPE 2, MLK SOUTH SIDE | 1d | 2023-12-20 A | 2023-12-20 A | 3-1991 SS, 3-2085 | 100% | 2023-12-11 | 2023-12-11 |  | MBRT BASE [8 h] | 8 | 8 | WGRM | 8 | ZONE-3 | MLK | ROADWAY | SOUTH |  |  | 3-2087 | 3-2087 |
| 3-2088 |  | TRENCH CONDUIT, MLK SOUTH SIDE | 1d | 2023-12-20 A | 2023-12-20 A | 3-2087 SS | 100% | 2023-12-11 | 2023-12-11 |  | MBRT BASE [8 h] | 8 | 8 | ELECRICAL SUB | 8 | ZONE-3 | MLK | ROADWAY | SOUTH | ELECTRICAL | PRIME | 3-2088 | 3-2088 |
| 3-2089 |  | ROADWAY PAVING, MLK SOUTH SIDE | 1d | 2023-12-21 A | 2023-12-21 A | 3-2088 | 100% | 2023-12-12 | 2023-12-12 |  | MBRT BASE [8 h] | 8 | 8 | WCOL | 8 | ZONE-3 | MLK | ROADWAY | SOUTH | PAVE-R |  | 3-2089 | 3-2089 |
|  | 2 | **16TH SOUTH SIDE** |  | 2022-04-09 | 2022-04-10 |  |  |  |  |  |  |  |  |  |  |  |  |  |  |  |  |  |  |
| 3-2031 |  | DEMO ROAD - COMMON EX - TYPE 2, 16TH SOUTH SIDE | 1d | 2022-04-09 A | 2022-04-09 A | 3-1863 SS, 3-2029, MS-2571 | 100% | 2022-04-16 | 2022-04-16 | WEEKEND ONLY | MBRT BASE [8 h] | 8 | 8 | WGRM | 8 | ZONE-3 | 16 | ROADWAY | SOUTH |  |  |  |  |
| 3-2032 |  | TRENCH CONDUIT, 16TH SOUTH SIDE | 1d | 2022-04-09 A | 2022-04-09 A | 3-2031 SS | 100% | 2022-04-16 | 2022-04-16 | WEEKEND ONLY | MBRT BASE [8 h] | 8 | 8 | ELECRICAL SUB | 8 | ZONE-3 | 16 | ROADWAY | SOUTH | ELECTRICAL | PRIME |  |  |
| 3-2033 |  | ROADWAY PAVING, 16TH SOUTH SIDE | 1d | 2022-04-10 A | 2022-04-10 A | 3-2032 | 100% | 2022-04-17 | 2022-04-17 | WEEKEND ONLY | MBRT BASE [8 h] | 8 | 8 | WCOL | 8 | ZONE-3 | 16 | ROADWAY | SOUTH | PAVE-R |  |  |  |

| ID | WBS | Activity | Duration | Start | Finish | Predecessors | Complete | Planned start | Planned finish | Calendar | Resources | Cost | Actual cost | user_text2 | user_number6 | user_text10 | user_text8 | MBRT-ZONE | MBRT-LOCATION | MBRT-TYPE | MBRT-SIDE | MBRT-SCOPE | MBRT-RESP |
| --- | --- | --- | --- | --- | --- | --- | --- | --- | --- | --- | --- | --- | --- | --- | --- | --- | --- | --- | --- | --- | --- | --- | --- |
|  | 3 | **17TH SOUTH SIDE** |  | 2023-07-18 | 2023-07-19 |  |  |  |  |  |  |  |  |  |  |  |  |  |  |  |  |  |  |
| 3-2035 |  | DEMO ROAD - COMMON EX - TYPE 2, 17TH SOUTH SIDE | 1d | 2023-07-18 A | 2023-07-18 A | 3-1872 SS, 3-2033, 3-1872 | 100% | 2023-07-13 | 2023-07-13 |  | MBRT BASE [8 h] | 8 | 8 | WGRM | 8 | 3-2035 | 3-2035 | ZONE-3 | 17 | ROADWAY | SOUTH |  |  |
| 3-2036 |  | TRENCH CONDUIT, 17TH SOUTH SIDE | 1d | 2023-07-18 A | 2023-07-18 A | 3-2035 SS | 100% | 2023-07-13 | 2023-07-13 |  | MBRT BASE [8 h] | 8 | 8 | ELECRICAL SUB | 8 | 3-2036 | 3-2036 | ZONE-3 | 17 | ROADWAY | SOUTH | ELECTRICAL | PRIME |
| 3-2037 |  | ROADWAY PAVING, 17TH SOUTH SIDE | 1d | 2023-07-19 A | 2023-07-19 A | 3-2036 | 100% | 2023-07-14 | 2023-07-14 |  | MBRT BASE [8 h] | 8 | 8 | WCOL | 8 | 3-2037 | 3-2037 | ZONE-3 | 17 | ROADWAY | SOUTH | PAVE-R |  |
|  | 4 | **18TH SOUTH SIDE** |  | 2023-07-20 | 2023-07-21 |  |  |  |  |  |  |  |  |  |  |  |  |  |  |  |  |  |  |
| 3-2039 |  | DEMO ROAD - COMMON EX - TYPE 2, 18TH SOUTH SIDE | 1d | 2023-07-20 A | 2023-07-20 A | 3-1879 SS, 3-2037, 3-2022 | 100% | 2023-07-17 | 2023-07-17 |  | MBRT BASE [8 h] | 8 | 8 | WGRM | 8 | 3-2039 | 3-2039 | ZONE-3 | 18 | ROADWAY | SOUTH |  |  |
| 3-2040 |  | TRENCH CONDUIT, 18TH SOUTH SIDE | 1d | 2023-07-20 A | 2023-07-20 A | 3-2039 SS | 100% | 2023-07-17 | 2023-07-17 |  | MBRT BASE [8 h] | 8 | 8 | ELECRICAL SUB | 8 | 3-2040 | 3-2040 | ZONE-3 | 18 | ROADWAY | SOUTH | ELECTRICAL | PRIME |
| 3-2041 |  | ROADWAY PAVING, 18TH SOUTH SIDE | 1d | 2023-07-21 A | 2023-07-21 A | 3-2040 | 100% | 2023-07-18 | 2023-07-18 |  | MBRT BASE [8 h] | 8 | 8 | WCOL | 8 | 3-2041 | 3-2041 | ZONE-3 | 18 | ROADWAY | SOUTH | PAVE-R |  |
|  | 5 | **17TH NORTH SIDE** |  | 2023-08-18 | 2023-09-15 |  |  |  |  |  |  |  |  |  |  |  |  |  |  |  |  |  |  |
| 3-2043 |  | DEMO ROAD - COMMON EX - TYPE 2, 17TH NORTH SIDE | 1d | 2023-08-18 A | 2023-08-23 A | 3-1886 SS, 3-2041 | 100% | 2023-08-19 | 2023-08-19 | WEEKEND ONLY | MBRT BASE [16 h] | 16 | 16 | WGRM | 16 | 3-2043 | 3-2043 | ZONE-3 | 17 | ROADWAY | NORTH |  |  |
| 3-2044 |  | TRENCH CONDUIT, 17TH NORTH SIDE | 1d | 2023-08-18 A | 2023-08-23 A | 3-2043 SS | 100% | 2023-08-19 | 2023-08-19 | WEEKEND ONLY | MBRT BASE [16 h] | 16 | 16 | ELECRICAL SUB | 16 | 3-2044 | 3-2044 | ZONE-3 | 17 | ROADWAY | NORTH | ELECTRICAL | PRIME |
| 3-2058 |  | DSC 595 NEC 17th Inlet cast into roadway | 7d | 2023-08-22 A | 2023-08-30 A | 3-2043 SS | 100% | 2023-08-14 | 2023-08-22 |  | MBRT DSC [56 h] | 56 | 56 |  | 56 |  |  |  |  |  |  |  |  |
| 3-2078 |  | DSC 603 UNKNOWN UNLOCATED STEEL PIPE | 1d | 2023-08-28 A | 2023-08-28 A | 3-2058 SS | 100% | 2023-08-14 | 2023-08-14 |  | MBRT DSC [8 h] | 8 | 8 |  | 8 |  |  |  |  |  |  |  |  |
| 3-2045 |  | ROADWAY PAVING, 17TH NORTH SIDE | 1d | 2023-09-06 A | 2023-09-15 A | 3-2044, 3-2058, 3-2078 | 100% | 2023-08-21 | 2023-08-21 |  | MBRT BASE [64 h] | 64 | 64 | WCOL | 64 | 3-2045 | 3-2045 | ZONE-3 | 17 | ROADWAY | NORTH | PAVE-R |  |
|  | 6 | **18TH NORTH SIDE** |  | 2023-08-08 | 2023-09-15 |  |  |  |  |  |  |  |  |  |  |  |  |  |  |  |  |  |  |
| 3-2047 |  | DEMO ROAD - COMMON EX - TYPE 2, 18TH NORTH SIDE | 1d | 2023-08-08 A | 2023-08-30 A | 3-1893 SS, 3-1893 | 100% | 2023-08-22 | 2023-08-22 |  | MBRT BASE [136 h] | 136 | 136 | WGRM | 136 | 3-2047 | 3-2047 | ZONE-3 | 18 | ROADWAY | NORTH |  |  |
| 3-2048 |  | TRENCH CONDUIT, 18TH NORTH SIDE | 1d | 2023-08-15 A | 2023-08-17 A | 3-2047 SS | 100% | 2023-08-22 | 2023-08-22 |  | MBRT BASE [24 h] | 24 | 24 | ELECRICAL SUB | 24 | 3-2048 | 3-2048 | ZONE-3 | 18 | ROADWAY | NORTH | ELECTRICAL | PRIME |
| 3-2049 |  | ROADWAY PAVING, 18TH NORTH SIDE | 1d | 2023-09-06 A | 2023-09-15 A | 3-2048, 3-2045 FF | 100% | 2023-08-23 | 2023-08-23 |  | MBRT BASE [64 h] | 64 | 64 | WCOL | 64 | 3-2049 | 3-2049 | ZONE-3 | 18 | ROADWAY | NORTH | PAVE-R |  |
|  | 7 | **19TH SOUTH SIDE** |  | 2024-01-05 | 2024-01-08 |  |  |  |  |  |  |  |  |  |  |  |  |  |  |  |  |  |  |
| 3-2051 |  | DEMO ROAD - COMMON EX - TYPE 2, 19TH SOUTH SIDE | 1d | 2024-01-05 A | 2024-01-05 A | 3-2049, 3-2059, 3-2061 | 100% | 2023-12-11 | 2023-12-11 |  | MBRT BASE [8 h] | 8 | 8 | WGRM | 8 | 3-2051 | 3-2051 | ZONE-3 | 19 | ROADWAY | SOUTH |  |  |
| 3-2052 |  | TRENCH CONDUIT, 19TH SOUTH SIDE | 1d | 2024-01-05 A | 2024-01-05 A | 3-2051 SS | 100% | 2023-12-11 | 2023-12-11 |  | MBRT BASE [8 h] | 8 | 8 | ELECRICAL SUB | 8 | 3-2052 | 3-2052 | ZONE-3 | 19 | ROADWAY | SOUTH | ELECTRICAL | PRIME |
| DSC-681 |  | DSC 681 EXISTING COMM VAULT WITH HOLES IN LID | 1d | 2024-01-05 A | 2024-01-05 A | 3-2052 SS | 100% | 2023-12-11 | 2023-12-11 |  | MBRT DSC [8 h] | 8 | 8 |  | 8 |  |  |  |  |  |  |  |  |
| 3-2053 |  | ROADWAY PAVING, 19TH SOUTH SIDE | 1d | 2024-01-06 A | 2024-01-08 A | 3-2052, DSC-681 | 100% | 2023-12-12 | 2023-12-12 |  | MBRT BASE [8 h] | 8 | 8 | WCOL | 8 | 3-2053 | 3-2053 | ZONE-3 | 19 | ROADWAY | SOUTH | PAVE-R |  |
|  | 8 | **20TH SOUTH SIDE** |  | 2023-01-26 | 2023-01-27 |  |  |  |  |  |  |  |  |  |  |  |  |  |  |  |  |  |  |
| 3-2055 |  | DEMO ROAD - COMMON EX - TYPE 2, 20TH SOUTH SIDE | 1d | 2023-01-26 A | 2023-01-26 A | 3-1907 SS, 3-2069 | 100% | 2023-10-04 | 2023-10-04 |  | MBRT BASE [8 h] | 8 | 8 | WGRM | 8 | 3-2055 | 3-2055 | ZONE-3 | 20 | ROADWAY | SOUTH |  |  |
| 3-2056 |  | TRENCH CONDUIT, 20TH SOUTH SIDE | 1d | 2023-01-26 A | 2023-01-26 A | 3-2055 SS | 100% | 2023-10-04 | 2023-10-04 |  | MBRT BASE [8 h] | 8 | 8 | ELECRICAL SUB | 8 | 3-2056 | 3-2056 | ZONE-3 | 20 | ROADWAY | SOUTH | ELECTRICAL | PRIME |
| 3-2057 |  | ROADWAY PAVING, 20TH SOUTH SIDE | 1d | 2023-01-27 A | 2023-01-27 A | 3-2056 | 100% | 2023-10-05 | 2023-10-05 |  | MBRT BASE [8 h] | 8 | 8 | WCOL | 8 | 3-2057 | 3-2057 | ZONE-3 | 20 | ROADWAY | SOUTH | PAVE-R |  |

| ID | WBS | Activity | Duration | Start | Finish | Predecessors | Complete | Planned start | Planned finish | Total float | Free float | Resources | Cost | Actual cost | user_text2 | user_number6 | user_text10 | user_text8 | MBRT-ZONE | MBRT-LOCATION | MBRT-SCOPE | MBRT-TYPE | MBRT-RESP | MBRT-SIDE | ~SELECT | ~TEXT |
| --- | --- | --- | --- | --- | --- | --- | --- | --- | --- | --- | --- | --- | --- | --- | --- | --- | --- | --- | --- | --- | --- | --- | --- | --- | --- | --- |
|  | 9 | **19TH NORTH SIDE** |  | 2023-10-21 | 2023-11-12 |  |  |  |  |  |  |  |  |  |  |  |  |  |  |  |  |  |  |  |  |  |
| 3-2060 |  | TRENCH CONDUIT, 19TH NORTH SIDE | 1d | 2023-10-21 A | 2023-10-22 A | 3-2049 | 100% | 2023-10-06 | 2023-10-06 |  |  | MBRT BASE |  | 8 | ELECRICAL SUB | 0 | 3-2060 | 3-2060 | ZONE-3 | 19 | ELECTRICAL | ROADWAY | PRIME | NORTH |  |  |
| 3-2059 |  | DEMO ROAD - COMMON EX - TYPE 2, 19TH NORTH SIDE | 1d | 2023-10-28 A | 2023-11-11 A | 3-1914 SS, 3-2057, 3-1898, 3-2060 | 100% | 2023-10-06 | 2023-10-06 |  |  | MBRT BASE [80 h] | 80 | 80 | WGRM | 80 | 3-2059 | 3-2059 | ZONE-3 | 19 |  | ROADWAY |  | NORTH |  |  |
| 3-2061 |  | ROADWAY PAVING, 19TH NORTH SIDE | 1d | 2023-10-28 A | 2023-11-12 A | 3-2060, 3-2065, 3-2059 SS | 100% | 2023-10-09 | 2023-10-09 |  |  | MBRT BASE [80 h] | 80 | 80 | WCOL | 80 | 3-2061 | 3-2061 | ZONE-3 | 19 | PAVE-R | ROADWAY |  | NORTH |  |  |
|  | 6 | **POLE FOUNDATIONS** |  | 2023-05-31 | 2023-10-06 |  |  |  |  |  |  |  |  |  |  |  |  |  |  |  |  |  |  |  |  |  |
| 3-2091 |  | INST POLE FOUNDATIONS, POLE FOUNDATIONS | 21d | 2023-05-31 A | 2023-10-06 A | MS-0026, MS-2571, MS-2576 | 100% | 2023-05-31 | 2023-06-28 |  |  | MBRT BASE |  |  | ELECRICAL SUB | 728 | 3-2091 | 3-2091 | ZONE-3 |  |  |  |  |  |  |  |
|  | 7 | **SIDEWALKS** |  | 2021-12-13 | 2024-05-21 |  |  |  |  |  |  |  |  |  |  |  |  |  |  |  |  |  |  |  |  |  |
|  | 15 | **15TH NEC** |  | 2024-02-01 | 2024-03-08 |  |  |  |  |  |  |  |  |  |  |  |  |  |  |  |  |  |  |  |  |  |
| 3-9628 |  | REMOVE SIDEWALK - 15TH NEC | 1d | 2024-02-01 A | 2024-02-01 A | 3-2012 | 100% | 2023-12-26 | 2023-12-26 |  |  | MBRT NEW [8 h] | 8 | 8 | EA3 | 8 | 3-2136 | 3-2136 | ZONE-3 | 18 |  | SIDEWALKS |  | SOUTH | e |  |
| 3-9633 |  | TRENCH CONDUIT - 15TH NEC | 1d | 2024-02-02 A | 2024-02-06 A | 3-9628 | 100% | 2023-12-27 | 2023-12-27 |  |  | MBRT NEW [8 h] | 8 | 24 | EA3 | 24 | 3-2137 | 3-2137 | ZONE-3 | 18 |  | SIDEWALKS |  | SOUTH | e |  |
| DSC-695 |  | DSC 695 DUCT BANK CONFLICT | 3d | 2024-02-02 A | 2024-02-06 A | 3-9633 SS | 100% | 2023-12-11 | 2023-12-13 |  |  | MBRT DSC [24 h] | 24 | 24 |  | 24 |  |  |  |  |  |  |  |  |  |  |
| DSC-697 |  | DSC 697 UNLKNOWN UNLOCATED CONDUIT CONFLICTS | 1d | 2024-02-06 A | 2024-02-06 A | 3-9633 SS | 100% | 2023-12-11 | 2023-12-11 |  |  | MBRT DSC [8 h] | 8 | 8 |  | 8 |  |  |  |  |  |  |  |  |  |  |
| DSC-698 |  | DSC 698 UNKNOWN UNLOCATED CONDUIT CONFLICTS WITH SDOT CONDUIT | 1d | 2024-02-06 A | 2024-02-06 A | 3-9633 SS | 100% | 2023-12-11 | 2023-12-11 |  |  | MBRT DSC [8 h] | 8 | 8 |  | 8 |  |  |  |  |  |  |  |  |  |  |
| 3-9638 |  | INST CONDUIT - 15TH NEC | 1d | 2024-02-07 A | 2024-02-23 A | 3-9633 SS, DSC-698, DSC-697, DSC-695 | 100% | 2023-12-27 | 2023-12-27 |  |  | MBRT NEW [8 h] | 8 | 96 | ELECRICAL SUB | 96 | 3-2138 | 3-2138 | ZONE-3 | 18 | ELECTRICAL | SIDEWALKS |  | SOUTH | e |  |
| DSC-704 |  | DSC 704 STORM LINE CONFLICT WITH PEDISTAL | 7d | 2024-02-14 A | 2024-02-23 A | 3-9638 SS | 100% | 2024-02-12 | 2024-02-21 |  |  | MBRT DSC [56 h] | 56 | 56 |  | 56 |  |  |  |  |  |  |  |  |  |  |
| 3-9643 |  | GRADE SIDEWALK - 15TH NEC | 2d | 2024-02-26 A | 2024-02-26 A | 3-9638, DSC-704 | 100% | 2024-02-20 | 2024-02-21 |  |  | MBRT NEW [16 h] | 16 | 8 | EA3 | 8 | 3-2139 | 3-2139 | ZONE-3 | 18 | SIDEWALKS | SIDEWALKS |  | SOUTH | e |  |
| 3-9683 |  | CURB RAMPS - 15TH NEC | 0d | 2024-03-04 A | 2024-03-04 A | 3-9643 | 100% |  |  |  |  | MBRT NEW |  |  |  | 0 |  |  |  |  |  |  |  |  |  |  |
| 3-9648 |  | POUR SIDEWALK - 15TH NEC | 3d | 2024-03-05 A | 2024-03-08 A | 3-9643, 3-9683 | 100% | 2024-03-04 | 2024-03-06 |  |  | MBRT NEW [24 h] | 24 |  | COM | 24 | 3-2140 | 3-2140 | ZONE-3 | 18 |  | SIDEWALKS |  | SOUTH | e | POLES4 |
|  | 18 | **19TH NEC** |  | 2024-04-15 | 2024-04-23 |  |  |  |  |  |  |  |  |  |  |  |  |  |  |  |  |  |  |  |  |  |
| 3-9653 |  | REMOVE SIDEWALK - 19TH NEC | 1d | 2024-04-15 | 2024-04-15 | 3-9643, 3-2156 |  |  |  | -140d | 0d | MBRT NEW [8 h] | 8 |  | EA3 | 8 | 3-2136 | 3-2136 | ZONE-3 | 18 |  | SIDEWALKS |  | SOUTH | signals |  |
| 3-9658 |  | TRENCH CONDUIT - 19TH NEC | 1d | 2024-04-16 | 2024-04-16 | 3-9653 |  |  |  | -140d | 0d | MBRT NEW [8 h] | 8 |  | EA3 | 8 | 3-2137 | 3-2137 | ZONE-3 | 18 |  | SIDEWALKS |  | SOUTH | signals |  |
| 3-9663 |  | INST CONDUIT - 19TH NEC | 1d | 2024-04-16 | 2024-04-16 | 3-9658 SS |  |  |  | -140d | 0d | MBRT NEW [8 h] | 8 |  | ELECRICAL SUB | 8 | 3-2138 | 3-2138 | ZONE-3 | 18 | ELECTRICAL | SIDEWALKS |  | SOUTH | signals |  |
| 3-9668 |  | GRADE SIDEWALK - 19TH NEC | 2d | 2024-04-17 | 2024-04-18 | 3-9663 |  |  |  | -140d | 0d | MBRT NEW [16 h] | 16 |  | EA3 | 16 | 3-2139 | 3-2139 | ZONE-3 | 18 | SIDEWALKS | SIDEWALKS |  | SOUTH | signals |  |
| 3-9673 |  | POUR SIDEWALK - 19TH NEC (ESTIMATED DATE) | 3d | 2024-04-19 | 2024-04-23 | 3-9668, 3-9678, 3-9648 |  |  |  | -140d | 0d | MBRT NEW [24 h] | 24 |  | COM | 24 | 3-2140 | 3-2140 | ZONE-3 | 18 |  | SIDEWALKS |  | SOUTH | signals | POLES4 |
| 3-9678 |  | CURB RAMPS - 19TH NEC | 0d | 2024-04-19 | 2024-04-19 | 3-9668 |  |  |  | -140d | 0d | MBRT NEW |  |  |  | 0 |  |  |  |  |  |  |  |  | signals |  |

| ID | WBS | Activity | Duration | Start | Finish | Predecessors | Complete | Remaining | Planned start | Planned finish | Total float | Free float | Calendar | Resources | Cost | Actual cost | user_number6 | user_text2 | MBRT-ZONE | MBRT-LOCATION | MBRT-TYPE | MBRT-SIDE | ~SELECT | MBRT-SCOPE | user_text10 | user_text8 |
| --- | --- | --- | --- | --- | --- | --- | --- | --- | --- | --- | --- | --- | --- | --- | --- | --- | --- | --- | --- | --- | --- | --- | --- | --- | --- | --- |
|  | 1 | **15TH TO 16TH NORTH SIDE** |  | 2022-12-28 | 2023-01-06 |  |  |  |  |  |  |  |  |  |  |  |  |  |  |  |  |  |  |  |  |  |
| PCO500.01 |  | DSC 357-Extra thick sidewalks NW 16th | 5d | 2022-12-28 A | 2022-12-29 A | MS-0025 | 100% |  | 2023-02-27 | 2023-03-03 |  |  |  | MBRT DSC [8 h] | 8 | 8 | 8 |  |  |  |  |  |  |  |  |  |
| 3-2094 |  | REMOVE SIDEWALK, 15TH TO 16TH NORTH SIDE | 1d | 2022-12-28 A | 2022-12-28 A | 3-1870, MS-2571 | 100% |  | 2022-12-01 | 2022-12-01 |  |  |  | MBRT BASE [8 h] | 8 | 8 | 8 | EA3 | ZONE-3 | 15 | SIDEWALKS | NORTH |  |  |  |  |
| 3-2095 |  | TRENCH CONDUIT, 15TH TO 16TH NORTH SIDE | 1d | 2022-12-29 A | 2022-12-29 A | 3-2094 | 100% |  | 2022-12-02 | 2022-12-02 |  |  |  | MBRT BASE [8 h] | 8 | 8 | 8 | EA3 | ZONE-3 | 15 | SIDEWALKS | NORTH | 379 |  |  |  |
| 3-2096 |  | INST CONDUIT, 15TH TO 16TH NORTH SIDE | 1d | 2022-12-29 A | 2022-12-29 A | 3-2095 SS | 100% |  | 2022-12-02 | 2022-12-02 |  |  |  | MBRT BASE [8 h] | 8 | 8 | 8 | ELECRICAL SUB | ZONE-3 | 15 | SIDEWALKS | NORTH | 379 | ELECTRICAL |  |  |
| 3-2097 |  | GRADE SIDEWALK, 15TH TO 16TH NORTH SIDE | 2d | 2022-12-30 A | 2023-01-03 A | 3-2096 | 100% |  | 2022-12-05 | 2022-12-06 |  |  |  | MBRT BASE [8 h] | 8 | 8 | 8 | EA3 | ZONE-3 | 15 | SIDEWALKS | NORTH | 379 | SIDEWALKS |  |  |
| 3-2098 |  | POUR SIDEWALK, 15TH TO 16TH NORTH SIDE | 5d | 2023-01-04 A | 2023-01-06 A | 3-2097 | 100% |  | 2023-01-03 | 2023-01-09 |  |  |  | MBRT BASE [24 h] | 24 | 24 | 24 | COM | ZONE-3 | 15 | SIDEWALKS | NORTH | 379 |  |  |  |
|  | 4 | **15TH TO 16TH SOUTH SIDE** |  | 2024-03-14 | 2024-04-03 |  |  |  |  |  |  |  |  |  |  |  |  |  |  |  |  |  |  |  |  |  |
| 3-2112 |  | REMOVE SIDEWALK, 15TH TO 16TH SOUTH SIDE | 2d | 2024-03-14 A | 2024-03-15 A | 3-2109, 2-1327, 3-2059 | 100% |  | 2024-03-04 | 2024-03-05 |  |  |  | MBRT BASE [16 h] | 16 |  | 16 | EA3 | ZONE-3 | 15 | SIDEWALKS | SOUTH |  |  | 3-2112 | 3-2112 |
| DSC-727 |  | DSC 727 15th to 16th south side unknown unlocated gasline | 5d | 2024-03-14 A | 2024-03-28 A | 3-2112 SS | 100% |  | 2024-03-04 | 2024-03-08 |  |  |  |  |  |  |  |  |  |  |  |  |  |  |  |  |
| DSC-730 |  | DSC 730 15th to 16th south side extra thick sidewalk | 5d | 2024-03-14 A | 2024-03-28 A | 3-2112 SS | 100% |  | 2024-03-04 | 2024-03-08 |  |  |  |  |  |  |  |  |  |  |  |  |  |  |  |  |
| DSC-731 |  | DSC 731 15th to 16th south side unknown unlocated conduit | 5d | 2024-03-14 A | 2024-03-28 A | 3-2112 SS | 100% |  | 2024-03-04 | 2024-03-08 |  |  |  |  |  |  |  |  |  |  |  |  |  |  |  |  |
| DSC-728 |  | DSC 728 15th to 16th south side leaking water service | 5d | 2024-03-14 A | 2024-03-28 A | 3-2112 SS | 100% |  | 2024-03-04 | 2024-03-08 |  |  |  |  |  |  |  |  |  |  |  |  |  |  |  |  |
| 3-2113 |  | TRENCH CONDUIT, 15TH TO 16TH SOUTH SIDE | 1d | 2024-03-15 A | 2024-03-20 A | 3-2112 | 100% |  | 2024-03-06 | 2024-03-06 |  |  |  | MBRT BASE [8 h] | 8 |  | 8 | EA3 | ZONE-3 | 15 | SIDEWALKS | SOUTH |  |  | 3-2113 | 3-2113 |
| 3-2114 |  | INST CONDUIT, 15TH TO 16TH SOUTH SIDE | 1d | 2024-03-21 A | 2024-03-28 A | 3-2113 SS | 100% |  | 2024-03-06 | 2024-03-06 |  |  |  | MBRT BASE [8 h] | 8 |  | 8 | ELECRICAL SUB | ZONE-3 | 15 | SIDEWALKS | SOUTH |  | ELECTRICAL | 3-2114 | 3-2114 |
| 3-2115 |  | GRADE SIDEWALK, 15TH TO 16TH SOUTH SIDE | 1d | 2024-03-29 A | 2024-03-29 A | 3-2114, DSC-731, DSC-730, DSC-728, DSC-727 | 100% |  | 2024-03-07 | 2024-03-07 |  |  |  | MBRT BASE [8 h] | 8 |  | 8 | EA3 | ZONE-3 | 15 | SIDEWALKS | SOUTH |  | SIDEWALKS | 3-2115 | 3-2115 |
| 3-2116 |  | POUR SIDEWALK, 15TH TO 16TH SOUTH SIDE | 3d | 2024-04-01 A | 2024-04-03 | 3-2110 FF |  | 2d |  |  | -138d | 2d |  | MBRT BASE [24 h] | 24 |  | 24 | COM | ZONE-3 | 15 | SIDEWALKS | SOUTH | signals |  | 3-2116 | 3-2116 |
|  | 2 | **DRIVEWAY BETWEEN 15TH AND 16TH NORTH SIDE** |  | 2024-03-18 | 2024-04-07 |  |  |  |  |  |  |  |  |  |  |  |  |  |  |  |  |  |  |  |  |  |
| DSC-726 |  | DSC 726 CO-OP Driveway drain outlet | 5d | 2024-03-18 A | 2024-04-05 | 3-2112 | 20% | 4d | 2024-03-04 | 2024-03-08 | -143d | 0d |  |  |  |  |  |  |  |  |  |  |  |  |  |  |
| 3-2100 |  | REM SIDEWALK, DRIVEWAY BETWEEN 15TH & 16TH NORTH SIDE | 1d | 2024-04-06 | 2024-04-06 | 3-2098, 3-2112 SS |  |  |  |  | -60d | 0d | WEEKEND ONLY | MBRT BASE [8 h] | 8 |  | 8 | WEA3 | ZONE-3 | 15 | SIDEWALKS | NORTH |  |  | 3-2100 | 3-2100 |
| 3-2101 |  | INST CONDUIT, DRIVEWAY BETWEEN 15TH & 16TH NORTH SIDE | 1d | 2024-04-06 | 2024-04-06 | 3-2100 SS |  |  |  |  | -60d | 0d | WEEKEND ONLY | MBRT BASE [8 h] | 8 |  | 8 | ELECRICAL SUB | ZONE-3 | 15 | SIDEWALKS | NORTH |  | ELECTRICAL | 3-2101 | 3-2101 |
| 3-2102 |  | POUR DRIVEWAY, DRIVEWAY BETWEEN 15TH & 16TH NORTH SIDE | 1d | 2024-04-07 | 2024-04-07 | 3-2101, DSC-726, 3-2130 |  |  |  |  | -60d | 0d | WEEKEND ONLY | MBRT BASE [8 h] | 8 |  | 8 | WCOM | ZONE-3 | 15 | SIDEWALKS | NORTH |  |  | 3-2102 | 3-2102 |
|  | 3 | **16TH TO 17TH NORTH SIDE** |  | 2023-05-02 | 2023-05-31 |  |  |  |  |  |  |  |  |  |  |  |  |  |  |  |  |  |  |  |  |  |
| PCO659.01 |  | DSC 465-EXTRA THICK SIDEWALK | 1d | 2023-05-02 A | 2023-05-02 A | MS-0025 | 100% |  | 2023-05-01 | 2023-05-01 |  |  |  | MBRT DSC [8 h] | 8 | 8 | 8 | EA3 | ZONE-3 | 16 | SIDEWALKS | NORTH |  |  | PCO659.01 | PCO659.01 |
| 3-2104 |  | REMOVE SIDEWALK, 16TH TO 17TH NORTH SIDE | 1d | 2023-05-03 A | 2023-05-05 A | 3-2097 | 100% |  | 2023-05-01 | 2023-05-01 |  |  |  | MBRT BASE [24 h] | 24 | 24 | 24 | EA3 | ZONE-3 | 16 | SIDEWALKS | NORTH |  |  | 3-2104 | 3-2104 |
| 3-2105 |  | TRENCH CONDUIT, 16TH TO 17TH NORTH SIDE | 2d | 2023-05-04 A | 2023-05-11 A | 3-2104 | 100% |  | 2023-05-02 | 2023-05-03 |  |  |  | MBRT BASE [48 h] | 48 | 48 | 48 | EA3 | ZONE-3 | 16 | SIDEWALKS | NORTH |  |  | 3-2105 | 3-2105 |
| 3-2106 |  | INST CONDUIT, 16TH TO 17TH NORTH SIDE | 2d | 2023-05-04 A | 2023-05-15 A | 3-2105 SS | 100% |  | 2023-05-02 | 2023-05-03 |  |  |  | MBRT BASE [64 h] | 64 | 64 | 64 | ELECRICAL SUB | ZONE-3 | 16 | SIDEWALKS | NORTH |  | ELECTRICAL | 3-2106 | 3-2106 |
| 3-2107 |  | FORM BUS STATION FOUNDATIONS, 16TH TO 17TH NORTH SIDE | 2d | 2023-05-09 A | 2023-05-10 A | 3-2106 | 100% |  | 2023-05-04 | 2023-05-05 |  |  |  | MBRT BASE [16 h] | 16 | 16 | 16 | EA3 | ZONE-3 | 16 | SIDEWALKS | NORTH |  |  | 3-2107 | 3-2107 |
| 3-2108 |  | POUR BUS STATION FOUNDATIONS, 16TH TO 17TH NORTH SIDE | 1d | 2023-05-17 A | 2023-05-17 A | 3-2107 | 100% |  | 2023-05-08 | 2023-05-08 |  |  |  | MBRT BASE [8 h] | 8 | 8 | 8 | COM | ZONE-3 | 16 | SIDEWALKS | NORTH |  |  | 3-2108 | 3-2108 |
| 3-2109 |  | GRADE SIDEWALK, 16TH TO 17TH NORTH SIDE | 2d | 2023-05-18 A | 2023-05-19 A | 3-2108 | 100% |  | 2023-05-09 | 2023-05-10 |  |  |  | MBRT BASE [16 h] | 16 | 16 | 16 | EA3 | ZONE-3 | 16 | SIDEWALKS | NORTH |  | SIDEWALKS | 3-2109 | 3-2109 |
| 3-2110 |  | POUR SIDEWALK, 16TH TO 17TH NORTH SIDE | 5d | 2023-05-22 A | 2023-05-24 A | 3-2109 | 100% |  | 2023-05-11 | 2023-05-17 |  |  |  | MBRT BASE [24 h] | 24 | 24 | 24 | COM | ZONE-3 | 16 | SIDEWALKS | NORTH |  |  | 3-2110 | 3-2110 |
| 3-2189 |  | INSTALL WHEEL GUIDES | 1d | 2023-05-31 A | 2023-05-31 A | 3-2109 | 100% |  |  |  |  |  |  | MBRT NEW [8 h] | 8 | 8 | 8 |  |  |  |  |  |  |  | 3-2189 | 3-2189 |

| ID | WBS | Activity | Duration | Start | Finish | Predecessors | Complete | Planned start | Planned finish | Resources | Cost | Actual cost | ~SELECT | user_number6 | ~TEXT | MBRT-ZONE | MBRT-LOCATION | MBRT-TYPE | MBRT-SIDE | MBRT-SCOPE | user_text10 | user_text8 |
| --- | --- | --- | --- | --- | --- | --- | --- | --- | --- | --- | --- | --- | --- | --- | --- | --- | --- | --- | --- | --- | --- | --- |
|  | 5 | **16TH TO 17TH SOUTH SIDE** |  | 2023-01-23 | 2023-04-18 |  |  |  |  |  |  |  |  |  |  |  |  |  |  |  |  |  |
| 3-2118 |  | REMOVE SIDEWALK, 16TH TO 17TH SOUTH SIDE | 2d | 2023-01-23 A | 2023-01-24 A | 3-2098 | 100% | 2023-01-20 | 2023-01-23 | MBRT BASE [16 h] | 16 | 16 | 379 | 16 | POLES4 | ZONE-3 | 16 | SIDEWALKS | SOUTH |  |  |  |
| PCO539.01 |  | DSC 379-SE Corner Madison and 16th Signal Wire Conflict | 5d | 2023-01-25 A | 2023-03-30 A | 3-2118 | 100% | 2023-02-27 | 2023-03-03 | MBRT DSC [360 h] | 360 | 40 | 379 | 360 | POLES4 |  |  |  |  |  |  |  |
| 3-2119 |  | TRENCH CONDUIT, 16TH TO 17TH SOUTH SIDE | 2d | 2023-01-25 A | 2023-01-26 A | 3-2118 | 100% | 2023-01-24 | 2023-01-25 | MBRT BASE [16 h] | 16 | 16 |  | 16 |  | ZONE-3 | 16 | SIDEWALKS | SOUTH |  |  |  |
| 3-2645 |  | OWNER DELAY - DESIGN ISSUES, 16TH TO 17TH SOUTH SIDE | 2d | 2023-01-27 A | 2023-03-03 A | 3-2119 | 100% | 2023-01-24 | 2023-01-25 | MBRT NEW [16 h] | 16 | 200 |  | 200 |  | ZONE-3 | 16 | SIDEWALKS | SOUTH | ELECTRICAL |  |  |
| PCO543.01 |  | DSC 383-South Crossing Madison and 16th Type 3 HH | 5d | 2023-01-27 A | 2023-03-30 A | MS-0025 | 100% | 2023-02-27 | 2023-03-03 | MBRT DSC [352 h] | 352 | 40 |  | 352 |  |  |  |  |  |  |  |  |
| 3-2675 |  | EXTRA WORK - DESIGN ISSUES, 16TH TO 17TH SOUTH SIDE | 2d | 2023-03-06 A | 2023-03-10 A | 3-2645 | 100% | 2023-01-24 | 2023-01-25 | MBRT NEW [16 h] | 16 | 40 |  | 40 |  | ZONE-3 | 16 | SIDEWALKS | SOUTH | ELECTRICAL |  |  |
| 3-2120 |  | INST CONDUIT, 16TH TO 17TH SOUTH SIDE | 2d | 2023-03-13 A | 2023-03-30 A | 3-2119 SS, 3-2645, 3-2675 | 100% | 2023-03-02 | 2023-03-06 | MBRT BASE [104 h] | 104 | 104 |  | 104 | POLES4 | ZONE-3 | 16 | SIDEWALKS | SOUTH | ELECTRICAL |  |  |
| 3-2121 |  | GRADE SIDEWALK, 16TH TO 17TH SOUTH SIDE | 2d | 2023-04-03 A | 2023-04-04 A | 3-2120, PCO539.01, PCO543.01 | 100% | 2023-04-24 | 2023-04-25 | MBRT BASE [16 h] | 16 | 16 | 379 | 16 | POLES4 | ZONE-3 | 16 | SIDEWALKS | SOUTH | SIDEWALKS | 3-2121 | 3-2121 |
| 3-2122 |  | POUR SIDEWALK, 16TH TO 17TH SOUTH SIDE | 5d | 2023-04-12 A | 2023-04-18 A | 3-2121, PCO539.01 | 100% | 2023-04-26 | 2023-05-02 | MBRT BASE [40 h] | 40 | 40 | 379 | 40 | POLES4 | ZONE-3 | 16 | SIDEWALKS | SOUTH |  | 3-2122 | 3-2122 |
|  | 32 | **MID BLOCK 16TH TO 17TH** |  | 2023-06-14 | 2023-11-17 |  |  |  |  |  |  |  |  |  |  |  |  |  |  |  |  |  |
| 3-7941 |  | REMOVE SIDEWALK | 2d | 2023-06-14 A | 2023-06-15 A | 3-2122 | 100% |  |  | MBRT NEW [16 h] | 16 | 16 | x | 16 |  |  |  |  |  |  | 3-7941 | 3-7941 |
| 3-7943 |  | DSC 522 EXISTING LEAKING SPIGOT | 1d | 2023-06-15 A | 2023-06-15 A | 3-7941 SS+1d | 100% |  |  | MBRT DSC [8 h] | 8 | 8 | x | 8 |  |  |  |  |  |  | 3-7943 | 3-7943 |
| 3-7944 |  | DSC 523 EXTRA THICK SIDEWALK | 1d | 2023-06-15 A | 2023-06-15 A | 3-7941 SS+1d | 100% |  |  | MBRT DSC [8 h] | 8 | 8 | x | 8 |  |  |  |  |  |  | 3-7944 | 3-7944 |
| 3-7942 |  | TRENCH CONDUIT | 8d | 2023-06-16 A | 2023-06-27 A | 3-7941 | 100% |  |  | MBRT NEW [64 h] | 64 | 64 | x | 64 |  |  |  |  |  |  | 3-7942 | 3-7942 |
| 3-7945 |  | DSC 525 COMM CONFLICT WITH ELECTRICAL | 13d | 2023-06-16 A | 2023-11-07 A | 3-7942 SS | 100% | 2023-06-16 | 2023-07-05 | MBRT DSC [808 h] | 808 | 808 | x | 808 |  |  |  |  |  |  | 3-7945 | 3-7945 |
| 3-7946 |  | DSC 526 CDF BACKFILL | 4d | 2023-06-16 A | 2023-06-21 A | 3-7941 | 100% |  |  | MBRT DSC [32 h] | 32 | 32 | x | 32 |  |  |  |  |  |  | 3-7946 | 3-7946 |
| 3-7947 |  | DSC 527 UNKNOWN UNLOCATED CONDUIT CONFLICT WITH ELECTRICAL | 13d | 2023-06-16 A | 2023-11-07 A | 3-7942 SS | 100% | 2023-06-16 | 2023-07-05 | MBRT DSC [808 h] | 808 | 808 | x | 808 |  |  |  |  |  |  | 3-7947 | 3-7947 |
| 3-7948 |  | DSC 532 CONDUIT CONFLICT | 11d | 2023-06-20 A | 2023-11-07 A | 3-7947 SS+2d | 100% | 2023-06-20 | 2023-07-05 | MBRT DSC [792 h] | 792 | 792 | x | 792 |  |  |  |  |  |  | 3-7948 | 3-7948 |
| 3-7949 |  | DSC 535 LIVE WIRE | 1d | 2023-06-20 A | 2023-06-20 A | 3-7948 SS | 100% |  |  | MBRT DSC [8 h] | 8 | 8 | x | 8 |  |  |  |  |  |  | 3-7949 | 3-7949 |
| 3-7950 |  | DSC 536 UNKNOWN UNLOCATED CONDUITS | 10d | 2023-06-21 A | 2023-11-07 A | 3-7949 | 100% | 2023-06-21 | 2023-07-05 | MBRT DSC [792 h] | 792 | 784 | x | 792 |  |  |  |  |  |  | 3-7950 | 3-7950 |
| 3-7956 |  | DSC 630 UNKNOWN DUCT BANK | 2d | 2023-10-12 A | 2023-10-13 A | 3-7950 SS | 100% | 2023-10-02 | 2023-10-03 | MBRT DSC [16 h] | 16 | 16 |  | 16 |  |  |  |  |  |  |  |  |
| 3-7961 |  | DSC 631 UNKNOWN UNLOCATED DUCT BANK | 2d | 2023-10-12 A | 2023-10-13 A | 3-7956 SS | 100% | 2023-10-02 | 2023-10-03 | MBRT DSC [16 h] | 16 | 16 |  | 16 |  |  |  |  |  |  |  |  |
| 3-7966 |  | DSC 632 UNKNOWN UNLOCATED DUCT BANK | 2d | 2023-10-12 A | 2023-10-13 A | 3-7961 SS | 100% | 2023-10-02 | 2023-10-03 | MBRT DSC [16 h] | 16 | 16 |  | 16 |  |  |  |  |  |  |  |  |
| 3-7951 |  | INSTALL ELECTRICAL | 6d | 2023-10-24 A | 2023-11-07 A | 3-7942, 3-7943, 3-7944, 3-7946, 3-7950 FF, 3-7948 FF, 3-7966, 3-7961, 3-7956 | 100% | 2023-10-09 | 2023-10-16 | MBRT NEW [48 h] | 48 | 88 | x | 88 |  |  |  |  |  |  | 3-7951 | 3-7951 |
| 3-7952 |  | GRADE SIDEWALKS | 1d | 2023-11-10 A | 2023-11-14 A | 3-7951, 3-7948, 3-7949, 3-7950, 3-7945, 3-7947 | 100% | 2023-11-08 | 2023-11-08 | MBRT NEW [8 h] | 8 | 16 | x | 16 |  |  |  |  |  |  | 3-7952 | 3-7952 |
| 3-7953 |  | ROADWAY PANEL | 2d | 2023-11-15 A | 2023-11-15 A | 3-7952 | 100% | 2023-11-09 | 2023-11-10 | MBRT NEW [16 h] | 16 | 8 | x | 8 |  |  |  |  |  |  | 3-7953 | 3-7953 |
| 3-7954 |  | CURB RAMPS | 2d | 2023-11-16 A | 2023-11-16 A | 3-7953 | 100% | 2023-11-14 | 2023-11-15 | MBRT NEW [16 h] | 16 | 8 | x | 8 |  |  |  |  |  |  | 3-7954 | 3-7954 |
| 3-7955 |  | SIDEWALKS | 1d | 2023-11-17 A | 2023-11-17 A | 3-7954 | 100% | 2023-11-16 | 2023-11-16 | MBRT NEW [8 h] | 8 | 8 | x | 8 |  |  |  |  |  |  | 3-7955 | 3-7955 |

| ID | WBS | Activity | Duration | Start | Finish | Predecessors | Complete | Remaining | Planned start | Planned finish | Total float | Free float | Resources | Cost | Actual cost | user_text2 | user_number6 | user_text10 | ~TEXT | user_text8 | MBRT-ZONE | MBRT-LOCATION | MBRT-TYPE | MBRT-SIDE | MBRT-SCOPE | ~SELECT |
| --- | --- | --- | --- | --- | --- | --- | --- | --- | --- | --- | --- | --- | --- | --- | --- | --- | --- | --- | --- | --- | --- | --- | --- | --- | --- | --- |
|  | 6 | **17TH TO 18TH SOUTH SIDE** |  | 2023-12-11 | 2024-04-04 |  |  |  |  |  |  |  |  |  |  |  |  |  |  |  |  |  |  |  |  |  |
| 3-2124 |  | REMOVE SIDEWALK, 17TH TO 18TH SOUTH SIDE | 2d | 2023-12-11 A | 2023-12-19 A | 3-2122, 3-1875, 3-1898, 3-7955 | 100% |  | 2023-12-11 | 2023-12-12 |  |  | MBRT BASE [56 h] | 56 | 56 | EA3 | 56 | 3-2124 | POLES4 | 3-2124 | ZONE-3 | 17 | SIDEWALKS | SOUTH |  |  |
| 3-2125 |  | TRENCH CONDUIT, 17TH TO 18TH SOUTH SIDE | 2d | 2023-12-11 A | 2023-12-19 A | 3-2124 | 100% |  | 2023-12-13 | 2023-12-14 |  |  | MBRT BASE [56 h] | 56 | 56 | EA3 | 56 | 3-2125 | POLES4 | 3-2125 | ZONE-3 | 17 | SIDEWALKS | SOUTH |  |  |
| 3-2126 |  | INST CONDUIT, 17TH TO 18TH SOUTH SIDE | 2d | 2023-12-13 A | 2024-03-01 A | 3-2125 SS, DSC-673 FF, DSC-668 FF | 100% |  | 2023-12-13 | 2023-12-14 |  |  | MBRT BASE [432 h] | 432 | 432 | ELECRICAL SUB | 432 | 3-2126 | POLES4 | 3-2126 | ZONE-3 | 17 | SIDEWALKS | SOUTH | ELECTRICAL |  |
| 3-2127 |  | FORM BUS STATION FOUNDATIONS, 17TH TO 18TH SOUTH SIDE | 2d | 2023-12-13 A | 2023-12-22 A | 3-2126 SS | 100% |  | 2023-12-15 | 2023-12-18 |  |  | MBRT BASE [64 h] | 64 | 64 | EA3 | 64 | 3-2127 | POLES4 | 3-2127 | ZONE-3 | 17 | SIDEWALKS | SOUTH |  |  |
| DSC-668 |  | DSC 668 UNKNOWN UNLOCATED UTILITIES | 51d | 2023-12-18 A | 2024-03-01 A | 3-2124 | 100% |  | 2023-12-11 | 2024-02-23 |  |  | MBRT DSC [408 h] | 408 | 408 |  | 408 |  |  |  |  |  |  |  |  |  |
| DSC-673 |  | DSC 673 HH REPLACEMENT WONT WORK PER PLAN | 48d | 2023-12-21 A | 2024-03-01 A | 3-2125 | 100% |  | 2023-12-11 | 2024-02-20 |  |  | MBRT DSC [384 h] | 384 | 384 |  | 384 |  |  |  |  |  |  |  |  |  |
| 3-2128 |  | POUR BUS STATION FOUNDATIONS, 17TH TO 18TH SOUTH SIDE | 1d | 2023-12-26 A | 2023-12-27 A | 3-2127 | 100% |  | 2023-12-19 | 2023-12-19 |  |  | MBRT BASE [16 h] | 16 | 16 | COM | 16 | 3-2128 | POLES4 | 3-2128 | ZONE-3 | 17 | SIDEWALKS | SOUTH |  |  |
| 3-2129 |  | GRADE SIDEWALK, 17TH TO 18TH SOUTH SIDE | 3d | 2024-01-02 A | 2024-04-03 | 3-2128, DSC-716 FF+1d |  | 2d | 2023-12-20 | 2023-12-22 | -142d | 0d | MBRT BASE [336 h] | 336 | 24 | EA3 | 336 | 3-2129 | POLES4 | 3-2129 | ZONE-3 | 17 | SIDEWALKS | SOUTH | SIDEWALKS |  |
| 3-2130 |  | POUR SIDEWALK, 17TH TO 18TH SOUTH SIDE | 6d | 2024-01-09 A | 2024-04-04 | 3-2129 SS, 3-2135 FF, DSC-716 FF+2d |  | 3d | 2023-12-26 | 2024-01-03 | -142d | 1d | MBRT BASE [296 h] | 296 | 48 | COM | 296 | 3-2130 | POLES4 | 3-2130 | ZONE-3 | 17 | SIDEWALKS | SOUTH |  |  |
| DSC-716 |  | DSC 716 EXISTING POLE BELOW NEW SIDEWALK GRADE | 1d | 2024-03-01 A | 2024-04-02 | DSC-673, DSC-668 |  | 1d | 2024-02-12 | 2024-02-12 | -142d | 0d | MBRT DSC [8 h] | 8 | 8 |  | 8 |  |  |  |  |  |  |  |  |  |
| 3-2135 |  | INSTALL WHEEL GUIDES | 1d | 2024-04-02 | 2024-04-02 | 3-2129 SS |  |  |  |  | -140d | 2d | MBRT NEW [8 h] | 8 |  |  | 8 | 3-2135 |  | 3-2135 |  |  |  |  |  |  |
|  | 7 | **DRIVEWAYS BETWEEN 17TH AND 18TH SOUTH SIDE** |  | 2023-12-20 | 2023-12-26 |  |  |  |  |  |  |  |  |  |  |  |  |  |  |  |  |  |  |  |  |  |
| 3-2132 |  | REM SIDEWALK, DRIVEWAYS BETWEEN 17TH & 18TH SOUTH SIDE | 1d | 2023-12-20 A | 2023-12-20 A | 3-2124 | 100% |  | 2023-12-13 | 2023-12-13 |  |  | MBRT BASE [8 h] | 8 | 8 | WEA3 | 8 | 3-2132 |  | 3-2132 | ZONE-3 | 17 | SIDEWALKS | SOUTH |  |  |
| 3-2133 |  | INST CONDUIT, DRIVEWAYS BETWEEN 17TH & 18TH SOUTH SIDE | 1d | 2023-12-20 A | 2023-12-22 A | 3-2132 SS | 100% |  | 2023-12-13 | 2023-12-13 |  |  | MBRT BASE [24 h] | 24 | 24 | ELECRICAL SUB | 24 | 3-2133 |  | 3-2133 | ZONE-3 | 17 | SIDEWALKS | SOUTH | ELECTRICAL |  |
| 3-2134 |  | POUR DRIVEWAYS, DRIVEWAYS BETWEEN 17TH & 18TH SOUTH SIDE | 1d | 2023-12-26 A | 2023-12-26 A | 3-2133 | 100% |  | 2023-12-14 | 2023-12-14 |  |  | MBRT BASE [8 h] | 8 | 8 | WCOM | 8 | 3-2134 |  | 3-2134 | ZONE-3 | 17 | SIDEWALKS | SOUTH |  |  |
|  | 8 | **18TH TO 19TH SOUTH SIDE** |  | 2023-12-13 | 2024-03-18 |  |  |  |  |  |  |  |  |  |  |  |  |  |  |  |  |  |  |  |  |  |
| 3-2141 |  | DSC 666 CONDUIT CONFLICT | 1d | 2023-12-13 A | 2023-12-13 A | 3-2125 SS | 100% |  | 2023-12-11 | 2023-12-11 |  |  | MBRT DSC [8 h] | 8 | 8 |  | 8 |  |  |  |  |  |  |  |  |  |
| 3-2136 |  | REMOVE SIDEWALK, 18TH TO 19TH SOUTH SIDE | 1d | 2024-01-04 A | 2024-02-01 A | 3-2129 SS, 3-1884, 3-2141 | 100% |  | 2023-12-26 | 2023-12-26 |  |  | MBRT BASE [160 h] | 160 | 160 | EA3 | 160 | 3-2136 |  | 3-2136 | ZONE-3 | 18 | SIDEWALKS | SOUTH |  | e |
| 3-2137 |  | TRENCH CONDUIT, 18TH TO 19TH SOUTH SIDE | 1d | 2024-01-04 A | 2024-02-02 A | 3-2136 SS | 100% |  | 2023-12-27 | 2023-12-27 |  |  | MBRT BASE [168 h] | 168 | 168 | EA3 | 168 | 3-2137 |  | 3-2137 | ZONE-3 | 18 | SIDEWALKS | SOUTH |  | e |
| 3-2151 |  | DSC 682 SEC 18TH FILLED WITH CDF | 2d | 2024-01-08 A | 2024-01-09 A | 3-2137 SS | 100% |  | 2023-12-11 | 2023-12-12 |  |  | MBRT DSC [16 h] | 16 | 16 |  | 16 |  |  |  |  |  |  |  |  |  |
| 3-2138 |  | INST CONDUIT, 18TH TO 19TH SOUTH SIDE | 1d | 2024-01-10 A | 2024-02-12 A | 3-2137 SS, 3-2181 FF | 100% |  | 2023-12-27 | 2023-12-27 |  |  | MBRT BASE [184 h] | 184 | 184 | ELECRICAL SUB | 184 | 3-2138 |  | 3-2138 | ZONE-3 | 18 | SIDEWALKS | SOUTH | ELECTRICAL | e |
| 3-2171 |  | DSC 685 SEC 18TH MULTIPLE CONFLICTS | 1d | 2024-01-10 A | 2024-01-10 A | 3-2151 | 100% |  | 2023-12-11 | 2023-12-11 |  |  | MBRT DSC [8 h] | 8 | 8 |  | 8 |  |  |  |  |  |  |  |  |  |
| 3-2181 |  | DSC 688 POLE RISER CONFLICT | 1d | 2024-01-16 A | 2024-01-16 A | 3-2171 | 100% |  | 2023-12-11 | 2023-12-11 |  |  | MBRT DSC [8 h] | 8 | 8 |  | 8 |  |  |  |  |  |  |  |  |  |
| 3-2211 |  | DELAY AWAITING SCL TO REMOVE WIRE | 0d | 2024-02-13 A | 2024-03-04 A | 3-2138 | 100% |  | 2024-02-21 | 2024-02-21 |  |  | MBRT NEW |  |  |  | 104 |  |  |  |  |  |  |  |  |  |
| 3-2139 |  | GRADE SIDEWALK, 18TH TO 19TH SOUTH SIDE | 2d | 2024-02-14 A | 2024-03-13 A | 3-2138, 3-2211 SS, 3-2211 FF | 100% |  | 2024-02-28 | 2024-02-29 |  |  | MBRT BASE [96 h] | 96 | 16 | EA3 | 96 | 3-2139 |  | 3-2139 | ZONE-3 | 18 | SIDEWALKS | SOUTH | SIDEWALKS | e |
| 3-2140 |  | POUR SIDEWALK, 18TH TO 19TH SOUTH SIDE | 3d | 2024-02-14 A | 2024-03-18 A | 3-2139 SS, 3-2211 FF | 100% |  | 2024-03-06 | 2024-03-08 |  |  | MBRT BASE [96 h] | 96 | 24 | COM | 96 | 3-2140 | POLES4 | 3-2140 | ZONE-3 | 18 | SIDEWALKS | SOUTH |  | e |

| ID | WBS | Activity | Duration | Start | Finish | Predecessors | Complete | Remaining | Planned start | Planned finish | Total float | Free float | Resources | Cost | Actual cost | user_text2 | user_number6 | user_text10 | ~TEXT | user_text8 | MBRT-ZONE | MBRT-LOCATION | MBRT-TYPE | MBRT-SIDE | MBRT-SCOPE | ~SELECT |
| --- | --- | --- | --- | --- | --- | --- | --- | --- | --- | --- | --- | --- | --- | --- | --- | --- | --- | --- | --- | --- | --- | --- | --- | --- | --- | --- |
|  | 9 | **17TH TO 18TH NORTH SIDE** |  | 2024-01-28 | 2024-04-09 |  |  |  |  |  |  |  |  |  |  |  |  |  |  |  |  |  |  |  |  |  |
| 3-2142 |  | REMOVE SIDEWALK, 17TH TO 18TH NORTH SIDE | 1d | 2024-01-28 A | 2024-02-23 A | 3-1898, 3-2132 | 100% |  | 2024-01-09 | 2024-01-09 |  |  | MBRT BASE [152 h] | 152 | 152 | EA3 | 152 | 3-2142 | POLES4 | 3-2142 | ZONE-3 | 17 | SIDEWALKS | NORTH |  |  |
| 3-2143 |  | TRENCH CONDUIT, 17TH TO 18TH NORTH SIDE | 1d | 2024-01-29 A | 2024-02-23 A | 3-2142 | 100% |  | 2024-01-10 | 2024-01-10 |  |  | MBRT BASE [152 h] | 152 | 152 | EA3 | 152 | 3-2143 |  | 3-2143 | ZONE-3 | 17 | SIDEWALKS | NORTH |  |  |
| DSC-693A |  | DSC 693 NWC 17TH CDF ENCASED UTILITY | 2d | 2024-01-29 A | 2024-01-30 A | 3-2143 SS | 100% |  | 2023-12-11 | 2023-12-12 |  |  | MBRT DSC [16 h] | 16 | 16 |  | 16 |  |  |  |  |  |  |  |  |  |
| 3-2144 |  | INST CONDUIT, 17TH TO 18TH NORTH SIDE | 1d | 2024-01-31 A | 2024-03-01 A | 3-2143 SS, DSC-693A | 100% |  | 2024-01-10 | 2024-01-10 |  |  | MBRT BASE [176 h] | 176 | 176 | ELECRICAL SUB | 176 | 3-2144 |  | 3-2144 | ZONE-3 | 17 | SIDEWALKS | NORTH | ELECTRICAL |  |
| 3-2145 |  | GRADE SIDEWALK, 17TH TO 18TH NORTH SIDE | 2d | 2024-02-05 A | 2024-03-07 A | 3-2144, 3-2221, DSC-712 | 100% |  | 2024-02-12 | 2024-02-13 |  |  | MBRT BASE [152 h] | 152 | 16 | EA3 | 152 | 3-2145 |  | 3-2145 | ZONE-3 | 17 | SIDEWALKS | NORTH | SIDEWALKS |  |
| 3-2146 |  | POUR SIDEWALK, 17TH TO 18TH NORTH SIDE | 5d | 2024-02-05 A | 2024-03-15 A | 3-2145 SS, 3-1896 | 100% |  | 2024-02-14 | 2024-02-21 |  |  | MBRT BASE [152 h] | 152 | 40 | COM | 152 | 3-2146 | POLES4 | 3-2146 | ZONE-3 | 17 | SIDEWALKS | NORTH |  |  |
| 3-2221 |  | DELAY AWAITING SCL TO REMOVE WIRE | 0d | 2024-02-13 A | 2024-02-27 A | 3-2144 SS | 100% |  | 2024-02-12 | 2024-02-12 |  |  | MBRT NEW |  |  |  | 72 |  |  |  |  |  |  |  |  |  |
| DSC-712 |  | DSC 712 UNKNOWN UTILITIES IN CONFLICT WITH CONDUIT | 1d | 2024-02-22 A | 2024-02-23 A | 3-2144 SS | 100% |  | 2024-02-12 | 2024-02-12 |  |  | MBRT DSC [8 h] | 8 | 8 |  | 8 |  |  |  |  |  |  |  |  |  |
| 3-2231 |  | Sidewalk NWC 17th | 10d | 2024-03-25 A | 2024-04-09 | 3-2146 | 40% | 6d | 2024-03-04 | 2024-03-15 | -140d | 0d |  |  |  |  |  |  |  |  |  |  |  |  |  |  |
|  | 10 | **DRIVEWAY BETWEEN 17TH AND 18TH NORTH SIDE** |  | 2024-03-25 | 2024-04-02 |  |  |  |  |  |  |  |  |  |  |  |  |  |  |  |  |  |  |  |  |  |
| 3-2148 |  | REM SIDEWALK, DRIVEWAY BETWEEN 17TH & 18TH NORTH SIDE | 1d | 2024-03-25 A | 2024-03-25 A | 3-2142, 3-2136 SS, 3-2231 SS | 100% |  | 2024-03-04 | 2024-03-04 |  |  | MBRT BASE [8 h] | 8 |  | WEA3 | 8 | 3-2148 | POLES4 | 3-2148 | ZONE-3 | 17 | SIDEWALKS | NORTH |  |  |
| 3-2149 |  | INST CONDUIT, DRIVEWAY BETWEEN 17TH & 18TH NORTH SIDE | 1d | 2024-03-26 A | 2024-03-28 A | 3-2148 SS | 100% |  | 2024-03-04 | 2024-03-04 |  |  | MBRT BASE [8 h] | 8 |  | ELECRICAL SUB | 8 | 3-2149 | POLES4 | 3-2149 | ZONE-3 | 17 | SIDEWALKS | NORTH | ELECTRICAL |  |
| 3-2150 |  | POUR DRIVEWAYS, DRIVEWAY BETWEEN 17TH & 18TH NORTH SIDE | 1d | 2024-03-29 A | 2024-04-02 | 3-2149 |  | 1d | 2024-03-05 | 2024-03-05 | -134d | 2d | MBRT BASE [8 h] | 8 |  | WCOM | 8 | 3-2150 | POLES4 | 3-2150 | ZONE-3 | 17 | SIDEWALKS | NORTH |  |  |
|  | 11 | **18TH TO 19TH NORTH SIDE** |  | 2024-03-26 | 2024-04-26 |  |  |  |  |  |  |  |  |  |  |  |  |  |  |  |  |  |  |  |  |  |
| 3-2152 |  | REMOVE SIDEWALK, 18TH TO 19TH NORTH SIDE | 2d | 2024-03-26 A | 2024-03-29 A | 3-2145, 3-2148, 3-2145 FF, 3-2112 | 100% |  | 2024-04-04 | 2024-04-05 |  |  | MBRT BASE [16 h] | 16 |  | EA3 | 16 | 3-2152 |  | 3-2152 | ZONE-3 | 18 | SIDEWALKS | NORTH |  | signals |
| 3-2153 |  | TRENCH CONDUIT, 18TH TO 19TH NORTH SIDE | 2d | 2024-03-26 A | 2024-03-29 A | 3-2152 SS, 3-2113 | 100% |  | 2024-04-08 | 2024-04-09 |  |  | MBRT BASE [16 h] | 16 |  | EA3 | 16 | 3-2153 |  | 3-2153 | ZONE-3 | 18 | SIDEWALKS | NORTH |  | signals |
| 3-2154 |  | INST CONDUIT, 18TH TO 19TH NORTH SIDE | 2d | 2024-04-02 | 2024-04-03 | 3-2153 SS |  |  |  |  | -140d | 0d | MBRT BASE [16 h] | 16 |  | ELECRICAL SUB | 16 | 3-2154 |  | 3-2154 | ZONE-3 | 18 | SIDEWALKS | NORTH | ELECTRICAL | signals |
| 3-2155 |  | GRADE SIDEWALK, 18TH TO 19TH NORTH SIDE | 2d | 2024-04-04 | 2024-04-05 | 3-2154 |  |  |  |  | -140d | 0d | MBRT BASE [16 h] | 16 |  | EA3 | 16 | 3-2155 |  | 3-2155 | ZONE-3 | 18 | SIDEWALKS | NORTH | SIDEWALKS | signals |
| 3-2156 |  | POUR SIDEWALK, 18TH TO 19TH NORTH SIDE | 5d | 2024-04-08 | 2024-04-12 | 3-2155, 3-2146, 3-2146 FF, 3-2116, 3-2231 FF, 3-2102 |  |  |  |  | -140d | 0d | MBRT BASE [32 h] | 32 |  | COM | 32 | 3-2156 | POLES4 | 3-2156 | ZONE-3 | 18 | SIDEWALKS | NORTH |  | signals |
| 3-2157 |  | 19th NEC | 10d | 2024-04-15 | 2024-04-26 | 3-2156 |  |  |  |  | -109d | 36d |  |  |  |  |  |  |  |  |  |  |  |  |  |  |
|  | 12 | **19TH TO 20TH NORTH SIDE** |  | 2023-07-18 | 2023-12-29 |  |  |  |  |  |  |  |  |  |  |  |  |  |  |  |  |  |  |  |  |  |
| 3-2158 |  | REMOVE SIDEWALK, 19TH TO 20TH NORTH SIDE | 2d | 2023-07-18 A | 2023-07-18 A | 3-1926 | 100% |  | 2023-10-13 | 2023-10-16 |  |  | MBRT BASE [8 h] | 8 | 8 | EA3 | 8 | 3-2158 | POLES4 | 3-2158 | ZONE-3 | 19 | SIDEWALKS | NORTH |  |  |
| 3-2159 |  | TRENCH CONDUIT, 19TH TO 20TH NORTH SIDE | 2d | 2023-07-19 A | 2023-07-19 A | 3-2158 | 100% |  | 2023-10-17 | 2023-10-18 |  |  | MBRT BASE [8 h] | 8 | 8 | EA3 | 8 | 3-2159 | POLES4 | 3-2159 | ZONE-3 | 19 | SIDEWALKS | NORTH |  |  |
| 3-2160 |  | INST CONDUIT, 19TH TO 20TH NORTH SIDE | 2d | 2023-07-19 A | 2023-07-24 A | 3-2159 SS | 100% |  | 2023-10-17 | 2023-10-18 |  |  | MBRT BASE [32 h] | 32 | 32 | ELECRICAL SUB | 32 | 3-2160 | POLES4 | 3-2160 | ZONE-3 | 19 | SIDEWALKS | NORTH | ELECTRICAL |  |
| DSC-568 |  | DSC 568 PAVEMENT INSTALLED BY SPU NOT PER PLAN | 95d | 2023-07-25 A | 2023-12-08 A | MS-0025 | 100% |  | 2023-07-03 | 2023-11-15 |  |  | MBRT DSC [760 h] | 760 | 760 |  | 760 |  |  |  |  |  |  |  |  |  |
| 3-2161 |  | GRADE SIDEWALK, 19TH TO 20TH NORTH SIDE | 2d | 2023-12-13 A | 2023-12-14 A | 3-2160, DSC-568 | 100% |  | 2023-12-11 | 2023-12-12 |  |  | MBRT BASE [16 h] | 16 | 16 | EA3 | 16 | 3-2161 | POLES4 | 3-2161 | ZONE-3 | 19 | SIDEWALKS | NORTH | SIDEWALKS |  |
| DSC-669 |  | DSC 669 ROADWAY POURED BY SPU NOT PER PLAN CURB RAMP WONT WORK | 1d | 2023-12-18 A | 2023-12-18 A | 3-2161 | 100% |  | 2023-12-11 | 2023-12-11 |  |  | MBRT DSC [8 h] | 8 | 8 |  | 8 |  |  |  |  |  |  |  |  |  |
| 3-2162 |  | POUR SIDEWALK, 19TH TO 20TH NORTH SIDE | 5d | 2023-12-26 A | 2023-12-29 A | 3-2161, DSC-669 | 100% |  | 2023-12-13 | 2023-12-19 |  |  | MBRT BASE [32 h] | 32 | 32 | COM | 32 | 3-2162 | POLES4 | 3-2162 | ZONE-3 | 19 | SIDEWALKS | NORTH |  |  |

| ID | WBS | Activity | Duration | Start | Finish | Predecessors | Complete | Planned start | Planned finish | Resources | Cost | Actual cost | user_text2 | user_number6 | MBRT-ZONE | MBRT-LOCATION | MBRT-TYPE | MBRT-SIDE | MBRT-SCOPE | user_text10 | user_text8 | ~TEXT | ~SELECT |
| --- | --- | --- | --- | --- | --- | --- | --- | --- | --- | --- | --- | --- | --- | --- | --- | --- | --- | --- | --- | --- | --- | --- | --- |
|  | 13 | **20TH TO DENNY NORTH SIDE** |  | 2023-02-28 | 2023-05-31 |  |  |  |  |  |  |  |  |  |  |  |  |  |  |  |  |  |  |
| 3-2164 |  | REM SIDEWALK, 20TH TO DENNY NORTH SIDE | 2d | 2023-02-28 A | 2023-02-28 A | 3-2073 | 100% | 2023-05-22 | 2023-05-23 | MBRT BASE [8 h] | 8 | 8 | EA3 | 8 | ZONE-3 | 20 | SIDEWALKS | NORTH |  |  |  |  |  |
| 3-2165 |  | TRENCH CONDUIT, 20TH TO DENNY NORTH SIDE | 3d | 2023-03-02 A | 2023-03-02 A | 3-2164 | 100% | 2023-05-24 | 2023-05-26 | MBRT BASE [8 h] | 8 | 8 | EA3 | 8 | ZONE-3 | 20 | SIDEWALKS | NORTH |  |  |  |  |  |
| 3-2166 |  | INST CONDUIT, 20TH TO DENNY NORTH SIDE | 3d | 2023-03-02 A | 2023-03-03 A | 3-2165 SS | 100% | 2023-05-24 | 2023-05-26 | MBRT BASE [16 h] | 16 | 16 | ELECRICAL SUB | 16 | ZONE-3 | 20 | SIDEWALKS | NORTH | ELECTRICAL |  |  |  |  |
| 3-2167 |  | FORM BUS STATION FOUNDATIONS, 20TH TO DENNY NORTH SIDE | 2d | 2023-03-09 A | 2023-03-10 A | 3-2166 | 100% | 2023-05-31 | 2023-06-01 | MBRT BASE [16 h] | 16 | 16 | EA3 | 16 | ZONE-3 | 20 | SIDEWALKS | NORTH |  |  |  |  |  |
| 3-2168 |  | POUR BUS STATION FOUNDATIONS, 20TH TO DENNY NORTH SIDE | 1d | 2023-03-13 A | 2023-03-13 A | 3-2167 | 100% | 2023-04-07 | 2023-04-07 | MBRT BASE [8 h] | 8 | 8 | COM | 8 | ZONE-3 | 20 | SIDEWALKS | NORTH |  |  |  |  |  |
| 3-2169 |  | GRADE SIDEWALK, 20TH TO DENNY NORTH SIDE | 3d | 2023-03-27 A | 2023-03-31 A | 3-2168 | 100% | 2023-04-10 | 2023-04-12 | MBRT BASE [40 h] | 40 | 40 | EA3 | 40 | ZONE-3 | 20 | SIDEWALKS | NORTH | SIDEWALKS |  |  |  |  |
| 3-3355 |  | ADDED STRAIN POLE FOUNDATION | 6d | 2023-04-03 A | 2023-05-05 A | 3-2169 | 100% | 2023-04-13 | 2023-04-20 | MBRT NEW [48 h] | 48 | 200 | COM | 200 | ZONE-3 | 20 | SIDEWALKS | NORTH |  | 3-3355 | 3-3355 |  |  |
| PCO628.01 |  | DSC 440-SIDE SEWER CONFLICT WITH POLE FOUNDATION | 6d | 2023-04-04 A | 2023-05-05 A | 3-3355 SS | 100% | 2023-04-13 | 2023-04-20 | MBRT DSC [192 h] | 192 | 192 | COM | 192 | ZONE-3 | 20 | SIDEWALKS | NORTH |  | PCO628.01 | PCO628.01 |  |  |
| 3-2170 |  | POUR SIDEWALK, OTHER THAN THE DELAYED SIDEWALK | 6d | 2023-04-11 A | 2023-04-17 A | 3-2169 | 100% | 2023-04-13 | 2023-04-20 | MBRT BASE [40 h] | 40 | 40 | COM | 40 | ZONE-3 | 20 | SIDEWALKS | NORTH |  | 3-2170 | 3-2170 |  |  |
| 3-3360 |  | COMPLETE SIDEWALK AFTER DSC 440 | 6d | 2023-05-08 A | 2023-05-10 A | 3-2169, PCO628.01 | 100% | 2023-05-09 | 2023-05-16 | MBRT DSC [24 h] | 24 | 24 | COM | 24 | ZONE-3 | 20 | SIDEWALKS | NORTH |  | 3-3360 | 3-3360 |  |  |
| 3-2205 |  | INSTALL WHEEL GUIDES | 1d | 2023-05-31 A | 2023-05-31 A | 3-2169 | 100% |  |  | MBRT NEW [8 h] | 8 | 8 |  | 8 |  |  |  |  |  | 3-2205 | 3-2205 |  |  |
|  | 14 | **19TH TO 20TH SOUTH SIDE** |  | 2023-07-24 | 2023-08-24 |  |  |  |  |  |  |  |  |  |  |  |  |  |  |  |  |  |  |
| 3-2172 |  | REMOVE SIDEWALK, 19TH TO 20TH SOUTH SIDE | 1d | 2023-07-24 A | 2023-07-24 A | 3-2169, 3-1912, 3-2160 | 100% | 2023-07-03 | 2023-07-03 | MBRT BASE [8 h] | 8 | 8 | EA3 | 8 | ZONE-3 | 19 | SIDEWALKS | SOUTH |  | 3-2172 | 3-2172 | POLES4 |  |
| 3-2173 |  | TRENCH CONDUIT, 19TH TO 20TH SOUTH SIDE | 2d | 2023-07-25 A | 2023-07-25 A | 3-2172 | 100% | 2023-07-05 | 2023-07-06 | MBRT BASE [8 h] | 8 | 8 | EA3 | 8 | ZONE-3 | 19 | SIDEWALKS | SOUTH |  | 3-2173 | 3-2173 | POLES4 |  |
| 3-2174 |  | INST CONDUIT, 19TH TO 20TH SOUTH SIDE | 2d | 2023-07-25 A | 2023-08-07 A | 3-2173 SS | 100% | 2023-07-05 | 2023-07-06 | MBRT BASE [80 h] | 80 | 80 | ELECRICAL SUB | 80 | ZONE-3 | 19 | SIDEWALKS | SOUTH | ELECTRICAL | 3-2174 | 3-2174 | POLES4 |  |
| 3-2175 |  | GRADE SIDEWALK, 19TH TO 20TH SOUTH SIDE | 2d | 2023-08-08 A | 2023-08-09 A | 3-2174 | 100% | 2023-07-07 | 2023-07-10 | MBRT BASE [16 h] | 16 | 16 | EA3 | 16 | ZONE-3 | 19 | SIDEWALKS | SOUTH | SIDEWALKS | 3-2175 | 3-2175 | POLES4 |  |
| 3-2176 |  | POUR SIDEWALK, 19TH TO 20TH SOUTH SIDE | 5d | 2023-08-21 A | 2023-08-24 A | 3-2175, 3-2170, 3-3360 | 100% | 2023-08-14 | 2023-08-18 | MBRT BASE [32 h] | 32 | 32 | COM | 32 | ZONE-3 | 19 | SIDEWALKS | SOUTH |  | 3-2176 | 3-2176 |  |  |
|  | 44 | **DENNY SW CORNER** |  | 2023-04-24 | 2023-05-19 |  |  |  |  |  |  |  |  |  |  |  |  |  |  |  |  |  |  |
| 3-3365 |  | REM SIDEWALK, DENNY SE CORNER | 2d | 2023-04-24 A | 2023-04-24 A | 3-2122 | 100% | 2023-07-14 | 2023-07-17 | MBRT NEW [16 h] | 16 | 8 | EA3 | 8 | ZONE-3 | 20 | SIDEWALKS | SOUTH |  | 3-3365 | 3-3365 | POLES4 | 379 |
| PCO648.01 |  | DSC 458-CONCRETE OBSTRUCTION SIGNAL CONDUIT | 2d | 2023-04-24 A | 2023-04-24 A | 3-3365 | 100% | 2023-07-14 | 2023-07-17 | MBRT DSC [8 h] | 8 | 8 | EA3 | 8 | ZONE-3 | 20 | SIDEWALKS | SOUTH |  | PCO648.01 | PCO648.01 | POLES4 | 379 |
| 3-3370 |  | TRENCH CONDUIT, DENNY SE CORNER | 2d | 2023-04-27 A | 2023-04-28 A | 3-3365 | 100% | 2023-07-18 | 2023-07-19 | MBRT NEW [16 h] | 16 | 16 | EA3 | 16 | ZONE-3 | 20 | SIDEWALKS | SOUTH |  | 3-3370 | 3-3370 | POLES4 | 379 |
| 3-3375 |  | INST CONDUIT, DENNY SE CORNER | 2d | 2023-05-01 A | 2023-05-02 A | 3-3370 SS, PCO648.01 | 100% |  |  | MBRT NEW [16 h] | 16 | 16 | ELECRICAL SUB | 16 | ZONE-3 | 20 | SIDEWALKS | SOUTH | ELECTRICAL | 3-3375 | 3-3375 | POLES4 | 379 |
| 3-3380 |  | GRADE SIDEWALK, DENNY SE CORNER | 2d | 2023-05-08 A | 2023-05-09 A | 3-3375 | 100% | 2023-05-03 | 2023-05-04 | MBRT NEW [16 h] | 16 | 16 | EA3 | 16 | ZONE-3 | 20 | SIDEWALKS | SOUTH | SIDEWALKS | 3-3380 | 3-3380 | POLES4 | 379 |
| 3-3385 |  | POUR SIDEWALK, DENNY SE CORNER | 5d | 2023-05-12 A | 2023-05-19 A | 3-3380 | 100% | 2023-05-05 | 2023-05-11 | MBRT NEW [40 h] | 40 | 48 | COM | 48 | ZONE-3 | 20 | SIDEWALKS | SOUTH |  | 3-3385 | 3-3385 | POLES4 | 379 |
| PCO679.01 |  | DSC 481-EXISTING POLE FOUNDATION CONFLCIT WITH CURB RAMP | 2d | 2023-05-12 A | 2023-05-15 A | MS-0025 | 100% | 2023-07-14 | 2023-07-17 | MBRT DSC [16 h] | 16 | 16 | EA3 | 16 | ZONE-3 | 20 | SIDEWALKS | SOUTH |  | PCO679.01 | PCO679.01 | POLES4 |  |

| ID | WBS | Activity | Duration | Start | Finish | Predecessors | Complete | Planned start | Planned finish | Resources | Cost | Actual cost | user_text2 | user_number6 | user_text10 | ~TEXT | user_text8 | MBRT-ZONE | MBRT-LOCATION | MBRT-TYPE | MBRT-SIDE | MBRT-SCOPE |
| --- | --- | --- | --- | --- | --- | --- | --- | --- | --- | --- | --- | --- | --- | --- | --- | --- | --- | --- | --- | --- | --- | --- |
|  | 48 | **20TH SE CORNER** |  | 2023-05-11 | 2023-05-31 |  |  |  |  |  |  |  |  |  |  |  |  |  |  |  |  |  |
| 3-3530 |  | REM SIDEWALK, 20TH SE CORNER | 2d | 2023-05-11 A | 2023-05-11 A | 3-3365 | 100% | 2023-07-14 | 2023-07-17 | MBRT NEW [16 h] | 16 | 8 | EA3 | 8 | 3-3530 | POLES4 | 3-3530 | ZONE-3 | 20 | SIDEWALKS | SOUTH |  |
| 3-3535 |  | TRENCH CONDUIT, 20TH SE CORNER | 2d | 2023-05-12 A | 2023-05-15 A | 3-3530 | 100% | 2023-07-18 | 2023-07-19 | MBRT NEW [16 h] | 16 | 16 | EA3 | 16 | 3-3535 | POLES4 | 3-3535 | ZONE-3 | 20 | SIDEWALKS | SOUTH |  |
| PCO694.01 |  | DSC 496-UNKNOWN UNLOCATED CONDUIT | 2d | 2023-05-12 A | 2023-05-15 A | MS-0025 | 100% | 2023-07-18 | 2023-07-19 | MBRT DSC [16 h] | 16 | 16 | EA3 | 16 | PCO694.01 | POLES4 | PCO694.01 | ZONE-3 | 20 | SIDEWALKS | SOUTH |  |
| 3-3540 |  | INST CONDUIT, 20TH SE CORNER | 2d | 2023-05-16 A | 2023-05-19 A | 3-3535 SS | 100% | 2023-07-18 | 2023-07-19 | MBRT NEW [16 h] | 16 | 32 | ELECRICAL SUB | 32 | 3-3540 | POLES4 | 3-3540 | ZONE-3 | 20 | SIDEWALKS | SOUTH | ELECTRICAL |
| 3-3545 |  | GRADE SIDEWALK, 20TH SE CORNER | 2d | 2023-05-22 A | 2023-05-22 A | 3-3540 | 100% | 2023-05-01 | 2023-05-02 | MBRT NEW [16 h] | 16 | 8 | EA3 | 8 | 3-3545 | POLES4 | 3-3545 | ZONE-3 | 20 | SIDEWALKS | SOUTH | SIDEWALKS |
| 3-3550 |  | POUR SIDEWALK, 20TH SE CORNER | 5d | 2023-05-25 A | 2023-05-31 A | 3-3545 | 100% | 2023-05-03 | 2023-05-09 | MBRT NEW [40 h] | 40 | 32 | COM | 32 | 3-3550 | POLES4 | 3-3550 | ZONE-3 | 20 | SIDEWALKS | SOUTH |  |
|  | 16 | **DENNY TO 23RD NORTH SIDE** |  | 2023-02-09 | 2023-03-20 |  |  |  |  |  |  |  |  |  |  |  |  |  |  |  |  |  |
| 3-2184 |  | REM SIDEWALK, DENNY TO 23TH NORTH SIDE | 2d | 2023-02-09 A | 2023-03-17 A | 3-1940, 3-2660 | 100% | 2023-05-26 | 2023-05-30 | MBRT BASE [208 h] | 208 | 208 | EA3 | 208 |  |  |  | ZONE-3 | DENNY | SIDEWALKS | NORTH |  |
| 3-2185 |  | TRENCH CONDUIT, DENNY TO 23TH NORTH SIDE | 2d | 2023-02-13 A | 2023-02-14 A | 3-2184 | 100% | 2023-05-31 | 2023-06-01 | MBRT BASE [16 h] | 16 | 16 | EA3 | 16 |  |  |  | ZONE-3 | DENNY | SIDEWALKS | NORTH |  |
| 3-2186 |  | INST CONDUIT, DENNY TO 23TH NORTH SIDE | 2d | 2023-02-13 A | 2023-02-17 A | 3-2185 SS | 100% | 2023-05-31 | 2023-06-01 | MBRT BASE [40 h] | 40 | 40 | ELECRICAL SUB | 40 |  |  |  | ZONE-3 | DENNY | SIDEWALKS | NORTH | ELECTRICAL |
| PCO570.01 |  | DSC 401-Prime NE Denny type 3 HH doesn't work | 5d | 2023-02-17 A | 2023-03-09 A | MS-0025 | 100% | 2023-02-27 | 2023-03-03 | MBRT DSC [112 h] | 112 | 104 |  | 112 |  |  |  |  |  |  |  |  |
| 3-2670 |  | DELAY DESIGN ISSUES | 2d | 2023-02-20 A | 2023-03-09 A | 3-2186 | 100% | 2023-06-02 | 2023-06-05 | MBRT NEW [16 h] | 16 | 104 | EA3 | 104 |  |  |  | ZONE-3 | DENNY | SIDEWALKS | NORTH | SIDEWALKS |
| 3-2187 |  | GRADE SIDEWALK, DENNY TO 23TH NORTH SIDE | 2d | 2023-03-10 A | 2023-03-10 A | 3-2186, 3-2670 | 100% | 2023-03-03 | 2023-03-06 | MBRT BASE [8 h] | 8 | 8 | EA3 | 8 |  |  |  | ZONE-3 | DENNY | SIDEWALKS | NORTH | SIDEWALKS |
| 3-2188 |  | POUR SIDEWALK, DENNY TO 23TH NORTH SIDE | 5d | 2023-03-13 A | 2023-03-20 A | 3-2187 | 100% | 2023-03-01 | 2023-03-07 | MBRT BASE [48 h] | 48 | 48 | COM | 48 |  |  |  | ZONE-3 | DENNY | SIDEWALKS | NORTH |  |
|  | 17 | **DENNY TO 23RD SOUTH SIDE** |  | 2022-12-28 | 2023-10-10 |  |  |  |  |  |  |  |  |  |  |  |  |  |  |  |  |  |
| 3-2190 |  | REM SIDEWALK, DENNY TO 23RD SOUTH SIDE | 2d | 2022-12-28 A | 2022-12-29 A | 3-1933 | 100% | 2022-12-01 | 2022-12-02 | MBRT BASE [16 h] | 16 | 16 | EA3 | 16 |  |  |  | ZONE-3 | DENNY | SIDEWALKS | SOUTH |  |
| 3-2191 |  | TRENCH CONDUIT, DENNY TO 23RD SOUTH SIDE | 3d | 2022-12-28 A | 2022-12-29 A | 3-2190 | 100% | 2022-12-05 | 2022-12-07 | MBRT BASE [16 h] | 16 | 16 | EA3 | 16 |  |  |  | ZONE-3 | DENNY | SIDEWALKS | SOUTH |  |
| 3-2192 |  | INST CONDUIT, DENNY TO 23RD SOUTH SIDE | 3d | 2022-12-30 A | 2023-01-13 A | 3-2191 SS | 100% | 2022-12-05 | 2022-12-07 | MBRT BASE [80 h] | 80 | 80 | ELECRICAL SUB | 80 |  |  |  | ZONE-3 | DENNY | SIDEWALKS | SOUTH | ELECTRICAL |
| 3-2650 |  | FOUNDATION DELAY - CONFLICT WITH HANDHOLES; DENNY TO 23RD SOUTH SIDE | 2d | 2022-12-30 A | 2023-06-01 A | 3-2192 SS | 100% | 2023-01-31 | 2023-02-01 | MBRT NEW |  |  | EA3 | 848 | 3-2650 |  | 3-2650 | ZONE-3 | DENNY | SIDEWALKS | SOUTH |  |
| PCO501.01 |  | DSC 358-HH in conflict with Bus Foundation EB Denny | 5d | 2023-01-04 A | 2023-06-06 A | MS-0025 | 100% | 2023-02-27 | 2023-03-03 | MBRT DSC [856 h] | 856 | 856 |  | 856 | PCO501.01 |  | PCO501.01 |  |  |  |  |  |
| 3-2655 |  | GRADE SIDEWALK OTHER THAN SHELTER AREA, DENNY TO 23RD SOUTH SIDE | 3d | 2023-01-17 A | 2023-01-20 A | 3-2192 | 100% | 2023-01-31 | 2023-02-02 | MBRT NEW [24 h] | 24 | 32 | EA3 | 32 |  |  |  | ZONE-3 | DENNY | SIDEWALKS | SOUTH | SIDEWALKS |
| 3-2660 |  | POUR SIDEWALK OTHER THAN SHELTER AREA, DENNY TO 23RD SOUTH SIDE | 6d | 2023-01-23 A | 2023-01-26 A | 3-2655 | 100% | 2023-02-03 | 2023-02-10 | MBRT NEW [48 h] | 48 | 32 | COM | 32 |  |  |  | ZONE-3 | DENNY | SIDEWALKS | SOUTH |  |
| 3-2193 |  | FORM BUS STATION FOUNDATIONS, DENNY TO 23RD SOUTH SIDE | 2d | 2023-04-24 A | 2023-04-25 A | 3-2192, 3-2650 SS | 100% | 2023-05-03 | 2023-05-04 | MBRT BASE [16 h] | 16 | 16 | EA3 | 16 | 3-2193 |  | 3-2193 | ZONE-3 | DENNY | SIDEWALKS | SOUTH |  |
| 3-2194 |  | POUR BUS STATION FOUNDATIONS, DENNY TO 23RD SOUTH SIDE | 1d | 2023-04-26 A | 2023-04-26 A | 3-2193 | 100% | 2023-05-05 | 2023-05-05 | MBRT BASE [8 h] | 8 | 8 | COM | 8 | 3-2194 |  | 3-2194 | ZONE-3 | DENNY | SIDEWALKS | SOUTH |  |
| 3-2195 |  | GRADE SIDEWALK, DENNY TO 23RD SOUTH SIDE | 3d | 2023-05-05 A | 2023-05-05 A | 3-2194, 3-2660 | 100% | 2023-05-08 | 2023-05-10 | MBRT BASE [8 h] | 8 | 8 | EA3 | 8 | 3-2195 |  | 3-2195 | ZONE-3 | DENNY | SIDEWALKS | SOUTH | SIDEWALKS |
| 3-2196 |  | POUR SIDEWALK, DENNY TO 23RD SOUTH SIDE | 6d | 2023-05-08 A | 2023-05-19 A | 3-2195 | 100% | 2023-05-11 | 2023-05-18 | MBRT BASE [80 h] | 80 | 80 | COM | 80 | 3-2196 |  | 3-2196 | ZONE-3 | DENNY | SIDEWALKS | SOUTH |  |
| PCO671.01 |  | DSC 474-EXISTING HH'S TOO HIGH FOR SIDEWALK | 5d | 2023-05-09 A | 2023-10-06 A | PCO501.01 | 100% | 2023-02-27 | 2023-03-03 | MBRT DSC [848 h] | 848 | 848 |  | 848 | PCO671.01 |  | PCO671.01 |  |  |  |  |  |
| 3-3520 |  | FINISH SIDEWALK AFTER DSC 474 | 1d | 2023-10-09 A | 2023-10-09 A | PCO671.01, 3-2238 | 100% |  |  | MBRT DSC [8 h] | 8 | 8 | COM | 8 | 3-3520 |  | 3-3520 | ZONE-3 | DENNY | SIDEWALKS | SOUTH |  |
| 3-2201 |  | INSTALL WHEEL GUIDES | 1d | 2023-10-10 A | 2023-10-10 A | 3-2195, 3-3520 | 100% |  |  | MBRT NEW [8 h] | 8 | 8 |  | 8 | 3-2201 |  | 3-2201 |  |  |  |  |  |

| ID | WBS | Activity | Duration | Start | Finish | Predecessors | Complete | Planned start | Planned finish | Calendar | Resources | Cost | Actual cost | user_text2 | user_number6 | user_text10 | user_text8 | MBRT-ZONE | MBRT-LOCATION | MBRT-TYPE | MBRT-SIDE | MBRT-SCOPE | ~SELECT |
| --- | --- | --- | --- | --- | --- | --- | --- | --- | --- | --- | --- | --- | --- | --- | --- | --- | --- | --- | --- | --- | --- | --- | --- |
|  | 20 | **23RD TO 24TH SOUTH SIDE** |  | 2023-05-18 | 2023-06-20 |  |  |  |  |  |  |  |  |  |  |  |  |  |  |  |  |  |  |
| 3-2206 |  | REMOVE SIDEWALK, 23RD TO 24TH SOUTH SIDE | 2d | 2023-05-18 A | 2023-05-18 A | 3-1954, 3-2196, 3-2081 | 100% | 2023-05-19 | 2023-05-22 |  | MBRT BASE [8 h] | 8 | 8 | EA3 | 8 | 3-2206 | 3-2206 | ZONE-3 | 23 | SIDEWALKS | SOUTH |  |  |
| 3-2209 |  | GRADE SIDEWALK, 23RD TO 24TH SOUTH SIDE | 2d | 2023-05-19 A | 2023-05-23 A | 3-2206 | 100% | 2023-05-25 | 2023-05-26 |  | MBRT BASE [24 h] | 24 | 24 | EA3 | 24 | 3-2209 | 3-2209 | ZONE-3 | 23 | SIDEWALKS | SOUTH | SIDEWALKS |  |
| 3-2210 |  | POUR SIDEWALK, 23RD TO 24TH SOUTH SIDE | 5d | 2023-05-24 A | 2023-06-06 A | 3-2209, 3-2208 FF | 100% | 2023-06-02 | 2023-06-08 |  | MBRT BASE [72 h] | 72 | 72 | COM | 72 | 3-2210 | 3-2210 | ZONE-3 | 23 | SIDEWALKS | SOUTH |  |  |
| 3-6200 |  | REMOVE SIDEWALK BULLNOSE | 1d | 2023-05-26 A | 2023-05-26 A | 3-2210 SS | 100% |  |  |  | MBRT NEW [8 h] | 8 | 8 |  | 8 | 3-6200 | 3-6200 |  |  |  |  |  |  |
| 3-6210 |  | TRENCH CONDUIT BULENOSE | 1d | 2023-05-30 A | 2023-05-30 A | 3-6200 | 100% |  |  |  | MBRT NEW [8 h] | 8 | 8 |  | 8 | 3-6210 | 3-6210 |  |  |  |  |  |  |
| 3-2207 |  | TRENCH CONDUIT, 23RD TO 24TH SOUTH SIDE | 2d | 2023-05-31 A | 2023-06-01 A | 3-2206 | 100% |  |  |  | MBRT BASE [16 h] | 16 | 16 | EA3 | 16 | 3-2207 | 3-2207 | ZONE-3 | 23 | SIDEWALKS | SOUTH |  |  |
| 3-2208 |  | INST CONDUIT, 23RD TO 24TH SOUTH SIDE | 2d | 2023-05-31 A | 2023-06-01 A | 3-2207 SS | 100% |  |  |  | MBRT BASE [16 h] | 16 | 16 | ELECRICAL SUB | 16 | 3-2208 | 3-2208 | ZONE-3 | 23 | SIDEWALKS | SOUTH | ELECTRICAL |  |
| 3-6211 |  | INSTALL CONDUIT BULLNOSE | 3d | 2023-05-31 A | 2023-06-02 A | 3-6210 | 100% |  |  |  | MBRT NEW [24 h] | 24 | 24 |  | 24 | 3-6211 | 3-6211 |  |  |  |  |  | x |
| 3-6212 |  | GRADE SIDEWALK BULLNOSE | 1d | 2023-06-05 A | 2023-06-05 A | 3-6211 | 100% |  |  |  | MBRT NEW [8 h] | 8 | 8 |  | 8 | 3-6212 | 3-6212 |  |  |  |  |  | x |
| 3-6213 |  | CURB RAMPS BULLNOSE | 2d | 2023-06-08 A | 2023-06-09 A | 3-6212 | 100% |  |  |  | MBRT NEW [16 h] | 16 | 16 |  | 16 | 3-6213 | 3-6213 |  |  |  |  |  | x |
| 3-6214 |  | DSC 521 TYPE 5 HH CONFLICT | 6d | 2023-06-12 A | 2023-06-19 A | 3-6213 | 100% |  |  |  | MBRT DSC [48 h] | 48 | 48 |  | 48 | 3-6214 | 3-6214 |  |  |  |  |  | x |
| 3-6215 |  | SIDEWALKS BULLNOSE | 1d | 2023-06-20 A | 2023-06-20 A | 3-6213, 3-6214, 3-4103 | 100% |  |  |  | MBRT NEW [8 h] | 8 | 8 |  | 8 | 3-6215 | 3-6215 |  |  |  |  |  | x |
|  | 21 | **DRIVWAYS BETWEEN 23RD AND 24 SOUTH SIDE** |  | 2023-06-07 | 2023-06-07 |  |  |  |  |  |  |  |  |  |  |  |  |  |  |  |  |  |  |
| 3-2212 |  | REM SIDEWALK, DRIVWAYS BETWEEN 23RD & 24 SOUTH SIDE | 1d | 2023-06-07 A | 2023-06-07 A | 3-2206 SS, 3-2210 | 100% | 2023-07-01 | 2023-07-01 | WEEKEND ONLY | MBRT BASE |  | 8 | WEA3 | 0 | 3-2212 | 3-2212 | ZONE-3 | 23 | SIDEWALKS | SOUTH |  |  |
| 3-2213 |  | INST CONDUIT, DRIVWAYS BETWEEN 23RD & 24 SOUTH SIDE | 1d | 2023-06-07 A | 2023-06-07 A | 3-2212 SS | 100% | 2023-07-01 | 2023-07-01 | WEEKEND ONLY | MBRT BASE |  | 8 | ELECRICAL SUB | 0 | 3-2213 | 3-2213 | ZONE-3 | 23 | SIDEWALKS | SOUTH | ELECTRICAL |  |
| 3-2214 |  | POUR DRIVEWAY, DRIVWAYS BETWEEN 23RD & 24 SOUTH SIDE | 1d | 2023-06-07 A | 2023-06-07 A | 3-2213 SS | 100% | 2023-07-01 | 2023-07-01 | WEEKEND ONLY | MBRT BASE |  | 8 | WCOM | 0 | 3-2214 | 3-2214 | ZONE-3 | 23 | SIDEWALKS | SOUTH |  |  |
|  | 22 | **23RD TO 24TH NORTH SIDE-PHASE 1 CITY DIRECTED** |  | 2023-03-20 | 2023-06-05 |  |  |  |  |  |  |  |  |  |  |  |  |  |  |  |  |  |  |
| 3-2216 |  | REMOVE SIDEWALK, 23RD TO 24TH NORTH SIDE | 2d | 2023-03-20 A | 2023-03-21 A | 3-2188 | 100% | 2023-04-05 | 2023-04-06 |  | MBRT BASE [16 h] | 16 | 16 | EA3 | 16 |  |  | ZONE-3 | 23 | SIDEWALKS | NORTH |  |  |
| 3-2217 |  | TRENCH CONDUIT, 23RD TO 24TH NORTH SIDE | 2d | 2023-03-20 A | 2023-03-23 A | 3-2216 | 100% | 2023-04-07 | 2023-04-10 |  | MBRT BASE [32 h] | 32 | 32 | EA3 | 32 |  |  | ZONE-3 | 23 | SIDEWALKS | NORTH |  |  |
| 3-2218 |  | INST CONDUIT, 23RD TO 24TH NORTH SIDE | 2d | 2023-03-22 A | 2023-03-31 A | 3-2217 SS | 100% | 2023-04-07 | 2023-04-10 |  | MBRT BASE [64 h] | 64 | 64 | ELECRICAL SUB | 64 |  |  | ZONE-3 | 23 | SIDEWALKS | NORTH | ELECTRICAL |  |
| PCO615.01 |  | DSC 430-DUCT BANK CONFLICT WITH ELECTRICAL | 2d | 2023-03-22 A | 2023-03-31 A | MS-0025 | 100% | 2023-04-07 | 2023-04-10 |  | MBRT DSC [64 h] | 64 | 64 | ELECRICAL SUB | 64 |  |  | ZONE-3 | 23 | SIDEWALKS | NORTH | ELECTRICAL |  |
| 3-2219 |  | GRADE SIDEWALK, 23RD TO 24TH NORTH SIDE | 2d | 2023-04-05 A | 2023-04-07 A | 3-2218 | 100% | 2023-05-11 | 2023-05-12 |  | MBRT BASE [24 h] | 24 | 24 | EA3 | 24 | 3-2219 | 3-2219 | ZONE-3 | 23 | SIDEWALKS | NORTH | SIDEWALKS |  |
| PCO629.01 |  | DSC 441-PED POLE FOUNDATION CONFLICT WITH DUCT BANK | 2d | 2023-04-07 A | 2023-04-07 A | MS-0025 | 100% | 2023-04-07 | 2023-04-10 |  | MBRT DSC [8 h] | 8 | 8 | ELECRICAL SUB | 8 | PCO629.01 | PCO629.01 | ZONE-3 | 23 | SIDEWALKS | NORTH | ELECTRICAL |  |
| 3-2220 |  | POUR SIDEWALK, 23RD TO 24TH NORTH SIDE | 4d | 2023-04-10 A | 2023-04-13 A | 3-2219 | 100% | 2023-05-16 | 2023-05-19 |  | MBRT BASE [32 h] | 32 | 32 | COM | 32 | 3-2220 | 3-2220 | ZONE-3 | 23 | SIDEWALKS | NORTH |  |  |
| 3-2285 |  | INSTALL WHEEL GUIDES | 4d | 2023-05-31 A | 2023-06-05 A | 3-2220 | 100% |  |  |  | MBRT NEW [32 h] | 32 | 32 | COM | 32 | 3-2285 | 3-2285 | ZONE-3 | 23 | SIDEWALKS | NORTH |  |  |

| ID | WBS | Activity | Duration | Start | Finish | Predecessors | Complete | Planned start | Planned finish | Resources | Cost | Actual cost | user_text2 | user_number6 | user_text10 | user_text8 | MBRT-ZONE | MBRT-LOCATION | MBRT-TYPE | MBRT-SIDE | MBRT-SCOPE | ~SELECT |
| --- | --- | --- | --- | --- | --- | --- | --- | --- | --- | --- | --- | --- | --- | --- | --- | --- | --- | --- | --- | --- | --- | --- |
|  | 45 | **23RD TO 24TH NORTH SIDE-PHASE 2 CITY DIRECTED** |  | 2023-04-14 | 2023-05-02 |  |  |  |  |  |  |  |  |  |  |  |  |  |  |  |  |  |
| 3-3390 |  | REMOVE SIDEWALK, 23RD TO 24TH NORTH SIDE | 2d | 2023-04-14 A | 2023-04-14 A | 3-2220 | 100% | 2023-04-05 | 2023-04-06 | MBRT NEW [16 h] | 16 | 8 | EA3 | 8 | 3-3390 | 3-3390 | ZONE-3 | 23 | SIDEWALKS | NORTH |  |  |
| 3-3395 |  | TRENCH CONDUIT, PRIOR TO DSC | 2d | 2023-04-14 A | 2023-04-14 A | 3-3390 SS | 100% | 2023-04-07 | 2023-04-10 | MBRT DSC [8 h] | 8 | 8 | EA3 | 8 | 3-3395 | 3-3395 | ZONE-3 | 23 | SIDEWALKS | NORTH |  |  |
| PCO638.01 |  | DSC 449-CDF CONFLICT WITH TRENCH | 2d | 2023-04-17 A | 2023-04-17 A | 3-3395 | 100% | 2023-05-11 | 2023-05-12 | MBRT DSC [8 h] | 8 | 8 | EA3 | 8 | PCO638.01 | PCO638.01 | ZONE-3 | 23 | SIDEWALKS | NORTH | SIDEWALKS |  |
| 3-3465 |  | TRENCH CONDUIT, AFTER DSC | 2d | 2023-04-18 A | 2023-04-19 A | PCO638.01 | 100% | 2023-04-07 | 2023-04-10 | MBRT DSC [16 h] | 16 | 16 | EA3 | 16 | 3-3465 | 3-3465 | ZONE-3 | 23 | SIDEWALKS | NORTH |  |  |
| 3-3400 |  | INST CONDUIT, 23RD TO 24TH NORTH SIDE | 2d | 2023-04-20 A | 2023-04-25 A | 3-3395 SS | 100% | 2023-04-07 | 2023-04-10 | MBRT NEW [16 h] | 16 | 32 | ELECRICAL SUB | 32 | 3-3400 | 3-3400 | ZONE-3 | 23 | SIDEWALKS | NORTH | ELECTRICAL |  |
| 3-3405 |  | GRADE SIDEWALK, 23RD TO 24TH NORTH SIDE | 2d | 2023-04-26 A | 2023-04-26 A | 3-3400, 3-3465 | 100% | 2023-05-11 | 2023-05-12 | MBRT NEW [16 h] | 16 | 8 | EA3 | 8 | 3-3405 | 3-3405 | ZONE-3 | 23 | SIDEWALKS | NORTH | SIDEWALKS |  |
| 3-3495 |  | CURB RAMPS, 23RD TO 24TH NORTH SIDE | 4d | 2023-04-27 A | 2023-04-28 A | 3-3405 | 100% | 2023-05-16 | 2023-05-19 | MBRT NEW [32 h] | 32 | 16 | COM | 16 | 3-3495 | 3-3495 | ZONE-3 | 23 | SIDEWALKS | NORTH |  |  |
| 3-3410 |  | POUR SIDEWALK, 23RD TO 24TH NORTH SIDE | 4d | 2023-05-01 A | 2023-05-02 A | 3-3405, 3-3495 | 100% | 2023-05-01 | 2023-05-04 | MBRT NEW [32 h] | 32 | 16 | COM | 16 | 3-3410 | 3-3410 | ZONE-3 | 23 | SIDEWALKS | NORTH |  |  |
|  | 46 | **23RD TO 24TH NORTH SIDE-PHASE 3 CITY DIRECTED** |  | 2023-05-03 | 2023-05-15 |  |  |  |  |  |  |  |  |  |  |  |  |  |  |  |  |  |
| 3-3460 |  | SAWCUT SIDEWALK LIKE SWISS CHEESE | 2d | 2023-05-03 A | 2023-05-03 A | 3-3410 | 100% | 2023-05-05 | 2023-05-08 | MBRT NEW [16 h] | 16 | 8 | EA3 | 8 | 3-3460 | 3-3460 | ZONE-3 | 23 | SIDEWALKS | NORTH |  |  |
| 3-3435 |  | REMOVE SIDEWALK, 23RD TO 24TH NORTH SIDE | 2d | 2023-05-04 A | 2023-05-05 A | 3-3460 | 100% | 2023-05-09 | 2023-05-10 | MBRT NEW [16 h] | 16 | 16 | EA3 | 16 | 3-3435 | 3-3435 | ZONE-3 | 23 | SIDEWALKS | NORTH |  |  |
| 3-3440 |  | TRENCH CONDUIT, 23RD TO 24TH NORTH SIDE | 2d | 2023-05-08 A | 2023-05-10 A | 3-3435 | 100% | 2023-05-11 | 2023-05-12 | MBRT NEW [16 h] | 16 | 24 | EA3 | 24 | 3-3440 | 3-3440 | ZONE-3 | 23 | SIDEWALKS | NORTH |  |  |
| 3-3445 |  | INST CONDUIT, 23RD TO 24TH NORTH SIDE | 2d | 2023-05-08 A | 2023-05-10 A | 3-3440 SS | 100% | 2023-05-11 | 2023-05-12 | MBRT NEW [16 h] | 16 | 24 | ELECRICAL SUB | 24 | 3-3445 | 3-3445 | ZONE-3 | 23 | SIDEWALKS | NORTH | ELECTRICAL |  |
| PCO666.01 |  | DSC 469-LEAKING SPU WATER SERVICE | 2d | 2023-05-08 A | 2023-05-08 A | MS-0025 | 100% | 2023-05-09 | 2023-05-10 | MBRT DSC [8 h] | 8 | 8 | EA3 | 8 | PCO666.01 | PCO666.01 | ZONE-3 | 23 | SIDEWALKS | NORTH |  |  |
| PCO673.01 |  | DSC 476-LEAKING SPU WATER SERVICE | 2d | 2023-05-10 A | 2023-05-10 A | MS-0025 | 100% | 2023-05-09 | 2023-05-10 | MBRT DSC [8 h] | 8 | 8 | EA3 | 8 | PCO673.01 | PCO673.01 | ZONE-3 | 23 | SIDEWALKS | NORTH |  |  |
| 3-3450 |  | GRADE SIDEWALK, 23RD TO 24TH NORTH SIDE | 2d | 2023-05-11 A | 2023-05-11 A | 3-3445 | 100% | 2023-05-15 | 2023-05-16 | MBRT NEW [16 h] | 16 | 8 | EA3 | 8 | 3-3450 | 3-3450 | ZONE-3 | 23 | SIDEWALKS | NORTH | SIDEWALKS |  |
| 3-3455 |  | POUR SIDEWALK, 23RD TO 24TH NORTH SIDE | 4d | 2023-05-15 A | 2023-05-15 A | 3-3450 | 100% | 2023-05-17 | 2023-05-22 | MBRT NEW [32 h] | 32 | 8 | COM | 8 | 3-3455 | 3-3455 | ZONE-3 | 23 | SIDEWALKS | NORTH |  |  |
|  | 49 | **24TH TO 25TH NORTH SIDE Partial** |  | 2023-05-31 | 2023-06-13 |  |  |  |  |  |  |  |  |  |  |  |  |  |  |  |  |  |
| 3-4000 |  | REMOVE SIDEWALK | 1d | 2023-05-31 A | 2023-05-31 A | 3-3455 | 100% |  |  | MBRT NEW [8 h] | 8 | 8 |  | 8 | 3-4000 | 3-4000 |  |  |  |  |  | x |
| 3-4100 |  | TRENCH CONDUIT | 2d | 2023-06-01 A | 2023-06-02 A | 3-4000 | 100% |  |  | MBRT NEW [16 h] | 16 | 16 |  | 16 | 3-4100 | 3-4100 |  |  |  |  |  | x |
| 3-4101 |  | INSTALL CONDUIT | 2d | 2023-06-05 A | 2023-06-06 A | 3-4100 | 100% |  |  | MBRT NEW [16 h] | 16 | 16 |  | 16 | 3-4101 | 3-4101 |  |  |  |  |  | x |
| 3-4102 |  | GRADE SIDEWALK | 2d | 2023-06-07 A | 2023-06-08 A | 3-4101 | 100% |  |  | MBRT NEW [16 h] | 16 | 16 |  | 16 | 3-4102 | 3-4102 |  |  |  |  |  | x |
| 3-4103 |  | POUR SIDEWALK | 3d | 2023-06-09 A | 2023-06-13 A | 3-4102 | 100% |  |  | MBRT NEW [24 h] | 24 | 24 |  | 24 | 3-4103 | 3-4103 |  |  |  |  |  | x |

| ID | WBS | Activity | Duration | Start | Finish | Predecessors | Complete | Planned start | Planned finish | Resources | Cost | Actual cost | user_text2 | user_number6 | user_text10 | user_text8 | ~SELECT | MBRT-ZONE | MBRT-LOCATION | MBRT-TYPE | MBRT-SIDE | MBRT-SCOPE |
| --- | --- | --- | --- | --- | --- | --- | --- | --- | --- | --- | --- | --- | --- | --- | --- | --- | --- | --- | --- | --- | --- | --- |
|  | 50 | **24th NE CORNER** |  | 2023-06-21 | 2023-07-21 |  |  |  |  |  |  |  |  |  |  |  |  |  |  |  |  |  |
| 3-8210 |  | REMOVE SIDEWALK | 3d | 2023-06-21 A | 2023-06-23 A | 3-3455 | 100% |  |  | MBRT NEW [24 h] | 24 | 24 | EA3 | 24 | 3-8210 | 3-8210 |  |  |  |  |  |  |
| 3-8211 |  | TRENCH CONDUIT | 3d | 2023-06-26 A | 2023-06-28 A | 3-8210 | 100% |  |  | MBRT NEW [24 h] | 24 | 24 | EA3 | 24 | 3-8211 | 3-8211 |  |  |  |  |  |  |
| 3-8212 |  | DSC 541 Duct Bank Conflict | 1d | 2023-06-28 A | 2023-06-28 A | 3-8211 | 100% | 2023-06-29 | 2023-06-29 | MBRT DSC [8 h] | 8 | 8 |  | 8 | 3-8212 | 3-8212 | x |  |  |  |  |  |
| 3-8213 |  | INSTALL CONDUIT | 3d | 2023-06-29 A | 2023-07-11 A | 3-8211 SS, 3-8212 | 100% | 2023-06-30 | 2023-07-05 | MBRT NEW [24 h] | 24 | 64 | ELECRICAL SUB | 64 | 3-8213 | 3-8213 |  |  |  |  |  |  |
| 3-8214 |  | GRADE SIDEWALK | 2d | 2023-07-12 A | 2023-07-12 A | 3-8213 | 100% | 2023-07-13 | 2023-07-14 | MBRT NEW [16 h] | 16 | 8 | EA3 | 8 | 3-8214 | 3-8214 |  |  |  |  |  |  |
| 3-8215 |  | POUR SIDEWALK | 6d | 2023-07-14 A | 2023-07-21 A | 3-8214 | 100% | 2023-07-17 | 2023-07-24 | MBRT NEW [48 h] | 48 | 48 | COM | 48 | 3-8215 | 3-8215 |  |  |  |  |  |  |
|  | 23 | **24TH TO 25TH NORTH SIDE** |  | 2023-11-30 | 2023-12-21 |  |  |  |  |  |  |  |  |  |  |  |  |  |  |  |  |  |
| 3-2222 |  | REMOVE SIDEWALK, 24TH TO 25TH NORTH SIDE | 1d | 2023-11-30 A | 2023-12-04 A | 3-1968, 3-2220, 3-2214, 3-3455, 3-8214 | 100% | 2023-11-02 | 2023-11-02 | MBRT BASE [24 h] | 24 | 24 | EA3 | 24 | 3-2222 | 3-2222 |  | ZONE-3 | 24 | SIDEWALKS | NORTH |  |
| 3-2223 |  | TRENCH CONDUIT, 24TH TO 25TH NORTH SIDE | 2d | 2023-12-05 A | 2023-12-06 A | 3-2222 | 100% | 2023-11-03 | 2023-11-06 | MBRT BASE [16 h] | 16 | 16 | EA3 | 16 | 3-2223 | 3-2223 |  | ZONE-3 | 24 | SIDEWALKS | NORTH |  |
| 3-2224 |  | INST CONDUIT, 24TH TO 25TH NORTH SIDE | 2d | 2023-12-05 A | 2023-12-08 A | 3-2223 | 100% | 2023-11-07 | 2023-11-08 | MBRT BASE [32 h] | 32 | 32 | ELECRICAL SUB | 32 | 3-2224 | 3-2224 |  | ZONE-3 | 24 | SIDEWALKS | NORTH | ELECTRICAL |
| 3-2227 |  | DSC 657 UNKNOWN UNLOCATED CONDUIT | 1d | 2023-12-05 A | 2023-12-05 A | 3-2222 | 100% | 2023-11-02 | 2023-11-02 | MBRT DSC [8 h] | 8 | 8 |  | 8 |  |  |  |  |  |  |  |  |
| 3-2277 |  | DSC 659 UNLOCATED SIDE SEWER | 1d | 2023-12-06 A | 2023-12-06 A | 3-2222 | 100% | 2023-11-02 | 2023-11-02 | MBRT DSC [8 h] | 8 | 8 |  | 8 |  |  |  |  |  |  |  |  |
| 3-2225 |  | GRADE SIDEWALK, 24TH TO 25TH NORTH SIDE | 2d | 2023-12-08 A | 2023-12-11 A | 3-2224, 3-2277, 3-2227 | 100% | 2023-11-09 | 2023-11-10 | MBRT BASE [16 h] | 16 | 16 | EA3 | 16 | 3-2225 | 3-2225 |  | ZONE-3 | 24 | SIDEWALKS | NORTH | SIDEWALKS |
| DSC-670 |  | DSC 670 UNLOCATED GAS SERVICE LINE | 1d | 2023-12-18 A | 2023-12-18 A | 3-2225 | 100% | 2023-12-11 | 2023-12-11 | MBRT DSC [8 h] | 8 | 8 |  | 8 |  |  |  |  |  |  |  |  |
| 3-2226 |  | POUR SIDEWALK, 24TH TO 25TH NORTH SIDE | 3d | 2023-12-19 A | 2023-12-21 A | 3-2225, 3-8215, DSC-670 | 100% | 2023-12-12 | 2023-12-14 | MBRT BASE [24 h] | 24 | 24 | COM | 24 | 3-2226 | 3-2226 |  | ZONE-3 | 24 | SIDEWALKS | NORTH |  |
|  | 24 | **DRIVEWAYS BETWEEN 24TH AND 25TH** |  | 2024-02-02 | 2024-02-05 |  |  |  |  |  |  |  |  |  |  |  |  |  |  |  |  |  |
| 3-2228 |  | REM SIDEWALK, DRIVEWAYS BETWEEN 24TH & 25TH | 1d | 2024-02-02 A | 2024-02-02 A | 3-8210, 3-2222 SS | 100% | 2023-12-11 | 2023-12-11 | MBRT BASE [8 h] | 8 | 8 | WEA3 | 8 | 3-2228 | 3-2228 |  | ZONE-3 | 24 | SIDEWALKS |  |  |
| 3-2229 |  | INST CONDUIT, DRIVEWAYS BETWEEN 24TH & 25TH | 1d | 2024-02-02 A | 2024-02-02 A | 3-2228 SS | 100% | 2023-12-11 | 2023-12-11 | MBRT BASE [8 h] | 8 | 8 | ELECRICAL SUB | 8 | 3-2229 | 3-2229 |  | ZONE-3 | 24 | SIDEWALKS |  | ELECTRICAL |
| 3-2230 |  | POUR DRIVEWAY, DRIVEWAYS BETWEEN 24TH & 25TH | 1d | 2024-02-03 A | 2024-02-05 A | 3-2229 | 100% | 2023-12-12 | 2023-12-12 | MBRT BASE [8 h] | 8 | 8 | WCOM | 8 | 3-2230 | 3-2230 |  | ZONE-3 | 24 | SIDEWALKS |  |  |
|  | 25 | **24TH SE CORNER** |  | 2023-04-21 | 2023-05-31 |  |  |  |  |  |  |  |  |  |  |  |  |  |  |  |  |  |
| 3-2232 |  | REM SIDEWALK, 24TH SE CORNER | 3d | 2023-04-21 A | 2023-04-25 A | 3-1961, 3-2122 | 100% | 2023-06-23 | 2023-06-27 | MBRT BASE [24 h] | 24 | 24 | EA3 | 24 | 3-2232 | 3-2232 | 379 | ZONE-3 | 24 | SIDEWALKS | SOUTH |  |
| 3-2233 |  | TRENCH CONDUIT, 24TH SE CORNER | 3d | 2023-04-26 A | 2023-04-28 A | 3-2232 | 100% | 2023-06-28 | 2023-06-30 | MBRT BASE [24 h] | 24 | 24 | EA3 | 24 | 3-2233 | 3-2233 | 379 | ZONE-3 | 24 | SIDEWALKS | SOUTH |  |
| 3-2234 |  | INST CONDUIT, 24TH SE CORNER | 3d | 2023-04-26 A | 2023-04-28 A | 3-2233 SS | 100% | 2023-06-28 | 2023-06-30 | MBRT BASE [24 h] | 24 | 24 | ELECRICAL SUB | 24 | 3-2234 | 3-2234 | 379 | ZONE-3 | 24 | SIDEWALKS | SOUTH | ELECTRICAL |
| 3-2235 |  | FORM BUS STATION FOUNDATIONS, 24TH SE CORNER | 2d | 2023-05-01 A | 2023-05-09 A | 3-2220 | 100% | 2023-05-01 | 2023-05-02 | MBRT BASE [56 h] | 56 | 56 | EA3 | 56 | 3-2235 | 3-2235 |  | ZONE-3 | 24 | SIDEWALKS | SOUTH |  |
| 3-2236 |  | POUR BUS STATION FOUNDATIONS, 24TH SE CORNER | 1d | 2023-05-10 A | 2023-05-10 A | 3-2235 | 100% | 2023-05-03 | 2023-05-03 | MBRT BASE [8 h] | 8 | 8 | COM | 8 | 3-2236 | 3-2236 |  | ZONE-3 | 24 | SIDEWALKS | SOUTH |  |
| 3-2237 |  | GRADE SIDEWALK, 24TH SE CORNER | 2d | 2023-05-11 A | 2023-05-12 A | 3-2236, 3-2234 | 100% | 2023-07-03 | 2023-07-05 | MBRT BASE [16 h] | 16 | 16 | EA3 | 16 | 3-2237 | 3-2237 | 379 | ZONE-3 | 24 | SIDEWALKS | SOUTH | SIDEWALKS |
| 3-2238 |  | POUR SIDEWALK, 24TH SE CORNER | 8d | 2023-05-23 A | 2023-05-30 A | 3-2237, 3-3385 | 100% | 2023-07-03 | 2023-07-13 | MBRT BASE [40 h] | 40 | 40 | COM | 40 | 3-2238 | 3-2238 | 379 | ZONE-3 | 24 | SIDEWALKS | SOUTH |  |
| 3-2267 |  | INSTALL WHEEL GUIDES | 1d | 2023-05-31 A | 2023-05-31 A | 3-2236 | 100% |  |  | MBRT NEW [8 h] | 8 | 8 |  | 8 | 3-2267 | 3-2267 |  |  |  |  |  |  |

| ID | WBS | Activity | Duration | Start | Finish | Predecessors | Complete | Planned start | Planned finish | Resources | Cost | Actual cost | user_text2 | user_number6 | user_text10 | ~TEXT | user_text8 | MBRT-ZONE | MBRT-LOCATION | MBRT-TYPE | MBRT-SIDE | MBRT-SCOPE | MBRT-DELAY | ~SELECT | ~SELECT3 |
| --- | --- | --- | --- | --- | --- | --- | --- | --- | --- | --- | --- | --- | --- | --- | --- | --- | --- | --- | --- | --- | --- | --- | --- | --- | --- |
|  | 47 | **25TH SW CORNER** |  | 2023-04-21 | 2023-06-06 |  |  |  |  |  |  |  |  |  |  |  |  |  |  |  |  |  |  |  |  |
| 3-3470 |  | REM SIDEWALK, 25TH SW CORNER | 2d | 2023-04-21 A | 2023-04-25 A | 3-3395 | 100% | 2023-07-14 | 2023-07-17 | MBRT NEW [16 h] | 16 | 24 | EA3 | 24 | 3-3470 | POLES4 | 3-3470 | ZONE-3 | 20 | SIDEWALKS | SOUTH |  |  |  |  |
| 3-3475 |  | TRENCH CONDUIT, 25TH SW CORNER | 2d | 2023-04-26 A | 2023-04-28 A | 3-3470 | 100% | 2023-07-18 | 2023-07-19 | MBRT NEW [16 h] | 16 | 24 | EA3 | 24 | 3-3475 | POLES4 | 3-3475 | ZONE-3 | 20 | SIDEWALKS | SOUTH |  |  |  |  |
| 3-3480 |  | INST CONDUIT, 25TH SW CORNER | 2d | 2023-04-26 A | 2023-04-28 A | 3-3475 SS | 100% | 2023-07-18 | 2023-07-19 | MBRT NEW [16 h] | 16 | 24 | ELECRICAL SUB | 24 | 3-3480 | POLES4 | 3-3480 | ZONE-3 | 20 | SIDEWALKS | SOUTH | ELECTRICAL |  |  |  |
| 3-3560 |  | POUR BUS STATION FOUNDATIONS, 25TH SW CORNER | 2d | 2023-04-26 A | 2023-04-28 A | 3-3555 | 100% | 2023-07-18 | 2023-07-19 | MBRT NEW [16 h] | 16 | 24 | ELECRICAL SUB | 24 | 3-3560 | POLES4 | 3-3560 | ZONE-3 | 20 | SIDEWALKS | SOUTH | ELECTRICAL |  |  |  |
| 3-3555 |  | FORM BUS STATION FOUNDATIONS, 25TH SW CORNER | 2d | 2023-05-01 A | 2023-05-09 A | 3-3480 | 100% | 2023-07-18 | 2023-07-19 | MBRT NEW [16 h] | 16 | 56 | ELECRICAL SUB | 56 | 3-3555 | POLES4 | 3-3555 | ZONE-3 | 20 | SIDEWALKS | SOUTH | ELECTRICAL |  |  |  |
| 3-3485 |  | GRADE SIDEWALK, 25TH SW CORNER | 2d | 2023-05-11 A | 2023-05-12 A | 3-3480, 3-3560 | 100% | 2023-05-01 | 2023-05-02 | MBRT NEW [16 h] | 16 | 16 | EA3 | 16 | 3-3485 | POLES4 | 3-3485 | ZONE-3 | 20 | SIDEWALKS | SOUTH | SIDEWALKS |  |  |  |
| 3-3490 |  | POUR SIDEWALK, 25TH SW CORNER | 5d | 2023-05-31 A | 2023-06-06 A | 3-3485 | 100% |  |  | MBRT NEW [40 h] | 40 | 40 | COM | 40 | 3-3490 | POLES4 | 3-3490 | ZONE-3 | 20 | SIDEWALKS | SOUTH |  |  |  |  |
|  | 26 | **25TH TO 26TH NORTH SIDE** |  | 2023-12-11 | 2024-02-02 |  |  |  |  |  |  |  |  |  |  |  |  |  |  |  |  |  |  |  |  |
| 3-2240 |  | REMOVE SIDEWALK, 25TH TO 26TH NORTH SIDE | 2d | 2023-12-11 A | 2023-12-12 A | 3-2238 FS+1d, 3-1975, 3-2226, 3-2230 | 100% | 2023-12-15 | 2023-12-18 | MBRT BASE [16 h] | 16 | 16 | EA3 | 16 | 3-2240 |  | 3-2240 | ZONE-3 | 25 | SIDEWALKS | NORTH |  | FM001 |  |  |
| 3-2241 |  | TRENCH CONDUIT, 25TH TO 26TH NORTH SIDE | 3d | 2023-12-13 A | 2023-12-18 A | 3-2240 | 100% | 2023-12-19 | 2023-12-21 | MBRT BASE [32 h] | 32 | 32 | EA3 | 32 | 3-2241 |  | 3-2241 | ZONE-3 | 25 | SIDEWALKS | NORTH |  | FM001 |  |  |
| 3-2242 |  | INST CONDUIT, 25TH TO 26TH NORTH SIDE | 3d | 2023-12-15 A | 2023-12-19 A | 3-2241 SS | 100% | 2023-12-19 | 2023-12-21 | MBRT BASE [24 h] | 24 | 24 | ELECRICAL SUB | 24 | 3-2242 |  | 3-2242 | ZONE-3 | 25 | SIDEWALKS | NORTH | ELECTRICAL | FM001 |  |  |
| DSC-667 |  | DSC 667 EXISTING WATER SERVICE LEAKING | 1d | 2023-12-18 A | 2023-12-18 A | 3-2241 | 100% | 2023-12-11 | 2023-12-11 | MBRT DSC [8 h] | 8 | 8 |  | 8 |  |  |  |  |  |  |  |  |  |  |  |
| 3-2243 |  | GRADE SIDEWALK, 25TH TO 26TH NORTH SIDE | 2d | 2023-12-19 A | 2023-12-22 A | 3-2242, DSC-667 | 100% | 2023-12-22 | 2023-12-26 | MBRT BASE [32 h] | 32 | 32 | EA3 | 32 | 3-2243 |  | 3-2243 | ZONE-3 | 25 | SIDEWALKS | NORTH | SIDEWALKS | FM001 |  |  |
| 3-2244 |  | POUR SIDEWALK, 25TH TO 26TH NORTH SIDE | 6d | 2024-01-22 A | 2024-02-02 A | 3-2243, 3-2248 | 100% | 2023-12-27 | 2024-01-04 | MBRT BASE [80 h] | 80 | 80 | COM | 80 | 3-2244 |  | 3-2244 | ZONE-3 | 25 | SIDEWALKS | NORTH |  |  |  |  |
|  | 27 | **DRIVEWAYS BETWWEN 25TH AND 26TH NORTH SIDE** |  | 2024-02-02 | 2024-02-05 |  |  |  |  |  |  |  |  |  |  |  |  |  |  |  |  |  |  |  |  |
| 3-2246 |  | REM SIDEWALK, DRIVEWAYS BETWWEN 25TH & 26TH NORTH SIDE | 1d | 2024-02-02 A | 2024-02-02 A | 3-2240 SS | 100% | 2023-12-15 | 2023-12-15 | MBRT BASE [8 h] | 8 | 8 | WEA3 | 8 | 3-2246 |  | 3-2246 | ZONE-3 | 25 | SIDEWALKS | NORTH |  |  |  |  |
| 3-2247 |  | INST CONDUIT, DRIVEWAYS BETWWEN 25TH & 26TH NORTH SIDE | 1d | 2024-02-02 A | 2024-02-02 A | 3-2246 SS | 100% | 2023-12-15 | 2023-12-15 | MBRT BASE [8 h] | 8 | 8 | ELECRICAL SUB | 8 | 3-2247 |  | 3-2247 | ZONE-3 | 25 | SIDEWALKS | NORTH | ELECTRICAL |  |  |  |
| 3-2248 |  | POUR DRIVEWAY, DRIVEWAYS BETWWEN 25TH & 26TH NORTH SIDE | 1d | 2024-02-03 A | 2024-02-05 A | 3-2247 | 100% | 2023-12-18 | 2023-12-18 | MBRT BASE [8 h] | 8 | 8 | WCOM | 8 | 3-2248 |  | 3-2248 | ZONE-3 | 25 | SIDEWALKS | NORTH |  |  |  |  |
|  | 28 | **26TH TO 27TH NORTH SIDE** |  | 2023-12-26 | 2024-02-27 |  |  |  |  |  |  |  |  |  |  |  |  |  |  |  |  |  |  |  |  |
| 3-2250 |  | REMOVE SIDEWALK, 26TH TO 27TH NORTH SIDE | 2d | 2023-12-26 A | 2023-12-28 A | 3-2243 | 100% | 2023-12-27 | 2023-12-28 | MBRT BASE [24 h] | 24 | 24 | EA3 | 24 | 3-2250 |  | 3-2250 | ZONE-3 | 26 | SIDEWALKS | NORTH |  | FM001 | 133 | 133 |
| 3-2251 |  | TRENCH CONDUIT, 26TH TO 27TH NORTH SIDE | 3d | 2023-12-29 A | 2024-01-03 A | 3-2250 | 100% |  |  | MBRT BASE [24 h] | 24 | 24 | EA3 | 24 | 3-2251 |  | 3-2251 | ZONE-3 | 26 | SIDEWALKS | NORTH |  | FM001 | 133 | 133 |
| 3-2252 |  | INST CONDUIT, 26TH TO 27TH NORTH SIDE | 3d | 2024-01-04 A | 2024-01-08 A | 3-2251 SS | 100% | 2023-12-29 | 2024-01-03 | MBRT BASE [24 h] | 24 | 24 | ELECRICAL SUB | 24 | 3-2252 |  | 3-2252 | ZONE-3 | 26 | SIDEWALKS | NORTH | ELECTRICAL | FM001 | 133 | 133 |
| 3-2253 |  | GRADE SIDEWALK, 26TH TO 27TH NORTH SIDE | 2d | 2024-01-10 A | 2024-01-11 A | 3-2252 | 100% | 2024-01-04 | 2024-01-05 | MBRT BASE [16 h] | 16 | 16 | EA3 | 16 | 3-2253 |  | 3-2253 | ZONE-3 | 26 | SIDEWALKS | NORTH | SIDEWALKS | FM001 | 133 | 133 |
| 3-2254 |  | POUR SIDEWALK, 26TH TO 27TH NORTH SIDE | 6d | 2024-02-20 A | 2024-02-27 A | 3-2244, 3-2253, 3-2258 FF | 100% | 2024-02-12 | 2024-02-20 | MBRT BASE [48 h] | 48 | 48 | COM | 48 | 3-2254 |  | 3-2254 | ZONE-3 | 26 | SIDEWALKS | NORTH |  |  |  |  |

| ID | WBS | Activity | Duration | Start | Finish | Predecessors | Complete | Planned start | Planned finish | Resources | Cost | Actual cost | user_text2 | user_number6 | user_text10 | user_text8 | MBRT-ZONE | MBRT-LOCATION | MBRT-TYPE | MBRT-SIDE | MBRT-SCOPE | ~SELECT | ~SELECT3 | MBRT-DELAY |
| --- | --- | --- | --- | --- | --- | --- | --- | --- | --- | --- | --- | --- | --- | --- | --- | --- | --- | --- | --- | --- | --- | --- | --- | --- |
|  | 29 | **DRIVEWAYS BETWEEN 26TH AND 27TH NORTH SIDE** |  | 2024-02-23 | 2024-02-26 |  |  |  |  |  |  |  |  |  |  |  |  |  |  |  |  |  |  |  |
| 3-2256 |  | REM SIDEWALK, DRIVEWAYS BETWEEN 26TH & 27TH NORTH SIDE | 1d | 2024-02-23 A | 2024-02-23 A | 3-2250 SS | 100% | 2024-02-12 | 2024-02-12 | MBRT BASE [8 h] | 8 | 8 | WEA3 | 8 | 3-2256 | 3-2256 | ZONE-3 | 26 | SIDEWALKS | NORTH |  |  |  |  |
| 3-2257 |  | INST CONDUIT, DRIVEWAYS BETWEEN 26TH & 27TH NORTH SIDE | 1d | 2024-02-23 A | 2024-02-23 A | 3-2256 SS | 100% | 2024-02-12 | 2024-02-12 | MBRT BASE [8 h] | 8 | 8 | ELECRICAL SUB | 8 | 3-2257 | 3-2257 | ZONE-3 | 26 | SIDEWALKS | NORTH | ELECTRICAL |  |  |  |
| 3-2258 |  | POUR DRIVEWAY, DRIVEWAYS BETWEEN 26TH & 27TH NORTH SIDE | 1d | 2024-02-24 A | 2024-02-26 A | 3-2257 | 100% | 2024-02-13 | 2024-02-13 | MBRT BASE [8 h] | 8 | 8 | WCOM | 8 | 3-2258 | 3-2258 | ZONE-3 | 26 | SIDEWALKS | NORTH |  |  |  |  |
|  | 30 | **27TH TO MLK NORTH SIDE** |  | 2023-09-19 | 2024-03-15 |  |  |  |  |  |  |  |  |  |  |  |  |  |  |  |  |  |  |  |
| 3-2275 |  | DSC 620 Pole Foundation P-38.12 | 7d | 2023-09-19 A | 2023-09-27 A | 3-2091 SS | 100% |  |  | MBRT DSC [56 h] | 56 | 56 |  | 56 |  |  |  |  |  |  |  |  |  |  |
| 3-2260 |  | REMOVE SIDEWALK, 27TH TO MLK NORTH SIDE | 2d | 2024-01-12 A | 2024-01-19 A | 3-2253, 3-1982, 3-2275 | 100% | 2024-01-08 | 2024-01-09 | MBRT BASE [40 h] | 40 | 40 | EA3 | 40 | 3-2260 | 3-2260 | ZONE-3 | 27 | SIDEWALKS | NORTH |  | 133 | 133 | FM001 |
| 3-2261 |  | TRENCH CONDUIT, 27TH TO MLK NORTH SIDE | 3d | 2024-01-17 A | 2024-02-16 A | 3-2260 | 100% | 2024-01-10 | 2024-01-12 | MBRT BASE [184 h] | 184 | 184 | EA3 | 184 | 3-2261 | 3-2261 | ZONE-3 | 27 | SIDEWALKS | NORTH |  | 133 | 133 | FM001 |
| 3-2273 |  | 28TH WB STATION DESIGN CONFLICTS | 30d | 2024-01-17 A | 2024-02-28 A | 3-2260 SS | 100% | 2024-02-12 | 2024-03-25 | MBRT NEW [240 h] | 240 | 240 |  | 240 |  |  |  |  |  |  |  |  |  |  |
| DSC-689 |  | DSC 689 CONDUIT CONFLICT WITH BUS FOUNDATION | 30d | 2024-01-17 A | 2024-02-28 A | 3-2261 SS | 100% | 2023-12-11 | 2024-01-24 | MBRT DSC [240 h] | 240 | 240 |  | 240 |  |  |  |  |  |  |  | 133 | 133 |  |
| 3-2262 |  | INST CONDUIT, 27TH TO MLK NORTH SIDE | 3d | 2024-01-19 A | 2024-02-28 A | 3-2261 SS, DSC-689 FF | 100% | 2024-01-10 | 2024-01-12 | MBRT BASE [224 h] | 224 | 224 | ELECRICAL SUB | 224 | 3-2262 | 3-2262 | ZONE-3 | 27 | SIDEWALKS | NORTH | ELECTRICAL | 133 | 133 | FM001 |
| DSC-701 |  | DSC 701 UNKNOWN DRAIN LINE CONFLICT | 1d | 2024-02-14 A | 2024-02-14 A | 3-2261 SS | 100% | 2024-02-12 | 2024-02-12 | MBRT DSC [8 h] | 8 | 8 |  | 8 |  |  |  |  |  |  |  |  |  |  |
| 3-2263 |  | FORM BUS STATION FOUNDATIONS, 27TH TO MLK NORTH SIDE | 2d | 2024-02-21 A | 2024-02-28 A | 3-2262, DSC-701 | 100% | 2024-02-20 | 2024-02-21 | MBRT BASE [48 h] | 48 | 48 | EA3 | 48 | 3-2263 | 3-2263 | ZONE-3 | 27 | SIDEWALKS | NORTH |  | 133 | 133 | FM001 |
| 3-2264 |  | POUR BUS STATION FOUNDATIONS, 27TH TO MLK NORTH SIDE | 1d | 2024-02-29 A | 2024-02-29 A | 3-2263, 3-2273 | 100% | 2024-02-22 | 2024-02-22 | MBRT BASE [8 h] | 8 | 8 | COM | 8 | 3-2264 | 3-2264 | ZONE-3 | 27 | SIDEWALKS | NORTH |  | 133 | 133 | FM001 |
| 3-2265 |  | GRADE SIDEWALK, 27TH TO MLK NORTH SIDE | 3d | 2024-03-04 A | 2024-03-07 A | 3-2264 | 100% | 2024-03-04 | 2024-03-06 | MBRT BASE [24 h] | 24 |  | EA3 | 24 | 3-2265 | 3-2265 | ZONE-3 | 27 | SIDEWALKS | NORTH | SIDEWALKS |  | 133 | FM001 |
| 3-2321 |  | INSTALL WHEEL GUIDES | 1d | 2024-03-04 A | 2024-03-04 A | 3-2264 | 100% |  |  | MBRT NEW [8 h] | 8 |  |  | 8 | 3-2321 | 3-2321 |  |  |  |  |  |  |  |  |
| 3-2266 |  | POUR SIDEWALK, 27TH TO MLK NORTH SIDE | 6d | 2024-03-08 A | 2024-03-15 A | 3-2265, 3-2254, 3-2321 FF, 3-2258 | 100% | 2024-03-07 | 2024-03-14 | MBRT BASE [48 h] | 48 |  | COM | 48 | 3-2266 | 3-2266 | ZONE-3 | 27 | SIDEWALKS | NORTH |  |  | 133 |  |
|  | 31 | **MLK TO 322+50 NORTH SIDE** |  | 2024-02-07 | 2024-03-08 |  |  |  |  |  |  |  |  |  |  |  |  |  |  |  |  |  |  |  |
| 3-2268 |  | REM SIDEWALK, MLK TO 322+50 NORTH SIDE | 1d | 2024-02-07 A | 2024-02-07 A | 3-2246, 3-2228 | 100% | 2024-01-24 | 2024-01-24 | MBRT BASE [8 h] | 8 | 8 | EA3 | 8 | 3-2268 | 3-2268 | ZONE-3 | MLK | SIDEWALKS | NORTH |  |  |  | FM001 |
| 3-2269 |  | TRENCH CONDUIT, MLK TO 322+50 NORTH SIDE | 1d | 2024-02-08 A | 2024-02-09 A | 3-2268 | 100% | 2024-01-25 | 2024-01-25 | MBRT BASE [16 h] | 16 | 16 | EA3 | 16 | 3-2269 | 3-2269 | ZONE-3 | MLK | SIDEWALKS | NORTH |  |  |  | FM001 |
| 3-2270 |  | INST CONDUIT, MLK TO 322+50 NORTH SIDE | 1d | 2024-02-09 A | 2024-02-26 A | 3-2269 SS | 100% | 2024-01-25 | 2024-01-25 | MBRT BASE [88 h] | 88 | 88 | ELECRICAL SUB | 88 | 3-2270 | 3-2270 | ZONE-3 | MLK | SIDEWALKS | NORTH | ELECTRICAL |  |  | FM001 |
| DSC-700 |  | DSC 700 UNKNOWN UTILITES IN CONFLICT WITH THE CONDUIT | 2d | 2024-02-12 A | 2024-02-13 A | MS-0025 | 100% |  |  | MBRT DSC [16 h] | 16 | 16 |  | 16 |  |  |  |  |  |  |  |  |  |  |
| 3-2271 |  | GRADE SIDEWALK, MLK TO 322+50 NORTH SIDE | 1d | 2024-02-29 A | 2024-02-29 A | 3-2270 | 100% | 2024-03-08 | 2024-03-08 | MBRT BASE [8 h] | 8 | 8 | EA3 | 8 | 3-2271 | 3-2271 | ZONE-3 | MLK | SIDEWALKS | NORTH | SIDEWALKS |  |  | FM001 |
| 3-2272 |  | POUR SIDEWALK, MLK TO 322+50 NORTH SIDE | 2d | 2024-03-08 A | 2024-03-08 A | 3-2271, 3-2266 SS | 100% | 2024-03-07 | 2024-03-08 | MBRT BASE [16 h] | 16 |  | COM | 16 | 3-2272 | 3-2272 | ZONE-3 | MLK | SIDEWALKS | NORTH |  |  | 133 |  |

| ID | WBS | Activity | Duration | Start | Finish | Predecessors | Complete | Remaining | Planned start | Planned finish | Total float | Free float | Calendar | Resources | Cost | Actual cost | user_text2 | user_number6 | user_text10 | user_text8 | MBRT-ZONE | MBRT-LOCATION | MBRT-TYPE | MBRT-SIDE | MBRT-DELAY | MBRT-SCOPE | ~SELECT3 |
| --- | --- | --- | --- | --- | --- | --- | --- | --- | --- | --- | --- | --- | --- | --- | --- | --- | --- | --- | --- | --- | --- | --- | --- | --- | --- | --- | --- |
|  | 33 | **25TH TO 27TH SOUTH SIDE** |  | 2023-05-31 | 2023-06-19 |  |  |  |  |  |  |  |  |  |  |  |  |  |  |  |  |  |  |  |  |  |  |
| 3-2280 |  | REMOVE SIDEWALK, 25TH TO 27TH SOUTH SIDE | 3d | 2023-05-31 A | 2023-06-02 A | 3-1989, 3-2238 | 100% |  | 2023-07-03 | 2023-07-06 |  |  |  | MBRT BASE [24 h] | 24 | 24 | EA3 | 24 | 3-2280 | 3-2280 | ZONE-3 | 25 | SIDEWALKS | SOUTH | FM001 |  |  |
| 3-2281 |  | TRENCH CONDUIT, 25TH TO 27TH SOUTH SIDE | 1d | 2023-06-05 A | 2023-06-05 A | 3-2280 | 100% |  | 2023-07-07 | 2023-07-07 |  |  |  | MBRT BASE [8 h] | 8 | 8 | EA3 | 8 | 3-2281 | 3-2281 | ZONE-3 | 25 | SIDEWALKS | SOUTH | FM001 |  |  |
| 3-2282 |  | INST CONDUIT, 25TH TO 27TH SOUTH SIDE | 1d | 2023-06-05 A | 2023-06-05 A | 3-2281 SS | 100% |  | 2023-07-07 | 2023-07-07 |  |  |  | MBRT BASE [8 h] | 8 | 8 | ELECRICAL SUB | 8 | 3-2282 | 3-2282 | ZONE-3 | 25 | SIDEWALKS | SOUTH | FM001 | ELECTRICAL |  |
| 3-2283 |  | GRADE SIDEWALK, 25TH TO 27TH SOUTH SIDE | 2d | 2023-06-06 A | 2023-06-07 A | 3-2282 | 100% |  | 2023-07-10 | 2023-07-11 |  |  |  | MBRT BASE [16 h] | 16 | 16 | EA3 | 16 | 3-2283 | 3-2283 | ZONE-3 | 25 | SIDEWALKS | SOUTH | FM001 | SIDEWALKS |  |
| 3-2284 |  | POUR SIDEWALK, 25TH TO 27TH SOUTH SIDE | 8d | 2023-06-08 A | 2023-06-19 A | 3-2283 | 100% |  | 2023-07-12 | 2023-07-21 |  |  |  | MBRT BASE [64 h] | 64 | 64 | COM | 64 | 3-2284 | 3-2284 | ZONE-3 | 25 | SIDEWALKS | SOUTH |  |  |  |
|  | 34 | **DRIVEWAY BETWEEN 25TH AND 27TH SOUTH SIDE** |  | 2023-06-03 | 2023-06-04 |  |  |  |  |  |  |  |  |  |  |  |  |  |  |  |  |  |  |  |  |  |  |
| 3-2286 |  | REM SIDEWALK, DRIVEWAY BETWEEN 25TH & 27TH SOUTH SIDE | 1d | 2023-06-03 A | 2023-06-03 A | 3-2280 | 100% |  |  |  |  |  | WEEKEND ONLY | MBRT BASE [8 h] | 8 | 8 | WEA3 | 8 | 3-2286 | 3-2286 | ZONE-3 | 25 | SIDEWALKS | SOUTH |  |  |  |
| 3-2287 |  | INST CONDUIT, DRIVEWAY BETWEEN 25TH & 27TH SOUTH SIDE | 1d | 2023-06-03 A | 2023-06-03 A | 3-2286 SS | 100% |  |  |  |  |  | WEEKEND ONLY | MBRT BASE [8 h] | 8 | 8 | ELECRICAL SUB | 8 | 3-2287 | 3-2287 | ZONE-3 | 25 | SIDEWALKS | SOUTH |  | ELECTRICAL |  |
| 3-2288 |  | POUR DRIVEWAY, DRIVEWAY BETWEEN 25TH & 27TH SOUTH SIDE | 1d | 2023-06-04 A | 2023-06-04 A | 3-2287 | 100% |  |  |  |  |  | WEEKEND ONLY | MBRT BASE [8 h] | 8 | 8 | WCOM | 8 | 3-2288 | 3-2288 | ZONE-3 | 25 | SIDEWALKS | SOUTH |  |  |  |
|  | 35 | **27TH TO MLK SOUTH SIDE** |  | 2024-03-15 | 2024-05-07 |  |  |  |  |  |  |  |  |  |  |  |  |  |  |  |  |  |  |  |  |  |  |
| 3-2290 |  | REMOVE SIDEWALK, 27TH TO MLK SOUTH SIDE | 2d | 2024-03-15 A | 2024-03-15 A | 3-2283, 3-2288, 3-2272 FF | 100% |  | 2024-03-07 | 2024-03-08 |  |  |  | MBRT BASE [16 h] | 16 |  | EA3 | 16 | 3-2290 | 3-2290 | ZONE-3 | 27 | SIDEWALKS | SOUTH | FM001 |  | 133 |
| 3-2291 |  | TRENCH CONDUIT, 27TH TO MLK SOUTH SIDE | 3d | 2024-03-15 A | 2024-03-18 A | 3-2290 | 100% |  | 2024-03-11 | 2024-03-13 |  |  |  | MBRT BASE [24 h] | 24 |  | EA3 | 24 | 3-2291 | 3-2291 | ZONE-3 | 27 | SIDEWALKS | SOUTH | FM001 |  | 133 |
| DSC-734 |  | DSC 734 SWC MLK Uknown Unlocated utiltity | 5d | 2024-03-15 A | 2024-04-04 | 3-2290 SS | 40% | 3d | 2024-03-04 | 2024-03-08 | -145d | 0d |  |  |  |  |  |  |  |  |  |  |  |  |  |  |  |
| 3-2292 |  | INST CONDUIT, 27TH TO MLK SOUTH SIDE | 3d | 2024-03-19 A | 2024-04-04 | 3-2291 SS, DSC-734 FF |  | 3d | 2024-03-11 | 2024-03-13 | -145d | 0d |  | MBRT BASE [24 h] | 24 |  | ELECRICAL SUB | 24 | 3-2292 | 3-2292 | ZONE-3 | 27 | SIDEWALKS | SOUTH | FM001 | ELECTRICAL | 133 |
| 3-2293 |  | FORM BUS STATION FOUNDATIONS, 27TH TO MLK SOUTH SIDE | 2d | 2024-03-20 A | 2024-03-27 A | 3-2292 SS | 100% |  | 2024-03-14 | 2024-03-15 |  |  |  | MBRT BASE [16 h] | 16 |  | EA3 | 16 | 3-2293 | 3-2293 | ZONE-3 | 27 | SIDEWALKS | SOUTH | FM001 |  | 133 |
| 3-2294 |  | POUR BUS STATION FOUNDATIONS, 27TH TO MLK SOUTH SIDE | 1d | 2024-03-28 A | 2024-04-04 | 3-2293, 3-2292 FF |  | 2d | 2024-03-18 | 2024-03-18 | -145d | 0d |  | MBRT BASE [8 h] | 8 |  | COM | 8 | 3-2294 | 3-2294 | ZONE-3 | 27 | SIDEWALKS | SOUTH | FM001 |  | 133 |
| 3-2295 |  | GRADE SIDEWALK, 27TH TO MLK SOUTH SIDE | 2d | 2024-04-05 | 2024-04-08 | 3-2294 |  |  |  |  | -145d | 0d |  | MBRT BASE [16 h] | 16 |  | EA3 | 16 | 3-2295 | 3-2295 | ZONE-3 | 27 | SIDEWALKS | SOUTH | FM001 | SIDEWALKS | 133 |
| 3-2580 |  | INSTALL WHEEL GUIDES | 1d | 2024-04-05 | 2024-04-05 | 3-2294 |  |  |  |  | -133d | 12d |  | MBRT NEW [8 h] | 8 |  |  | 8 | 3-2580 | 3-2580 |  |  |  |  |  |  |  |
| 3-2296 |  | POUR SIDEWALK, 27TH TO MLK SOUTH SIDE | 8d | 2024-04-12 | 2024-04-23 | 3-2295 FS+3d, 3-2284, 3-2580 FF |  |  |  |  | -145d | 0d |  | MBRT BASE [64 h] | 64 |  | COM | 64 | 3-2296 | 3-2296 | ZONE-3 | 27 | SIDEWALKS | SOUTH | FM001 |  | 133 |
| 3-2336 |  | Complete MLK SE Corner | 10d | 2024-04-24 | 2024-05-07 | 3-2296, 3-2314 |  |  |  |  | -116d | 0d |  | MBRT NEW [80 h] | 80 |  |  | 0 |  |  |  |  |  |  |  |  | 133 |
| 3-2356 |  | Complete 28th & Madison NE Corner | 10d | 2024-04-24 | 2024-05-07 | 3-2296, 3-2336 SS |  |  |  |  | -116d | 29d |  | MBRT NEW [80 h] | 80 |  |  | 0 |  |  |  |  |  |  |  |  | 133 |
|  | 36 | **MADISON TO E. ARTHUR EAST SIDE** |  | 2023-07-24 | 2023-08-25 |  |  |  |  |  |  |  |  |  |  |  |  |  |  |  |  |  |  |  |  |  |  |
| 3-2298 |  | REM SIDEWALK, MAD TO E ARTHUR EAST SIDE | 2d | 2023-07-24 A | 2023-08-09 A | 3-2003 | 100% |  | 2023-09-28 | 2023-09-29 |  |  |  | MBRT BASE [104 h] | 104 | 104 | EA3 | 104 | 3-2298 | 3-2298 | ZONE-3 | ARTHUR | SIDEWALKS | EAST |  |  |  |
| 3-2299 |  | TRENCH CONDUIT, MAD TO E ARTHUR EAST SIDE | 1d | 2023-07-24 A | 2023-08-09 A | 3-2298 | 100% |  | 2023-10-02 | 2023-10-02 |  |  |  | MBRT BASE [104 h] | 104 | 104 | EA3 | 104 | 3-2299 | 3-2299 | ZONE-3 | ARTHUR | SIDEWALKS | EAST |  |  |  |
| 3-2300 |  | INST CONDUIT, MAD TO E ARTHUR EAST SIDE | 1d | 2023-07-31 A | 2023-08-22 A | 3-2299 SS | 100% |  | 2023-10-02 | 2023-10-02 |  |  |  | MBRT BASE [136 h] | 136 | 136 | ELECRICAL SUB | 136 | 3-2300 | 3-2300 | ZONE-3 | ARTHUR | SIDEWALKS | EAST |  | ELECTRICAL |  |
| 3-2301 |  | GRADE SIDEWALK, MAD TO E ARTHUR EAST SIDE | 2d | 2023-08-23 A | 2023-08-24 A | 3-2300 | 100% |  | 2023-08-16 | 2023-08-17 |  |  |  | MBRT BASE [16 h] | 16 | 16 | EA3 | 16 | 3-2301 | 3-2301 | ZONE-3 | ARTHUR | SIDEWALKS | EAST |  | SIDEWALKS |  |
| 3-2302 |  | POUR SIDEWALK, MAD TO E ARTHUR EAST SIDE | 5d | 2023-08-25 A | 2023-08-25 A | 3-2301 | 100% |  | 2023-08-18 | 2023-08-24 |  |  |  | MBRT BASE [8 h] | 8 | 8 | COM | 8 | 3-2302 | 3-2302 | ZONE-3 | ARTHUR | SIDEWALKS | EAST | FM001 |  |  |

| ID | WBS | Activity | Duration | Start | Finish | Predecessors | Complete | Remaining | Planned start | Planned finish | Total float | Free float | Resources | Cost | Actual cost | user_text2 | user_number6 | user_text10 | user_text8 | MBRT-ZONE | MBRT-LOCATION | MBRT-TYPE | MBRT-SIDE | MBRT-DELAY | MBRT-SCOPE |
| --- | --- | --- | --- | --- | --- | --- | --- | --- | --- | --- | --- | --- | --- | --- | --- | --- | --- | --- | --- | --- | --- | --- | --- | --- | --- |
|  | 37 | **E ARTHUR TO HARRISON EAST SIDE** |  | 2023-07-24 | 2023-11-02 |  |  |  |  |  |  |  |  |  |  |  |  |  |  |  |  |  |  |  |  |
| 3-2304 |  | REM SIDEWALK, E ARTHUR TO HARRISON EAST SIDE | 1d | 2023-07-24 A | 2023-08-09 A | 3-2003 | 100% |  | 2023-10-17 | 2023-10-17 |  |  | MBRT BASE [104 h] | 104 | 104 | EA3 | 104 | 3-2304 | 3-2304 | ZONE-3 | ARTHUR | SIDEWALKS | EAST | FM001 |  |
| 3-2305 |  | TRENCH CONDUIT, E ARTHUR TO HARRISON EAST SIDE | 2d | 2023-07-24 A | 2023-08-09 A | 3-2304 | 100% |  | 2023-10-18 | 2023-10-19 |  |  | MBRT BASE [104 h] | 104 | 104 | EA3 | 104 | 3-2305 | 3-2305 | ZONE-3 | ARTHUR | SIDEWALKS | EAST | FM001 |  |
| 3-2306 |  | INST CONDUIT, E ARTHUR TO HARRISON EAST SIDE | 2d | 2023-07-31 A | 2023-08-21 A | 3-2305 SS | 100% |  | 2023-10-18 | 2023-10-19 |  |  | MBRT BASE [128 h] | 128 | 128 | ELECRICAL SUB | 128 | 3-2306 | 3-2306 | ZONE-3 | ARTHUR | SIDEWALKS | EAST | FM001 | ELECTRICAL |
| 3-2307 |  | GRADE SIDEWALK, E ARTHUR TO HARRISON EAST SIDE | 1d | 2023-08-22 A | 2023-08-22 A | 3-2306 | 100% |  | 2023-08-16 | 2023-08-16 |  |  | MBRT BASE [8 h] | 8 | 8 | EA3 | 8 | 3-2307 | 3-2307 | ZONE-3 | ARTHUR | SIDEWALKS | EAST | FM001 | SIDEWALKS |
| 3-2308 |  | POUR SIDEWALK, E ARTHUR TO HARRISON EAST SIDE | 5d | 2023-08-22 A | 2023-11-02 A | 3-2307, 3-2363 FF | 100% |  | 2023-08-17 | 2023-08-23 |  |  | MBRT BASE [416 h] | 416 | 416 | COM | 416 | 3-2308 | 3-2308 | ZONE-3 | ARTHUR | SIDEWALKS | EAST | FM001 |  |
| 3-2333 |  | DSC 625 Pole 39-01 usuatable soils | 11d | 2023-09-20 A | 2023-10-04 A | 3-2308 SS | 100% |  | 2023-09-11 | 2023-09-25 |  |  | MBRT DSC [88 h] | 88 | 88 |  | 88 |  |  |  |  |  |  |  |  |
| 3-2348 |  | DSC 626 Pole 39-03 Foundation Conflicts | 11d | 2023-09-20 A | 2023-10-04 A | 3-2333 SS, 3-2308 SS | 100% |  | 2023-09-11 | 2023-09-25 |  |  | MBRT DSC [88 h] | 88 | 88 |  | 88 |  |  |  |  |  |  |  |  |
| 3-2363 |  | DSC 627 NWC Harrison Pole 39-06 foundation conflict | 11d | 2023-09-20 A | 2023-10-04 A | 3-2307 | 100% |  | 2023-09-11 | 2023-09-25 |  |  | MBRT DSC [88 h] | 88 | 88 |  | 88 |  |  |  |  |  |  |  |  |
|  | 38 | **E. HARRISON AND MLK SW CORNER** |  | 2024-03-08 | 2024-03-28 |  |  |  |  |  |  |  |  |  |  |  |  |  |  |  |  |  |  |  |  |
| 3-2310 |  | REM SIDEWALK, E HARRISON & MLK SW CORNER | 1d | 2024-03-08 A | 2024-03-11 A | 3-2308, 3-2089, 3-2271 | 100% |  | 2024-03-05 | 2024-03-05 |  |  | MBRT BASE [8 h] | 8 |  | EA3 | 8 | 3-2310 | 3-2310 | ZONE-3 | MLK | SIDEWALKS | SOUTH | FM001 |  |
| 3-2311 |  | TRENCH CONDUIT, E HARRISON & MLK SW CORNER | 1d | 2024-03-11 A | 2024-03-12 A | 3-2310 | 100% |  | 2024-03-06 | 2024-03-06 |  |  | MBRT BASE [8 h] | 8 |  | EA3 | 8 | 3-2311 | 3-2311 | ZONE-3 | MLK | SIDEWALKS | SOUTH | FM001 |  |
| 3-2312 |  | INST CONDUIT, E HARRISON & MLK SW CORNER | 1d | 2024-03-12 A | 2024-03-18 A | 3-2311 SS | 100% |  | 2024-03-06 | 2024-03-06 |  |  | MBRT BASE [8 h] | 8 |  | ELECRICAL SUB | 8 | 3-2312 | 3-2312 | ZONE-3 | MLK | SIDEWALKS | SOUTH | FM001 | ELECTRICAL |
| 3-2313 |  | GRADE SIDEWALK, E HARRISON & MLK SW CORNER | 1d | 2024-03-19 A | 2024-03-20 A | 3-2312 | 100% |  | 2024-03-07 | 2024-03-07 |  |  | MBRT BASE [8 h] | 8 |  | EA3 | 8 | 3-2313 | 3-2313 | ZONE-3 | MLK | SIDEWALKS | SOUTH | FM001 | SIDEWALKS |
| 3-2314 |  | POUR SIDEWALK, E HARRISON & MLK SW CORNER | 3d | 2024-03-22 A | 2024-03-28 A | 3-2313 | 100% |  | 2024-03-08 | 2024-03-12 |  |  | MBRT BASE [24 h] | 24 |  | COM | 24 | 3-2314 | 3-2314 | ZONE-3 | MLK | SIDEWALKS | SOUTH | FM001 |  |
|  | 39 | **E. ARTHUR MLK TO 27TH NORTH SIDE** |  | 2024-03-13 | 2024-04-08 |  |  |  |  |  |  |  |  |  |  |  |  |  |  |  |  |  |  |  |  |
| 3-2316 |  | REM SIDEWALK, E ARTHUR MLK TO 27TH NORTH SIDE | 1d | 2024-03-13 A | 2024-03-13 A | 3-2314 | 100% |  |  |  |  |  | MBRT BASE [8 h] | 8 |  | EA3 | 8 | 3-2316 | 3-2316 | ZONE-3 | MLK | SIDEWALKS | NORTH | FM001 |  |
| 3-2317 |  | TRENCH CONDUIT, E ARTHUR MLK TO 27TH NORTH SIDE | 1d | 2024-03-14 A | 2024-03-14 A | 3-2316 | 100% |  |  |  |  |  | MBRT BASE [8 h] | 8 |  | EA3 | 8 | 3-2317 | 3-2317 | ZONE-3 | MLK | SIDEWALKS | NORTH | FM001 |  |
| 3-2318 |  | INST CONDUIT, E ARTHUR MLK TO 27TH NORTH SIDE | 1d | 2024-03-14 A | 2024-04-02 | 3-2317 SS |  | 1d | 2024-03-14 | 2024-03-14 | -139d | 0d | MBRT BASE [8 h] | 8 |  | ELECRICAL SUB | 8 | 3-2318 | 3-2318 | ZONE-3 | MLK | SIDEWALKS | NORTH | FM001 | ELECTRICAL |
| 3-2319 |  | GRADE SIDEWALK, E ARTHUR MLK TO 27TH NORTH SIDE | 1d | 2024-04-03 | 2024-04-03 | 3-2318 |  |  |  |  | -139d | 0d | MBRT BASE [8 h] | 8 |  | EA3 | 8 | 3-2319 | 3-2319 | ZONE-3 | MLK | SIDEWALKS | NORTH | FM001 | SIDEWALKS |
| 3-2320 |  | POUR SIDEWALK, E ARTHUR MLK TO 27TH NORTH SIDE | 3d | 2024-04-04 | 2024-04-08 | 3-2319 |  |  |  |  | -139d | 0d | MBRT BASE [24 h] | 24 |  | COM | 24 | 3-2320 | 3-2320 | ZONE-3 | MLK | SIDEWALKS | NORTH | FM001 |  |
|  | 40 | **E. HARRISON MLK TO E ARTHUR SOUTH SIDE** |  | 2024-03-21 | 2024-04-11 |  |  |  |  |  |  |  |  |  |  |  |  |  |  |  |  |  |  |  |  |
| 3-2322 |  | REM SIDEWALK, E HARRISON MLK TO E ARTHUR SOUTH SIDE | 1d | 2024-03-21 A | 2024-03-21 A | 3-2010 | 100% |  |  |  |  |  | MBRT BASE [8 h] | 8 |  | EA3 | 8 | 3-2322 | 3-2322 | ZONE-3 | MLK | SIDEWALKS | SOUTH | FM001 |  |
| 3-2323 |  | TRENCH CONDUIT, E HARRISON MLK TO E ARTHUR SOUTH SIDE | 1d | 2024-03-22 A | 2024-03-22 A | 3-2322 | 100% |  |  |  |  |  | MBRT BASE [8 h] | 8 |  | EA3 | 8 | 3-2323 | 3-2323 | ZONE-3 | MLK | SIDEWALKS | SOUTH | FM001 |  |
| 3-2324 |  | INST CONDUIT, E HARRISON MLK TO E ARTHUR SOUTH SIDE | 1d | 2024-03-22 A | 2024-04-02 | 3-2323 SS |  | 1d | 2024-03-22 | 2024-03-22 | -134d | 0d | MBRT BASE [8 h] | 8 |  | ELECRICAL SUB | 8 | 3-2324 | 3-2324 | ZONE-3 | MLK | SIDEWALKS | SOUTH | FM001 | ELECTRICAL |
| 3-2325 |  | GRADE SIDEWALK, E HARRISON MLK TO E ARTHUR SOUTH SIDE | 1d | 2024-04-03 | 2024-04-03 | 3-2324 |  |  |  |  | -134d | 3d | MBRT BASE [8 h] | 8 |  | EA3 | 8 | 3-2325 | 3-2325 | ZONE-3 | MLK | SIDEWALKS | SOUTH | FM001 | SIDEWALKS |
| 3-2326 |  | POUR SIDEWALK, E HARRISON MLK TO E ARTHUR SOUTH SIDE | 3d | 2024-04-09 | 2024-04-11 | 3-2325, 3-2320 |  |  |  |  | -137d | 1d | MBRT BASE [24 h] | 24 |  | COM | 24 | 3-2326 | 3-2326 | ZONE-3 | MLK | SIDEWALKS | SOUTH | FM001 |  |

| ID | WBS | Activity | Duration | Start | Finish | Predecessors | Complete | Remaining | Planned start | Planned finish | Total float | Free float | Resources | Cost | Actual cost | ~SELECT3 | user_text2 | user_number6 | user_text10 | user_text8 | MBRT-ZONE | MBRT-LOCATION | MBRT-TYPE | MBRT-DELAY | MBRT-SCOPE |
| --- | --- | --- | --- | --- | --- | --- | --- | --- | --- | --- | --- | --- | --- | --- | --- | --- | --- | --- | --- | --- | --- | --- | --- | --- | --- |
|  | 41 | **MLK AND E. ARTHUR CENTER ISLAND** |  | 2024-04-24 | 2024-05-10 |  |  |  |  |  |  |  |  |  |  |  |  |  |  |  |  |  |  |  |  |
| 3-2328 |  | REM SIDEWALK, MLK & E ARTHUR CENTER ISLAND | 1d | 2024-04-24 | 2024-04-24 | 3-2326, 3-2295, 3-2296 |  |  |  |  | -145d | 0d | MBRT BASE [8 h] | 8 |  | 133 | EA3 | 8 | 3-2328 | 3-2328 | ZONE-3 | MLK | SIDEWALKS | FM001 |  |
| 3-2329 |  | TRENCH CONDUIT, MLK & E ARTHUR CENTER ISLAND | 1d | 2024-04-25 | 2024-04-25 | 3-2328 |  |  |  |  | -145d | 0d | MBRT BASE [8 h] | 8 |  | 133 | EA3 | 8 | 3-2329 | 3-2329 | ZONE-3 | MLK | SIDEWALKS | FM001 |  |
| 3-2330 |  | INST CONDUIT, MLK & E ARTHUR CENTER ISLAND | 1d | 2024-04-25 | 2024-04-25 | 3-2329 SS |  |  |  |  | -145d | 0d | MBRT BASE [8 h] | 8 |  | 133 | ELECRICAL SUB | 8 | 3-2330 | 3-2330 | ZONE-3 | MLK | SIDEWALKS | FM001 | ELECTRICAL |
| 3-2331 |  | GRADE SIDEWALK, MLK & E ARTHUR CENTER ISLAND | 1d | 2024-04-26 | 2024-04-26 | 3-2330 |  |  |  |  | -145d | 0d | MBRT BASE [8 h] | 8 |  | 133 | EA3 | 8 | 3-2331 | 3-2331 | ZONE-3 | MLK | SIDEWALKS | FM001 | SIDEWALKS |
| 3-2332 |  | POUR SIDEWALK, MLK & E ARTHUR CENTER ISLAND | 10d | 2024-04-29 | 2024-05-10 | 3-2331 |  |  |  |  | -145d | 0d | MBRT BASE [80 h] | 80 |  | 133 | COM | 80 | 3-2332 | 3-2332 | ZONE-3 | MLK | SIDEWALKS | FM001 |  |
|  | 42 | **19TH AND UNION ST** |  | 2021-12-13 | 2024-05-21 |  |  |  |  |  |  |  |  |  |  |  |  |  |  |  |  |  |  |  |  |
| 3-2344 |  | POTHOLE FOUNDATIONS, 19TH & UNION ST | 5d | 2021-12-13 A | 2021-12-20 A | MS-0025 | 100% |  | 2021-12-13 | 2021-12-17 |  |  | MBRT BASE [48 h] | 48 | 48 |  |  | 48 |  |  |  |  |  |  |  |
| 3-2359 |  | DSC 629 P40-07 FOUNDATION CONFLICT | 10d | 2023-10-02 A | 2023-10-13 A | 3-2348 | 100% |  |  |  |  |  | MBRT DSC [80 h] | 80 | 80 |  |  | 80 |  |  |  |  |  |  |  |
| 3-2334 |  | INST ELECTRICAL ROAD CROSSINGS, 19TH & UNION ST | 6d | 2024-01-20 A | 2024-01-25 A | 3-2344, MS-2576, 3-2302, 3-2359, DSC-691 FF | 100% |  | 2024-02-05 | 2024-02-12 |  |  | MBRT BASE [32 h] | 32 | 32 |  | EA3,ELECRICAL SUB | 32 | 3-2334 | 3-2334 | ZONE-3 | 19 | SIDEWALKS |  |  |
| DSC-691 |  | DSC 691 UNKNOWN COM CONDUIT CONFLICT | 1d | 2024-01-20 A | 2024-01-22 A | 3-2260 SS | 100% |  | 2023-12-11 | 2023-12-11 |  |  | MBRT DSC [8 h] | 8 | 8 |  |  | 8 |  |  |  |  |  |  |  |
| 3-2335 |  | CONCRETE PAVE ROAD CROSSING, 19TH & UNION ST | 6d | 2024-03-01 A | 2024-03-08 A | 3-2334, MS-2571 | 100% |  | 2024-03-04 | 2024-03-11 |  |  | MBRT BASE [8 h] | 8 | 48 |  | COL | 8 | 3-2335 | 3-2335 | ZONE-3 | 19 | SIDEWALKS |  |  |
|  | 5 | **SW CORNER** |  | 2024-03-21 | 2024-04-12 |  |  |  |  |  |  |  |  |  |  |  |  |  |  |  |  |  |  |  |  |
| 3-2345 |  | REMOVE SIDEWALK, & Trench Conduit SW CORNER | 4d | 2024-03-21 A | 2024-03-22 A | 3-2335 | 100% |  | 2024-03-25 | 2024-03-28 |  |  | MBRT BASE [32 h] | 32 |  |  | EA3 | 32 | 3-2345 | 3-2345 | ZONE-3 | 19 | SIDEWALKS |  |  |
| DSC-738 |  | DSC 738 SWC 19th and Union duct bank conflict with pedestal | 4d | 2024-03-21 A | 2024-04-05 | 3-2345 SS |  | 4d | 2024-03-04 | 2024-03-07 | -134d | 0d |  |  |  |  |  |  |  |  |  |  |  |  |  |
| 3-2346 |  | INST CONDUIT, SW CORNER | 4d | 2024-03-25 A | 2024-04-05 | 3-2345, DSC-738 FF |  | 4d | 2024-03-29 | 2024-04-03 | -134d | 0d | MBRT BASE [32 h] | 32 |  |  | ELECRICAL SUB | 32 | 3-2346 | 3-2346 | ZONE-3 | 19 | SIDEWALKS |  | ELECTRICAL |
| 3-2347 |  | SIDEWALKS AND CURBS, SW CORNER | 5d | 2024-04-08 | 2024-04-12 | 3-2346 |  |  |  |  | -134d | 0d | MBRT BASE [40 h] | 40 |  |  | COM | 40 | 3-2347 | 3-2347 | ZONE-3 | 19 | SIDEWALKS |  |  |
|  | 4 | **SE CORNER** |  | 2024-04-15 | 2024-04-25 |  |  |  |  |  |  |  |  |  |  |  |  |  |  |  |  |  |  |  |  |
| 3-2341 |  | REMOVE SIDEWALK, SE CORNER | 2d | 2024-04-15 | 2024-04-16 | 3-2347 |  |  |  |  | -134d | 0d | MBRT BASE [16 h] | 16 |  |  | EA3 | 16 | 3-2341 | 3-2341 | ZONE-3 | 19 | SIDEWALKS |  |  |
| 3-2342 |  | INST CONDUIT, SE CORNER | 6d | 2024-04-15 | 2024-04-22 | 3-2341 SS |  |  |  |  | -134d | 0d | MBRT BASE [48 h] | 48 |  |  | ELECRICAL SUB | 48 | 3-2342 | 3-2342 | ZONE-3 | 19 | SIDEWALKS |  | ELECTRICAL |
| 3-2343 |  | SIDEWALKS AND CURBS, SE CORNER | 3d | 2024-04-23 | 2024-04-25 | 3-2342 |  |  |  |  | -134d | 0d | MBRT BASE [24 h] | 24 |  |  | COM | 24 | 3-2343 | 3-2343 | ZONE-3 | 19 | SIDEWALKS |  |  |
|  | 3 | **NE CORNER** |  | 2024-04-26 | 2024-05-08 |  |  |  |  |  |  |  |  |  |  |  |  |  |  |  |  |  |  |  |  |
| 3-2337 |  | REMOVE SIDEWALK, NE CORNER | 2d | 2024-04-26 | 2024-04-29 | 3-2335, 3-2343 |  |  |  |  | -134d | 0d | MBRT BASE [16 h] | 16 |  |  | EA3 | 16 | 3-2337 | 3-2337 | ZONE-3 | 19 | SIDEWALKS |  |  |
| 3-2338 |  | INST CONDUIT, NE CORNER | 6d | 2024-04-26 | 2024-05-03 | 3-2337 SS |  |  |  |  | -134d | 0d | MBRT BASE [48 h] | 48 |  |  | ELECRICAL SUB | 48 | 3-2338 | 3-2338 | ZONE-3 | 19 | SIDEWALKS |  | ELECTRICAL |
| 3-2339 |  | SIDEWALKS AND CURBS, NE CORNER | 3d | 2024-05-06 | 2024-05-08 | 3-2338 |  |  |  |  | -134d | 0d | MBRT BASE [24 h] | 24 |  |  | COM | 24 | 3-2339 | 3-2339 | ZONE-3 | 19 | SIDEWALKS |  |  |

Notes:
- 3-2344: Description: Work has not been able to begin on this work due to TCP delays and then / because of the detour route for paving on Madison Street.

| ID | WBS | Activity | Duration | Start | Finish | Predecessors | Complete | Planned start | Planned finish | Total float | Free float | Resources | Cost | Actual cost | user_text2 | user_number6 | user_text10 | user_text8 | MBRT-ZONE | MBRT-LOCATION | MBRT-TYPE | MBRT-SCOPE | ~SELECT3 | ~SELECT | MBRT-RESP | MBRT-ACTIVITY |
| --- | --- | --- | --- | --- | --- | --- | --- | --- | --- | --- | --- | --- | --- | --- | --- | --- | --- | --- | --- | --- | --- | --- | --- | --- | --- | --- |
|  | 6 | **NW CORNER** |  | 2024-05-09 | 2024-05-21 |  |  |  |  |  |  |  |  |  |  |  |  |  |  |  |  |  |  |  |  |  |
| 3-2349 |  | REMOVE SIDEWALK, NW CORNER | 2d | 2024-05-09 | 2024-05-10 | 3-2347, 3-2339 |  |  |  | -134d | 0d | MBRT BASE [16 h] | 16 |  | EA3 | 16 | 3-2349 | 3-2349 | ZONE-3 | 19 | SIDEWALKS |  |  |  |  |  |
| 3-2350 |  | INST CONDUIT, NW CORNER | 6d | 2024-05-09 | 2024-05-16 | 3-2349 SS |  |  |  | -134d | 0d | MBRT BASE [48 h] | 48 |  | ELECRICAL SUB | 48 | 3-2350 | 3-2350 | ZONE-3 | 19 | SIDEWALKS | ELECTRICAL |  |  |  |  |
| 3-2351 |  | SIDEWALKS AND CURBS, NW CORNER | 3d | 2024-05-17 | 2024-05-21 | 3-2350 |  |  |  | -134d | 0d | MBRT BASE [24 h] | 24 |  | COM | 24 | 3-2351 | 3-2351 | ZONE-3 | 19 | SIDEWALKS |  |  |  |  |  |
|  | 43 | **PINE ST SOUTH SIDE** |  | 2022-04-26 | 2022-05-13 |  |  |  |  |  |  |  |  |  |  |  |  |  |  |  |  |  |  |  |  |  |
| 3-2353 |  | REMOVE SIDEWALKS, PINE ST SOUTH SIDE | 1d | 2022-04-26 A | 2022-04-26 A | 3-2024 | 100% | 2023-07-21 | 2023-07-21 |  |  | MBRT BASE [8 h] | 8 | 8 | EA3 | 8 |  |  | ZONE-3 | PINE | SIDEWALKS |  |  |  |  |  |
| 3-2354 |  | GRADE SIDEWALK, PINE ST SOUTH SIDE | 1d | 2022-04-27 A | 2022-04-27 A | 3-2353 | 100% | 2023-07-24 | 2023-07-24 |  |  | MBRT BASE [8 h] | 8 | 8 | EA3 | 8 |  |  | ZONE-3 | PINE | SIDEWALKS | SIDEWALKS |  |  |  |  |
| 3-2355 |  | POUR SIDEWALK & DRIVEWAY, PINE ST SOUTH SIDE | 4d | 2022-04-28 A | 2022-05-11 A | 3-2354 | 100% | 2023-07-25 | 2023-07-28 |  |  | MBRT BASE [80 h] | 80 | 80 | COM | 80 |  |  | ZONE-3 | PINE | SIDEWALKS |  |  |  |  |  |
| PCO238.01 |  | DSC 172-Pine Sidewalks Pavement underneath | 5d | 2022-05-03 A | 2022-05-13 A | MS-0025 | 100% | 2023-02-27 | 2023-03-03 |  |  | MBRT DSC [64 h] | 64 | 64 |  | 64 |  |  |  |  |  |  |  |  |  |  |
|  | 8 | **MILLING AND PAVING** |  | 2022-05-27 | 2024-05-17 |  |  |  |  |  |  |  |  |  |  |  |  |  |  |  |  |  |  |  |  |  |
| 3-3575 |  | PAVE, PINE STREET | 3d | 2022-05-27 A | 2023-05-30 A | 3-2355 | 100% | 2023-07-03 | 2023-07-06 |  |  | MBRT NEW |  |  | ASPHALT SUB | 2016 | 3-3575 | 3-3575 | ZONE-3 |  |  |  |  |  |  |  |
| 3-2357 |  | MILL, MILLING AND PAVING | 2d | 2024-05-13 | 2024-05-14 | 3-2176, 3-2355, 3-3575, 3-2332, 3-2296 |  |  |  | -145d | 0d | MBRT BASE [16 h] | 16 |  | MILLING SUB | 16 | 3-2357 | 3-2357 | ZONE-3 |  |  |  | 133 |  |  |  |
| 3-2358 |  | PAVE, MILLING AND PAVING | 3d | 2024-05-15 | 2024-05-17 | 3-2357 |  |  |  | -145d | 0d | MBRT BASE [24 h] | 24 |  | ASPHALT SUB | 24 | 3-2358 | 3-2358 | ZONE-3 |  |  |  | 133 |  |  |  |
|  | 9 | **STRIPING AND SIGNS** |  | 2024-05-20 | 2024-07-30 |  |  |  |  |  |  |  |  |  |  |  |  |  |  |  |  |  |  |  |  |  |
| 3-2360 |  | CURE TIME, STRIPING AND SIGNS | 21d | 2024-05-20 | 2024-06-18 | 3-2358, 3-2017 |  |  |  | -145d | 0d | MBRT BASE |  |  |  | 168 | 3-2360 | 3-2360 | ZONE-3 |  |  |  | 133 |  |  |  |
| 3-2361 |  | STRIPING, STRIPING AND SIGNS | 10d | 2024-06-19 | 2024-07-02 | 3-2024, 3-2360, 3-2157, 3-2356, 3-2336 |  |  |  | -145d | 0d | MBRT BASE [80 h] | 80 |  | STRIPING SUB | 80 | 3-2361 | 3-2361 | ZONE-3 |  |  |  | 133 |  |  |  |
| 3-2362 |  | Complete Shelters | 20d | 2024-07-03 | 2024-07-30 | 3-2361 |  |  |  | -145d | 0d | MBRT BASE [160 h] | 160 |  | ZZZ | 160 | 3-2362 | 3-2362 | ZONE-3 |  |  |  | 133 |  |  |  |
|  | 10 | **LANDSCAPING** |  | 2023-05-31 | 2024-06-03 |  |  |  |  |  |  |  |  |  |  |  |  |  |  |  |  |  |  |  |  |  |
| 3-2379 |  | LANDSCAPING, INSTALL TREES, SHRUBS TOPSOIL | 20d | 2023-05-31 A | 2023-06-27 A | 3-2355 | 100% |  |  |  |  | MBRT BASE [160 h] | 160 | 160 |  | 160 | 3-2379 | 3-2379 |  |  |  |  |  |  |  |  |
| 3-2364 |  | INST POUROUS PAVEMENT, POUROUS PAVEMENT | 8d | 2024-05-22 | 2024-06-03 | 3-2351, 3-2355 |  |  |  | -104d | 41d | MBRT BASE [64 h] | 64 |  | COM | 64 | 3-2364 | 3-2364 | ZONE-3 |  |  |  |  |  |  |  |
|  | 11 | **SIGNALS** |  | 2023-04-17 | 2024-07-03 |  |  |  |  |  |  |  |  |  |  |  |  |  |  |  |  |  |  |  |  |  |
|  | 1 | **MADISON AND 16TH** |  | 2023-05-16 | 2024-01-24 |  |  |  |  |  |  |  |  |  |  |  |  |  |  |  |  |  |  |  |  |  |
| 3-2368 |  | INSTALL SERVICE CABINET | 1d | 2023-05-16 A | 2023-05-16 A | 3-2098 | 100% |  |  |  |  | MBRT BASE [8 h] | 8 | 8 |  | 8 | 3-2368 | 3-2368 |  |  |  |  |  |  |  |  |
| 3-7251 |  | SDCI INSPECTION | 1d | 2023-06-02 A | 2023-06-02 A | 3-2368 | 100% |  |  |  |  | MBRT NEW |  |  |  | 8 | 3-7251 | 3-7251 |  |  |  |  |  | x |  |  |
| 3-7252 |  | SDOT INSPECTION | 1d | 2023-06-14 A | 2023-06-14 A | 3-7251 | 100% |  |  |  |  | MBRT NEW |  |  |  | 8 | 3-7252 | 3-7252 |  |  |  |  |  | x |  |  |
| 3-7253 |  | SCL INSPECTION REQUEST | 1d | 2023-10-24 A | 2023-10-24 A | 3-2368, 3-7252 | 100% | 2023-11-08 | 2023-11-08 |  |  | MBRT NEW |  |  |  | 8 | 3-7253 | 3-7253 |  |  |  |  |  | x |  |  |
| 3-2680 |  | INST POLES, MAD AND 16TH | 2d | 2023-11-07 A | 2023-11-08 A | 3-7253 | 100% | 2023-08-31 | 2023-09-01 |  |  | MBRT NEW [16 h] | 16 | 16 | ELECRICAL SUB | 16 | 3-2680 | 3-2680 | ZONE-3 |  | SIGNALS |  |  |  | PRIME |  |
| 3-7254 |  | 30 DAY WAIT FOR SCL TO INSPECT | 21d | 2023-11-29 A | 2023-12-27 A | 3-7253 | 100% | 2023-11-09 | 2023-12-12 |  |  | MBRT NEW |  |  |  | 160 | 3-7254 | 3-7254 |  |  |  |  |  | x |  |  |
| 3-7255 |  | SCL INSPECTION | 1d | 2023-12-28 A | 2023-12-28 A | 3-7254 | 100% | 2023-12-29 | 2023-12-29 |  |  | MBRT NEW |  |  |  | 8 | 3-7255 | 3-7255 |  |  |  |  |  | x |  |  |
| 3-7256 |  | COMMISION NOTIFICATION | 1d | 2023-12-29 A | 2023-12-29 A | 3-7255 | 100% | 2024-01-02 | 2024-01-02 |  |  | MBRT NEW |  |  |  | 8 | 3-7256 | 3-7256 |  |  |  |  |  | x |  |  |
| 3-2367 |  | INST SIGNAL CABINET, MAD AND 16TH | 1d | 2024-01-02 A | 2024-01-12 A | 3-2122, 3-2091 | 100% | 2024-02-05 | 2024-02-05 |  |  | MBRT BASE [72 h] | 72 | 72 | ELECRICAL SUB | 72 | 3-2367 | 3-2367 | ZONE-3 |  | SIGNALS |  |  | X | PRIME |  |
| 3-2369 |  | INST MAST ARMS, MAD AND 16TH | 2d | 2024-01-02 A | 2024-01-12 A | PMP-0016, 3-1663, 3-2680, 3-2367 | 100% | 2024-02-06 | 2024-02-07 |  |  | MBRT BASE [72 h] | 72 | 72 | ELECRICAL SUB | 72 | 3-2369 | 3-2369 | ZONE-3 |  | SIGNALS |  |  |  | PRIME |  |
| 3-2370 |  | INST PPB POST, MAD AND 16TH | 1d | 2024-01-02 A | 2024-01-12 A | 3-2369 | 100% | 2024-02-08 | 2024-02-08 |  |  | MBRT BASE [72 h] | 72 | 72 | ELECRICAL SUB | 72 | 3-2370 | 3-2370 | ZONE-3 |  | SIGNALS |  |  |  | PRIME |  |
| 3-2371 |  | INST PEDISTALS, MAD AND 16TH | 2d | 2024-01-02 A | 2024-01-12 A | 3-2370 | 100% | 2024-02-09 | 2024-02-12 |  |  | MBRT BASE [72 h] | 72 | 72 | ELECRICAL SUB | 72 | 3-2371 | 3-2371 | ZONE-3 |  | SIGNALS |  |  |  | PRIME |  |
| 3-2372 |  | INST WIRING, MAD AND 16TH | 3d | 2024-01-02 A | 2024-01-12 A | 3-2371 | 100% | 2024-02-13 | 2024-02-15 |  |  | MBRT BASE [72 h] | 72 | 72 | ELECRICAL SUB | 72 | 3-2372 | 3-2372 | ZONE-3 |  | SIGNALS |  |  |  | PRIME |  |
| 3-7257 |  | 30 DAY WAIT FOR SCL TO COMMISION | 21d | 2024-01-02 A | 2024-01-11 A | 3-7256 | 100% | 2024-01-03 | 2024-02-01 |  |  | MBRT NEW |  |  |  | 64 | 3-7257 | 3-7257 |  |  |  |  |  | x |  |  |
| 3-2375 |  | COMM SERVICE, MAD AND 16TH | 1d | 2024-01-12 A | 2024-01-12 A | 3-7257 | 100% | 2024-02-02 | 2024-02-02 |  |  | MBRT BASE [8 h] | 8 | 8 | ELECRICAL SUB,CITY | 8 | 3-2375 | 3-2375 | ZONE-3 |  | SIGNALS |  |  |  | PRIME |  |
| 3-2376 |  | NOTIFY SDOT, MAD AND 16TH | 1d | 2024-01-16 A | 2024-01-16 A | 3-2375, 3-2372 | 100% | 2024-02-16 | 2024-02-16 |  |  | MBRT BASE [8 h] | 8 | 8 | ELECRICAL SUB | 8 | 3-2376 | 3-2376 | ZONE-3 |  | SIGNALS |  |  |  | PRIME | NOTIFY |
| 3-2377 |  | SDOT INSPECTION, MAD AND 16TH | 5d | 2024-01-17 A | 2024-01-23 A | 3-2376 | 100% | 2024-02-20 | 2024-02-26 |  |  | MBRT BASE [40 h] | 40 | 40 | CITY | 40 | 3-2377 | 3-2377 | ZONE-3 |  | SIGNALS |  |  |  | SDOT |  |
| 3-2378 |  | COMM SIGNAL, MAD AND 16TH | 1d | 2024-01-24 A | 2024-01-24 A | 3-2377 | 100% | 2024-02-27 | 2024-02-27 |  |  | MBRT BASE [8 h] | 8 | 8 | ELECRICAL SUB,CITY | 8 | 3-2378 | 3-2378 | ZONE-3 |  | SIGNALS | SIGNALS |  | X | PRIME |  |

| ID | WBS | Activity | Duration | Start | Finish | Predecessors | Complete | Planned start | Planned finish | Total float | Free float | Resources | Cost | Actual cost | user_text2 | user_number6 | user_text10 | user_text8 | MBRT-ZONE | MBRT-TYPE | MBRT-RESP | MBRT-DELAY | ~TEXT | MBRT-LOCATION | MBRT-ACTIVITY | ~SELECT | ~SELECT2 | MBRT-SCOPE |
| --- | --- | --- | --- | --- | --- | --- | --- | --- | --- | --- | --- | --- | --- | --- | --- | --- | --- | --- | --- | --- | --- | --- | --- | --- | --- | --- | --- | --- |
|  | 10 | **E HARRISON AND MLK** |  | 2024-01-09 | 2024-06-03 |  |  |  |  |  |  |  |  |  |  |  |  |  |  |  |  |  |  |  |  |  |  |  |
| 3-3120 |  | INST POLES, E HARRISON AND MLK | 4d | 2024-01-09 A | 2024-01-10 A | 3-3115 | 100% | 2023-12-14 | 2023-12-19 |  |  | MBRT NEW [32 h] | 32 | 16 | ELECRICAL SUB | 16 | 3-3120 | 3-3120 | ZONE-3 | SIGNALS | PRIME | FM001 |  |  |  |  |  |  |
| 3-2476 |  | INST SERVICE METER CABINET, E HARRISON & MLK | 1d | 2024-04-09 | 2024-04-09 | 3-2320 |  |  |  | -139d | 0d | MBRT BASE [8 h] | 8 |  | ELECRICAL SUB | 8 | 3-2476 | 3-2476 | ZONE-3 | SIGNALS | PRIME | FM001 | POLES3 |  |  |  |  |  |
| 3-9050 |  | SDCI INSPECTION | 1d | 2024-04-10 | 2024-04-10 | 3-2476 |  |  |  | -139d | 0d | MBRT NEW [8 h] | 8 |  |  | 8 | 3-9050 | 3-9050 |  |  |  |  |  |  |  |  |  |  |
| 3-9070 |  | SDOT INSPECTION | 1d | 2024-04-11 | 2024-04-11 | 3-9050 |  |  |  | -139d | 0d | MBRT NEW [8 h] | 8 |  |  | 8 | 3-9070 | 3-9070 |  |  |  |  |  |  |  |  |  |  |
| 3-9038 |  | SCL INSPECTION REQUEST | 0d | 2024-04-12 | 2024-04-12 | 3-9070 |  |  |  | -139d | 0d | MBRT NEW |  |  | ELECRICAL SUB | 0 | 3-9038 | 3-9038 | ZONE-1 | SIGNALS | PRIME |  |  | BOYLSTON | NOTIFY |  |  |  |
| 3-9039 |  | 30 DAY WAIT FOR SCL TO INSPECT, MAD AND BOYLSTON | 2d | 2024-04-12 | 2024-04-15 | 3-9038 |  |  |  | -139d | 0d | MBRT NEW |  |  | CITY | 16 | 3-9039 | 3-9039 | ZONE-1 | SIGNALS | SCL |  |  | BOYLSTON | INSPECT |  |  |  |
| 3-9079 |  | SCL INSPECTION | 1d | 2024-04-16 | 2024-04-16 | 3-9039 |  |  |  | -139d | 0d | MBRT NEW [8 h] | 8 |  |  | 8 | 3-9079 | 3-9079 |  |  |  |  |  |  |  | x |  |  |
| 3-2481 |  | COMMISION NOTIFICATION | 1d | 2024-04-17 | 2024-04-17 | 3-9079 |  |  |  | -139d | 0d | MBRT BASE |  |  | ELECRICAL SUB | 8 | 3-2481 | 3-2481 | ZONE-3 | SIGNALS | PRIME | FM001 |  |  | NOTIFY |  |  |  |
| 3-2482 |  | 30 DAY WAIT FOR SCL TO COMMISION | 21d | 2024-04-18 | 2024-05-16 | 3-2481 |  |  |  | -139d | 0d | MBRT BASE |  |  | CITY | 168 | 3-2482 | 3-2482 | ZONE-3 | SIGNALS | SCL | FM001 |  |  | INSPECT |  |  |  |
| 3-2483 |  | COMM SERVICE, E HARRISON AND MLK | 1d | 2024-05-17 | 2024-05-17 | 3-2482 |  |  |  | -139d | 0d | MBRT BASE [8 h] | 8 |  | CITY ,ELECRICAL SUB | 8 | 3-2483 | 3-2483 | ZONE-3 | SIGNALS | PRIME | FM001 |  |  |  |  |  |  |
| 3-2475 |  | INST SIGNAL CABINET, E HARRISON & MLK | 1d | 2024-05-20 | 2024-05-20 | 3-2332, 3-2483, 3-2402 |  |  |  | -139d | 0d | MBRT BASE [8 h] | 8 |  | ELECRICAL SUB | 8 | 3-2475 | 3-2475 | ZONE-3 | SIGNALS | PRIME | FM001 | POLES3 |  |  | signals | P1 |  |
| 3-2477 |  | INST MAST ARMS, E HARRISON AND MLK | 1d | 2024-05-21 | 2024-05-21 | 3-2476, 3-2475 |  |  |  | -139d | 0d | MBRT BASE [8 h] | 8 |  | ELECRICAL SUB | 8 | 3-2477 | 3-2477 | ZONE-3 | SIGNALS | PRIME | FM001 | POLES3 |  |  | signals | P1 |  |
| 3-2478 |  | INST PPB POST, E HARRISON AND MLK | 1d | 2024-05-22 | 2024-05-22 | 3-2477 |  |  |  | -139d | 0d | MBRT BASE [8 h] | 8 |  | ELECRICAL SUB | 8 | 3-2478 | 3-2478 | ZONE-3 | SIGNALS | PRIME | FM001 | POLES3 |  |  | signals | P1 |  |
| 3-2479 |  | INST PEDISTALS, E HARRISON AND MLK | 1d | 2024-05-23 | 2024-05-23 | 3-2478 |  |  |  | -139d | 0d | MBRT BASE [8 h] | 8 |  | ELECRICAL SUB | 8 | 3-2479 | 3-2479 | ZONE-3 | SIGNALS | PRIME | FM001 | POLES3 |  |  | signals | P1 |  |
| 3-2480 |  | INST WIRING, E HARRISON AND MLK | 3d | 2024-05-24 | 2024-05-29 | 3-2479 |  |  |  | -139d | 0d | MBRT BASE [24 h] | 24 |  | ELECRICAL SUB | 24 | 3-2480 | 3-2480 | ZONE-3 | SIGNALS | PRIME | FM001 | POLES3 |  |  | signals | P1 |  |
| 3-2484 |  | NOTIFY SDOT, E HARRISON AND MLK | 1d | 2024-05-30 | 2024-05-30 | 3-2483, 3-2480 |  |  |  | -139d | 0d | MBRT BASE |  |  | ELECRICAL SUB | 8 | 3-2484 | 3-2484 | ZONE-3 | SIGNALS | PRIME | FM001 |  |  | NOTIFY | signals | P1 |  |
| 3-2485 |  | SDOT INSPECTION, E HARRISON AND MLK | 1d | 2024-05-31 | 2024-05-31 | 3-2484 |  |  |  | -139d | 0d | MBRT BASE [8 h] | 8 |  | CITY | 8 | 3-2485 | 3-2485 | ZONE-3 | SIGNALS | SDOT | FM001 |  |  |  | signals | P1 |  |
| 3-2486 |  | COMM SIGNAL, E HARRISON AND MLK | 1d | 2024-06-03 | 2024-06-03 | 3-2485 |  |  |  | -139d | 1d | MBRT BASE [8 h] | 8 |  | ELECRICAL SUB,CITY | 8 | 3-2486 | 3-2486 | ZONE-3 | SIGNALS | PRIME | FM001 |  |  |  | signals | P1 | SIGNALS |
|  | 11 | **19TH AND UNION** |  | 2024-04-15 | 2024-07-03 |  |  |  |  |  |  |  |  |  |  |  |  |  |  |  |  |  |  |  |  |  |  |  |
| 3-2489 |  | INST SERVICE METER CABINET, 19TH & UNION | 2d | 2024-04-15 | 2024-04-16 | 3-2347 |  |  |  | -121d | 0d | MBRT BASE [16 h] | 16 |  | ELECRICAL SUB | 16 | 3-2489 | 3-2489 | ZONE-3 | SIGNALS | PRIME |  |  |  |  |  |  |  |
| 3-6038 |  | SCL INSPECTION REQUEST | 0d | 2024-04-15 | 2024-04-15 | 3-2347 |  |  |  | -121d | 0d | MBRT NEW |  |  | ELECRICAL SUB | 0 | 3-6038 | 3-6038 | ZONE-1 | SIGNALS | PRIME |  |  | BOYLSTON | NOTIFY |  |  |  |
| 3-6039 |  | 30 DAY WAIT FOR SCL TO INSPECT, MAD AND BOYLSTON | 2d | 2024-04-15 | 2024-04-16 | 3-6038 |  |  |  | -121d | 0d | MBRT NEW |  |  | CITY | 16 | 3-6039 | 3-6039 | ZONE-1 | SIGNALS | SCL |  |  | BOYLSTON | INSPECT |  |  |  |
| 3-2490 |  | INST MAST ARMS, 19TH AND UNION | 4d | 2024-04-17 | 2024-04-22 | 3-2489 |  |  |  | -104d | 0d | MBRT BASE [32 h] | 32 |  | ELECRICAL SUB | 32 | 3-2490 | 3-2490 | ZONE-3 | SIGNALS | PRIME |  |  |  |  |  |  |  |
| 3-6050 |  | SDCI INSPECTION | 1d | 2024-04-17 | 2024-04-17 | 3-2489 |  |  |  | -121d | 0d | MBRT NEW [8 h] | 8 |  |  | 8 | 3-6050 | 3-6050 |  |  |  |  |  |  |  |  |  |  |
| 3-6079 |  | SCL INSPECTION | 1d | 2024-04-17 | 2024-04-17 | 3-6039 |  |  |  | -121d | 0d | MBRT NEW [8 h] | 8 |  |  | 8 | 3-6079 | 3-6079 |  |  |  |  |  |  |  | x |  |  |
| 3-2494 |  | COMMISION NOTIFICATION | 1d | 2024-04-18 | 2024-04-18 | 3-6079 |  |  |  | -121d | 0d | MBRT BASE |  |  | ELECRICAL SUB | 8 | 3-2494 | 3-2494 | ZONE-3 | SIGNALS | PRIME |  |  |  | NOTIFY |  |  |  |
| 3-6070 |  | SDOT INSPECTION | 1d | 2024-04-18 | 2024-04-18 | 3-6050 |  |  |  | -121d | 0d | MBRT NEW [8 h] | 8 |  |  | 8 | 3-6070 | 3-6070 |  |  |  |  |  |  |  |  |  |  |
| 3-2495 |  | 30 DAY WAIT FOR SCL TO COMMISION | 21d | 2024-04-19 | 2024-05-17 | 3-2494, 3-6070 |  |  |  | -121d | 0d | MBRT BASE |  |  | CITY | 168 | 3-2495 | 3-2495 | ZONE-3 | SIGNALS | SCL |  |  |  | INSPECT |  |  |  |
| 3-2496 |  | COMM SERVICE, 19TH AND UNION | 1d | 2024-05-20 | 2024-05-20 | 3-2495 |  |  |  | -121d | 21d | MBRT BASE [8 h] | 8 |  | CITY ,ELECRICAL SUB | 8 | 3-2496 | 3-2496 | ZONE-3 | SIGNALS | PRIME |  |  |  |  |  |  |  |
| 3-2488 |  | INST SIGNAL CABINET, 19TH AND UNION | 1d | 2024-06-20 | 2024-06-20 | 3-2351, PMP-31, 3-2496, 1-0878 |  |  |  | -142d | 0d | MBRT BASE [8 h] | 8 |  | ELECRICAL SUB | 8 | 3-2488 | 3-2488 | ZONE-3 | SIGNALS | PRIME |  |  |  |  | signals | P3 |  |
| 3-2491 |  | INST PPB POST, 19TH AND UNION | 1d | 2024-06-21 | 2024-06-21 | 3-2490, 3-2358, 3-2488 |  |  |  | -142d | 0d | MBRT BASE [8 h] | 8 |  | ELECRICAL SUB | 8 | 3-2491 | 3-2491 | ZONE-3 | SIGNALS | PRIME |  |  |  |  | signals | P3 |  |
| 3-2492 |  | INST PEDISTALS, 19TH AND UNION | 1d | 2024-06-24 | 2024-06-24 | 3-2491 |  |  |  | -142d | 0d | MBRT BASE [8 h] | 8 |  | ELECRICAL SUB | 8 | 3-2492 | 3-2492 | ZONE-3 | SIGNALS | PRIME |  |  |  |  | signals | P3 |  |
| 3-2493 |  | INST WIRING, 19TH AND UNION | 4d | 2024-06-25 | 2024-06-28 | 3-2492 |  |  |  | -142d | 0d | MBRT BASE [32 h] | 32 |  | ELECRICAL SUB | 32 | 3-2493 | 3-2493 | ZONE-3 | SIGNALS | PRIME |  |  |  |  | signals | P3 |  |
| 3-2497 |  | NOTIFY SDOT, 19TH AND UNION | 1d | 2024-07-01 | 2024-07-01 | 3-2496, 3-2493 |  |  |  | -136d | 0d | MBRT BASE |  |  | ELECRICAL SUB | 8 | 3-2497 | 3-2497 | ZONE-3 | SIGNALS | PRIME |  |  |  | NOTIFY | signals | P3 |  |
| 3-2498 |  | SDOT INSPECTION, 19TH AND UNION | 1d | 2024-07-02 | 2024-07-02 | 3-2497 |  |  |  | -136d | 0d | MBRT BASE [8 h] | 8 |  | CITY | 8 | 3-2498 | 3-2498 | ZONE-3 | SIGNALS | SDOT |  |  |  |  | signals | P3 |  |
| 3-2499 |  | COMM SIGNAL, 19TH AND UNION | 1d | 2024-07-03 | 2024-07-03 | 3-2498 |  |  |  | -136d | 0d | MBRT BASE [8 h] | 8 |  | ELECRICAL SUB,CITY | 8 | 3-2499 | 3-2499 | ZONE-3 | SIGNALS | PRIME |  |  |  |  | signals | P3 | SIGNALS |

| ID | WBS | Activity | Duration | Start | Finish | Predecessors | Complete | Planned start | Planned finish | Total float | Free float | Constraint | Resources | Cost | Actual cost | user_text2 | user_number6 | user_text10 | ~TEXT | user_text8 | MBRT-ZONE | MBRT-TYPE | MBRT-RESP | MBRT-LOCATION | MBRT-ACTIVITY | ~SELECT | ~SELECT2 | MBRT-SCOPE |
| --- | --- | --- | --- | --- | --- | --- | --- | --- | --- | --- | --- | --- | --- | --- | --- | --- | --- | --- | --- | --- | --- | --- | --- | --- | --- | --- | --- | --- |
|  | 2 | **MADISON AND 17TH** |  | 2024-01-03 | 2024-04-16 |  |  |  |  |  |  |  |  |  |  |  |  |  |  |  |  |  |  |  |  |  |  |  |
| 3-2381 |  | INST SERVICE METER CABINET, MAD & 17TH | 1d | 2024-01-03 A | 2024-01-05 A | 3-7955 | 100% | 2024-02-22 | 2024-02-22 |  |  |  | MBRT BASE [24 h] | 24 | 24 | ELECRICAL SUB | 24 | 3-2381 | POLES4 | 3-2381 | ZONE-3 | SIGNALS | PRIME |  |  |  |  |  |
| 3-7050 |  | SDCI INSPECTION | 1d | 2024-01-08 A | 2024-01-08 A | 3-2381 | 100% | 2024-02-23 | 2024-02-23 |  |  |  | MBRT NEW |  |  |  | 8 | 3-7050 |  | 3-7050 |  |  |  |  |  |  |  |  |
| 3-7038 |  | SCL INSPECTION REQUEST | 2d | 2024-01-09 A | 2024-01-10 A | 3-7070 | 100% | 2024-02-27 | 2024-02-28 |  |  |  | MBRT NEW |  |  | ELECRICAL SUB | 16 | 3-7038 |  | 3-7038 | ZONE-1 | SIGNALS | PRIME | BOYLSTON | NOTIFY |  |  |  |
| 3-7070 |  | SDOT INSPECTION | 1d | 2024-01-09 A | 2024-01-09 A | 3-7050 | 100% | 2024-02-26 | 2024-02-26 |  |  |  | MBRT NEW |  |  |  | 8 | 3-7070 |  | 3-7070 |  |  |  |  |  |  |  |  |
| 3-7039 |  | 30 DAY WAIT FOR SCL TO INSPECT, MAD AND BOYLSTON | 21d | 2024-01-11 A | 2024-01-24 A | 3-7038 | 100% | 2024-02-27 | 2024-03-26 |  |  |  | MBRT NEW |  |  | CITY | 72 | 3-7039 |  | 3-7039 | ZONE-1 | SIGNALS | SCL | BOYLSTON | INSPECT |  |  |  |
| 3-7079 |  | SCL INSPECTION | 1d | 2024-01-25 A | 2024-01-25 A | 3-7039 | 100% | 2024-02-16 | 2024-02-16 |  |  |  | MBRT NEW |  |  |  | 8 | 3-7079 |  | 3-7079 |  |  |  |  |  | x |  |  |
| 3-2384 |  | COMMISION NOTIFICATION | 1d | 2024-01-26 A | 2024-01-26 A | 3-7050 | 100% | 2024-03-28 | 2024-03-28 |  |  |  | MBRT BASE |  |  | ELECRICAL SUB | 8 | 3-2384 | POLES4 | 3-2384 | ZONE-3 | SIGNALS | PRIME |  | NOTIFY |  |  |  |
| 3-2385 |  | 30 DAY WAIT FOR SCL TO COMMISION | 21d | 2024-01-29 A | 2024-02-08 A | 3-2384 | 100% | 2024-03-29 | 2024-04-26 |  |  |  | MBRT BASE |  |  | CITY | 72 | 3-2385 | POLES4 | 3-2385 | ZONE-3 | SIGNALS | SCL |  | INSPECT |  |  |  |
| 3-2386 |  | COMM SERVICE, MAD AND 17TH | 1d | 2024-02-09 A | 2024-02-09 A | 3-2385, 3-7079 | 100% | 2024-02-20 | 2024-02-20 |  |  |  | MBRT BASE [8 h] | 8 | 8 | ELECRICAL SUB,CITY | 8 | 3-2386 | POLES4 | 3-2386 | ZONE-3 | SIGNALS | PRIME |  |  |  |  |  |
| 3-2380 |  | INST SIGNAL CABINET, MAD AND 17TH | 1d | 2024-04-05 | 2024-04-05 | 3-2150, 3-2386, 3-2487, 2-1593 |  |  |  | -136d | 0d |  | MBRT BASE [8 h] | 8 |  | ELECRICAL SUB | 8 | 3-2380 | POLES4 | 3-2380 | ZONE-3 | SIGNALS | PRIME |  |  | signals | P1 |  |
| 3-2487 |  | Complete UG Elec & Sidewalks NWC 17th | 0d | 2024-04-05 | 2024-04-05 | 3-2386 |  |  |  | -136d | 0d | start on or after 2024-04-05 | MBRT NEW |  |  |  | 0 |  |  |  |  |  |  |  |  | signals | P1 |  |
| 3-2382 |  | INST PPB POST, MAD AND 17TH | 2d | 2024-04-08 | 2024-04-09 | 3-2381, 3-2380 |  |  |  | -136d | 0d |  | MBRT BASE [16 h] | 16 |  | ELECRICAL SUB | 16 | 3-2382 | POLES4 | 3-2382 | ZONE-3 | SIGNALS | PRIME |  |  | signals | P1 |  |
| 3-2383 |  | INST WIRING, MAD AND 17TH | 2d | 2024-04-10 | 2024-04-11 | 3-2382 |  |  |  | -136d | 0d |  | MBRT BASE [16 h] | 16 |  | ELECRICAL SUB | 16 | 3-2383 | POLES4 | 3-2383 | ZONE-3 | SIGNALS | PRIME |  |  | signals | P1 |  |
| 3-2387 |  | NOTIFY SDOT, MAD AND 17TH | 1d | 2024-04-12 | 2024-04-12 | 3-2386, 3-2383 |  |  |  | -136d | 0d |  | MBRT BASE |  |  | ELECRICAL SUB | 8 | 3-2387 | POLES4 | 3-2387 | ZONE-3 | SIGNALS | PRIME |  | NOTIFY | signals | P1 |  |
| 3-2388 |  | SDOT INSPECTION, MAD AND 17TH | 1d | 2024-04-15 | 2024-04-15 | 3-2387 |  |  |  | -136d | 0d |  | MBRT BASE [8 h] | 8 |  | CITY | 8 | 3-2388 | POLES4 | 3-2388 | ZONE-3 | SIGNALS | SDOT |  |  | signals | P1 |  |
| 3-2389 |  | COMM SIGNAL, MAD AND 17TH | 1d | 2024-04-16 | 2024-04-16 | 3-2388 |  |  |  | -136d | 0d |  | MBRT BASE [8 h] | 8 |  | ELECRICAL SUB,CITY | 8 | 3-2389 | POLES4 | 3-2389 | ZONE-3 | SIGNALS | PRIME |  |  | signals | P1 | SIGNALS |
|  | 3 | **MADISON AND 18TH** |  | 2023-07-03 | 2024-05-14 |  |  |  |  |  |  |  |  |  |  |  |  |  |  |  |  |  |  |  |  |  |  |  |
| 3-3105 |  | INSTALL POLES, MAD AND 18TH | 2d | 2023-07-03 A | 2023-07-05 A | 3-2091 SS | 100% | 2023-07-25 | 2023-07-26 |  |  |  | MBRT NEW [16 h] | 16 | 16 | ELECRICAL SUB | 16 | 3-3105 |  | 3-3105 | ZONE-3 | SIGNALS | PRIME |  |  |  |  |  |
| 3-2392 |  | INST SERVICE METER CABINET, MAD & 18TH | 1d | 2024-02-05 A | 2024-02-05 A | 3-2125, 3-2146 SS | 100% | 2024-02-22 | 2024-02-22 |  |  |  | MBRT BASE [8 h] | 8 | 8 | ELECRICAL SUB | 8 | 3-2392 | POLES3 | 3-2392 | ZONE-3 | SIGNALS | PRIME |  |  |  |  |  |
| 3-0050 |  | SDCI INSPECTION | 1d | 2024-02-06 A | 2024-02-06 A | 3-2392 | 100% | 2024-02-23 | 2024-02-23 |  |  |  | MBRT NEW |  |  |  | 8 | 3-0050 |  | 3-0050 |  |  |  |  |  |  |  |  |
| 3-0070 |  | SDOT INSPECTION | 1d | 2024-02-07 A | 2024-02-07 A | 3-0050 | 100% | 2024-02-26 | 2024-02-26 |  |  |  | MBRT NEW |  |  |  | 8 | 3-0070 |  | 3-0070 |  |  |  |  |  |  |  |  |
| 3-0038 |  | SCL INSPECTION REQUEST | 0d | 2024-02-14 A | 2024-02-14 A | 3-0070 | 100% | 2024-02-27 | 2024-02-27 |  |  |  | MBRT NEW |  |  | ELECRICAL SUB | 0 | 3-0038 |  | 3-0038 | ZONE-1 | SIGNALS | PRIME | BOYLSTON | NOTIFY |  |  |  |
| 3-0039 |  | 30 DAY WAIT FOR SCL TO INSPECT, MAD AND BOYLSTON | 21d | 2024-02-15 A | 2024-03-05 A | 3-0038 | 100% | 2024-02-27 | 2024-03-26 |  |  |  | MBRT NEW |  |  | CITY | 88 | 3-0039 |  | 3-0039 | ZONE-1 | SIGNALS | SCL | BOYLSTON | INSPECT |  |  |  |
| 3-0079 |  | SCL INSPECTION | 1d | 2024-03-06 A | 2024-03-06 A | 3-0039 | 100% |  |  |  |  |  | MBRT NEW [8 h] | 8 |  |  | 8 | 3-0079 |  | 3-0079 |  |  |  |  |  | x |  |  |
| 3-2397 |  | COMMISION NOTIFICATION | 0d | 2024-03-07 A | 2024-03-07 A | 3-0079 | 100% |  |  |  |  |  | MBRT BASE |  |  | ELECRICAL SUB | 0 | 3-2397 |  | 3-2397 | ZONE-3 | SIGNALS | PRIME |  | NOTIFY |  |  |  |
| 3-2398 |  | 30 DAY WAIT FOR SCL TO COMMISION | 2d | 2024-03-07 A | 2024-03-07 A | 3-2397 | 100% | 2024-03-07 | 2024-03-08 |  |  |  | MBRT BASE |  |  | CITY | 16 | 3-2398 |  | 3-2398 | ZONE-3 | SIGNALS | SCL |  | INSPECT |  |  |  |
| 3-2399 |  | COMM SERVICE, MAD AND 18TH | 1d | 2024-03-08 A | 2024-03-08 A | 3-2398 | 100% | 2024-03-11 | 2024-03-11 |  |  |  | MBRT BASE [8 h] | 8 |  | CITY ,ELECRICAL SUB | 8 | 3-2399 |  | 3-2399 | ZONE-3 | SIGNALS | PRIME |  |  |  |  |  |
| 3-2391 |  | INST SIGNAL CABINET, MAD AND 18TH | 1d | 2024-05-01 | 2024-05-01 | PMP-26, PMP-0016, 3-2125, 3-2399, 3-2156, 3-2383, 2-1640 |  |  |  | -136d | 0d |  | MBRT BASE [8 h] | 8 |  | ELECRICAL SUB | 8 | 3-2391 | POLES3 | 3-2391 | ZONE-3 | SIGNALS | PRIME |  |  | signals | P1 |  |
| 3-2393 |  | INST MAST ARMS, MAD AND 18TH | 1d | 2024-05-02 | 2024-05-02 | 3-2392, PMP-0016, 3-2391 |  |  |  | -136d | 0d |  | MBRT BASE [8 h] | 8 |  | ELECRICAL SUB | 8 | 3-2393 | POLES3 | 3-2393 | ZONE-3 | SIGNALS | PRIME |  |  | signals | P1 |  |
| 3-2394 |  | INST PPB POST, MAD AND 18TH | 1d | 2024-05-03 | 2024-05-03 | 3-2393 |  |  |  | -136d | 0d |  | MBRT BASE [8 h] | 8 |  | ELECRICAL SUB | 8 | 3-2394 | POLES3 | 3-2394 | ZONE-3 | SIGNALS | PRIME |  |  | signals | P1 |  |
| 3-2395 |  | INST PEDISTALS, MAD AND 18TH | 1d | 2024-05-06 | 2024-05-06 | 3-2394 |  |  |  | -136d | 0d |  | MBRT BASE [8 h] | 8 |  | ELECRICAL SUB | 8 | 3-2395 | POLES3 | 3-2395 | ZONE-3 | SIGNALS | PRIME |  |  | signals | P1 |  |
| 3-2396 |  | INST WIRING, MAD AND 18TH | 2d | 2024-05-07 | 2024-05-08 | 3-2395 |  |  |  | -136d | 0d |  | MBRT BASE [16 h] | 16 |  | ELECRICAL SUB | 16 | 3-2396 | POLES3 | 3-2396 | ZONE-3 | SIGNALS | PRIME |  |  | signals | P1 |  |
| 3-2400 |  | NOTIFY SDOT, MAD AND 18TH | 1d | 2024-05-09 | 2024-05-09 | 3-2399, 3-2396 |  |  |  | -136d | 0d |  | MBRT BASE |  |  | ELECRICAL SUB | 8 | 3-2400 |  | 3-2400 | ZONE-3 | SIGNALS | PRIME |  | NOTIFY | signals | P1 |  |
| 3-2401 |  | SDOT INSPECTION, MAD AND 18TH | 2d | 2024-05-10 | 2024-05-13 | 3-2400 |  |  |  | -136d | 0d |  | MBRT BASE [16 h] | 16 |  | CITY | 16 | 3-2401 |  | 3-2401 | ZONE-3 | SIGNALS | SDOT |  |  | signals | P1 |  |
| 3-2402 |  | COMM SIGNAL, MAD AND 18TH | 1d | 2024-05-14 | 2024-05-14 | 3-2401, 3-2389 |  |  |  | -136d | 3d |  | MBRT BASE [8 h] | 8 |  | ELECRICAL SUB,CITY | 8 | 3-2402 | POLES4 | 3-2402 | ZONE-3 | SIGNALS | PRIME |  |  | signals | P1 | SIGNALS |

| ID | WBS | Activity | Duration | Start | Finish | Predecessors | Complete | Planned start | Planned finish | Total float | Free float | Resources | Cost | Actual cost | ~SELECT | user_text2 | user_number6 | user_text10 | ~TEXT | user_text8 | MBRT-ZONE | MBRT-TYPE | MBRT-RESP | MBRT-LOCATION | MBRT-ACTIVITY | ~SELECT2 | MBRT-SCOPE |
| --- | --- | --- | --- | --- | --- | --- | --- | --- | --- | --- | --- | --- | --- | --- | --- | --- | --- | --- | --- | --- | --- | --- | --- | --- | --- | --- | --- |
|  | 4 | **MADISON AND 19TH** |  | 2024-04-24 | 2024-06-28 |  |  |  |  |  |  |  |  |  |  |  |  |  |  |  |  |  |  |  |  |  |  |
| 3-2405 |  | INST SERVICE METER CABINET, MAD & 19TH | 1d | 2024-04-24 | 2024-04-24 | 3-2176, 3-2162, 3-2140, 3-9673 |  |  |  | -140d | 0d | MBRT BASE [8 h] | 8 |  | signals | ELECRICAL SUB | 8 | 3-2405 | POLES3 | 3-2405 | ZONE-3 | SIGNALS | PRIME |  |  |  |  |
| 3-1050 |  | SDCI INSPECTION | 1d | 2024-04-25 | 2024-04-25 | 3-2405 |  |  |  | -140d | 0d | MBRT NEW [8 h] | 8 |  | signals |  | 8 | 3-1050 |  | 3-1050 |  |  |  |  |  |  |  |
| 3-1070 |  | SDOT INSPECTION | 1d | 2024-04-26 | 2024-04-26 | 3-1050 |  |  |  | -140d | 0d | MBRT NEW [8 h] | 8 |  | signals |  | 8 | 3-1070 |  | 3-1070 |  |  |  |  |  |  |  |
| 3-1038 |  | SCL INSPECTION REQUEST | 0d | 2024-04-29 | 2024-04-29 | 3-1070 |  |  |  | -140d | 0d | MBRT NEW |  |  | signals | ELECRICAL SUB | 0 | 3-1038 |  | 3-1038 | ZONE-1 | SIGNALS | PRIME | BOYLSTON | NOTIFY |  |  |
| 3-1039 |  | 30 DAY WAIT FOR SCL TO INSPECT, MAD AND BOYLSTON | 2d | 2024-04-29 | 2024-04-30 | 3-1038 |  |  |  | -140d | 0d | MBRT NEW |  |  | signals | CITY | 16 | 3-1039 |  | 3-1039 | ZONE-1 | SIGNALS | SCL | BOYLSTON | INSPECT |  |  |
| 3-1079 |  | SCL INSPECTION | 1d | 2024-05-01 | 2024-05-01 | 3-1039 |  |  |  | -140d | 0d | MBRT NEW [8 h] | 8 |  | signals |  | 8 | 3-1079 |  | 3-1079 |  |  |  |  |  |  |  |
| 3-2410 |  | COMMISION NOTIFICATION | 1d | 2024-05-02 | 2024-05-02 | 3-1079 |  |  |  | -140d | 0d | MBRT BASE |  |  | signals | ELECRICAL SUB | 8 | 3-2410 |  | 3-2410 | ZONE-3 | SIGNALS | PRIME |  | NOTIFY |  |  |
| 3-2411 |  | 30 DAY WAIT FOR SCL TO COMMISION | 21d | 2024-05-03 | 2024-06-03 | 3-2410 |  |  |  | -140d | 0d | MBRT BASE |  |  | signals | CITY | 168 | 3-2411 |  | 3-2411 | ZONE-3 | SIGNALS | SCL |  | INSPECT |  |  |
| 3-2412 |  | COMM SERVICE, MAD AND 19TH | 1d | 2024-06-04 | 2024-06-04 | 3-2411 |  |  |  | -140d | 0d | MBRT BASE [8 h] | 8 |  | signals | CITY ,ELECRICAL SUB | 8 | 3-2412 |  | 3-2412 | ZONE-3 | SIGNALS | PRIME |  |  |  |  |
| 3-2404 |  | INST SIGNAL CABINET, MAD AND 19TH | 1d | 2024-06-05 | 2024-06-05 | 3-2176, 3-2412, 3-9673, 3-2396, 3-2402, 3-2486 |  |  |  | -140d | 0d | MBRT BASE [8 h] | 8 |  | signals | ELECRICAL SUB | 8 | 3-2404 | POLES3 | 3-2404 | ZONE-3 | SIGNALS | PRIME |  |  | P1 |  |
| 3-2406 |  | INST MAGNOMETERS, MAD AND 19TH | 1d | 2024-06-06 | 2024-06-06 | 3-2405, 3-2404 |  |  |  | -140d | 0d | MBRT BASE [8 h] | 8 |  | signals |  | 8 | 3-2406 | POLES3 | 3-2406 | ZONE-3 | SIGNALS | PRIME |  |  | P1 |  |
| 3-2407 |  | INST PPB POST, MAD AND 19TH | 3d | 2024-06-07 | 2024-06-11 | 3-2406 |  |  |  | -140d | 0d | MBRT BASE [24 h] | 24 |  | signals | ELECRICAL SUB | 24 | 3-2407 | POLES3 | 3-2407 | ZONE-3 | SIGNALS | PRIME |  |  | P1 |  |
| 3-2408 |  | INST PEDISTALS, MAD AND 19TH | 3d | 2024-06-12 | 2024-06-14 | 3-2407 |  |  |  | -140d | 0d | MBRT BASE [24 h] | 24 |  | signals | ELECRICAL SUB | 24 | 3-2408 | POLES3 | 3-2408 | ZONE-3 | SIGNALS | PRIME |  |  | P1 |  |
| 3-2409 |  | INST WIRING, MAD AND 19TH | 3d | 2024-06-17 | 2024-06-19 | 3-2408 |  |  |  | -140d | 0d | MBRT BASE [24 h] | 24 |  | signals | ELECRICAL SUB | 24 | 3-2409 | POLES3 | 3-2409 | ZONE-3 | SIGNALS | PRIME |  |  | P1 |  |
| 3-2413 |  | NOTIFY SDOT, MAD AND 19TH | 1d | 2024-06-20 | 2024-06-20 | 3-2412, 3-2409 |  |  |  | -127d | 0d | MBRT BASE |  |  | signals | ELECRICAL SUB | 8 | 3-2413 |  | 3-2413 | ZONE-3 | SIGNALS | PRIME |  | NOTIFY | P1 |  |
| 3-2414 |  | SDOT INSPECTION, MAD AND 19TH | 5d | 2024-06-21 | 2024-06-27 | 3-2413 |  |  |  | -127d | 0d | MBRT BASE [40 h] | 40 |  | signals | CITY | 40 | 3-2414 |  | 3-2414 | ZONE-3 | SIGNALS | SDOT |  |  | P1 |  |
| 3-2415 |  | COMM SIGNAL, MAD AND 19TH | 1d | 2024-06-28 | 2024-06-28 | 3-2414 |  |  |  | -127d | 0d | MBRT BASE [8 h] | 8 |  | signals | ELECRICAL SUB,CITY | 8 | 3-2415 | POLES4 | 3-2415 | ZONE-3 | SIGNALS | PRIME |  |  | P1 | SIGNALS |
|  | 5 | **MADISON AND 20TH** |  | 2023-04-17 | 2024-01-31 |  |  |  |  |  |  |  |  |  |  |  |  |  |  |  |  |  |  |  |  |  |  |
| DSC-448 |  | DSC 448 Bouolder Conflict P34-06 Foundation | 5d | 2023-04-17 A | 2023-04-21 A | MS-0025 | 100% | 2023-05-31 | 2023-06-06 |  |  | MBRT DSC [32 h] | 32 | 32 |  |  | 32 | DSC-448 |  | DSC-448 |  |  |  |  |  |  |  |
| 3-2418 |  | INST SERVICE METER CABINET, MAD & 20TH | 1d | 2023-08-07 A | 2023-08-07 A | 3-3550 | 100% | 2023-07-03 | 2023-07-03 |  |  | MBRT BASE [8 h] | 8 | 8 |  | ELECRICAL SUB | 8 | 3-2418 | POLES3 | 3-2418 | ZONE-3 | SIGNALS | PRIME |  |  |  |  |
| 3-2038 |  | SCL INSPECTION REQUEST | 0d | 2023-08-09 A | 2023-08-09 A | 3-2070 | 100% | 2023-07-07 | 2023-07-07 |  |  | MBRT NEW |  |  |  | ELECRICAL SUB | 0 | 3-2038 |  | 3-2038 | ZONE-1 | SIGNALS | PRIME | BOYLSTON | NOTIFY |  |  |
| 3-2050 |  | SDCI INSPECTION | 1d | 2023-08-09 A | 2023-08-09 A | 3-2418 | 100% | 2023-07-05 | 2023-07-05 |  |  | MBRT NEW |  |  |  |  | 8 | 3-2050 |  | 3-2050 |  |  |  |  |  |  |  |
| 3-2070 |  | SDOT INSPECTION | 1d | 2023-08-09 A | 2023-08-09 A | 3-2050 | 100% | 2023-07-06 | 2023-07-06 |  |  | MBRT NEW |  |  |  |  | 8 | 3-2070 |  | 3-2070 |  |  |  |  |  |  |  |
| 3-2789 |  | 30 DAY WAIT FOR SCL TO INSPECT, MAD AND BOYLSTON | 21d | 2023-08-10 A | 2023-08-18 A | 3-2038 | 100% | 2023-07-07 | 2023-08-04 |  |  | MBRT NEW |  |  |  | CITY | 56 | 3-2789 |  | 3-2789 | ZONE-1 | SIGNALS | SCL | BOYLSTON | INSPECT |  |  |
| 3-2779 |  | SCL INSPECTION | 1d | 2023-08-21 A | 2023-08-21 A | 3-2789 | 100% |  |  |  |  | MBRT NEW |  |  | x |  | 8 | 3-2779 |  | 3-2779 |  |  |  |  |  |  |  |
| 3-2419 |  | INST STRAIN POLE, MAD AND 20TH | 1d | 2023-09-19 A | 2023-09-19 A | 3-2418, PMP-36 | 100% | 2023-08-14 | 2023-08-14 |  |  | MBRT BASE [8 h] | 8 | 8 |  | ELECRICAL SUB | 8 | 3-2419 | POLES3 | 3-2419 | ZONE-3 | SIGNALS | PRIME |  |  |  |  |
| 3-2422 |  | COMMISION NOTIFICATION | 0d | 2023-10-03 A | 2023-10-03 A | 3-2779 | 100% | 2023-08-22 | 2023-08-22 |  |  | MBRT BASE |  |  |  | ELECRICAL SUB | 0 | 3-2422 | POLES3 | 3-2422 | ZONE-3 | SIGNALS | PRIME |  | NOTIFY |  |  |
| 3-2423 |  | 30 DAY WAIT FOR SCL TO COMMISION | 21d | 2023-10-03 A | 2023-10-25 A | 3-2422 | 100% | 2023-08-22 | 2023-09-20 |  |  | MBRT BASE |  |  |  | CITY | 136 | 3-2423 | POLES3 | 3-2423 | ZONE-3 | SIGNALS | SCL |  | INSPECT |  |  |
| 3-2424 |  | COMM SERVICE, MAD AND 20TH | 1d | 2023-10-26 A | 2023-10-26 A | 3-2423 | 100% | 2023-10-04 | 2023-10-04 |  |  | MBRT BASE [8 h] | 8 | 8 |  | CITY ,ELECRICAL SUB | 8 | 3-2424 | POLES3 | 3-2424 | ZONE-3 | SIGNALS | PRIME |  |  |  |  |
| 3-2417 |  | INST SIGNAL CABINET, MAD AND 20TH | 1d | 2024-01-22 A | 2024-01-31 A | 3-3550, 3-2424 | 100% | 2023-12-11 | 2023-12-11 |  |  | MBRT BASE [64 h] | 64 | 64 | X | ELECRICAL SUB | 64 | 3-2417 | POLES3 | 3-2417 | ZONE-3 | SIGNALS | PRIME |  |  |  |  |
| 3-2420 |  | INST PPB POST, MAD AND 20TH | 1d | 2024-01-22 A | 2024-01-31 A | 3-2419, 3-2417 | 100% | 2023-12-12 | 2023-12-12 |  |  | MBRT BASE [64 h] | 64 | 64 |  | ELECRICAL SUB | 64 | 3-2420 | POLES3 | 3-2420 | ZONE-3 | SIGNALS | PRIME |  |  |  |  |
| 3-2421 |  | INST WIRING, MAD AND 20TH | 3d | 2024-01-22 A | 2024-01-31 A | 3-2420 | 100% | 2023-12-13 | 2023-12-15 |  |  | MBRT BASE [64 h] | 64 | 64 |  | ELECRICAL SUB | 64 | 3-2421 |  | 3-2421 | ZONE-3 | SIGNALS | PRIME |  |  |  |  |
| 3-2425 |  | NOTIFY SDOT, MAD AND 20TH | 1d | 2024-01-31 A | 2024-01-31 A | 3-2424, 3-2421 | 100% | 2023-12-18 | 2023-12-18 |  |  | MBRT BASE [8 h] | 8 | 8 |  | ELECRICAL SUB | 8 | 3-2425 | POLES3 | 3-2425 | ZONE-3 | SIGNALS | PRIME |  | NOTIFY |  |  |
| 3-2426 |  | SDOT INSPECTION, MAD AND 20TH | 5d | 2024-01-31 A | 2024-01-31 A | 3-2425 | 100% | 2023-12-19 | 2023-12-26 |  |  | MBRT BASE [8 h] | 8 | 8 |  | CITY | 8 | 3-2426 | POLES3 | 3-2426 | ZONE-3 | SIGNALS | SDOT |  |  |  |  |
| 3-2427 |  | COMM SIGNAL, MAD AND 20TH | 1d | 2024-01-31 A | 2024-01-31 A | 3-2426 | 100% | 2023-12-27 | 2023-12-27 |  |  | MBRT BASE [8 h] | 8 | 8 | X | ELECRICAL SUB,CITY | 8 | 3-2427 | POLES34 | 3-2427 | ZONE-3 | SIGNALS | PRIME |  |  |  | SIGNALS |

| ID | WBS | Activity | Duration | Start | Finish | Predecessors | Complete | Planned start | Planned finish | Resources | Cost | Actual cost | user_number6 | user_text10 | user_text8 | ~SELECT | user_text2 | ~TEXT | MBRT-ZONE | MBRT-TYPE | MBRT-RESP | MBRT-ACTIVITY | MBRT-SCOPE | ~SELECT2 |
| --- | --- | --- | --- | --- | --- | --- | --- | --- | --- | --- | --- | --- | --- | --- | --- | --- | --- | --- | --- | --- | --- | --- | --- | --- |
|  | 6 | **MADISON AND DENNY** |  | 2023-05-17 | 2023-10-12 |  |  |  |  |  |  |  |  |  |  |  |  |  |  |  |  |  |  |  |
| 3-2430 |  | INSTALL SERVICE CABINET | 1d | 2023-05-17 A | 2023-05-17 A | 3-3385 FF | 100% |  |  | MBRT BASE [8 h] | 8 | 8 | 8 | 3-2430 | 3-2430 |  |  |  |  |  |  |  |  |  |
| 3-7323 |  | SDCI INSPECTION | 1d | 2023-06-02 A | 2023-06-02 A | 3-2430 FS+10d | 100% |  |  | MBRT NEW |  |  | 8 | 3-7323 | 3-7323 | x |  |  |  |  |  |  |  |  |
| 3-7324 |  | SDOT INSPECTION | 1d | 2023-06-14 A | 2023-06-14 A | 3-7323 FS+7d | 100% |  |  | MBRT NEW |  |  | 8 | 3-7324 | 3-7324 | x |  |  |  |  |  |  |  |  |
| 3-7325 |  | SCL INSPECTION REQUEST | 1d | 2023-07-03 A | 2023-07-03 A | 3-2430, 3-7324 | 100% |  |  | MBRT NEW |  |  | 8 | 3-7325 | 3-7325 | x |  |  |  |  |  |  |  |  |
| 3-7326 |  | 30 DAY WAIT FOR SCL TO INSPECT | 22d | 2023-07-05 A | 2023-08-03 A | 3-7325 | 100% |  |  | MBRT NEW |  |  | 176 | 3-7326 | 3-7326 | x |  |  |  |  |  |  |  |  |
| 3-7327 |  | SCL INSPECTION | 1d | 2023-08-04 A | 2023-08-04 A | 3-7326 | 100% | 2023-08-16 | 2023-08-16 | MBRT NEW |  |  | 8 | 3-7327 | 3-7327 | x |  |  |  |  |  |  |  |  |
| 3-7328 |  | COMMISION NOTIFICATION | 1d | 2023-08-08 A | 2023-08-08 A | 3-2430, 3-7327 | 100% | 2023-08-17 | 2023-08-17 | MBRT NEW |  |  | 8 | 3-7328 | 3-7328 | x |  |  |  |  |  |  |  |  |
| 3-7329 |  | 30 DAY WAIT FOR SCL TO COMMISION | 23d | 2023-08-09 A | 2023-09-09 A | 3-7328 | 100% | 2023-08-18 | 2023-09-20 | MBRT NEW |  |  | 176 | 3-7329 | 3-7329 | x |  |  |  |  |  |  |  |  |
| 3-2447 |  | DELAY AWAITING SCL TO COMMISSION SERVICE | 0d | 2023-09-09 A | 2023-09-09 A | 3-7329 | 100% | 2023-09-11 | 2023-09-11 | MBRT NEW |  |  | 0 |  |  |  |  |  |  |  |  |  |  |  |
| 3-2437 |  | COMM SERVICE, MAD AND DENNY | 1d | 2023-09-11 A | 2023-09-11 A | 3-7329, 3-2447 | 100% | 2023-09-15 | 2023-09-15 | MBRT BASE [8 h] | 8 | 8 | 8 | 3-2437 | 3-2437 |  | CITY ,ELECRICAL SUB | POLES3 | ZONE-3 | SIGNALS | PRIME |  |  |  |
| 3-2429 |  | INST SIGNAL CABINET, MAD & DENNY | 1d | 2023-09-19 A | 2023-09-19 A | 3-2437 | 100% | 2023-09-18 | 2023-09-18 | MBRT BASE [8 h] | 8 | 8 | 8 | 3-2429 | 3-2429 | X | ELECRICAL SUB | POLES3 | ZONE-3 | SIGNALS | PRIME |  |  |  |
| 3-2434 |  | INST WIRING, MAD AND DENNY | 3d | 2023-09-20 A | 2023-09-20 A | 3-2429 | 100% | 2023-09-27 | 2023-09-29 | MBRT BASE [8 h] | 8 | 8 | 8 | 3-2434 | 3-2434 |  | ELECRICAL SUB | POLES3 | ZONE-3 | SIGNALS | PRIME |  |  |  |
| 3-2432 |  | INST PPB POST, MAD AND DENNY | 3d | 2023-09-26 A | 2023-09-29 A | 3-2429 | 100% | 2023-09-20 | 2023-09-22 | MBRT BASE [32 h] | 32 | 32 | 32 | 3-2432 | 3-2432 |  | ELECRICAL SUB | POLES3 | ZONE-3 | SIGNALS | PRIME |  |  |  |
| 3-2433 |  | INST PEDISTALS, MAD AND DENNY | 2d | 2023-10-02 A | 2023-10-03 A | 3-2432 | 100% |  |  | MBRT BASE [16 h] | 16 | 16 | 16 | 3-2433 | 3-2433 |  | ELECRICAL SUB | POLES3 | ZONE-3 | SIGNALS | PRIME |  |  |  |
| 3-2438 |  | NOTIFY SDOT, MAD AND DENNY | 1d | 2023-10-04 A | 2023-10-04 A | 3-2437, 3-2434, 3-2433 | 100% | 2023-10-02 | 2023-10-02 | MBRT BASE [8 h] | 8 | 8 | 8 | 3-2438 | 3-2438 |  | ELECRICAL SUB | POLES3 | ZONE-3 | SIGNALS | PRIME | NOTIFY |  |  |
| 3-2439 |  | SDOT INSPECTION, MAD AND DENNY | 5d | 2023-10-05 A | 2023-10-11 A | 3-2438 | 100% | 2023-10-03 | 2023-10-09 | MBRT BASE [40 h] | 40 | 40 | 40 | 3-2439 | 3-2439 |  | CITY | POLES3 | ZONE-3 | SIGNALS | SDOT |  |  |  |
| 3-2440 |  | COMM SIGNAL, MAD AND DENNY | 1d | 2023-10-12 A | 2023-10-12 A | 3-2439 | 100% | 2023-10-10 | 2023-10-10 | MBRT BASE [8 h] | 8 | 8 | 8 | 3-2440 | 3-2440 | X | ELECRICAL SUB,CITY | POLES3 | ZONE-3 | SIGNALS | PRIME |  | SIGNALS |  |
|  | 7 | **MADISON AND 23RD** |  | 2024-03-04 | 2024-03-18 |  |  |  |  |  |  |  |  |  |  |  |  |  |  |  |  |  |  |  |
| 3-2442 |  | INST MAGNOMETERS, MAD AND 23RD | 2d | 2024-03-04 A | 2024-03-05 A | 3-2220, 3-2440, 3-2421 | 100% |  |  | MBRT BASE [16 h] | 16 |  | 16 | 3-2442 | 3-2442 |  | ELECRICAL SUB | POLES3 | ZONE-3 | SIGNALS | PRIME |  |  | PX |
| 3-2443 |  | INST WIRING, MAD AND 23RD | 2d | 2024-03-06 A | 2024-03-07 A | 3-2442 | 100% |  |  | MBRT BASE [16 h] | 16 |  | 16 | 3-2443 | 3-2443 |  | ELECRICAL SUB | POLES3 | ZONE-3 | SIGNALS | PRIME |  |  | PX |
| 3-2444 |  | NOTFICY SDOT, MAD AND 23RD | 1d | 2024-03-08 A | 2024-03-08 A | 3-2443 | 100% |  |  | MBRT BASE [8 h] | 8 |  | 8 | 3-2444 | 3-2444 |  | ELECRICAL SUB | POLES3 | ZONE-3 | SIGNALS | PRIME |  |  | PX |
| 3-2445 |  | SDOT INSPECTION, MAD AND 23RD | 5d | 2024-03-11 A | 2024-03-15 A | 3-2444 | 100% |  |  | MBRT BASE [40 h] | 40 |  | 40 | 3-2445 | 3-2445 |  | CITY | POLES3 | ZONE-3 | SIGNALS | SDOT |  |  | PX |
| 3-2446 |  | COMM SIGNAL, MAD AND 23RD | 1d | 2024-03-18 A | 2024-03-18 A | 3-2445 | 100% |  |  | MBRT BASE [8 h] | 8 |  | 8 | 3-2446 | 3-2446 | X | ELECRICAL SUB,CITY | POLES3 | ZONE-3 | SIGNALS | PRIME |  |  | PX |

| ID | WBS | Activity | Duration | Start | Finish | Predecessors | Complete | Remaining | Planned start | Planned finish | Total float | Free float | Resources | Cost | Actual cost | user_number6 | user_text2 | user_text10 | ~TEXT | user_text8 | MBRT-ZONE | MBRT-TYPE | MBRT-RESP | MBRT-LOCATION | MBRT-ACTIVITY | ~SELECT | MBRT-SCOPE | ~SELECT2 | ~SELECT3 |
| --- | --- | --- | --- | --- | --- | --- | --- | --- | --- | --- | --- | --- | --- | --- | --- | --- | --- | --- | --- | --- | --- | --- | --- | --- | --- | --- | --- | --- | --- |
|  | 8 | **MADISON AND 24TH** |  | 2023-06-30 | 2023-11-15 |  |  |  |  |  |  |  |  |  |  |  |  |  |  |  |  |  |  |  |  |  |  |  |  |
| 3-2474 |  | DELAY WAITING FOR SCL TO SLEEVE OR TURN OFF POWER | 0d | 2023-06-30 A | 2023-10-31 A | MS-0025 | 100% |  | 2023-07-03 | 2023-07-03 |  |  | MBRT NEW |  |  | 680 |  |  |  |  |  |  |  |  |  |  |  |  |  |
| 3-2509 |  | DELAY AWAITING SCL TO SLEEVE OR TURN OFF POWER TO ALLOW FOR INSTALLATION OF THE SIGNAL POLE | 0d | 2023-06-30 A | 2023-10-31 A | MS-0025 | 100% |  | 2023-07-03 | 2023-07-03 |  |  | MBRT NEW |  |  | 680 |  |  |  |  |  |  |  |  |  |  |  |  |  |
| 3-2449 |  | INST SERVICE METER CABINET, MAD & 24TH | 1d | 2023-08-07 A | 2023-08-07 A | 3-6215 | 100% |  | 2023-07-03 | 2023-07-03 |  |  | MBRT BASE [8 h] | 8 | 8 | 8 | ELECRICAL SUB | 3-2449 | POLES3 | 3-2449 | ZONE-3 | SIGNALS | PRIME |  |  |  |  |  |  |
| 3-3058 |  | SDCI INSPECTION | 1d | 2023-08-08 A | 2023-08-08 A | 3-2449 | 100% |  | 2023-07-05 | 2023-07-05 |  |  | MBRT NEW |  |  | 8 |  | 3-3058 |  | 3-3058 |  |  |  |  |  |  |  |  |  |
| 3-3038 |  | SCL INSPECTION REQUEST | 0d | 2023-08-09 A | 2023-08-09 A | 3-3059 | 100% |  | 2023-07-07 | 2023-07-07 |  |  | MBRT NEW |  |  | 0 | ELECRICAL SUB | 3-3038 |  | 3-3038 | ZONE-1 | SIGNALS | PRIME | BOYLSTON | NOTIFY |  |  |  |  |
| 3-3059 |  | SDOT INSPECTION | 1d | 2023-08-09 A | 2023-08-09 A | 3-3058 | 100% |  | 2023-07-06 | 2023-07-06 |  |  | MBRT NEW |  |  | 8 |  | 3-3059 |  | 3-3059 |  |  |  |  |  |  |  |  |  |
| 3-3039 |  | 30 DAY WAIT FOR SCL TO INSPECT, MAD AND BOYLSTON | 21d | 2023-08-10 A | 2023-08-17 A | 3-3038 | 100% |  | 2023-07-07 | 2023-08-04 |  |  | MBRT NEW |  |  | 48 | CITY | 3-3039 |  | 3-3039 | ZONE-1 | SIGNALS | SCL | BOYLSTON | INSPECT |  |  |  |  |
| 3-3079 |  | SCL INSPECTION | 1d | 2023-08-18 A | 2023-08-18 A | 3-3039, 3-2509 SS | 100% |  | 2023-08-21 | 2023-08-21 |  |  | MBRT NEW |  |  | 8 |  | 3-3079 |  | 3-3079 |  |  |  |  |  | x |  |  |  |
| 3-2454 |  | COMMISION NOTIFICATION | 1d | 2023-09-21 A | 2023-09-21 A | 3-3079 | 100% |  | 2023-08-22 | 2023-08-22 |  |  | MBRT BASE |  |  | 8 | ELECRICAL SUB | 3-2454 | POLES3 | 3-2454 | ZONE-3 | SIGNALS | PRIME |  | NOTIFY |  |  |  |  |
| 3-2455 |  | 30 DAY WAIT FOR SCL TO COMMISION | 20d | 2023-09-22 A | 2023-09-28 A | 3-2454 | 100% |  | 2023-08-23 | 2023-09-20 |  |  | MBRT BASE |  | 40 | 40 | CITY | 3-2455 | POLES3 | 3-2455 | ZONE-3 | SIGNALS | SCL |  | INSPECT |  |  |  |  |
| 3-2456 |  | COMM SERVICE, MAD AND 24TH | 1d | 2023-09-29 A | 2023-09-29 A | 3-2455 | 100% |  | 2023-10-03 | 2023-10-03 |  |  | MBRT BASE [8 h] | 8 | 8 | 8 | CITY ,ELECRICAL SUB | 3-2456 | POLES3 | 3-2456 | ZONE-3 | SIGNALS | PRIME |  |  |  |  |  |  |
| 3-2448 |  | INST SIGNAL CABINET, MAD AND 24TH | 1d | 2023-10-30 A | 2023-11-01 A | 3-3490, 3-2456 | 100% |  | 2023-10-04 | 2023-10-04 |  |  | MBRT BASE [24 h] | 24 | 24 | 24 | ELECRICAL SUB | 3-2448 | POLES3 | 3-2448 | ZONE-3 | SIGNALS | PRIME |  |  | X |  |  |  |
| 3-2451 |  | INST PPB POST, MAD AND 24TH | 3d | 2023-10-30 A | 2023-11-01 A | 3-2450 | 100% |  | 2023-10-11 | 2023-10-13 |  |  | MBRT BASE [24 h] | 24 | 24 | 24 | ELECRICAL SUB | 3-2451 | POLES3 | 3-2451 | ZONE-3 | SIGNALS | PRIME |  |  |  |  |  |  |
| 3-2452 |  | INST PEDISTALS, MAD AND 24TH | 1d | 2023-10-30 A | 2023-11-01 A | 3-2451 | 100% |  | 2023-10-16 | 2023-10-16 |  |  | MBRT BASE [24 h] | 24 | 24 | 24 | ELECRICAL SUB | 3-2452 | POLES3 | 3-2452 | ZONE-3 | SIGNALS | PRIME |  |  |  |  |  |  |
| 3-2453 |  | INST WIRING, MAD AND 24TH | 5d | 2023-10-31 A | 2023-11-02 A | 3-2452 | 100% |  | 2023-10-17 | 2023-10-23 |  |  | MBRT BASE [24 h] | 24 | 24 | 24 | ELECRICAL SUB | 3-2453 | POLES3 | 3-2453 | ZONE-3 | SIGNALS | PRIME |  |  |  |  |  |  |
| 3-2450 |  | INST MAST ARMS, MAD AND 24TH | 4d | 2023-11-01 A | 2023-11-01 A | 3-2449, 3-2448 | 100% |  | 2023-10-05 | 2023-10-10 |  |  | MBRT BASE [8 h] | 8 | 8 | 8 | ELECRICAL SUB | 3-2450 | POLES3 | 3-2450 | ZONE-3 | SIGNALS | PRIME |  |  |  |  |  |  |
| 3-3110 |  | INSTALL POLES, MAD AND 24TH | 4d | 2023-11-01 A | 2023-11-01 A | 3-3105, 3-2474 | 100% |  | 2023-10-09 | 2023-10-12 |  |  | MBRT NEW [32 h] | 32 | 8 | 8 | ELECRICAL SUB | 3-3110 |  | 3-3110 | ZONE-3 | SIGNALS | PRIME |  |  |  |  |  |  |
| 3-2457 |  | NOTIFY SDOT, MAD AND 24TH | 1d | 2023-11-03 A | 2023-11-03 A | 3-2456, 3-2453 | 100% |  |  |  |  |  | MBRT BASE [8 h] | 8 | 8 | 8 | ELECRICAL SUB | 3-2457 | POLES3 | 3-2457 | ZONE-3 | SIGNALS | PRIME |  | NOTIFY |  |  |  |  |
| 3-2458 |  | SDOT INSPECTION, MAD AND 24TH | 7d | 2023-11-06 A | 2023-11-14 A | 3-2457 | 100% |  | 2023-11-06 | 2023-11-15 |  |  | MBRT BASE [48 h] | 48 | 48 | 48 | CITY | 3-2458 | POLES3 | 3-2458 | ZONE-3 | SIGNALS | SDOT |  |  |  |  |  |  |
| 3-2459 |  | COMM SIGNAL, MAD AND 24TH | 1d | 2023-11-15 A | 2023-11-15 A | 3-2458 | 100% |  | 2023-11-16 | 2023-11-16 |  |  | MBRT BASE [8 h] | 8 | 8 | 8 | ELECRICAL SUB,CITY | 3-2459 | POLES3 | 3-2459 | ZONE-3 | SIGNALS | PRIME |  |  | X | SIGNALS |  |  |
|  | 9 | **MADISON AND 28TH** |  | 2023-12-11 | 2024-05-29 |  |  |  |  |  |  |  |  |  |  |  |  |  |  |  |  |  |  |  |  |  |  |  |  |
| 3-3115 |  | INST POLES, MAD AND 28TH | 3d | 2023-12-11 A | 2023-12-13 A | 3-3110 | 100% |  |  |  |  |  | MBRT NEW [24 h] | 24 | 24 | 24 | ELECRICAL SUB | 3-3115 |  | 3-3115 | ZONE-3 | SIGNALS | PRIME |  |  |  |  |  |  |
| 3-2462 |  | INST SERVICE METER CABINET, MAD & 28TH | 1d | 2024-03-11 A | 2024-03-11 A | 3-2272 | 100% |  |  |  |  |  | MBRT BASE [8 h] | 8 |  | 8 | ELECRICAL SUB | 3-2462 | POLES3 | 3-2462 | ZONE-3 | SIGNALS | PRIME |  |  |  |  |  |  |
| 3-8050 |  | SDCI INSPECTION | 1d | 2024-03-12 A | 2024-03-12 A | 3-2462 | 100% |  |  |  |  |  | MBRT NEW [8 h] | 8 |  | 8 |  | 3-8050 |  | 3-8050 |  |  |  |  |  |  |  |  |  |
| 3-8070 |  | SDOT INSPECTION | 1d | 2024-03-13 A | 2024-03-13 A | 3-8050 | 100% |  |  |  |  |  | MBRT NEW [8 h] | 8 |  | 8 |  | 3-8070 |  | 3-8070 |  |  |  |  |  |  |  |  |  |
| 3-8038 |  | SCL INSPECTION REQUEST | 0d | 2024-03-14 A | 2024-03-14 A | 3-8070 | 100% |  |  |  |  |  | MBRT NEW |  |  | 0 | ELECRICAL SUB | 3-8038 |  | 3-8038 | ZONE-1 | SIGNALS | PRIME | BOYLSTON | NOTIFY |  |  |  |  |
| 3-8039 |  | 30 DAY WAIT FOR SCL TO INSPECT, MAD AND BOYLSTON | 2d | 2024-03-14 A | 2024-03-15 A | 3-8038 | 100% |  |  |  |  |  | MBRT NEW |  |  | 16 | CITY | 3-8039 |  | 3-8039 | ZONE-1 | SIGNALS | SCL | BOYLSTON | INSPECT |  |  |  |  |
| 3-8079 |  | SCL INSPECTION | 1d | 2024-03-18 A | 2024-03-18 A | 3-8039 | 100% |  |  |  |  |  | MBRT NEW [8 h] | 8 |  | 8 |  | 3-8079 |  | 3-8079 |  |  |  |  |  | x |  |  |  |
| 3-2468 |  | COMMISION NOTIFICATION | 1d | 2024-03-19 A | 2024-03-19 A | 3-8079 | 100% |  |  |  |  |  | MBRT BASE |  |  | 8 | ELECRICAL SUB | 3-2468 | POLES3 | 3-2468 | ZONE-3 | SIGNALS | PRIME |  | NOTIFY |  |  |  |  |
| 3-2469 |  | 30 DAY WAIT FOR SCL TO COMMISION | 15d | 2024-03-20 A | 2024-04-05 | 3-2468 |  | 4d | 2024-03-20 | 2024-04-09 | -121d | 0d | MBRT BASE |  |  | 120 | CITY | 3-2469 | POLES3 | 3-2469 | ZONE-3 | SIGNALS | SCL |  | INSPECT |  |  |  |  |
| 3-2470 |  | COMM SERVICE, MAD AND 28TH | 1d | 2024-04-08 | 2024-04-08 | 3-2469 |  |  |  |  | -121d | 26d | MBRT BASE [8 h] | 8 |  | 8 | CITY ,ELECRICAL SUB | 3-2470 | POLES3 | 3-2470 | ZONE-3 | SIGNALS | PRIME |  |  |  |  |  |  |
| 3-2500 |  | Complete UG Elec & Sidewalks SEC 28th | 0d | 2024-04-24 | 2024-04-24 | 3-2296 |  |  |  |  | -132d | 0d | MBRT NEW |  |  | 0 |  |  |  |  |  |  |  |  |  |  |  |  |  |
| 3-2525 |  | Complete UG Elec & Sidewalks NEC 28th | 0d | 2024-04-24 | 2024-04-24 | 3-2500 |  |  |  |  | -132d | 15d | MBRT NEW |  |  | 0 |  |  |  |  |  |  |  |  |  |  |  |  |  |
| 3-2461 |  | INST SIGNAL CABINET, MAD AND 28TH | 1d | 2024-05-15 | 2024-05-15 | PMP-0016, 3-2272, 3-2470, 3-2500, 3-2525, 2-1626 |  |  |  |  | -147d | 0d | MBRT BASE [8 h] | 8 |  | 8 | ELECRICAL SUB | 3-2461 | POLES3 | 3-2461 | ZONE-3 | SIGNALS | PRIME |  |  | signals |  | P2 | 147 |
| 3-2463 |  | INST MAGNOMETERS, MAD AND 28TH | 1d | 2024-05-16 | 2024-05-16 | 3-2462, 3-2461 |  |  |  |  | -147d | 0d | MBRT BASE [8 h] | 8 |  | 8 | ELECRICAL SUB | 3-2463 | POLES3 | 3-2463 | ZONE-3 | SIGNALS | PRIME |  |  | signals |  | P2 | 147 |
| 3-2464 |  | INST MAST ARMS, MAD AND 28TH | 1d | 2024-05-17 | 2024-05-17 | 3-2463 |  |  |  |  | -147d | 0d | MBRT BASE [8 h] | 8 |  | 8 | ELECRICAL SUB | 3-2464 | POLES3 | 3-2464 | ZONE-3 | SIGNALS | PRIME |  |  | signals |  | P2 | 147 |
| 3-2465 |  | INST PPB POST, MAD AND 28TH | 1d | 2024-05-20 | 2024-05-20 | 3-2464 |  |  |  |  | -147d | 0d | MBRT BASE [8 h] | 8 |  | 8 | ELECRICAL SUB | 3-2465 | POLES3 | 3-2465 | ZONE-3 | SIGNALS | PRIME |  |  | signals |  | P2 | 147 |
| 3-2466 |  | INST PEDISTALS, MAD AND 28TH | 1d | 2024-05-21 | 2024-05-21 | 3-2465 |  |  |  |  | -147d | 0d | MBRT BASE [8 h] | 8 |  | 8 | ELECRICAL SUB | 3-2466 | POLES3 | 3-2466 | ZONE-3 | SIGNALS | PRIME |  |  | signals |  | P2 | 147 |
| 3-2467 |  | INST WIRING, MAD AND 28TH | 2d | 2024-05-22 | 2024-05-23 | 3-2466 |  |  |  |  | -147d | 0d | MBRT BASE [16 h] | 16 |  | 16 | ELECRICAL SUB | 3-2467 | POLES3 | 3-2467 | ZONE-3 | SIGNALS | PRIME |  |  | signals |  | P2 | 147 |
| 3-2471 |  | NOTIFY SDOT, MAD AND 28TH | 1d | 2024-05-24 | 2024-05-24 | 3-2470, 3-2467 |  |  |  |  | -147d | 0d | MBRT BASE |  |  | 8 | ELECRICAL SUB | 3-2471 | POLES3 | 3-2471 | ZONE-3 | SIGNALS | PRIME |  | NOTIFY | signals |  | P2 | 147 |
| 3-2472 |  | SDOT INSPECTION, MAD AND 28TH | 1d | 2024-05-28 | 2024-05-28 | 3-2471 |  |  |  |  | -147d | 0d | MBRT BASE [8 h] | 8 |  | 8 | CITY | 3-2472 | POLES3 | 3-2472 | ZONE-3 | SIGNALS | SDOT |  |  | signals |  | P2 | 147 |
| 3-2473 |  | COMM SIGNAL, MAD AND 28TH | 1d | 2024-05-29 | 2024-05-29 | 3-2472 |  |  |  |  | -147d | 0d | MBRT BASE [8 h] | 8 |  | 8 | ELECRICAL SUB,CITY | 3-2473 | POLES3 | 3-2473 | ZONE-3 | SIGNALS | PRIME |  |  | signals | SIGNALS | P2 | 147 |

| ID | WBS | Activity | Duration | Start | Finish | Predecessors | Complete | Planned start | Planned finish | Total float | Free float | Resources | Cost | Actual cost | user_text2 | user_number6 | user_text10 | user_text8 | MBRT-ZONE | MBRT-TYPE | MBRT-RESP | MBRT-DELAY | MBRT-ACTIVITY |
| --- | --- | --- | --- | --- | --- | --- | --- | --- | --- | --- | --- | --- | --- | --- | --- | --- | --- | --- | --- | --- | --- | --- | --- |
|  | 12 | **ITS WIRING** |  | 2024-07-04 | 2024-07-17 |  |  |  |  |  |  |  |  |  |  |  |  |  |  |  |  |  |  |
| 3-2501 |  | INST WIRING, ITS, ITS WIRING | 10d | 2024-07-04 | 2024-07-17 | 3-2473, 3-2499, 3-2486, 3-2446 |  |  |  | -136d | 9d | MBRT BASE [80 h] | 80 |  | ELECRICAL SUB | 80 | 3-2501 | 3-2501 | ZONE-3 | ITS | PRIME |  |  |
|  | 13 | **LIGHTING** |  | 2023-08-11 | 2024-07-25 |  |  |  |  |  |  |  |  |  |  |  |  |  |  |  |  |  |  |
|  | 1 | **16TH (SCHEMATIC 18)** |  | 2023-12-26 | 2024-03-18 |  |  |  |  |  |  |  |  |  |  |  |  |  |  |  |  |  |  |
| 3-2503 |  | INST POLES, LIGHTING | 10d | 2023-12-26 A | 2023-12-26 A | 3-2369 SS | 100% | 2024-02-08 | 2024-02-22 |  |  | MBRT BASE [8 h] | 8 | 8 | ELECRICAL SUB | 8 | 3-2503 | 3-2503 | ZONE-3 | LIGHTING | PRIME | FM001 |  |
| 3-2504 |  | INST WIRING, LIGHTING | 10d | 2023-12-26 A | 2024-02-13 A | 3-2503 | 100% | 2024-02-23 | 2024-03-07 |  |  | MBRT BASE [272 h] | 272 | 272 | ELECRICAL SUB | 272 | 3-2504 | 3-2504 | ZONE-3 | LIGHTING | PRIME | FM001 |  |
| 3-2505 |  | NOTIFY SCL, LIGHTING | 1d | 2024-02-13 A | 2024-02-13 A | 3-2504 | 100% | 2024-02-12 | 2024-02-12 |  |  | MBRT BASE [8 h] | 8 | 8 | ELECRICAL SUB | 8 | 3-2505 | 3-2505 | ZONE-3 | LIGHTING | PRIME | FM001 | NOTIFY |
| 3-2506 |  | SCL Lighting Final Inspection, LIGHTING | 10d | 2024-02-14 A | 2024-02-23 A | 3-2505 | 100% | 2024-02-12 | 2024-02-26 |  |  | MBRT BASE [80 h] | 80 | 80 | CITY | 80 | 3-2506 | 3-2506 | ZONE-3 | LIGHTING | PRIME | FM001 | INSPECT |
| 3-2521 |  | DELAY AWAITING SCL TO COMMISSION LIGHTING | 0d | 2024-02-26 A | 2024-02-26 A | 3-2506 | 100% | 2024-02-12 | 2024-02-12 |  |  | MBRT NEW |  |  |  | 16 |  |  |  |  |  |  |  |
| 3-2685 |  | COMM SERVICE, LIGHTING | 1d | 2024-02-27 A | 2024-02-27 A | 3-2506, 3-2521 | 100% | 2024-03-06 | 2024-03-06 |  |  | MBRT NEW [8 h] | 8 |  | CITY | 8 | 3-2685 | 3-2685 | ZONE-3 | LIGHTING | PRIME | FM001 |  |
| 3-2690 |  | NOTIFY SCL, LIGHTING | 0d | 2024-02-28 A | 2024-02-28 A | 3-2685 | 100% | 2024-03-07 | 2024-03-07 |  |  | MBRT NEW |  |  | ELECRICAL SUB | 0 | 3-2690 | 3-2690 | ZONE-3 | LIGHTING | PRIME | FM001 | NOTIFY |
| 3-2695 |  | SCL Commissioning Inspection, LIGHTING - DELAY | 10d | 2024-03-01 A | 2024-03-15 A | 3-2690 | 100% | 2024-03-07 | 2024-03-20 |  |  | MBRT NEW |  |  | CITY | 80 | 3-2695 | 3-2695 | ZONE-3 | LIGHTING | PRIME | FM001 | INSPECT |
| 3-2507 |  | COMM LIGHTING, LIGHTING | 1d | 2024-03-18 A | 2024-03-18 A | 3-2695, 3-2521 | 100% | 2024-04-30 | 2024-04-30 |  |  | MBRT BASE [8 h] | 8 |  | CITY | 8 | 3-2507 | 3-2507 | ZONE-3 | LIGHTING | PRIME | FM001 |  |
|  | 7 | **17TH (SCHEMATIC 19)** |  | 2023-08-14 | 2024-05-15 |  |  |  |  |  |  |  |  |  |  |  |  |  |  |  |  |  |  |
| 3-2930 |  | INST POLES, LIGHTING | 10d | 2023-08-14 A | 2023-08-25 A | 3-2091 SS | 100% |  |  |  |  | MBRT NEW [80 h] | 80 | 80 | ELECRICAL SUB | 80 | 3-2930 | 3-2930 | ZONE-3 | LIGHTING | PRIME | FM001 |  |
| 3-2935 |  | INST WIRING, LIGHTING | 10d | 2024-04-12 | 2024-04-25 | 3-2930, 3-2372, 3-2383 |  |  |  | -92d | 0d | MBRT NEW [80 h] | 80 |  | ELECRICAL SUB | 80 | 3-2935 | 3-2935 | ZONE-3 | LIGHTING | PRIME | FM001 |  |
| 3-2940 |  | NOTIFY SCL, LIGHTING | 0d | 2024-04-26 | 2024-04-26 | 3-2935 |  |  |  | -92d | 0d | MBRT NEW |  |  | ELECRICAL SUB | 0 | 3-2940 | 3-2940 | ZONE-3 | LIGHTING | PRIME | FM001 | NOTIFY |
| 3-2945 |  | SCL Lighting Final Inspection, LIGHTING | 2d | 2024-04-26 | 2024-04-29 | 3-2940 |  |  |  | -92d | 0d | MBRT NEW [16 h] | 16 |  | CITY | 16 | 3-2945 | 3-2945 | ZONE-3 | LIGHTING | PRIME | FM001 | INSPECT |
| 3-2955 |  | COMM SERVICE, LIGHTING | 1d | 2024-04-30 | 2024-04-30 | 3-2945 |  |  |  | -92d | 0d | MBRT NEW [8 h] | 8 |  | CITY | 8 | 3-2955 | 3-2955 | ZONE-3 | LIGHTING | PRIME | FM001 |  |
| 3-2960 |  | NOTIFY SCL, LIGHTING | 0d | 2024-05-01 | 2024-05-01 | 3-2955 |  |  |  | -92d | 0d | MBRT NEW |  |  | ELECRICAL SUB | 0 | 3-2960 | 3-2960 | ZONE-3 | LIGHTING | PRIME | FM001 | NOTIFY |
| 3-2965 |  | SCL Commissioning Inspection, LIGHTING | 10d | 2024-05-01 | 2024-05-14 | 3-2960 |  |  |  | -92d | 0d | MBRT NEW |  |  | CITY | 80 | 3-2965 | 3-2965 | ZONE-3 | LIGHTING | PRIME | FM001 | INSPECT |
| 3-2950 |  | COMM LIGHTING, LIGHTING | 1d | 2024-05-15 | 2024-05-15 | 3-2965 |  |  |  | -92d | 55d | MBRT NEW [8 h] | 8 |  | CITY | 8 | 3-2950 | 3-2950 | ZONE-3 | LIGHTING | PRIME | FM001 |  |
|  | 2 | **18TH (SCHEMATIC 20)** |  | 2023-08-14 | 2024-06-12 |  |  |  |  |  |  |  |  |  |  |  |  |  |  |  |  |  |  |
| 3-2705 |  | INST POLES, LIGHTING | 10d | 2023-08-14 A | 2023-08-25 A | 3-3105 | 100% |  |  |  |  | MBRT NEW [80 h] | 80 | 80 | ELECRICAL SUB | 80 | 3-2705 | 3-2705 | ZONE-3 | LIGHTING | PRIME | FM001 |  |
| 3-2710 |  | INST WIRING, LIGHTING | 10d | 2024-05-09 | 2024-05-22 | 3-2705, 3-2396 |  |  |  | -111d | 0d | MBRT NEW [80 h] | 80 |  | ELECRICAL SUB | 80 | 3-2710 | 3-2710 | ZONE-3 | LIGHTING | PRIME | FM001 |  |
| 3-2715 |  | NOTIFY SCL, LIGHTING | 0d | 2024-05-23 | 2024-05-23 | 3-2710 |  |  |  | -111d | 0d | MBRT NEW |  |  | ELECRICAL SUB | 0 | 3-2715 | 3-2715 | ZONE-3 | LIGHTING | PRIME | FM001 | NOTIFY |
| 3-2720 |  | SCL Lighting Final Inspection, LIGHTING | 2d | 2024-05-23 | 2024-05-24 | 3-2715 |  |  |  | -111d | 0d | MBRT NEW [16 h] | 16 |  | CITY | 16 | 3-2720 | 3-2720 | ZONE-3 | LIGHTING | PRIME | FM001 | INSPECT |
| 3-2730 |  | COMM SERVICE, LIGHTING | 1d | 2024-05-28 | 2024-05-28 | 3-2720 |  |  |  | -111d | 0d | MBRT NEW [8 h] | 8 |  | CITY | 8 | 3-2730 | 3-2730 | ZONE-3 | LIGHTING | PRIME | FM001 |  |
| 3-2735 |  | NOTIFY SCL, LIGHTING | 0d | 2024-05-29 | 2024-05-29 | 3-2730 |  |  |  | -111d | 0d | MBRT NEW |  |  | ELECRICAL SUB | 0 | 3-2735 | 3-2735 | ZONE-3 | LIGHTING | PRIME | FM001 | NOTIFY |
| 3-2740 |  | SCL Commissioning Inspection, LIGHTING | 10d | 2024-05-29 | 2024-06-11 | 3-2735 |  |  |  | -111d | 0d | MBRT NEW |  |  | CITY | 80 | 3-2740 | 3-2740 | ZONE-3 | LIGHTING | PRIME | FM001 | INSPECT |
| 3-2725 |  | COMM LIGHTING, LIGHTING | 1d | 2024-06-12 | 2024-06-12 | 3-2740 |  |  |  | -111d | 36d | MBRT NEW [8 h] | 8 |  | CITY | 8 | 3-2725 | 3-2725 | ZONE-3 | LIGHTING | PRIME | FM001 |  |

| ID | WBS | Activity | Duration | Start | Finish | Predecessors | Complete | Planned start | Planned finish | Total float | Free float | Resources | Cost | Actual cost | user_text2 | user_number6 | user_text10 | user_text8 | MBRT-ZONE | MBRT-TYPE | MBRT-RESP | MBRT-DELAY | MBRT-ACTIVITY |
| --- | --- | --- | --- | --- | --- | --- | --- | --- | --- | --- | --- | --- | --- | --- | --- | --- | --- | --- | --- | --- | --- | --- | --- |
|  | 6 | **19TH (SCHEMATIC 21)** |  | 2023-08-14 | 2024-07-23 |  |  |  |  |  |  |  |  |  |  |  |  |  |  |  |  |  |  |
| 3-2885 |  | INST POLES, LIGHTING | 10d | 2023-08-14 A | 2023-08-25 A | 3-3105 | 100% |  |  |  |  | MBRT NEW [80 h] | 80 | 80 | ELECRICAL SUB | 80 | 3-2885 | 3-2885 | ZONE-3 | LIGHTING | PRIME | FM001 |  |
| 3-2890 |  | INST WIRING, LIGHTING | 10d | 2024-06-20 | 2024-07-03 | 3-2885, 3-2409 |  |  |  | -140d | 0d | MBRT NEW [80 h] | 80 |  | ELECRICAL SUB | 80 | 3-2890 | 3-2890 | ZONE-3 | LIGHTING | PRIME | FM001 |  |
| 3-2895 |  | NOTIFY SCL, LIGHTING | 0d | 2024-07-04 | 2024-07-04 | 3-2890 |  |  |  | -140d | 0d | MBRT NEW |  |  | ELECRICAL SUB | 0 | 3-2895 | 3-2895 | ZONE-3 | LIGHTING | PRIME | FM001 | NOTIFY |
| 3-2900 |  | SCL Lighting Final Inspection, LIGHTING | 2d | 2024-07-04 | 2024-07-05 | 3-2895 |  |  |  | -140d | 0d | MBRT NEW [16 h] | 16 |  | CITY | 16 | 3-2900 | 3-2900 | ZONE-3 | LIGHTING | PRIME | FM001 | INSPECT |
| 3-2910 |  | COMM SERVICE, LIGHTING | 1d | 2024-07-08 | 2024-07-08 | 3-2900 |  |  |  | -140d | 0d | MBRT NEW [8 h] | 8 |  | CITY | 8 | 3-2910 | 3-2910 | ZONE-3 | LIGHTING | PRIME | FM001 |  |
| 3-2915 |  | NOTIFY SCL, LIGHTING | 0d | 2024-07-09 | 2024-07-09 | 3-2910 |  |  |  | -140d | 0d | MBRT NEW |  |  | ELECRICAL SUB | 0 | 3-2915 | 3-2915 | ZONE-3 | LIGHTING | PRIME | FM001 | NOTIFY |
| 3-2920 |  | SCL Commissioning Inspection, LIGHTING | 10d | 2024-07-09 | 2024-07-22 | 3-2915 |  |  |  | -140d | 0d | MBRT NEW |  |  | CITY | 80 | 3-2920 | 3-2920 | ZONE-3 | LIGHTING | PRIME | FM001 | INSPECT |
| 3-2905 |  | COMM LIGHTING, LIGHTING | 1d | 2024-07-23 | 2024-07-23 | 3-2920 |  |  |  | -140d | 7d | MBRT NEW [8 h] | 8 |  | CITY | 8 | 3-2905 | 3-2905 | ZONE-3 | LIGHTING | PRIME | FM001 |  |
|  | 5 | **DENNY (Schematic 22)** |  | 2023-08-11 | 2023-12-27 |  |  |  |  |  |  |  |  |  |  |  |  |  |  |  |  |  |  |
| 3-2880 |  | SCL NOTIFICATION FOR MANDERALING | 0d | 2023-08-11 A | 2023-08-11 A | MS-0025 | 100% | 2023-07-03 | 2023-07-03 |  |  | MBRT NEW |  |  |  | 8 |  |  |  |  |  |  |  |
| 3-2925 |  | 2 DAY WAIT FOR SCL | 2d | 2023-08-14 A | 2023-08-15 A | 3-2880 | 100% |  |  |  |  | MBRT NEW [16 h] | 16 | 16 |  | 16 |  |  |  |  |  |  |  |
| 3-2970 |  | OWNER CAUSED DELAY SLC MANERALING | 0d | 2023-08-16 A | 2023-10-27 A | 3-2925 | 100% | 2023-08-16 | 2023-08-16 |  |  | MBRT NEW |  |  |  | 416 |  |  |  |  |  |  |  |
| 3-3015 |  | MANDREL CONDUITS | 1d | 2023-10-30 A | 2023-10-30 A | 3-2970 | 100% | 2023-10-09 | 2023-10-09 |  |  | MBRT NEW [8 h] | 8 | 8 |  | 8 |  |  |  |  |  |  |  |
| 3-2840 |  | INST POLES, LIGHTING | 4d | 2023-10-31 A | 2023-11-03 A | 3-2885 | 100% | 2023-10-02 | 2023-10-05 |  |  | MBRT NEW [32 h] | 32 | 32 | ELECRICAL SUB | 32 | 3-2840 | 3-2840 | ZONE-3 | LIGHTING | PRIME | FM001 |  |
| 3-2845 |  | INST WIRING, LIGHTING | 10d | 2023-11-21 A | 2023-11-29 A | 3-2840, 3-2434, 3-3015 | 100% | 2023-11-06 | 2023-11-20 |  |  | MBRT NEW [80 h] | 80 | 40 | ELECRICAL SUB | 40 | 3-2845 | 3-2845 | ZONE-3 | LIGHTING | PRIME | FM001 |  |
| 3-2850 |  | NOTIFY SCL, LIGHTING | 1d | 2023-11-29 A | 2023-11-29 A | 3-2845 | 100% | 2023-11-21 | 2023-11-21 |  |  | MBRT NEW [8 h] | 8 | 8 | ELECRICAL SUB | 8 | 3-2850 | 3-2850 | ZONE-3 | LIGHTING | PRIME | FM001 | NOTIFY |
| 3-2855 |  | SCL Lighting Final Inspection, LIGHTING | 21d | 2023-11-29 A | 2023-11-29 A | 3-2850 | 100% | 2023-11-21 | 2023-12-21 |  |  | MBRT NEW |  |  | CITY | 8 | 3-2855 | 3-2855 | ZONE-3 | LIGHTING | PRIME | FM001 | INSPECT |
| 3-2865 |  | COMM SERVICE, LIGHTING | 1d | 2023-11-29 A | 2023-11-29 A | 3-2855 | 100% | 2023-12-22 | 2023-12-22 |  |  | MBRT NEW [8 h] | 8 | 8 | CITY | 8 | 3-2865 | 3-2865 | ZONE-3 | LIGHTING | PRIME | FM001 |  |
| 3-2870 |  | NOTIFY SCL, LIGHTING | 0d | 2023-12-12 A | 2023-12-12 A | 3-2865 | 100% | 2023-12-11 | 2023-12-11 |  |  | MBRT NEW |  |  | ELECRICAL SUB | 0 | 3-2870 | 3-2870 | ZONE-3 | LIGHTING | PRIME | FM001 | NOTIFY |
| 3-2875 |  | SCL INSPECTION, LIGHTING | 10d | 2023-12-12 A | 2023-12-26 A | 3-2870 | 100% | 2023-12-11 | 2023-12-22 |  |  | MBRT NEW [80 h] | 80 | 80 | CITY | 80 | 3-2875 | 3-2875 | ZONE-3 | LIGHTING | PRIME | FM001 | INSPECT |
| 3-2860 |  | COMM LIGHTING, LIGHTING | 1d | 2023-12-27 A | 2023-12-27 A | 3-2875 | 100% | 2023-12-26 | 2023-12-26 |  |  | MBRT NEW [8 h] | 8 | 8 | CITY | 8 | 3-2860 | 3-2860 | ZONE-3 | LIGHTING | PRIME | FM001 |  |
|  | 4 | **23RD (Schematic 23)** |  | 2023-08-11 | 2024-04-17 |  |  |  |  |  |  |  |  |  |  |  |  |  |  |  |  |  |  |
| 3-9588 |  | SCL NOTIFICATION FOR MANDERALING | 0d | 2023-08-11 A | 2023-08-11 A | 3-2880 SS | 100% | 2023-07-03 | 2023-07-03 |  |  | MBRT NEW |  |  |  | 8 |  |  |  |  |  |  |  |
| 3-9593 |  | 2 DAY WAIT FOR SCL | 2d | 2023-08-14 A | 2023-08-15 A | 3-9588 | 100% |  |  |  |  | MBRT NEW [16 h] | 16 | 16 |  | 16 |  |  |  |  |  |  |  |
| 3-9598 |  | OWNER CAUSED DELAY SLC MANERALING | 0d | 2023-08-16 A | 2023-12-12 A | 3-9593 | 100% | 2023-08-16 | 2023-08-16 |  |  | MBRT NEW |  |  |  | 648 |  |  |  |  |  |  |  |
| 3-9618 |  | MANDREL CONDUITS | 2d | 2023-12-13 A | 2023-12-14 A | 3-9598 | 100% |  |  |  |  | MBRT NEW [16 h] | 16 | 16 |  | 16 |  |  |  |  |  |  |  |
| 3-2795 |  | INST POLES, LIGHTING | 10d | 2023-12-27 A | 2023-12-27 A | 3-9618 | 100% | 2023-12-20 | 2024-01-04 |  |  | MBRT NEW [80 h] | 80 | 8 | ELECRICAL SUB | 8 | 3-2795 | 3-2795 | ZONE-3 | LIGHTING | PRIME | FM001 |  |
| 3-2800 |  | INST WIRING, LIGHTING | 10d | 2024-01-02 A | 2024-01-05 A | 3-2795, 3-9618 | 100% | 2024-01-05 | 2024-01-19 |  |  | MBRT NEW [80 h] | 80 | 32 | ELECRICAL SUB | 32 | 3-2800 | 3-2800 | ZONE-3 | LIGHTING | PRIME | FM001 |  |
| 3-2805 |  | NOTIFY SCL, LIGHTING | 0d | 2024-01-05 A | 2024-01-05 A | 3-2800 | 100% | 2024-01-22 | 2024-01-22 |  |  | MBRT NEW |  |  | ELECRICAL SUB | 0 | 3-2805 | 3-2805 | ZONE-3 | LIGHTING | PRIME | FM001 | NOTIFY |
| 3-2810 |  | SCL Lighting Final Inspection, LIGHTING | 10d | 2024-01-08 A | 2024-01-12 A | 3-2805 | 100% | 2024-01-22 | 2024-02-02 |  |  | MBRT NEW [80 h] | 80 | 40 | CITY | 40 | 3-2810 | 3-2810 | ZONE-3 | LIGHTING | PRIME | FM001 | INSPECT |
| 3-2820 |  | COMM SERVICE, LIGHTING | 1d | 2024-04-02 | 2024-04-02 | 3-2810 |  |  |  | -72d | 0d | MBRT NEW [8 h] | 8 |  | CITY | 8 | 3-2820 | 3-2820 | ZONE-3 | LIGHTING | PRIME | FM001 |  |
| 3-2825 |  | NOTIFY SCL, LIGHTING | 0d | 2024-04-03 | 2024-04-03 | 3-2820 |  |  |  | -72d | 0d | MBRT NEW |  |  | ELECRICAL SUB | 0 | 3-2825 | 3-2825 | ZONE-3 | LIGHTING | PRIME | FM001 | NOTIFY |
| 3-2830 |  | SCL Commissioning Inspection, LIGHTING | 10d | 2024-04-03 | 2024-04-16 | 3-2825 |  |  |  | -72d | 0d | MBRT NEW |  |  | CITY | 80 | 3-2830 | 3-2830 | ZONE-3 | LIGHTING | PRIME | FM001 | INSPECT |
| 3-2815 |  | COMM LIGHTING, LIGHTING | 1d | 2024-04-17 | 2024-04-17 | 3-2830 |  |  |  | -72d | 75d | MBRT NEW [8 h] | 8 |  | CITY | 8 | 3-2815 | 3-2815 | ZONE-3 | LIGHTING | PRIME | FM001 |  |

| ID | WBS | Activity | Duration | Start | Finish | Predecessors | Complete | Planned start | Planned finish | Total float | Free float | Resources | Cost | Actual cost | user_number6 | user_text2 | user_text10 | user_text8 | MBRT-ZONE | MBRT-TYPE | MBRT-RESP | MBRT-DELAY | MBRT-ACTIVITY | ~TEXT |
| --- | --- | --- | --- | --- | --- | --- | --- | --- | --- | --- | --- | --- | --- | --- | --- | --- | --- | --- | --- | --- | --- | --- | --- | --- |
|  | 3 | **24TH (Schematic 24)** |  | 2023-08-11 | 2023-12-27 |  |  |  |  |  |  |  |  |  |  |  |  |  |  |  |  |  |  |  |
| 3-9603 |  | SCL NOTIFICATION FOR MANDERALING | 0d | 2023-08-11 A | 2023-08-11 A | 3-9588 SS | 100% | 2023-07-03 | 2023-07-03 |  |  | MBRT NEW |  |  | 8 |  |  |  |  |  |  |  |  |  |
| 3-9608 |  | 2 DAY WAIT FOR SCL | 2d | 2023-08-14 A | 2023-08-15 A | 3-9603 | 100% |  |  |  |  | MBRT NEW [16 h] | 16 | 16 | 16 |  |  |  |  |  |  |  |  |  |
| 3-9613 |  | OWNER CAUSED DELAY SLC MANERALING | 32d | 2023-08-16 A | 2023-09-29 A | 3-9608 | 100% |  |  |  |  | MBRT NEW [256 h] | 256 | 256 | 256 |  |  |  |  |  |  |  |  |  |
| 3-9623 |  | MANDREL CONDUITS | 1d | 2023-10-02 A | 2023-10-02 A | 3-9613 | 100% | 2023-10-09 | 2023-10-09 |  |  | MBRT NEW [8 h] | 8 | 8 | 8 |  |  |  |  |  |  |  |  |  |
| 3-2750 |  | INST POLES, LIGHTING | 10d | 2023-11-06 A | 2023-11-07 A | 3-3110, 3-2840 | 100% | 2023-11-06 | 2023-11-20 |  |  | MBRT NEW [80 h] | 80 | 16 | 16 | ELECRICAL SUB | 3-2750 | 3-2750 | ZONE-3 | LIGHTING | PRIME | FM001 |  |  |
| 3-2755 |  | INST WIRING, LIGHTING | 10d | 2023-12-05 A | 2023-12-08 A | 3-2750, 3-2453, 3-9623 | 100% | 2023-11-21 | 2023-12-06 |  |  | MBRT NEW [80 h] | 80 | 32 | 32 | ELECRICAL SUB | 3-2755 | 3-2755 | ZONE-3 | LIGHTING | PRIME | FM001 |  |  |
| 3-2760 |  | NOTIFY SCL, LIGHTING | 0d | 2023-12-08 A | 2023-12-08 A | 3-2755 | 100% | 2023-12-07 | 2023-12-07 |  |  | MBRT NEW |  |  | 0 | ELECRICAL SUB | 3-2760 | 3-2760 | ZONE-3 | LIGHTING | PRIME | FM001 | NOTIFY |  |
| 3-2765 |  | SCL Lighting Final Inspection, LIGHTING | 1d | 2023-12-11 A | 2023-12-11 A | 3-2760 | 100% |  |  |  |  | MBRT NEW [8 h] | 8 |  | 8 | CITY | 3-2765 | 3-2765 | ZONE-3 | LIGHTING | PRIME | FM001 | INSPECT |  |
| 3-2775 |  | COMM SERVICE, LIGHTING | 1d | 2023-12-11 A | 2023-12-11 A | 3-2765 | 100% | 2023-12-12 | 2023-12-12 |  |  | MBRT NEW [8 h] | 8 | 8 | 8 | CITY | 3-2775 | 3-2775 | ZONE-3 | LIGHTING | PRIME | FM001 |  |  |
| 3-2780 |  | NOTIFY SCL, LIGHTING | 0d | 2023-12-12 A | 2023-12-12 A | 3-2775 | 100% | 2023-12-13 | 2023-12-13 |  |  | MBRT NEW |  |  | 0 | ELECRICAL SUB | 3-2780 | 3-2780 | ZONE-3 | LIGHTING | PRIME | FM001 | NOTIFY |  |
| 3-2785 |  | SCL INSPECTION, LIGHTING | 10d | 2023-12-12 A | 2023-12-26 A | 3-2780 | 100% | 2023-12-13 | 2023-12-27 |  |  | MBRT NEW [80 h] | 80 | 80 | 80 | CITY | 3-2785 | 3-2785 | ZONE-3 | LIGHTING | PRIME | FM001 | INSPECT |  |
| 3-2770 |  | COMM LIGHTING, LIGHTING | 1d | 2023-12-27 A | 2023-12-27 A | 3-2785 | 100% | 2023-12-28 | 2023-12-28 |  |  | MBRT NEW [8 h] | 8 | 8 | 8 | CITY | 3-2770 | 3-2770 | ZONE-3 | LIGHTING | PRIME | FM001 |  |  |
|  | 10 | **MLK** |  | 2023-11-08 | 2024-07-01 |  |  |  |  |  |  |  |  |  |  |  |  |  |  |  |  |  |  |  |
| 3-3065 |  | INST POLES, LIGHTING | 10d | 2023-11-08 A | 2023-11-10 A | 3-2750 | 100% | 2023-11-21 | 2023-12-06 |  |  | MBRT NEW [80 h] | 80 | 24 | 24 | ELECRICAL SUB | 3-3065 | 3-3065 | ZONE-3 | LIGHTING | PRIME | FM001 |  |  |
| 3-3070 |  | INST WIRING, LIGHTING | 9d | 2024-05-30 | 2024-06-11 | 3-3065, 3-2755, 3-2480 |  |  |  | -134d | 0d | MBRT NEW [72 h] | 72 |  | 72 | ELECRICAL SUB | 3-3070 | 3-3070 | ZONE-3 | LIGHTING | PRIME | FM001 |  |  |
| 3-3075 |  | NOTIFY SCL, LIGHTING | 0d | 2024-06-12 | 2024-06-12 | 3-3070 |  |  |  | -124d | 0d | MBRT NEW |  |  | 0 | ELECRICAL SUB | 3-3075 | 3-3075 | ZONE-3 | LIGHTING | PRIME | FM001 | NOTIFY |  |
| 3-3080 |  | SCL Lighting Final Inspection, LIGHTING | 2d | 2024-06-12 | 2024-06-13 | 3-3075 |  |  |  | -124d | 0d | MBRT NEW [16 h] | 16 |  | 16 | CITY | 3-3080 | 3-3080 | ZONE-3 | LIGHTING | PRIME | FM001 | INSPECT |  |
| 3-3090 |  | COMM SERVICE, LIGHTING | 1d | 2024-06-14 | 2024-06-14 | 3-3080 |  |  |  | -124d | 0d | MBRT NEW [8 h] | 8 |  | 8 | CITY | 3-3090 | 3-3090 | ZONE-3 | LIGHTING | PRIME | FM001 |  |  |
| 3-3095 |  | NOTIFY SCL, LIGHTING | 0d | 2024-06-17 | 2024-06-17 | 3-3090 |  |  |  | -124d | 0d | MBRT NEW |  |  | 0 | ELECRICAL SUB | 3-3095 | 3-3095 | ZONE-3 | LIGHTING | PRIME | FM001 | NOTIFY |  |
| 3-3100 |  | SCL Commissioning Inspection, LIGHTING | 10d | 2024-06-17 | 2024-06-28 | 3-3095 |  |  |  | -124d | 0d | MBRT NEW |  |  | 80 | CITY | 3-3100 | 3-3100 | ZONE-3 | LIGHTING | PRIME | FM001 | INSPECT |  |
| 3-3085 |  | COMM LIGHTING, LIGHTING | 1d | 2024-07-01 | 2024-07-01 | 3-3100 |  |  |  | -124d | 23d | MBRT NEW [8 h] | 8 |  | 8 | CITY | 3-3085 | 3-3085 | ZONE-3 | LIGHTING | PRIME | FM001 |  |  |
|  | 9 | **HARRISON** |  | 2024-02-13 | 2024-07-15 |  |  |  |  |  |  |  |  |  |  |  |  |  |  |  |  |  |  |  |
| 3-3020 |  | INST POLES, LIGHTING | 4d | 2024-02-13 A | 2024-02-14 A | 3-3120, 3-3065 | 100% | 2024-02-12 | 2024-02-15 |  |  | MBRT NEW [32 h] | 32 | 16 | 16 | ELECRICAL SUB | 3-3020 | 3-3020 | ZONE-3 | LIGHTING | PRIME | FM001 |  |  |
| 3-3025 |  | INST WIRING, LIGHTING | 10d | 2024-06-12 | 2024-06-25 | 3-3020, 3-3070, 3-2480 |  |  |  | -134d | 0d | MBRT NEW [80 h] | 80 |  | 80 | ELECRICAL SUB | 3-3025 | 3-3025 | ZONE-3 | LIGHTING | PRIME | FM001 |  | POLES3 |
| 3-3030 |  | NOTIFY SCL, LIGHTING | 0d | 2024-06-26 | 2024-06-26 | 3-3025 |  |  |  | -134d | 0d | MBRT NEW |  |  | 0 | ELECRICAL SUB | 3-3030 | 3-3030 | ZONE-3 | LIGHTING | PRIME | FM001 | NOTIFY | POLES3 |
| 3-3035 |  | SCL Lighting Final Inspection, LIGHTING | 2d | 2024-06-26 | 2024-06-27 | 3-3030 |  |  |  | -134d | 0d | MBRT NEW [16 h] | 16 |  | 16 | CITY | 3-3035 | 3-3035 | ZONE-3 | LIGHTING | PRIME | FM001 | INSPECT | POLES3 |
| 3-3045 |  | COMM SERVICE, LIGHTING | 1d | 2024-06-28 | 2024-06-28 | 3-3035 |  |  |  | -134d | 0d | MBRT NEW [8 h] | 8 |  | 8 | CITY | 3-3045 | 3-3045 | ZONE-3 | LIGHTING | PRIME | FM001 |  | POLES3 |
| 3-3050 |  | NOTIFY SCL, LIGHTING | 0d | 2024-07-01 | 2024-07-01 | 3-3045 |  |  |  | -134d | 0d | MBRT NEW |  |  | 0 | ELECRICAL SUB | 3-3050 | 3-3050 | ZONE-3 | LIGHTING | PRIME | FM001 | NOTIFY | POLES3 |
| 3-3055 |  | SCL Commissioning Inspection, LIGHTING | 10d | 2024-07-01 | 2024-07-12 | 3-3050 |  |  |  | -134d | 0d | MBRT NEW |  |  | 80 | CITY | 3-3055 | 3-3055 | ZONE-3 | LIGHTING | PRIME | FM001 | INSPECT | POLES3 |
| 3-3040 |  | COMM LIGHTING, LIGHTING | 1d | 2024-07-15 | 2024-07-15 | 3-3055 |  |  |  | -134d | 11d | MBRT NEW [8 h] | 8 |  | 8 | CITY | 3-3040 | 3-3040 | ZONE-3 | LIGHTING | PRIME | FM001 |  | POLES3 |

| ID | WBS | Activity | Duration | Start | Finish | Predecessors | Complete | Planned start | Planned finish | Total float | Free float | Resources | Cost | Actual cost | user_text2 | user_number6 | user_text10 | user_text8 | MBRT-ZONE | MBRT-TYPE | MBRT-RESP | MBRT-DELAY | MBRT-ACTIVITY | ~SELECT |
| --- | --- | --- | --- | --- | --- | --- | --- | --- | --- | --- | --- | --- | --- | --- | --- | --- | --- | --- | --- | --- | --- | --- | --- | --- |
|  | 8 | **19TH AND UNION** |  | 2024-04-23 | 2024-07-25 |  |  |  |  |  |  |  |  |  |  |  |  |  |  |  |  |  |  |  |
| 3-2975 |  | INST POLES, LIGHTING | 10d | 2024-04-23 | 2024-05-06 | 3-2490, 3-3020 |  |  |  | -104d | 38d | MBRT NEW [80 h] | 80 |  | ELECRICAL SUB | 80 | 3-2975 | 3-2975 | ZONE-3 | LIGHTING | PRIME | FM001 |  |  |
| 3-2980 |  | INST WIRING, LIGHTING | 5d | 2024-07-01 | 2024-07-05 | 3-2975, 3-2493, 3-2490 |  |  |  | -142d | 0d | MBRT NEW [40 h] | 40 |  | ELECRICAL SUB | 40 | 3-2980 | 3-2980 | ZONE-3 | LIGHTING | PRIME | FM001 |  |  |
| 3-2985 |  | NOTIFY SCL, LIGHTING | 0d | 2024-07-08 | 2024-07-08 | 3-2980 |  |  |  | -142d | 0d | MBRT NEW |  |  | ELECRICAL SUB | 0 | 3-2985 | 3-2985 | ZONE-3 | LIGHTING | PRIME | FM001 | NOTIFY |  |
| 3-2990 |  | SCL Lighting Final Inspection, LIGHTING | 2d | 2024-07-08 | 2024-07-09 | 3-2985 |  |  |  | -142d | 0d | MBRT NEW [16 h] | 16 |  | CITY | 16 | 3-2990 | 3-2990 | ZONE-3 | LIGHTING | PRIME | FM001 | INSPECT |  |
| 3-3000 |  | COMM SERVICE, LIGHTING | 1d | 2024-07-10 | 2024-07-10 | 3-2990 |  |  |  | -142d | 0d | MBRT NEW [8 h] | 8 |  | CITY | 8 | 3-3000 | 3-3000 | ZONE-3 | LIGHTING | PRIME | FM001 |  |  |
| 3-3005 |  | NOTIFY SCL, LIGHTING | 0d | 2024-07-11 | 2024-07-11 | 3-3000 |  |  |  | -142d | 0d | MBRT NEW |  |  | ELECRICAL SUB | 0 | 3-3005 | 3-3005 | ZONE-3 | LIGHTING | PRIME | FM001 | NOTIFY |  |
| 3-3010 |  | SCL Commissioning Inspection, LIGHTING | 10d | 2024-07-11 | 2024-07-24 | 3-3005 |  |  |  | -142d | 0d | MBRT NEW |  |  | CITY | 80 | 3-3010 | 3-3010 | ZONE-3 | LIGHTING | PRIME | FM001 | INSPECT |  |
| 3-2995 |  | COMM LIGHTING, LIGHTING | 1d | 2024-07-25 | 2024-07-25 | 3-3010 |  |  |  | -142d | 5d | MBRT NEW [8 h] | 8 |  | CITY | 8 | 3-2995 | 3-2995 | ZONE-3 | LIGHTING | PRIME | FM001 |  |  |
|  | 19 | **WORK TO COMPLETE AFTER SIGNAL/LIGHTING COMMISSIONING** |  | 2023-10-10 | 2024-07-04 |  |  |  |  |  |  |  |  |  |  |  |  |  |  |  |  |  |  |  |
|  | 18 | **16TH AND MADISON** |  | 2024-02-21 | 2024-03-27 |  |  |  |  |  |  |  |  |  |  |  |  |  |  |  |  |  |  |  |
| 3-3130 |  | REMOVE TEMP SIGNALS | 2d | 2024-02-21 A | 2024-02-22 A | 3-2378 | 100% | 2024-02-12 | 2024-02-13 |  |  | MBRT ADDED [16 h] | 16 | 16 | ELECRICAL SUB | 16 | 3-3130 | 3-3130 | ZONE-3 | SIGNALS | PRIME |  |  |  |
| 3-3135 |  | REMOVE SIGNAL POLE | 1d | 2024-02-21 A | 2024-02-22 A | 3-3130 | 100% | 2024-02-14 | 2024-02-14 |  |  | MBRT ADDED [8 h] | 8 | 16 | ELECRICAL SUB | 16 | 3-3135 | 3-3135 | ZONE-3 | SIGNALS | PRIME |  |  |  |
| 3-3140 |  | REMOVE FOUNDATIONS | 2d | 2024-03-04 A | 2024-03-05 A | 3-3135 | 100% |  |  |  |  | MBRT ADDED [16 h] | 16 |  | ELECRICAL SUB | 16 | 3-3140 | 3-3140 | ZONE-3 | SIGNALS | PRIME |  |  |  |
| 3-3145 |  | GRADE SIDEWALKS | 1d | 2024-03-06 A | 2024-03-06 A | 3-3140 | 100% |  |  |  |  | MBRT ADDED [8 h] | 8 |  | ELECRICAL SUB | 8 | 3-3145 | 3-3145 | ZONE-3 | SIGNALS | PRIME |  |  |  |
| 3-3150 |  | CURB RAMP | 2d | 2024-03-07 A | 2024-03-08 A | 3-3145 | 100% |  |  |  |  | MBRT ADDED [16 h] | 16 |  | ELECRICAL SUB | 16 | 3-3150 | 3-3150 | ZONE-3 | SIGNALS | PRIME |  |  |  |
| 3-3155 |  | SIDEWALKS | 1d | 2024-03-11 A | 2024-03-11 A | 3-3150 | 100% |  |  |  |  | MBRT ADDED [8 h] | 8 |  | ELECRICAL SUB | 8 | 3-3155 | 3-3155 | ZONE-3 | SIGNALS | PRIME |  | NOTIFY |  |
| 3-3125 |  | REMOVE TEMP LIGHTING | 2d | 2024-03-22 A | 2024-03-25 A | 3-2507 | 100% |  |  |  |  | MBRT ADDED [16 h] | 16 |  | ELECRICAL SUB | 16 | 3-3125 | 3-3125 | ZONE-3 | SIGNALS | PRIME |  |  | X |
| 3-3160 |  | GRADE SIDEWALKS AFTER TEMP LIGHTING REMOVAL | 1d | 2024-03-26 A | 2024-03-26 A | 3-3125 | 100% |  |  |  |  | MBRT ADDED [8 h] | 8 |  | CITY | 8 | 3-3160 | 3-3160 | ZONE-3 | SIGNALS | SCL |  | INSPECT |  |
| 3-3165 |  | FINISH SIDEWALKS | 1d | 2024-03-27 A | 2024-03-27 A | 3-3160 | 100% |  |  |  |  | MBRT ADDED [8 h] | 8 |  | CITY ,ELECRICAL SUB | 8 | 3-3165 | 3-3165 | ZONE-3 | SIGNALS | PRIME |  |  |  |
|  | 1 | **17TH AND MADISON** |  | 2024-04-17 | 2024-04-22 |  |  |  |  |  |  |  |  |  |  |  |  |  |  |  |  |  |  |  |
| 3-3170 |  | REMOVE CABINET | 1d | 2024-04-17 | 2024-04-17 | 3-2389 |  |  |  | -75d | 0d | MBRT ADDED [8 h] | 8 |  | ELECRICAL SUB | 8 | 3-3170 | 3-3170 | ZONE-3 | SIGNALS | PRIME |  |  | X |
| 3-3175 |  | REMOVE CABINET FOUNDATION | 1d | 2024-04-18 | 2024-04-18 | 3-3170 |  |  |  | -75d | 0d | MBRT ADDED [8 h] | 8 |  | ELECRICAL SUB | 8 | 3-3175 | 3-3175 | ZONE-3 | SIGNALS | PRIME |  |  |  |
| 3-3190 |  | GRADE SIDEWALKS | 1d | 2024-04-19 | 2024-04-19 | 3-3175 |  |  |  | -75d | 0d | MBRT ADDED [8 h] | 8 |  | ELECRICAL SUB | 8 | 3-3190 | 3-3190 | ZONE-3 | SIGNALS | PRIME |  |  |  |
| 3-3200 |  | POUR SIDEWALKS | 1d | 2024-04-22 | 2024-04-22 | 3-3190 |  |  |  | -75d | 72d | MBRT ADDED [8 h] | 8 |  | ELECRICAL SUB | 8 | 3-3200 | 3-3200 | ZONE-3 | SIGNALS | PRIME |  | NOTIFY |  |

| ID | WBS | Activity | Duration | Start | Finish | Predecessors | Complete | Planned start | Planned finish | Total float | Free float | Resources | Cost | Actual cost | ~SELECT | user_text2 | user_number6 | user_text10 | user_text8 | MBRT-ZONE | MBRT-TYPE | MBRT-RESP | MBRT-ACTIVITY |
| --- | --- | --- | --- | --- | --- | --- | --- | --- | --- | --- | --- | --- | --- | --- | --- | --- | --- | --- | --- | --- | --- | --- | --- |
|  | 2 | **19TH AND MADISON** |  | 2024-07-01 | 2024-07-04 |  |  |  |  |  |  |  |  |  |  |  |  |  |  |  |  |  |  |
| 3-3205 |  | REMOVE CABINET | 1d | 2024-07-01 | 2024-07-01 | 3-2415, 3-2402 |  |  |  | -127d | 0d | MBRT ADDED [8 h] | 8 |  | X | ELECRICAL SUB | 8 | 3-3205 | 3-3205 | ZONE-3 | SIGNALS | PRIME |  |
| 3-3210 |  | REMOVE CABINET FOUNDATION | 1d | 2024-07-02 | 2024-07-02 | 3-3205 |  |  |  | -127d | 0d | MBRT ADDED [8 h] | 8 |  |  | ELECRICAL SUB | 8 | 3-3210 | 3-3210 | ZONE-3 | SIGNALS | PRIME |  |
| 3-3215 |  | GRADE SIDEWALKS | 1d | 2024-07-03 | 2024-07-03 | 3-3210 |  |  |  | -127d | 0d | MBRT ADDED [8 h] | 8 |  |  | ELECRICAL SUB | 8 | 3-3215 | 3-3215 | ZONE-3 | SIGNALS | PRIME |  |
| 3-3220 |  | POUR SIDEWALKS | 1d | 2024-07-04 | 2024-07-04 | 3-3215 |  |  |  | -127d | 20d | MBRT ADDED [8 h] | 8 |  |  | ELECRICAL SUB | 8 | 3-3220 | 3-3220 | ZONE-3 | SIGNALS | PRIME | NOTIFY |
|  | 3 | **20TH AND MADISON** |  | 2024-02-06 | 2024-03-11 |  |  |  |  |  |  |  |  |  |  |  |  |  |  |  |  |  |  |
| 3-3225 |  | REMOVE CABINET | 1d | 2024-02-06 A | 2024-02-09 A | 3-2427 | 100% | 2023-12-28 | 2023-12-28 |  |  | MBRT ADDED [8 h] | 8 | 32 | X | ELECRICAL SUB | 32 | 3-3225 | 3-3225 | ZONE-3 | SIGNALS | PRIME |  |
| 3-3230 |  | REMOVE CABINET FOUNDATION | 4d | 2024-03-04 A | 2024-03-07 A | 3-3225 | 100% |  |  |  |  | MBRT ADDED [32 h] | 32 |  |  | ELECRICAL SUB | 32 | 3-3230 | 3-3230 | ZONE-3 | SIGNALS | PRIME |  |
| 3-3235 |  | GRADE SIDEWALKS | 1d | 2024-03-08 A | 2024-03-08 A | 3-3230 | 100% |  |  |  |  | MBRT ADDED [8 h] | 8 |  |  | ELECRICAL SUB | 8 | 3-3235 | 3-3235 | ZONE-3 | SIGNALS | PRIME |  |
| 3-3240 |  | POUR SIDEWALKS | 1d | 2024-03-11 A | 2024-03-11 A | 3-3235 | 100% |  |  |  |  | MBRT ADDED [8 h] | 8 |  |  | ELECRICAL SUB | 8 | 3-3240 | 3-3240 | ZONE-3 | SIGNALS | PRIME | NOTIFY |
|  | 4 | **DENNY AND MADISON** |  | 2023-10-10 | 2023-12-13 |  |  |  |  |  |  |  |  |  |  |  |  |  |  |  |  |  |  |
| 3-3325 |  | DELAY AWAITING SCL TO DECOMISSION OLD SERVICE | 0d | 2023-10-10 A | 2023-11-16 A | MS-0025 | 100% | 2023-10-02 | 2023-10-02 |  |  | MBRT ADDED |  |  |  |  | 216 |  |  |  |  |  |  |
| 3-3245 |  | REMOVE CABINET | 1d | 2023-12-05 A | 2023-12-05 A | 3-2440, 3-3325 | 100% | 2023-11-09 | 2023-11-09 |  |  | MBRT ADDED [8 h] | 8 | 8 | X | ELECRICAL SUB | 8 | 3-3245 | 3-3245 | ZONE-3 | SIGNALS | PRIME |  |
| 3-3250 |  | REMOVE CABINET FOUNDATION | 1d | 2023-12-11 A | 2023-12-11 A | 3-3245 | 100% |  |  |  |  | MBRT ADDED [8 h] | 8 | 8 |  | ELECRICAL SUB | 8 | 3-3250 | 3-3250 | ZONE-3 | SIGNALS | PRIME |  |
| 3-3255 |  | GRADE SIDEWALKS | 1d | 2023-12-12 A | 2023-12-12 A | 3-3250 | 100% |  |  |  |  | MBRT ADDED [8 h] | 8 | 8 |  | ELECRICAL SUB | 8 | 3-3255 | 3-3255 | ZONE-3 | SIGNALS | PRIME |  |
| 3-3260 |  | POUR SIDEWALKS | 1d | 2023-12-13 A | 2023-12-13 A | 3-3255 | 100% |  |  |  |  | MBRT ADDED [8 h] | 8 | 8 |  | ELECRICAL SUB | 8 | 3-3260 | 3-3260 | ZONE-3 | SIGNALS | PRIME | NOTIFY |
|  | 5 | **24TH AND MADISON** |  | 2023-11-16 | 2023-12-29 |  |  |  |  |  |  |  |  |  |  |  |  |  |  |  |  |  |  |
| 3-3330 |  | DELAY AWAITING SCL TO DECOMISSION OLD SERVICE | 0d | 2023-11-16 A | 2023-11-20 A | 3-3325 | 100% | 2023-11-02 | 2023-11-02 |  |  | MBRT ADDED |  |  |  |  | 24 |  |  |  |  |  |  |
| 3-3265 |  | REMOVE CABINET | 1d | 2023-12-05 A | 2023-12-05 A | 3-2459, 3-3330, 3-3245 SS | 100% | 2023-11-17 | 2023-11-17 |  |  | MBRT ADDED [8 h] | 8 | 8 | X | ELECRICAL SUB | 8 | 3-3265 | 3-3265 | ZONE-3 | SIGNALS | PRIME |  |
| 3-3270 |  | REMOVE CABINET FOUNDATION | 1d | 2023-12-11 A | 2023-12-11 A | 3-3265 | 100% |  |  |  |  | MBRT ADDED [8 h] | 8 | 8 |  | ELECRICAL SUB | 8 | 3-3270 | 3-3270 | ZONE-3 | SIGNALS | PRIME |  |
| 3-3275 |  | GRADE SIDEWALKS | 1d | 2023-12-12 A | 2023-12-12 A | 3-3270 | 100% |  |  |  |  | MBRT ADDED [8 h] | 8 | 8 |  | ELECRICAL SUB | 8 | 3-3275 | 3-3275 | ZONE-3 | SIGNALS | PRIME |  |
| 3-3280 |  | POUR SIDEWALKS | 1d | 2023-12-13 A | 2023-12-13 A | 3-3275 | 100% |  |  |  |  | MBRT ADDED [8 h] | 8 | 8 |  | ELECRICAL SUB | 8 | 3-3280 | 3-3280 | ZONE-3 | SIGNALS | PRIME | NOTIFY |
| 3-3305 |  | REMOVE WOOD POLE | 1d | 2023-12-29 A | 2023-12-29 A | 3-2770 | 100% |  |  |  |  | MBRT ADDED [8 h] | 8 | 8 | X | ELECRICAL SUB | 8 | 3-3305 | 3-3305 | ZONE-3 | SIGNALS | PRIME |  |
|  | 6 | **28TH/MLK AND MADISON** |  | 2024-05-30 | 2024-06-10 |  |  |  |  |  |  |  |  |  |  |  |  |  |  |  |  |  |  |
| 3-3285 |  | REMOVE CABINET | 1d | 2024-05-30 | 2024-05-30 | 3-2473 |  |  |  | -109d | 0d | MBRT ADDED [8 h] | 8 |  | X | ELECRICAL SUB | 8 | 3-3285 | 3-3285 | ZONE-3 | SIGNALS | PRIME |  |
| 3-3310 |  | REMOVE STRAIN POLES | 1d | 2024-05-31 | 2024-05-31 | 3-3285 |  |  |  | -109d | 0d | MBRT ADDED [8 h] | 8 |  | X | ELECRICAL SUB | 8 | 3-3310 | 3-3310 | ZONE-3 | SIGNALS | PRIME |  |
| 3-3290 |  | REMOVE FOUNDATIONS | 2d | 2024-06-03 | 2024-06-04 | 3-3310 |  |  |  | -109d | 0d | MBRT ADDED [16 h] | 16 |  |  | ELECRICAL SUB | 16 | 3-3290 | 3-3290 | ZONE-3 | SIGNALS | PRIME |  |
| 3-3295 |  | GRADE SIDEWALKS | 1d | 2024-06-05 | 2024-06-05 | 3-3290 |  |  |  | -109d | 0d | MBRT ADDED [8 h] | 8 |  |  | ELECRICAL SUB | 8 | 3-3295 | 3-3295 | ZONE-3 | SIGNALS | PRIME |  |
| 3-3315 |  | CURB RAMP | 2d | 2024-06-06 | 2024-06-07 | 3-3295 |  |  |  | -109d | 0d | MBRT ADDED [16 h] | 16 |  |  | ELECRICAL SUB | 16 | 3-3315 | 3-3315 | ZONE-3 | SIGNALS | PRIME |  |
| 3-3300 |  | POUR SIDEWALKS | 1d | 2024-06-10 | 2024-06-10 | 3-3315 |  |  |  | -109d | 36d | MBRT ADDED [8 h] | 8 |  |  | ELECRICAL SUB | 8 | 3-3300 | 3-3300 | ZONE-3 | SIGNALS | PRIME | NOTIFY |

| ID | WBS | Activity | Duration | Start | Finish | Predecessors | Complete | Planned start | Planned finish | Resources | user_number6 | user_text10 | user_text8 | ~SELECT |
| --- | --- | --- | --- | --- | --- | --- | --- | --- | --- | --- | --- | --- | --- | --- |
|  | 18 | **KCM SERVICE CONECTIONS** |  | 2023-05-01 | 2023-10-05 |  |  |  |  |  |  |  |  |  |
|  | 1 | **DENNY AND MADISON WB** |  | 2023-05-16 | 2023-09-11 |  |  |  |  |  |  |  |  |  |
| 3-9541 |  | SERVICE CABINET | 1d | 2023-05-16 A | 2023-05-16 A | 3-3385 SS | 100% |  |  | MBRT KCM [8 h] | 8 | 3-9541 | 3-9541 |  |
| 3-9544 |  | SDCI INSPECTION | 1d | 2023-06-02 A | 2023-06-02 A | 3-9541 FS+11d | 100% |  |  | MBRT KCM [8 h] | 8 | 3-9544 | 3-9544 | x |
| 3-9542 |  | REQUEST KCM INSPECTION | 1d | 2023-06-08 A | 2023-06-08 A | 3-9541, 3-9544 FS+3d | 100% |  |  | MBRT KCM [8 h] | 8 | 3-9542 | 3-9542 | x |
| 3-9543 |  | WAIT FOR KCM TO INSPECT | 4d | 2023-06-09 A | 2023-06-14 A | 3-9542 | 100% |  |  | MBRT KCM [32 h] | 32 | 3-9543 | 3-9543 | x |
| 3-9545 |  | NOTIFY SCL FOR INSPECTION | 1d | 2023-07-03 A | 2023-07-03 A | 3-9544, 3-9543 | 100% |  |  | MBRT KCM [8 h] | 8 | 3-9545 | 3-9545 | x |
| 3-9546 |  | 30 DAY WAIT FOR SCL TO INSPECT | 30d | 2023-07-05 A | 2023-08-07 A | 3-9545 | 100% | 2023-07-05 | 2023-08-15 | MBRT KCM | 192 | 3-9546 | 3-9546 | x |
| 3-9547 |  | SCL INSPECTION | 1d | 2023-08-08 A | 2023-08-08 A | 3-9546 | 100% | 2023-08-16 | 2023-08-16 | MBRT KCM [8 h] | 8 | 3-9547 | 3-9547 | x |
| 3-9548 |  | NOTIFY SCL TO COMMISION | 1d | 2023-08-09 A | 2023-08-09 A | 3-9547 | 100% | 2023-08-17 | 2023-08-17 | MBRT KCM [8 h] | 8 | 3-9548 | 3-9548 | x |
| 3-9549 |  | 30 DAY WAIT FOR SCL TO COMMISION | 21d | 2023-08-10 A | 2023-09-08 A | 3-9548 | 100% | 2023-08-18 | 2023-09-18 | MBRT KCM | 168 | 3-9549 | 3-9549 | x |
| 3-9550 |  | COMMISION SERVICE | 1d | 2023-09-11 A | 2023-09-11 A | 3-9549 | 100% | 2023-09-15 | 2023-09-15 | MBRT KCM [8 h] | 8 | 3-9550 | 3-9550 | x |
|  | 2 | **DENNY AND MADISON EB** |  | 2023-06-01 | 2023-09-11 |  |  |  |  |  |  |  |  |  |
| 3-9552 |  | SERVICE CABINET | 1d | 2023-06-01 A | 2023-06-01 A | 3-3385 | 100% |  |  | MBRT KCM [8 h] | 8 | 3-9552 | 3-9552 | x |
| 3-9555 |  | SDCI INSPECTION | 1d | 2023-06-02 A | 2023-06-02 A | 3-9552 | 100% |  |  | MBRT KCM [8 h] | 8 | 3-9555 | 3-9555 | x |
| 3-9553 |  | REQUEST KCM INSPECTION | 1d | 2023-06-07 A | 2023-06-07 A | 3-9552, 3-9555 FS+2d | 100% |  |  | MBRT KCM [8 h] | 8 | 3-9553 | 3-9553 | x |
| 3-9554 |  | WAIT FOR KCM TO INSPECT | 4d | 2023-06-08 A | 2023-06-13 A | 3-9553 | 100% |  |  | MBRT KCM [32 h] | 32 | 3-9554 | 3-9554 | x |
| 3-9556 |  | NOTIFY SCL FOR INSPECTION | 1d | 2023-07-03 A | 2023-07-03 A | 3-9555, 3-9554 | 100% |  |  | MBRT KCM [8 h] | 8 | 3-9556 | 3-9556 | x |
| 3-9557 |  | 30 DAY WAIT FOR SCL TO INSPECT | 30d | 2023-07-05 A | 2023-08-01 A | 3-9556 | 100% | 2023-07-05 | 2023-08-15 | MBRT KCM | 160 | 3-9557 | 3-9557 | x |
| 3-9558 |  | SCL INSPECTION | 1d | 2023-08-02 A | 2023-08-02 A | 3-9557 | 100% | 2023-08-16 | 2023-08-16 | MBRT KCM [8 h] | 8 | 3-9558 | 3-9558 | x |
| 3-9559 |  | NOTIFY SCL TO COMMISION | 1d | 2023-08-09 A | 2023-08-09 A | 3-9558 | 100% | 2023-08-17 | 2023-08-17 | MBRT KCM [8 h] | 8 | 3-9559 | 3-9559 | x |
| 3-9560 |  | 30 DAY WAIT FOR SCL TO COMMISION | 21d | 2023-08-10 A | 2023-09-08 A | 3-9559 | 100% | 2023-08-18 | 2023-09-18 | MBRT KCM | 168 | 3-9560 | 3-9560 | x |
| 3-9561 |  | COMMISION SERVICE | 1d | 2023-09-11 A | 2023-09-11 A | 3-9560 | 100% | 2023-10-13 | 2023-10-13 | MBRT KCM [8 h] | 8 | 3-9561 | 3-9561 | x |
|  | 3 | **23RD AND MADISON** |  | 2023-05-01 | 2023-09-11 |  |  |  |  |  |  |  |  |  |
| 3-9563 |  | SERVICE CABINET | 1d | 2023-05-01 A | 2023-05-01 A | 3-2220 | 100% |  |  | MBRT KCM [8 h] | 8 | 3-9563 | 3-9563 | x |
| 3-9566 |  | SDCI INSPECTION | 1d | 2023-06-02 A | 2023-06-02 A | 3-9563 FS+1d | 100% |  |  | MBRT KCM [8 h] | 8 | 3-9566 | 3-9566 | x |
| 3-9564 |  | REQUEST KCM INSPECTION | 1d | 2023-06-08 A | 2023-06-08 A | 3-9563, 3-9566 FS+3d | 100% |  |  | MBRT KCM [8 h] | 8 | 3-9564 | 3-9564 | x |
| 3-9565 |  | WAIT FOR KCM TO INSPECT | 4d | 2023-06-09 A | 2023-06-14 A | 3-9564 | 100% |  |  | MBRT KCM [32 h] | 32 | 3-9565 | 3-9565 | x |
| 3-9567 |  | NOTIFY SCL FOR INSPECTION | 1d | 2023-07-03 A | 2023-07-03 A | 3-9563, 3-9566, 3-9565 | 100% |  |  | MBRT KCM [8 h] | 8 | 3-9567 | 3-9567 | x |
| 3-9568 |  | 30 DAY WAIT FOR SCL TO INSPECT | 30d | 2023-07-05 A | 2023-08-01 A | 3-9567 | 100% | 2023-07-05 | 2023-08-15 | MBRT KCM | 160 | 3-9568 | 3-9568 | x |
| 3-9569 |  | SCL INSPECTION | 1d | 2023-08-02 A | 2023-08-02 A | 3-9568 | 100% | 2023-08-16 | 2023-08-16 | MBRT KCM [8 h] | 8 | 3-9569 | 3-9569 | x |
| 3-9570 |  | NOTIFY SCL TO COMMISION | 1d | 2023-08-09 A | 2023-08-09 A | 3-9569 | 100% | 2023-08-17 | 2023-08-17 | MBRT KCM [8 h] | 8 | 3-9570 | 3-9570 | x |
| 3-9571 |  | 30 DAY WAIT FOR SCL TO COMMISION | 16d | 2023-08-10 A | 2023-09-08 A | 3-9570 | 100% | 2023-08-18 | 2023-09-11 | MBRT KCM | 168 | 3-9571 | 3-9571 | x |
| 3-9572 |  | COMMISION SERVICE | 1d | 2023-09-11 A | 2023-09-11 A | 3-9571 | 100% | 2023-09-18 | 2023-09-18 | MBRT KCM [8 h] | 8 | 3-9572 | 3-9572 | x |

| ID | WBS | Activity | Duration | Start | Finish | Predecessors | Complete | Planned start | Planned finish | Total float | Free float | Resources | Cost | Actual cost | user_number6 | user_text10 | user_text8 | ~SELECT | user_text2 | MBRT-ZONE | MBRT-TYPE |
| --- | --- | --- | --- | --- | --- | --- | --- | --- | --- | --- | --- | --- | --- | --- | --- | --- | --- | --- | --- | --- | --- |
|  | 4 | **JOHN AND MADISON** |  | 2023-05-17 | 2023-10-05 |  |  |  |  |  |  |  |  |  |  |  |  |  |  |  |  |
| 3-9574 |  | SERVICE CABINET | 1d | 2023-05-17 A | 2023-05-17 A | 3-3455 | 100% |  |  |  |  | MBRT KCM [8 h] |  |  | 8 | 3-9574 | 3-9574 |  |  |  |  |
| 3-9577 |  | SDCI INSPECTION | 1d | 2023-06-02 A | 2023-06-02 A | 3-9574, 3-9566 SS | 100% |  |  |  |  | MBRT KCM [8 h] |  |  | 8 | 3-9577 | 3-9577 | x |  |  |  |
| 3-9575 |  | REQUEST KCM INSPECTION | 1d | 2023-06-08 A | 2023-06-08 A | 3-9574, 3-9577 FS+3d | 100% |  |  |  |  | MBRT KCM [8 h] |  |  | 8 | 3-9575 | 3-9575 | x |  |  |  |
| 3-9576 |  | WAIT FOR KCM TO INSPECT | 4d | 2023-06-09 A | 2023-06-14 A | 3-9575 | 100% |  |  |  |  | MBRT KCM [32 h] |  |  | 32 | 3-9576 | 3-9576 | x |  |  |  |
| 3-9578 |  | NOTIFY SCL FOR INSPECTION | 1d | 2023-09-21 A | 2023-09-21 A | 3-9577, 3-9576 | 100% | 2023-08-14 | 2023-08-14 |  |  | MBRT KCM [8 h] |  |  | 8 | 3-9578 | 3-9578 | x |  |  |  |
| 3-9579 |  | 30 DAY WAIT FOR SCL TO INSPECT | 16d | 2023-09-22 A | 2023-09-29 A | 3-9578 | 100% | 2023-08-15 | 2023-09-06 |  |  | MBRT KCM |  |  | 48 | 3-9579 | 3-9579 | x |  |  |  |
| 3-9580 |  | SCL INSPECTION | 1d | 2023-10-02 A | 2023-10-02 A | 3-9579 | 100% | 2023-10-25 | 2023-10-25 |  |  | MBRT KCM [8 h] |  |  | 8 | 3-9580 | 3-9580 | x |  |  |  |
| 3-9581 |  | NOTIFY SCL TO COMMISION | 1d | 2023-10-03 A | 2023-10-03 A | 3-9580 | 100% | 2023-10-26 | 2023-10-26 |  |  | MBRT KCM [8 h] |  |  | 8 | 3-9581 | 3-9581 | x |  |  |  |
| 3-9582 |  | 30 DAY WAIT FOR SCL TO COMMISION | 16d | 2023-10-04 A | 2023-10-04 A | 3-9581 | 100% | 2023-10-27 | 2023-11-20 |  |  | MBRT KCM |  |  | 8 | 3-9582 | 3-9582 | x |  |  |  |
| 3-9583 |  | COMMISION SERVICE | 1d | 2023-10-05 A | 2023-10-05 A | 3-9582 | 100% | 2023-11-21 | 2023-11-21 |  |  | MBRT KCM [8 h] |  |  | 8 | 3-9583 | 3-9583 | x |  |  |  |
|  | 14 | **STATIONS** |  | 2024-01-03 | 2024-05-14 |  |  |  |  |  |  |  |  |  |  |  |  |  |  |  |  |
|  | 1 | **17TH AVE WB STATION** |  | 2024-02-05 | 2024-04-05 |  |  |  |  |  |  |  |  |  |  |  |  |  |  |  |  |
| 3-2510 |  | INST SHELTER, 17TH AVE WB STATION | 4d | 2024-02-05 A | 2024-02-05 A | 3-2134 | 100% | 2023-12-15 | 2023-12-20 |  |  | MBRT BASE [8 h] | 8 | 8 | 8 | 3-2510 | 3-2510 |  | SHELTER INTALL SUB | ZONE-3 | STATIONS |
| 3-2511 |  | INST TEC PYLON, 17TH AVE WB STATION | 2d | 2024-04-02 | 2024-04-03 | 3-2510 |  |  |  | -91d | 0d | MBRT BASE [16 h] | 16 |  | 16 | 3-2511 | 3-2511 |  | ELECRICAL SUB | ZONE-3 | STATIONS |
| 3-2512 |  | INST AMENITIES, 17TH AVE WB STATION | 2d | 2024-04-04 | 2024-04-05 | 3-2511 |  |  |  | -91d | 0d | MBRT BASE [16 h] | 16 |  | 16 | 3-2512 | 3-2512 |  | ZZZZ | ZONE-3 | STATIONS |
|  | 2 | **17TH AVE EB STATION** |  | 2024-01-03 | 2024-04-09 |  |  |  |  |  |  |  |  |  |  |  |  |  |  |  |  |
| 3-2514 |  | INST SHELTER, 17TH AVE EB STATION | 4d | 2024-01-03 A | 2024-01-03 A | 3-7955 | 100% | 2023-12-28 | 2024-01-03 |  |  | MBRT BASE [8 h] | 8 | 8 | 8 | 3-2514 | 3-2514 |  | SHELTER INTALL SUB | ZONE-3 | STATIONS |
| 3-2515 |  | INST TEC PYLON, 17TH AVE EB STATION | 2d | 2024-04-02 | 2024-04-03 | 3-2514 |  |  |  | -89d | 2d | MBRT BASE [16 h] | 16 |  | 16 | 3-2515 | 3-2515 |  | ELECRICAL SUB | ZONE-3 | STATIONS |
| 3-2516 |  | INST AMENITIES, 17TH AVE EB STATION | 2d | 2024-04-08 | 2024-04-09 | 3-2515, 3-2512 |  |  |  | -91d | 0d | MBRT BASE [16 h] | 16 |  | 16 | 3-2516 | 3-2516 |  | ZZZZ | ZONE-3 | STATIONS |
|  | 3 | **DENNY WB STATION** |  | 2024-02-06 | 2024-04-11 |  |  |  |  |  |  |  |  |  |  |  |  |  |  |  |  |
| 3-2518 |  | INST SHELTER, DENNY WB STATION | 4d | 2024-02-06 A | 2024-02-06 A | 3-2510 | 100% | 2024-01-10 | 2024-01-16 |  |  | MBRT BASE [8 h] | 8 | 8 | 8 | 3-2518 | 3-2518 |  | SHELTER INTALL SUB | ZONE-3 | STATIONS |
| 3-2519 |  | INST TEC PYLON, DENNY WB STATION | 2d | 2024-04-02 | 2024-04-03 | 3-2518 |  |  |  | -87d | 4d | MBRT BASE [16 h] | 16 |  | 16 | 3-2519 | 3-2519 |  | ELECRICAL SUB | ZONE-3 | STATIONS |
| 3-2520 |  | INST AMENITIES, DENNY WB STATION | 2d | 2024-04-10 | 2024-04-11 | 3-2519, 3-2516 |  |  |  | -91d | 0d | MBRT BASE [16 h] | 16 |  | 16 | 3-2520 | 3-2520 |  | ZZZZ | ZONE-3 | STATIONS |

| ID | WBS | Activity | Duration | Start | Finish | Predecessors | Complete | Planned start | Planned finish | Total float | Free float | Resources | Cost | Actual cost | user_text2 | user_number6 | user_text10 | user_text8 | MBRT-ZONE | MBRT-TYPE | MBRT-ACTIVITY |
| --- | --- | --- | --- | --- | --- | --- | --- | --- | --- | --- | --- | --- | --- | --- | --- | --- | --- | --- | --- | --- | --- |
|  | 4 | **DENNY EB STATION** |  | 2024-03-14 | 2024-04-17 |  |  |  |  |  |  |  |  |  |  |  |  |  |  |  |  |
| 3-2522 |  | INST SHELTER, DENNY EB STATION | 4d | 2024-03-14 A | 2024-03-19 A | 3-2205, 3-2518 | 100% |  |  |  |  | MBRT BASE [32 h] | 32 |  | SHELTER INTALL SUB | 32 | 3-2522 | 3-2522 | ZONE-3 | STATIONS |  |
| 3-2523 |  | INST TEC PYLON, DENNY EB STATION | 2d | 2024-04-12 | 2024-04-15 | 3-2522, 3-2520 |  |  |  | -91d | 0d | MBRT BASE [16 h] | 16 |  | ELECRICAL SUB | 16 | 3-2523 | 3-2523 | ZONE-3 | STATIONS |  |
| 3-2524 |  | INST AMENITIES, DENNY EB STATION | 2d | 2024-04-16 | 2024-04-17 | 3-2523, 3-2516 |  |  |  | -91d | 0d | MBRT BASE [16 h] | 16 |  | ZZZZ | 16 | 3-2524 | 3-2524 | ZONE-3 | STATIONS |  |
|  | 5 | **23RD WB STATION** |  | 2024-01-04 | 2024-04-19 |  |  |  |  |  |  |  |  |  |  |  |  |  |  |  |  |
| 3-2526 |  | INST SHELTER, 23RD WB STATION | 4d | 2024-01-04 A | 2024-01-04 A | 3-2220, 3-2285, 3-2514 | 100% | 2024-02-02 | 2024-02-07 |  |  | MBRT BASE [8 h] | 8 | 8 | SHELTER INTALL SUB | 8 | 3-2526 | 3-2526 | ZONE-3 | STATIONS |  |
| 3-2527 |  | INST TEC PYLON, 23RD WB STATION | 2d | 2024-04-16 | 2024-04-17 | 3-2526, 3-2523 |  |  |  | -91d | 0d | MBRT BASE [16 h] | 16 |  | ELECRICAL SUB | 16 | 3-2527 | 3-2527 | ZONE-3 | STATIONS |  |
| 3-2528 |  | INST AMENITIES, 23RD WB STATION | 2d | 2024-04-18 | 2024-04-19 | 3-2527, 3-2524 |  |  |  | -91d | 0d | MBRT BASE [16 h] | 16 |  | ZZZZ | 16 | 3-2528 | 3-2528 | ZONE-3 | STATIONS |  |
|  | 6 | **24TH EB STATION** |  | 2024-02-27 | 2024-04-23 |  |  |  |  |  |  |  |  |  |  |  |  |  |  |  |  |
| 3-2530 |  | INST SHELTER, 24TH EB STATION | 4d | 2024-02-27 A | 2024-02-27 A | 3-2518 FF | 100% | 2024-03-08 | 2024-03-13 |  |  | MBRT BASE [8 h] | 8 | 8 | SHELTER INTALL SUB | 8 | 3-2530 | 3-2530 | ZONE-3 | STATIONS |  |
| 3-2531 |  | INST TEC PYLON, 24TH EB STATION | 2d | 2024-04-18 | 2024-04-19 | 3-2530, 3-2527 |  |  |  | -91d | 0d | MBRT BASE [16 h] | 16 |  | ELECRICAL SUB | 16 | 3-2531 | 3-2531 | ZONE-3 | STATIONS |  |
| 3-2532 |  | INST AMENITIES, 24TH EB STATION | 2d | 2024-04-22 | 2024-04-23 | 3-2531, 3-2528 |  |  |  | -91d | 0d | MBRT BASE [16 h] | 16 |  | ZZZZ | 16 | 3-2532 | 3-2532 | ZONE-3 | STATIONS |  |
|  | 7 | **MADISON AND 27TH EB STATION** |  | 2024-04-24 | 2024-05-03 |  |  |  |  |  |  |  |  |  |  |  |  |  |  |  |  |
| 3-2534 |  | INST SHELTER, MAD & 27TH EB STATION | 4d | 2024-04-24 | 2024-04-29 | 3-2532 |  |  |  | -91d | 0d | MBRT BASE [32 h] | 32 |  | SHELTER INTALL SUB | 32 | 3-2534 | 3-2534 | ZONE-3 | STATIONS |  |
| 3-2535 |  | INST TEC PYLON, MAD & 27TH EB STATION | 2d | 2024-04-30 | 2024-05-01 | 3-2534, 3-2531 |  |  |  | -91d | 0d | MBRT BASE [16 h] | 16 |  | ELECRICAL SUB | 16 | 3-2535 | 3-2535 | ZONE-3 | STATIONS |  |
| 3-2536 |  | INST AMENITIES, MAD & 27TH EB STATION | 2d | 2024-05-02 | 2024-05-03 | 3-2535 |  |  |  | -91d | 0d | MBRT BASE [16 h] | 16 |  | ZZZZ | 16 | 3-2536 | 3-2536 | ZONE-3 | STATIONS |  |
|  | 8 | **MADISON AND MLK WB STATION** |  | 2024-05-06 | 2024-05-14 |  |  |  |  |  |  |  |  |  |  |  |  |  |  |  |  |
| 3-2538 |  | INST SHELTER, MAD & MLK WB STATION | 4d | 2024-05-06 | 2024-05-09 | 3-2536 |  |  |  | -91d | 0d | MBRT BASE [32 h] | 32 |  | SHELTER INTALL SUB | 32 | 3-2538 | 3-2538 | ZONE-3 | STATIONS |  |
| 3-2539 |  | INST TEC PYLON, MAD & MLK WB STATION | 1d | 2024-05-10 | 2024-05-10 | 3-2538 |  |  |  | -91d | 0d | MBRT BASE [8 h] | 8 |  | ELECRICAL SUB | 8 | 3-2539 | 3-2539 | ZONE-3 | STATIONS |  |
| 3-2540 |  | INST AMENITIES, MAD & MLK WB STATION | 2d | 2024-05-13 | 2024-05-14 | 3-2539 |  |  |  | -91d | 56d | MBRT BASE [16 h] | 16 |  | ZZZZ | 16 | 3-2540 | 3-2540 | ZONE-3 | STATIONS |  |
|  | 15 | **REMAINING OCS POLES** |  | 2023-05-31 | 2023-06-05 |  |  |  |  |  |  |  |  |  |  |  |  |  |  |  |  |
| 3-2542 |  | INST REMAINING OCS POLES, REMAINING OCS POLES | 4d | 2023-05-31 A | 2023-06-05 A | 3-2122, PMP-41, PMP-36 | 100% |  |  |  |  | MBRT BASE [32 h] | 32 | 32 | ELECRICAL SUB | 32 | 3-2542 | 3-2542 | ZONE-3 |  | OCS |
|  | 16 | **COMFORT STATION** |  | 2023-04-24 | 2024-07-08 |  |  |  |  |  |  |  |  |  |  |  |  |  |  |  |  |
| 3-2544 |  | F/R/P FOOTING, BEFORE UNSUITABLE SOILS | 5d | 2023-04-24 A | 2023-04-25 A | 3-1685, 3-1682 | 100% | 2023-06-09 | 2023-06-15 |  |  | MBRT BASE [16 h] | 16 | 16 | COM | 16 | 3-2544 | 3-2544 | ZONE-3 |  |  |
| 3-3500 |  | OVEREX UNSUITABLE SOILS | 5d | 2023-04-26 A | 2023-04-26 A | 3-2544 | 100% | 2023-06-09 | 2023-06-15 |  |  | MBRT NEW [40 h] | 40 | 8 | COM | 8 | 3-3500 | 3-3500 | ZONE-3 |  |  |
| 3-3505 |  | AWAIT GEOTECH REPORT | 5d | 2023-04-27 A | 2023-04-28 A | 3-3500 | 100% | 2023-06-09 | 2023-06-15 |  |  | MBRT NEW [40 h] | 40 | 16 | COM | 16 | 3-3505 | 3-3505 | ZONE-3 |  |  |
| 3-3565 |  | AWAIT APPROVAL OF NEW MATERIAL DUE TO UNSUITABLE SOILS | 5d | 2023-05-01 A | 2023-05-12 A | 3-3505 | 100% | 2023-06-09 | 2023-06-15 |  |  | MBRT NEW [40 h] | 40 | 80 | COM | 80 | 3-3565 | 3-3565 | ZONE-3 |  |  |
| 3-3570 |  | QUARRY SPALLS EXTRA WORK | 5d | 2023-05-22 A | 2023-05-23 A | 3-3565 | 100% | 2023-06-09 | 2023-06-15 |  |  | MBRT NEW [40 h] | 40 | 16 | COM | 16 | 3-3570 | 3-3570 | ZONE-3 |  |  |
| 3-3510 |  | COMPLETE FOUNDATION AFTER UNSUITABLE SOILS | 5d | 2023-06-28 A | 2023-08-26 A | 3-3505, 3-3570 FS+24d | 100% | 2023-06-28 | 2023-07-05 |  |  | MBRT NEW [40 h] | 40 | 40 | COM | 336 | 3-3510 | 3-3510 | ZONE-3 |  |  |
| 3-2545 |  | WALLS, COMFORT STATION | 20d | 2024-04-15 | 2024-05-10 | 3-2544, 3-3510, 3-2332 FF, 3-2326 |  |  |  | -129d | 0d | MBRT BASE [80 h] | 80 |  | COMFORT STATION SUB | 80 | 3-2545 | 3-2545 | ZONE-3 |  |  |
| 3-2550 |  | ROOF, COMFORT STATION | 10d | 2024-04-29 | 2024-05-10 | 3-2545 FF, 3-2545 SS |  |  |  | -129d | 0d | MBRT NEW [80 h] | 80 |  |  | 80 | 3-2550 | 3-2550 |  |  |  |
| 3-2555 |  | PLUMBING/HVAC, COMFORT STATION | 10d | 2024-05-13 | 2024-05-24 | 3-2550 |  |  |  | -129d | 0d | MBRT NEW [80 h] | 80 |  |  | 80 | 3-2555 | 3-2555 |  |  |  |
| 3-2560 |  | ELECTRICAL, COMFORT STATION | 10d | 2024-05-28 | 2024-06-10 | 3-2555 |  |  |  | -129d | 0d | MBRT NEW [80 h] | 80 |  |  | 80 | 3-2560 | 3-2560 |  |  |  |
| 3-2565 |  | FURNISHES, COMFORT STATION | 20d | 2024-06-11 | 2024-07-08 | 3-2560 |  |  |  | -129d | 16d | MBRT NEW [160 h] | 160 |  |  | 160 | 3-2565 | 3-2565 |  |  |  |

| ID | WBS | Activity | Duration | Start | Finish | Predecessors | Complete | Remaining | Planned start | Planned finish | Total float | Free float | user_number6 | user_text10 | user_text8 |
| --- | --- | --- | --- | --- | --- | --- | --- | --- | --- | --- | --- | --- | --- | --- | --- |
|  | 4 | **LUMP SUM ITEMS** |  | 2021-09-20 | 2024-04-22 |  |  |  |  |  |  |  |  |  |  |
|  | 1 | **BI 001 - CONSTRUCTION SURVEY** |  | 2021-10-18 | 2024-04-22 |  |  |  |  |  |  |  |  |  |  |
| LS-1000 |  | CONSTRUCTION SURVEY, BI 001 | 15d | 2021-10-18 A | 2021-11-05 A | MS-0025 | 100% |  |  |  |  |  | 0 |  |  |
| LS-1005 |  | CONSTRUCTION SURVEY, BI 001 | 15d | 2021-11-05 A | 2021-11-30 A | LS-1000 | 100% |  |  |  |  |  | 0 |  |  |
| LS-1010 |  | CONSTRUCTION SURVEY, BI 001 | 15d | 2021-12-01 A | 2021-12-31 A | LS-1005 | 100% |  | 2021-12-01 | 2021-12-21 |  |  | 0 |  |  |
| LS-1015 |  | CONSTRUCTION SURVEY, BI 001 | 15d | 2022-01-03 A | 2022-01-28 A | LS-1010 | 100% |  | 2022-01-06 | 2022-01-27 |  |  | 0 |  |  |
| LS-1020 |  | CONSTRUCTION SURVEY, BI 001 | 15d | 2022-01-31 A | 2022-02-14 A | LS-1015 | 100% |  | 2022-01-31 | 2022-02-18 |  |  | 0 |  |  |
| LS-1025 |  | CONSTRUCTION SURVEY, BI 001 | 15d | 2022-02-15 A | 2022-02-28 A | LS-1020 | 100% |  | 2022-02-22 | 2022-03-14 |  |  | 0 |  |  |
| LS-1030 |  | CONSTRUCTION SURVEY, BI 001 | 15d | 2022-03-01 A | 2022-03-15 A | LS-1025 | 100% |  | 2022-03-01 | 2022-03-21 |  |  | 0 |  |  |
| LS-1035 |  | CONSTRUCTION SURVEY, BI 001 | 15d | 2022-03-16 A | 2022-03-30 A | LS-1030 | 100% |  | 2022-03-22 | 2022-04-11 |  |  | 0 |  |  |
| LS-1040 |  | CONSTRUCTION SURVEY, BI 001 | 15d | 2022-03-31 A | 2022-04-20 A | LS-1035 | 100% |  |  |  |  |  | 0 |  |  |
| LS-1045 |  | CONSTRUCTION SURVEY, BI 001 | 15d | 2022-04-21 A | 2022-04-29 A | LS-1040 | 100% |  | 2022-04-21 | 2022-05-11 |  |  | 0 |  |  |
| LS-1050 |  | CONSTRUCTION SURVEY, BI 001 | 15d | 2022-05-02 A | 2022-05-20 A | LS-1045 | 100% |  |  |  |  |  | 0 |  |  |
| LS-1055 |  | CONSTRUCTION SURVEY, BI 001 | 15d | 2022-05-23 A | 2022-05-30 A | LS-1050 | 100% |  | 2022-05-23 | 2022-06-13 |  |  | 0 |  |  |
| LS-1060 |  | CONSTRUCTION SURVEY, BI 001 | 15d | 2022-05-31 A | 2022-06-06 A | LS-1055 | 100% |  | 2022-07-01 | 2022-07-22 |  |  | 0 |  |  |
| LS-1065 |  | CONSTRUCTION SURVEY, BI 001 | 15d | 2022-06-07 A | 2022-06-30 A | LS-1060 | 100% |  | 2022-07-25 | 2022-08-12 |  |  | 0 |  |  |
| LS-1070 |  | CONSTRUCTION SURVEY, BI 001 | 15d | 2022-07-01 A | 2022-07-29 A | LS-1065 | 100% |  | 2022-08-01 | 2022-08-19 |  |  | 0 |  |  |
| LS-1075 |  | CONSTRUCTION SURVEY, BI 001 | 15d | 2022-08-01 A | 2022-08-19 A | LS-1070 | 100% |  | 2022-08-31 | 2022-09-21 |  |  | 0 |  |  |
| LS-1080 |  | CONSTRUCTION SURVEY, BI 001 | 15d | 2022-08-31 A | 2022-09-21 A | LS-1075 | 100% |  |  |  |  |  | 0 |  |  |
| LS-1085 |  | CONSTRUCTION SURVEY, BI 001 | 15d | 2022-09-22 A | 2022-10-21 A | LS-1080 | 100% |  | 2022-09-22 | 2022-10-12 |  |  | 0 |  |  |
| LS-1090 |  | CONSTRUCTION SURVEY, BI 001 | 15d | 2022-10-24 A | 2022-11-21 A | LS-1085 | 100% |  | 2022-10-24 | 2022-11-11 |  |  | 0 |  |  |
| LS-1095 |  | CONSTRUCTION SURVEY, BI 001 | 15d | 2022-11-22 A | 2022-12-21 A | LS-1090 | 100% |  | 2022-11-22 | 2022-12-14 |  |  | 0 |  |  |
| LS-1100 |  | CONSTRUCTION SURVEY, BI 001 | 15d | 2022-12-22 A | 2023-01-23 A | LS-1095 | 100% |  | 2022-12-22 | 2023-01-13 |  |  | 0 |  |  |
| LS-1105 |  | CONSTRUCTION SURVEY, BI 001 | 15d | 2023-01-24 A | 2023-02-13 A | LS-1100 | 100% |  |  |  |  |  | 0 |  |  |
| LS-1110 |  | CONSTRUCTION SURVEY, BI 001 | 15d | 2023-02-22 A | 2023-03-14 A | LS-1105 | 100% |  |  |  |  |  | 0 |  |  |
| LS-1115 |  | CONSTRUCTION SURVEY, BI 001 | 15d | 2023-03-15 A | 2023-04-04 A | LS-1110 | 100% |  | 2023-03-22 | 2023-04-11 |  |  | 0 | LS-1115 | LS-1115 |
| LS-1120 |  | CONSTRUCTION SURVEY, BI 001 | 15d | 2023-04-04 A | 2023-04-24 A | LS-1115 | 100% |  | 2023-04-14 | 2023-05-04 |  |  | 0 | LS-1120 | LS-1120 |
| LS-1125 |  | CONSTRUCTION SURVEY, BI 001 | 15d | 2023-05-01 A | 2023-05-19 A | LS-1120 | 100% |  |  |  |  |  | 0 | LS-1125 | LS-1125 |
| LS-1130 |  | CONSTRUCTION SURVEY, BI 001 | 15d | 2023-05-31 A | 2023-06-20 A | LS-1125 | 100% |  |  |  |  |  | 0 | LS-1130 | LS-1130 |
| LS-1135 |  | CONSTRUCTION SURVEY, BI 001 | 15d | 2023-06-21 A | 2023-07-12 A | LS-1130 | 100% |  |  |  |  |  | 0 | LS-1135 | LS-1135 |
| LS-1140 |  | CONSTRUCTION SURVEY, BI 001 | 15d | 2023-07-13 A | 2023-08-02 A | LS-1135 | 100% |  |  |  |  |  | 0 | LS-1140 | LS-1140 |
| LS-1145 |  | CONSTRUCTION SURVEY, BI 001 | 15d | 2023-08-03 A | 2023-08-25 A | LS-1140 | 100% |  | 2023-08-03 | 2023-08-23 |  |  | 0 | LS-1145 | LS-1145 |
| LS-1150 |  | CONSTRUCTION SURVEY, BI 001 | 15d | 2023-08-28 A | 2023-09-18 A | LS-1145 | 100% |  |  |  |  |  | 0 | LS-1150 | LS-1150 |
| LS-1155 |  | CONSTRUCTION SURVEY, BI 001 | 15d | 2023-09-19 A | 2023-10-09 A | LS-1150 | 100% |  |  |  |  |  | 0 | LS-1155 | LS-1155 |
| LS-1160 |  | CONSTRUCTION SURVEY, BI 001 | 15d | 2023-10-10 A | 2023-10-30 A | LS-1155 | 100% |  |  |  |  |  | 0 | LS-1160 | LS-1160 |
| LS-1185 |  | CONSTRUCTION SURVEY, BI 001; 10% FOR PHYSICAL COMPLETION | 15d | 2024-03-04 A | 2024-04-22 | LS-1160 |  | 15d | 2024-03-04 | 2024-03-22 | -32d | 115d | 0 | LS-1185 | LS-1185 |

| ID | WBS | Activity | Type | Duration | Start | Finish | Predecessors | Complete | Planned start | Planned finish | user_number6 | user_text10 | user_text8 |
| --- | --- | --- | --- | --- | --- | --- | --- | --- | --- | --- | --- | --- | --- |
|  | 2 | **BI 003 - VIBRATION MONITORING** |  |  | 2021-10-05 | 2023-05-26 |  |  |  |  |  |  |  |
| LS-1190 |  | MONITORING PLAN APPROVAL, BI003 | milestone | 0d | 2021-10-05 A | 2021-10-05 A | PSR-0038 | 100% |  |  | 0 |  |  |
| LS-1195 |  | VIBRATION MONITORING, BI 003 |  | 20d | 2021-10-05 A | 2021-10-29 A | LS-1190 SS, MS-0025 | 100% | 2021-10-18 | 2021-11-12 | 0 |  |  |
| LS-1200 |  | VIBRATION MONITORING, BI 003 |  | 20d | 2021-11-01 A | 2021-11-30 A | LS-1195 | 100% | 2021-11-01 | 2021-12-01 | 0 |  |  |
| LS-1205 |  | VIBRATION MONITORING, BI 003 |  | 20d | 2021-12-01 A | 2021-12-30 A | LS-1200 | 100% | 2021-12-01 | 2021-12-29 | 0 |  |  |
| LS-1210 |  | VIBRATION MONITORING, BI 003 |  | 20d | 2022-01-03 A | 2022-01-28 A | LS-1205 | 100% | 2022-01-03 | 2022-01-31 | 0 |  |  |
| LS-1215 |  | VIBRATION MONITORING, BI 003 |  | 20d | 2022-01-31 A | 2022-02-28 A | LS-1210 | 100% |  |  | 0 |  |  |
| LS-1220 |  | VIBRATION MONITORING, BI 003 |  | 20d | 2022-03-01 A | 2022-03-30 A | LS-1215 | 100% | 2022-03-01 | 2022-03-28 | 0 |  |  |
| LS-1225 |  | VIBRATION MONITORING, BI 003 |  | 20d | 2022-03-31 A | 2022-04-29 A | LS-1220 | 100% | 2022-03-31 | 2022-04-27 | 0 |  |  |
| LS-1230 |  | VIBRATION MONITORING, BI 003 |  | 20d | 2022-05-02 A | 2022-05-30 A | LS-1225 | 100% | 2022-07-01 | 2022-07-29 | 0 |  |  |
| LS-1235 |  | VIBRATION MONITORING, BI 003 |  | 20d | 2022-05-31 A | 2022-06-30 A | LS-1230 | 100% | 2022-08-01 | 2022-08-26 | 0 |  |  |
| LS-1240 |  | VIBRATION MONITORING, BI 003 |  | 20d | 2022-07-01 A | 2022-07-29 A | LS-1235 | 100% | 2022-08-01 | 2022-08-26 | 0 |  |  |
| LS-1245 |  | VIBRATION MONITORING, BI 003 |  | 20d | 2022-07-30 A | 2022-08-26 A | LS-1240 | 100% | 2022-08-31 | 2022-09-28 | 0 |  |  |
| LS-1250 |  | VIBRATION MONITORING, BI 003 |  | 20d | 2022-08-31 A | 2022-09-28 A | LS-1245 | 100% |  |  | 0 |  |  |
| LS-1255 |  | VIBRATION MONITORING, BI 003 |  | 20d | 2022-09-29 A | 2022-10-28 A | LS-1250 | 100% | 2022-09-29 | 2022-10-26 | 0 |  |  |
| LS-1260 |  | VIBRATION MONITORING, BI 003 |  | 20d | 2022-10-31 A | 2022-11-30 A | LS-1255 | 100% |  |  | 0 |  |  |
| LS-1265 |  | VIBRATION MONITORING, BI 003 |  | 20d | 2022-12-01 A | 2022-12-29 A | LS-1260 | 100% |  |  | 0 |  |  |
| LS-1270 |  | VIBRATION MONITORING, BI 003 |  | 20d | 2022-12-30 A | 2023-01-30 A | LS-1265 | 100% |  |  | 0 |  |  |
| LS-1275 |  | VIBRATION MONITORING, BI 003 |  | 20d | 2023-01-31 A | 2023-02-28 A | LS-1270 | 100% |  |  | 0 |  |  |
| LS-1280 |  | VIBRATION MONITORING, BI 003 |  | 20d | 2023-03-01 A | 2023-03-28 A | LS-1275 | 100% |  |  | 0 |  |  |
| LS-1285 |  | VIBRATION MONITORING, BI 003 |  | 20d | 2023-03-29 A | 2023-04-27 A | LS-1280 | 100% | 2023-03-01 | 2023-03-28 | 0 | LS-1285 | LS-1285 |
| LS-1290 |  | VIBRATION MONITORING, BI 003 |  | 20d | 2023-05-01 A | 2023-05-26 A | LS-1285 | 100% |  |  | 0 | LS-1290 | LS-1290 |
|  | 3 | **BI 007 - MAINTENANCE & PROTECTION OF TRAFFIC CONTROL** |  |  | 2021-09-20 | 2024-03-07 |  |  |  |  |  |  |  |
| LS-1295 |  | JOB START UP, TCPS APPROVAL, SUPPLIES, BI 0007 |  | 20d | 2021-09-20 A | 2021-10-15 A | PCS-0014 | 100% | 2021-12-01 | 2021-12-29 | 0 |  |  |
| LS-1300 |  | PE #1, BI 007 - MAINTENANCE & PROTECTION OF TRAFFIC CONTROL |  | 20d | 2021-09-20 A | 2021-10-29 A | LS-1295 SS | 100% | 2021-12-01 | 2021-12-29 | 0 |  |  |
| LS-1305 |  | PE #2, BI 007 - MAINTENANCE & PROTECTION OF TRAFFIC CONTROL |  | 20d | 2021-11-01 A | 2021-11-30 A | LS-1300 | 100% | 2021-12-30 | 2022-01-28 | 0 |  |  |
| LS-1310 |  | PE #3, BI 007 - MAINTENANCE & PROTECTION OF TRAFFIC CONTROL |  | 20d | 2021-12-01 A | 2021-12-30 A | LS-1305 | 100% | 2022-01-31 | 2022-02-28 | 0 |  |  |
| LS-1315 |  | PE #4, BI 007 - MAINTENANCE & PROTECTION OF TRAFFIC CONTROL |  | 20d | 2022-01-03 A | 2022-01-28 A | LS-1310 | 100% | 2022-01-03 | 2022-01-31 | 0 |  |  |
| LS-1320 |  | PE #5, BI 007 - MAINTENANCE & PROTECTION OF TRAFFIC CONTROL |  | 21d | 2022-01-31 A | 2022-02-28 A | LS-1315 | 100% | 2022-01-31 | 2022-03-01 | 0 |  |  |
| LS-1325 |  | PE #6, BI 007 - MAINTENANCE & PROTECTION OF TRAFFIC CONTROL |  | 20d | 2022-03-01 A | 2022-03-30 A | LS-1320 | 100% | 2022-03-01 | 2022-03-28 | 0 |  |  |
| LS-1330 |  | PE #7, BI 007 - MAINTENANCE & PROTECTION OF TRAFFIC CONTROL |  | 20d | 2022-03-31 A | 2022-04-29 A | LS-1325 | 100% | 2022-03-31 | 2022-04-27 | 0 |  |  |
| LS-1335 |  | PE #8, BI 007 - MAINTENANCE & PROTECTION OF TRAFFIC CONTROL |  | 20d | 2022-05-02 A | 2022-05-27 A | LS-1330 | 100% |  |  | 0 |  |  |
| LS-1340 |  | PE #9, BI 007 - MAINTENANCE & PROTECTION OF TRAFFIC CONTROL |  | 20d | 2022-05-30 A | 2022-06-30 A | LS-1335 | 100% | 2022-07-01 | 2022-07-29 | 0 |  |  |
| LS-1345 |  | PE #10, BI 007 - MAINTENANCE & PROTECTION OF TRAFFIC CONTROL |  | 20d | 2022-07-01 A | 2022-07-29 A | LS-1340 | 100% | 2022-08-01 | 2022-08-26 | 0 |  |  |
| LS-1350 |  | PE #11, BI 007 - MAINTENANCE & PROTECTION OF TRAFFIC CONTROL |  | 20d | 2022-07-30 A | 2022-08-26 A | LS-1345 | 100% | 2022-08-31 | 2022-09-28 | 0 |  |  |
| LS-1355 |  | PE #12, BI 007 - MAINTENANCE & PROTECTION OF TRAFFIC CONTROL |  | 20d | 2022-08-30 A | 2022-09-27 A | LS-1350 | 100% | 2022-08-31 | 2022-09-28 | 0 |  |  |
| LS-1360 |  | PE #13, BI 007 - MAINTENANCE & PROTECTION OF TRAFFIC CONTROL |  | 20d | 2022-09-28 A | 2022-10-25 A | LS-1355 | 100% |  |  | 0 |  |  |
| LS-1365 |  | PE #14, BI 007 - MAINTENANCE & PROTECTION OF TRAFFIC CONTROL |  | 20d | 2022-10-26 A | 2022-11-23 A | LS-1360 | 100% |  |  | 0 |  |  |
| LS-1370 |  | PE #15, BI 007 - MAINTENANCE & PROTECTION OF TRAFFIC CONTROL |  | 20d | 2022-11-28 A | 2022-12-23 A | LS-1365 | 100% |  |  | 0 |  |  |
| LS-1375 |  | PE #16, BI 007 - MAINTENANCE & PROTECTION OF TRAFFIC CONTROL |  | 20d | 2022-12-27 A | 2023-01-25 A | LS-1370 | 100% |  |  | 0 |  |  |
| LS-1380 |  | PE #17, BI 007 - MAINTENANCE & PROTECTION OF TRAFFIC CONTROL |  | 20d | 2023-01-26 A | 2023-02-23 A | LS-1375 | 100% |  |  | 0 |  |  |
| LS-1385 |  | PE #18, BI 007 - MAINTENANCE & PROTECTION OF TRAFFIC CONTROL |  | 20d | 2023-02-24 A | 2023-03-23 A | LS-1380 | 100% |  |  | 0 |  |  |
| LS-1390 |  | PE #19, BI 007 - MAINTENANCE & PROTECTION OF TRAFFIC CONTROL |  | 20d | 2023-03-24 A | 2023-04-20 A | LS-1385 | 100% |  |  | 0 | LS-1390 | LS-1390 |
| LS-1395 |  | PE #20, BI 007 - MAINTENANCE & PROTECTION OF TRAFFIC CONTROL |  | 20d | 2023-04-21 A | 2023-05-18 A | LS-1390 | 100% | 2023-05-01 | 2023-05-26 | 0 | LS-1395 | LS-1395 |
| LS-1400 |  | PE #21, BI 007 - MAINTENANCE & PROTECTION OF TRAFFIC CONTROL |  | 20d | 2023-05-19 A | 2023-06-16 A | LS-1395 | 100% |  |  | 0 | LS-1400 | LS-1400 |
| LS-1405 |  | PE #22, BI 007 - MAINTENANCE & PROTECTION OF TRAFFIC CONTROL |  | 20d | 2023-06-19 A | 2023-07-17 A | LS-1400 | 100% |  |  | 0 | LS-1405 | LS-1405 |
| LS-1410 |  | PE #23, BI 007 - MAINTENANCE & PROTECTION OF TRAFFIC CONTROL |  | 20d | 2023-07-18 A | 2023-08-14 A | LS-1405 | 100% |  |  | 0 | LS-1410 | LS-1410 |
| LS-1415 |  | PE #24, BI 007 - MAINTENANCE & PROTECTION OF TRAFFIC CONTROL |  | 20d | 2023-08-15 A | 2023-09-12 A | LS-1410 | 100% |  |  | 0 | LS-1415 | LS-1415 |
| LS-1420 |  | PE #25, BI 007 - MAINTENANCE & PROTECTION OF TRAFFIC CONTROL |  | 20d | 2023-09-13 A | 2023-10-10 A | LS-1415 | 100% |  |  | 0 | LS-1420 | LS-1420 |
| LS-1425 |  | PE #26, BI 007 - MAINTENANCE & PROTECTION OF TRAFFIC CONTROL |  | 20d | 2023-10-11 A | 2023-11-07 A | LS-1420 | 100% |  |  | 0 | LS-1425 | LS-1425 |
| LS-1430 |  | PE #27, BI 007 - MAINTENANCE & PROTECTION OF TRAFFIC CONTROL |  | 20d | 2023-11-08 A | 2023-12-08 A | LS-1425 | 100% |  |  | 0 | LS-1430 | LS-1430 |
| LS-1435 |  | PE #28, BI 007 - MAINTENANCE & PROTECTION OF TRAFFIC CONTROL |  | 20d | 2023-12-11 A | 2024-01-09 A | LS-1430 | 100% |  |  | 0 | LS-1435 | LS-1435 |
| LS-1440 |  | PE #29, BI 007 - MAINTENANCE & PROTECTION OF TRAFFIC CONTROL |  | 20d | 2024-01-10 A | 2024-02-07 A | LS-1435 | 100% |  |  | 0 | LS-1440 | LS-1440 |
| LS-1445 |  | PE #30, BI 007 - MAINTENANCE & PROTECTION OF TRAFFIC CONTROL |  | 20d | 2024-02-08 A | 2024-03-07 A | LS-1440 | 100% |  |  | 0 | LS-1445 | LS-1445 |

| ID | WBS | Activity | Duration | Start | Finish | Predecessors | Complete | Planned start | Planned finish | Total float | Free float | user_number6 | MBRT-DELAY | user_text10 | user_text8 |
| --- | --- | --- | --- | --- | --- | --- | --- | --- | --- | --- | --- | --- | --- | --- | --- |
|  | 4 | **BI 168 - TEMPORARY BYPASS** |  | 2021-12-17 | 2023-04-30 |  |  |  |  |  |  |  |  |  |  |
| LS-1465 |  | MH 17, BI 168 - TEMPORARY BYPASS | 5d | 2021-12-17 A | 2021-12-23 A | PSR-0043 | 100% | 2022-03-01 | 2022-03-07 |  |  | 0 | FM001 |  |  |
| LS-1475 |  | MH 12, BI 168 - TEMPORARY BYPASS | 5d | 2022-02-07 A | 2022-02-11 A | PSR-0043 | 100% | 2022-01-31 | 2022-02-04 |  |  | 0 |  |  |  |
| LS-1470 |  | MH 10C, BI 168 - TEMPORARY BYPASS | 5d | 2022-03-15 A | 2022-03-21 A | PSR-0043 | 100% | 2022-03-31 | 2022-04-06 |  |  | 0 |  |  |  |
| LS-1460 |  | MH 6, BI 168 - TEMPORARY BYPASS | 5d | 2022-04-13 A | 2022-04-19 A | PSR-0043 | 100% | 2022-03-31 | 2022-04-06 |  |  | 0 |  |  |  |
| LS-1450 |  | MH 1, BI 168 - TEMPORARY BYPASS | 5d | 2022-06-10 A | 2022-06-21 A | PSR-0043 | 100% | 2022-07-01 | 2022-07-08 |  |  | 0 |  |  |  |
| LS-1455 |  | MH 4, BI 168 - TEMPORARY BYPASS | 5d | 2023-04-01 A | 2023-04-30 A | PSR-0043 | 100% | 2023-05-31 | 2023-06-06 |  |  | 0 |  | LS-1455 | LS-1455 |
|  | 5 | **BI 194 - PEDESTRIAN ENHANCEMENTS ON MADISON ST I-5 OVERPASS** |  | 2024-04-02 | 2024-04-08 |  |  |  |  |  |  |  |  |  |  |
| LS-1480 |  | PLANTERS, BI 194 - PEDESTRIAN ENHANCEMENTS ON MADISON ST I-5 OVERPASS | 5d | 2024-04-02 | 2024-04-08 | MS-0025 |  |  |  | -72d | 37d | 0 |  | LS-1480 | LS-1480 |
| LS-1485 |  | DECORATIVE PANELS, BI 194 - PEDESTRIAN ENHANCEMENTS ON MADISON ST I-5 OVERPASS | 5d | 2024-04-02 | 2024-04-08 | MS-0025 |  |  |  | -68d | 41d | 0 |  | LS-1485 | LS-1485 |
| LS-1490 |  | PLANTING, BI 194 - PEDESTRIAN ENHANCEMENTS ON MADISON ST I-5 OVERPASS | 5d | 2024-04-02 | 2024-04-08 | MS-0025 |  |  |  | -65d | 44d | 0 |  | LS-1490 | LS-1490 |

## Activity codes

| Code | Value | Meaning |
| --- | --- | --- |
| MBRT-ACTIVITY | BACT | Bac-T & Wait Perior |
| MBRT-ACTIVITY | CX | Commissioning |
| MBRT-ACTIVITY | GRADESW | Grade Sidewalks |
| MBRT-ACTIVITY | INSPECT | Inspections |
| MBRT-ACTIVITY | NOTIFY | Notifications |
| MBRT-DELAY | OCS | OCS Delays |
| MBRT-DELAY | SCL-FC | SCL False Ceiling Delays |
| MBRT-DELAY | SCL-VT | SCL Vault Delays & HH |
| MBRT-LOCATION | 01 | (New Code Value) |
| MBRT-LOCATION | 02 | (New Code Value) |
| MBRT-LOCATION | 03 | (New Code Value) |
| MBRT-LOCATION | 04 | (New Code Value) |
| MBRT-LOCATION | 05 | (New Code Value) |
| MBRT-LOCATION | 06 | (New Code Value) |
| MBRT-LOCATION | 07 | (New Code Value) |
| MBRT-LOCATION | 08 | (New Code Value) |
| MBRT-LOCATION | 09 | (New Code Value) |
| MBRT-LOCATION | 10 | (New Code Value) |
| MBRT-LOCATION | 11 | (New Code Value) |
| MBRT-LOCATION | 12 | (New Code Value) |
| MBRT-LOCATION | 13 | (New Code Value) |
| MBRT-LOCATION | 14 | (New Code Value) |
| MBRT-LOCATION | 15 | (New Code Value) |
| MBRT-LOCATION | 16 | (New Code Value) |
| MBRT-LOCATION | 17 | (New Code Value) |
| MBRT-LOCATION | 18 | (New Code Value) |
| MBRT-LOCATION | 19 | (New Code Value) |
| MBRT-LOCATION | 20 | (New Code Value) |
| MBRT-LOCATION | 22 | (New Code Value) |
| MBRT-LOCATION | 23 | (New Code Value) |
| MBRT-LOCATION | 24 | (New Code Value) |
| MBRT-LOCATION | 25 | (New Code Value) |
| MBRT-LOCATION | 26 | (New Code Value) |
| MBRT-LOCATION | 27 | (New Code Value) |
| MBRT-LOCATION | AR-HARR | (New Code Value) |
| MBRT-LOCATION | BROADWAY | (New Code Value) |
| MBRT-LOCATION | SPRING | (New Code Value) |
| MBRT-LOCATION | UNION | (New Code Value) |
| MBRT-NIGHT | NIGHT | NIGHT WORK |
| MBRT-NIGHT | NT_WE | NIGHT/WEEKEND |
| MBRT-RESP | PRIME | Prime Electric |
| MBRT-RESP | SCL | Seattle City Light |
| MBRT-RESP | SPU | Seattlre Public Utilities |
| MBRT-ROADWAY | IXN | INtersections |
| MBRT-ROADWAY | RDWY | Roadway |
| MBRT-SCOPE | CURB | Curbs |
| MBRT-SCOPE | DEMOPREP | Roadway Demo, Exc, Agg |
| MBRT-SCOPE | DUCTBANK | Electrical Ductbank |
| MBRT-SCOPE | ELECTRICAL | Electrical |
| MBRT-SCOPE | PAVE-R | Roadway Paving |
| MBRT-SCOPE | POLEFDN | Pole Fpoundations |
| MBRT-SCOPE | SIDEWALKS | Sidewalks |
| MBRT-SCOPE | SIGNALS | Signals |
| MBRT-SCOPE | STORM | Storm Drainage |
| MBRT-SCOPE | WATERLINE | Water Line |
| MBRT-SIDE | EAST | (New Code Value) |
| MBRT-SIDE | NORTH | North Side |
| MBRT-SIDE | SOUTH | South Side |
| MBRT-SIDE | WEST | (New Code Value) |
| MBRT-TYPE | CIVIL | UG Wet Utilities |
| MBRT-TYPE | DELAY | Delays |
| MBRT-TYPE | ELECTRICAL | Electrical |
| MBRT-TYPE | LIGHTING | Lighting |
| MBRT-TYPE | MILE | Milestones |
| MBRT-TYPE | OFD | Order/Deliver Materials |
| MBRT-TYPE | REVIEW | Submittal Review |
| MBRT-TYPE | ROADWAY | Roadway |
| MBRT-TYPE | SIDEWALKS | Sidewalks |
| MBRT-TYPE | SIGNALS | Signals |
| MBRT-TYPE | STATIONS | Stations |
| MBRT-TYPE | SUBMITTAL | Submittal Preparation |
| MBRT-TYPE | TEMPSIG | Temp Signals |
| MBRT-ZONE | ADMIN | (New Code Value) |
| MBRT-ZONE | OTHER | (New Code Value) |
| MBRT-ZONE | ZONE-1 | (New Code Value) |
| MBRT-ZONE | ZONE-2 | (New Code Value) |
| MBRT-ZONE | ZONE-3 | (New Code Value) |
